# PL5001 – Wyspa mocy (SE-01)

How a schedule from Primavera P6 changed from version to version. A marks actual dates.

## Version 1 (data date 2026-09-30, saved 2026-09-30, file PL5001_SYNTH_schedule_Rev0G_DD30092026.xer)

Note of the change: M0: szkielet Vite+React+TS, guard, deploy, dane syntetyczne

| ID | WBS | Task | Duration | Start | Finish | Predecessors | Complete | Total float |
| --- | --- | --- | --- | --- | --- | --- | --- | --- |
|  | WYSPA_KOT£OW | **Wyspa kot³owa** |  | 2025-01-13 | 2027-12-29 |  |  |  |
|  | 10YD43 | **10YD43 – Odgazowywacz** |  | 2025-03-10 | 2027-01-28 |  |  |  |
|  | BUDO | **Budowa** |  | 2025-10-27 | 2026-12-08 |  |  |  |
|  | AKPIA | **AKPiA** |  | 2026-10-07 | 2026-11-09 |  |  |  |
| 10YD43-068 |  | Monta¿ uk³adów AKPiA | 24d | 2026-10-07 | 2026-11-09 | 10YD43-014 SS+5d |  | 282.9d |
|  | ELEKTRYKA | **Elektryka** |  | 2026-10-14 | 2026-11-10 |  |  |  |
| 10YD43-025 |  | Uk³adanie kabli – trasa 02 | 20d | 2026-10-14 | 2026-11-10 | 10YD43-014 SS+10d |  | 281.9d |
| 10YD43-037 |  | Uk³adanie kabli – trasa 04 | 11d | 2026-10-14 | 2026-10-28 | 10YD43-014 SS+10d |  | 336.9d |
| 10YD43-049 |  | Uk³adanie kabli – trasa 06 | 15d | 2026-10-14 | 2026-11-03 | 10YD43-014 SS+10d |  | 332.9d |
| 10YD43-061 |  | Uk³adanie kabli – trasa 08 | 7d | 2026-10-14 | 2026-10-22 | 10YD43-014 SS+10d |  | 294.9d |
| 10YD43-062 |  | Pod³¹czenia i pomiary – trasa 08 | 3d | 2026-10-20 | 2026-10-22 | 10YD43-061 FF |  | 294.9d |
| 10YD43-038 |  | Pod³¹czenia i pomiary – trasa 04 | 6d | 2026-10-21 | 2026-10-28 | 10YD43-037 FF |  | 336.9d |
| 10YD43-050 |  | Pod³¹czenia i pomiary – trasa 06 | 9d | 2026-10-22 | 2026-11-03 | 10YD43-049 FF |  | 332.9d |
| 10YD43-026 |  | Pod³¹czenia i pomiary – trasa 02 | 5d | 2026-11-04 | 2026-11-10 | 10YD43-025 FF |  | 281.9d |
|  | MONTA¯ | **Monta¿** |  | 2026-01-08 | 2026-11-20 |  |  |  |
| 10YD43-013 |  | Monta¿ konstrukcji stalowych | 50d | 2026-01-08 A | 2026-03-18 A | 10YD43-012 | 100% |  |
| 10YD43-014 |  | Monta¿ urz¹dzeñ g³ównych | 57d | 2026-09-30 A | 2026-10-20 | 10YD43-013, 10YD43-011 | 72% | 254.9d |
| 10YD43-069 |  | KM: Zakoñczenie monta¿u – Odgazowywacz | 0d | 2026-11-20 | 2026-11-20 | 10YD43-060, 10YD43-062, 10YD43-067, 10YD43-068, 10YD43-014 |  | 274.3d |
|  | ROBOTY BUD | **Roboty budowlane** |  | 2025-10-27 | 2026-01-12 |  |  |  |
| 10YD43-012 |  | Fundamenty i roboty ziemne | 53d | 2025-10-27 A | 2026-01-12 A | 10YD43-007 FS+8d | 100% |  |
|  | RUROCI¥GI | **Ruroci¹gi** |  | 2026-01-07 | 2026-12-08 |  |  |  |
|  | SEKCJA 01 | **Sekcja 01** |  | 2026-01-07 | 2026-11-30 |  |  |  |
| 10YD43-015 |  | Prefabrykacja ruroci¹gów – Sekcja 01 | 3.3d | 2026-01-07 A | 2026-01-14 A | 10YD43-012 | 100% |  |
| 10YD43-016 |  | Monta¿ ruroci¹gów – Sekcja 01 | 20.3d | 2026-10-13 | 2026-11-09 | 10YD43-015, 10YD43-014 SS+9d |  | 267.6d |
| 10YD43-017 |  | Próba ciœnieniowa – Sekcja 01 | 6d | 2026-11-10 | 2026-11-17 | 10YD43-016 |  | 267.6d |
| 10YD43-018 |  | Izolacje – Sekcja 01 | 7d | 2026-11-18 | 2026-11-26 | 10YD43-017 |  | 267.6d |
| 10YD43-019 |  | Malowanie i oznakowanie – Sekcja 01 | 8d | 2026-11-19 | 2026-11-30 | 10YD43-018 FF+2d |  | 267.6d |
|  | SEKCJA 02 | **Sekcja 02** |  | 2026-01-20 | 2026-12-08 |  |  |  |
| 10YD43-020 |  | Prefabrykacja ruroci¹gów – Sekcja 02 | 11.3d | 2026-01-20 A | 2026-02-04 A | 10YD43-012, 10YD43-015 SS+5d | 100% |  |
| 10YD43-021 |  | Monta¿ ruroci¹gów – Sekcja 02 | 24.4d | 2026-10-13 | 2026-11-13 | 10YD43-020, 10YD43-014 SS+9d |  | 261.5d |
| 10YD43-022 |  | Próba ciœnieniowa – Sekcja 02 | 4d | 2026-11-16 | 2026-11-19 | 10YD43-021 |  | 261.5d |
| 10YD43-023 |  | Izolacje – Sekcja 02 | 11d | 2026-11-20 | 2026-12-04 | 10YD43-022 |  | 261.5d |
| 10YD43-024 |  | Malowanie i oznakowanie – Sekcja 02 | 8d | 2026-11-27 | 2026-12-08 | 10YD43-023 FF+2d |  | 261.5d |
|  | SEKCJA 03 | **Sekcja 03** |  | 2026-01-22 | 2026-11-09 |  |  |  |
|  | PODSEKCJA | **Podsekcja 03.A** |  | 2026-01-22 | 2026-11-09 |  |  |  |
| 10YD43-027 |  | Prefabrykacja ruroci¹gów – Sekcja 03 | 8.8d | 2026-01-22 A | 2026-02-05 A | 10YD43-012, 10YD43-020 SS+5d | 100% |  |
| 10YD43-028 |  | Monta¿ ruroci¹gów – Sekcja 03 | 17.2d | 2026-10-05 | 2026-10-27 | 10YD43-027, 10YD43-014 SS+3d |  | 328.7d |
| 10YD43-029 |  | Próba ciœnieniowa – Sekcja 03 | 3d | 2026-10-28 | 2026-10-30 | 10YD43-028 |  | 328.7d |
| 10YD43-030 |  | Izolacje – Sekcja 03 | 4d | 2026-11-02 | 2026-11-05 | 10YD43-029 |  | 328.7d |
| 10YD43-031 |  | Malowanie i oznakowanie – Sekcja 03 | 2d | 2026-11-06 | 2026-11-09 | 10YD43-030 FF+2d |  | 328.7d |
|  | SEKCJA 04 | **Sekcja 04** |  | 2026-02-03 | 2026-11-03 |  |  |  |
| 10YD43-032 |  | Prefabrykacja ruroci¹gów – Sekcja 04 | 14.6d | 2026-02-03 A | 2026-02-25 A | 10YD43-012, 10YD43-027 SS+5d | 100% |  |
| 10YD43-033 |  | Monta¿ ruroci¹gów – Sekcja 04 | 12.7d | 2026-10-05 | 2026-10-20 | 10YD43-032, 10YD43-014 SS+3d |  | 332.2d |
| 10YD43-034 |  | Próba ciœnieniowa – Sekcja 04 | 5d | 2026-10-21 | 2026-10-27 | 10YD43-033 |  | 332.2d |
| 10YD43-036 |  | Malowanie i oznakowanie – Sekcja 04 | 6d | 2026-10-27 | 2026-11-03 | 10YD43-035 FF+2d |  | 332.2d |
| 10YD43-035 |  | Izolacje – Sekcja 04 | 3d | 2026-10-28 | 2026-10-30 | 10YD43-034 |  | 332.2d |
|  | SEKCJA 05 | **Sekcja 05** |  | 2026-02-09 | 2026-11-19 |  |  |  |
| 10YD43-039 |  | Prefabrykacja ruroci¹gów – Sekcja 05 | 10.4d | 2026-02-09 A | 2026-02-23 A | 10YD43-012, 10YD43-032 SS+5d | 100% |  |
| 10YD43-040 |  | Monta¿ ruroci¹gów – Sekcja 05 | 18.1d | 2026-10-12 | 2026-11-04 | 10YD43-039, 10YD43-014 SS+8d |  | 320.8d |
| 10YD43-041 |  | Próba ciœnieniowa – Sekcja 05 | 6d | 2026-11-05 | 2026-11-12 | 10YD43-040 |  | 320.8d |
| 10YD43-042 |  | Izolacje – Sekcja 05 | 3d | 2026-11-13 | 2026-11-17 | 10YD43-041 |  | 320.8d |
| 10YD43-043 |  | Malowanie i oznakowanie – Sekcja 05 | 5d | 2026-11-13 | 2026-11-19 | 10YD43-042 FF+2d |  | 320.8d |
|  | SEKCJA 06 | **Sekcja 06** |  | 2026-02-13 | 2026-11-30 |  |  |  |
|  | PODSEKCJA | **Podsekcja 06.A** |  | 2026-02-13 | 2026-11-30 |  |  |  |
| 10YD43-044 |  | Prefabrykacja ruroci¹gów – Sekcja 06 | 4.9d | 2026-02-13 A | 2026-02-20 A | 10YD43-012, 10YD43-039 SS+5d | 100% |  |
| 10YD43-045 |  | Monta¿ ruroci¹gów – Sekcja 06 | 24.3d | 2026-10-09 | 2026-11-11 | 10YD43-044, 10YD43-014 SS+7d |  | 313.6d |
| 10YD43-046 |  | Próba ciœnieniowa – Sekcja 06 | 2d | 2026-11-12 | 2026-11-13 | 10YD43-045 |  | 313.6d |
| 10YD43-047 |  | Izolacje – Sekcja 06 | 9d | 2026-11-16 | 2026-11-26 | 10YD43-046 |  | 313.6d |
| 10YD43-048 |  | Malowanie i oznakowanie – Sekcja 06 | 5d | 2026-11-24 | 2026-11-30 | 10YD43-047 FF+2d |  | 313.6d |
|  | SEKCJA 07 | **Sekcja 07** |  | 2026-09-30 | 2026-11-05 |  |  |  |
| 10YD43-051 |  | Prefabrykacja ruroci¹gów – Sekcja 07 | 10d | 2026-09-30 | 2026-10-13 | 10YD43-012, 10YD43-044 SS+5d |  | 264.1d |
| 10YD43-052 |  | Monta¿ ruroci¹gów – Sekcja 07 | 22.6d | 2026-09-30 A | 2026-10-14 | 10YD43-051, 10YD43-014 SS+1d | 49% | 320.3d |
| 10YD43-053 |  | Próba ciœnieniowa – Sekcja 07 | 2d | 2026-10-15 | 2026-10-16 | 10YD43-052 |  | 331.4d |
| 10YD43-054 |  | Izolacje – Sekcja 07 | 11d | 2026-10-20 | 2026-11-03 | 10YD43-053 |  | 330.9d |
| 10YD43-055 |  | Malowanie i oznakowanie – Sekcja 07 | 2d | 2026-11-04 | 2026-11-05 | 10YD43-054 FF+2d |  | 330.9d |
|  | SEKCJA 08 | **Sekcja 08** |  | 2026-03-03 | 2026-10-29 |  |  |  |
| 10YD43-056 |  | Prefabrykacja ruroci¹gów – Sekcja 08 | 13.9d | 2026-03-03 A | 2026-03-24 A | 10YD43-012, 10YD43-051 SS+5d | 100% |  |
| 10YD43-057 |  | Monta¿ ruroci¹gów – Sekcja 08 | 6.9d | 2026-10-05 | 2026-10-12 | 10YD43-056, 10YD43-014 SS+3d |  | 289d |
| 10YD43-058 |  | Próba ciœnieniowa – Sekcja 08 | 4d | 2026-10-13 | 2026-10-16 | 10YD43-057 |  | 289d |
| 10YD43-059 |  | Izolacje – Sekcja 08 | 7d | 2026-10-19 | 2026-10-27 | 10YD43-058 |  | 289d |

| ID | WBS | Task | Duration | Start | Finish | Predecessors | Complete | Total float |
| --- | --- | --- | --- | --- | --- | --- | --- | --- |
| 10YD43-060 |  | Malowanie i oznakowanie – Sekcja 08 | 7d | 2026-10-21 | 2026-10-29 | 10YD43-059 FF+2d |  | 289d |
|  | SEKCJA 09 | **Sekcja 09** |  | 2026-03-10 | 2026-11-19 |  |  |  |
|  | PODSEKCJA | **Podsekcja 09.A** |  | 2026-03-10 | 2026-11-19 |  |  |  |
| 10YD43-063 |  | Prefabrykacja ruroci¹gów – Sekcja 09 | 8.2d | 2026-03-10 A | 2026-03-23 A | 10YD43-012, 10YD43-056 SS+5d | 100% |  |
| 10YD43-064 |  | Monta¿ ruroci¹gów – Sekcja 09 | 13.6d | 2026-10-12 | 2026-10-28 | 10YD43-063, 10YD43-014 SS+8d |  | 274.3d |
| 10YD43-065 |  | Próba ciœnieniowa – Sekcja 09 | 6d | 2026-10-29 | 2026-11-05 | 10YD43-064 |  | 274.3d |
| 10YD43-066 |  | Izolacje – Sekcja 09 | 8d | 2026-11-06 | 2026-11-17 | 10YD43-065 |  | 274.3d |
| 10YD43-067 |  | Malowanie i oznakowanie – Sekcja 09 | 2d | 2026-11-18 | 2026-11-19 | 10YD43-066 FF+2d |  | 274.3d |
|  | PROJ | **Projektowanie** |  | 2025-03-10 | 2025-08-22 |  |  |  |
|  | DOKUMENTAC | **Dokumentacja** |  | 2025-03-10 | 2025-08-22 |  |  |  |
| 10YD43-001 |  | Projekt wykonawczy – Odgazowywacz | 83d | 2025-03-10 A | 2025-07-03 A |  | 100% |  |
| 10YD43-002 |  | Uzgodnienie dokumentacji z Inwestorem | 26d | 2025-07-09 A | 2025-08-18 A | 10YD43-001 | 100% |  |
| 10YD43-003 |  | Zatwierdzenie dokumentacji do realizacji | 9d | 2025-08-12 A | 2025-08-22 A | 10YD43-002 | 100% |  |
| 10YD43-004 |  | KM: Dokumentacja zatwierdzona – Odgazowywacz | 0d | 2025-08-22 A | 2025-08-22 | 10YD43-003 | 100% |  |
|  | ROZR | **Rozruch** |  | 2026-12-09 | 2027-01-28 |  |  |  |
|  | ROZRUCH | **Rozruch** |  | 2026-12-09 | 2027-01-28 |  |  |  |
| 10YD43-070 |  | Przegl¹d gotowoœci do rozruchu | 8d | 2026-12-09 | 2026-12-18 | 10YD43-069, 10YD43-019, 10YD43-024, 10YD43-026 |  | 261.5d |
| 10YD43-071 |  | Rozruch na zimno | 9d | 2026-12-21 | 2026-12-31 | 10YD43-070 |  | 261.5d |
| 10YD43-072 |  | Rozruch na gor¹co / próby ruchowe | 19d | 2027-01-01 | 2027-01-27 | 10YD43-071 |  | 261.5d |
| 10YD43-073 |  | KM: Odbiór koñcowy – Odgazowywacz | 0d | 2027-01-28 | 2027-01-28 | 10YD43-072 |  | 261.5d |
|  | ZAKU | **Zakupy** |  | 2025-04-08 | 2026-09-30 |  |  |  |
|  | DOSTAWY | **Dostawy** |  | 2025-10-15 | 2026-09-30 |  |  |  |
| 10YD43-008 |  | Produkcja u dostawcy | 232d | 2025-10-15 A | 2026-09-04 A | 10YD43-007 | 100% |  |
| 10YD43-009 |  | Testy FAT | 3d | 2026-09-08 A | 2026-09-14 A | 10YD43-008 | 100% |  |
| 10YD43-010 |  | Transport i dostawa na plac budowy | 14d | 2026-09-09 A | 2026-09-28 A | 10YD43-009 | 100% |  |
| 10YD43-011 |  | KM: Dostawa na budowê – Odgazowywacz | 0d | 2026-09-30 | 2026-09-30 | 10YD43-010 |  | 254.9d |
|  | ZAMÓWIENIA | **Zamówienia** |  | 2025-04-08 | 2025-10-17 |  |  |  |
| 10YD43-005 |  | Zapytanie ofertowe | 17d | 2025-04-08 A | 2025-05-05 A | 10YD43-001 SS+20d | 100% |  |
| 10YD43-006 |  | Analiza i wybór ofert | 13d | 2025-05-01 A | 2025-05-22 A | 10YD43-005 | 100% |  |
| 10YD43-007 |  | Zawarcie umowy / zamówienie | 5d | 2025-10-08 A | 2025-10-17 A | 10YD43-006, 10YD43-004 SS, 12FX78-004 FS+15d, 10BW45-004 FS+13d | 100% |  |
|  | 11CP59 | **11CP59 – Pompy wody zasilaj¹cej** |  | 2025-03-07 | 2027-07-22 |  |  |  |
|  | BUDO | **Budowa** |  | 2025-10-23 | 2027-06-15 |  |  |  |
|  | AKPIA | **AKPiA** |  | 2027-04-19 | 2027-06-10 |  |  |  |
| 11CP59-140 |  | Monta¿ uk³adów AKPiA | 39d | 2027-04-19 | 2027-06-10 | 11CP59-014 SS+5d |  | 136.8d |
|  | ELEKTRYKA | **Elektryka** |  | 2027-04-22 | 2027-05-21 |  |  |  |
| 11CP59-038 |  | Pod³¹czenia i pomiary – trasa 04 | 10d | 2027-04-22 | 2027-05-05 | 11CP59-037 FF |  | 201.8d |
| 11CP59-050 |  | Pod³¹czenia i pomiary – trasa 06 | 10d | 2027-04-23 | 2027-05-06 | 11CP59-049 FF |  | 200.8d |
| 11CP59-025 |  | Uk³adanie kabli – trasa 02 | 18d | 2027-04-26 | 2027-05-19 | 11CP59-014 SS+10d |  | 152.8d |
| 11CP59-037 |  | Uk³adanie kabli – trasa 04 | 8d | 2027-04-26 | 2027-05-05 | 11CP59-014 SS+10d |  | 201.8d |
| 11CP59-049 |  | Uk³adanie kabli – trasa 06 | 9d | 2027-04-26 | 2027-05-06 | 11CP59-014 SS+10d |  | 200.8d |
| 11CP59-061 |  | Uk³adanie kabli – trasa 08 | 20d | 2027-04-26 | 2027-05-21 | 11CP59-014 SS+10d |  | 189.8d |
| 11CP59-073 |  | Uk³adanie kabli – trasa 10 | 12d | 2027-04-26 | 2027-05-11 | 11CP59-014 SS+10d |  | 197.8d |
| 11CP59-085 |  | Uk³adanie kabli – trasa 12 | 4d | 2027-04-26 | 2027-04-29 | 11CP59-014 SS+10d |  | 205.8d |
| 11CP59-086 |  | Pod³¹czenia i pomiary – trasa 12 | 4d | 2027-04-26 | 2027-04-29 | 11CP59-085 FF |  | 205.8d |
| 11CP59-097 |  | Uk³adanie kabli – trasa 14 | 19d | 2027-04-26 | 2027-05-20 | 11CP59-014 SS+10d |  | 190.8d |
| 11CP59-109 |  | Uk³adanie kabli – trasa 16 | 17d | 2027-04-26 | 2027-05-18 | 11CP59-014 SS+10d |  | 192.8d |
| 11CP59-121 |  | Uk³adanie kabli – trasa 18 | 16d | 2027-04-26 | 2027-05-17 | 11CP59-014 SS+10d |  | 193.8d |
| 11CP59-133 |  | Uk³adanie kabli – trasa 20 | 7d | 2027-04-26 | 2027-05-04 | 11CP59-014 SS+10d |  | 163.8d |
| 11CP59-134 |  | Pod³¹czenia i pomiary – trasa 20 | 3d | 2027-04-30 | 2027-05-04 | 11CP59-133 FF |  | 163.8d |
| 11CP59-074 |  | Pod³¹czenia i pomiary – trasa 10 | 6d | 2027-05-04 | 2027-05-11 | 11CP59-073 FF |  | 197.8d |
| 11CP59-122 |  | Pod³¹czenia i pomiary – trasa 18 | 10d | 2027-05-04 | 2027-05-17 | 11CP59-121 FF |  | 193.8d |
| 11CP59-026 |  | Pod³¹czenia i pomiary – trasa 02 | 10d | 2027-05-06 | 2027-05-19 | 11CP59-025 FF |  | 152.8d |
| 11CP59-098 |  | Pod³¹czenia i pomiary – trasa 14 | 9d | 2027-05-10 | 2027-05-20 | 11CP59-097 FF |  | 190.8d |
| 11CP59-110 |  | Pod³¹czenia i pomiary – trasa 16 | 6d | 2027-05-11 | 2027-05-18 | 11CP59-109 FF |  | 192.8d |
| 11CP59-062 |  | Pod³¹czenia i pomiary – trasa 08 | 8d | 2027-05-12 | 2027-05-21 | 11CP59-061 FF |  | 189.8d |
|  | MONTA¯ | **Monta¿** |  | 2025-12-29 | 2027-06-11 |  |  |  |
| 11CP59-013 |  | Monta¿ konstrukcji stalowych | 31d | 2025-12-29 A | 2026-02-10 A | 11CP59-012 | 100% |  |
| 11CP59-014 |  | Monta¿ urz¹dzeñ g³ównych | 23d | 2027-04-12 | 2027-05-12 | 11CP59-013, 11CP59-011 |  | 136.8d |
| 11CP59-141 |  | KM: Zakoñczenie monta¿u – Pompy wody zasilaj¹cej | 0d | 2027-06-11 | 2027-06-11 | 11CP59-132, 11CP59-134, 11CP59-139, 11CP59-140, 11CP59-014 |  | 136.8d |
|  | ROBOTY BUD | **Roboty budowlane** |  | 2025-10-23 | 2026-01-06 |  |  |  |
| 11CP59-012 |  | Fundamenty i roboty ziemne | 51d | 2025-10-23 A | 2026-01-06 A | 11CP59-007 | 100% |  |
|  | RUROCI¥GI | **Ruroci¹gi** |  | 2025-12-30 | 2027-06-15 |  |  |  |
|  | SEKCJA 01 | **Sekcja 01** |  | 2025-12-30 | 2027-05-24 |  |  |  |
| 11CP59-015 |  | Prefabrykacja ruroci¹gów – Sekcja 01 | 9.7d | 2025-12-30 A | 2026-01-14 A | 11CP59-012 | 100% |  |
| 11CP59-016 |  | Monta¿ ruroci¹gów – Sekcja 01 | 10.8d | 2027-04-20 | 2027-05-03 | 11CP59-015, 11CP59-014 SS+6d |  | 149d |
| 11CP59-017 |  | Próba ciœnieniowa – Sekcja 01 | 5d | 2027-05-04 | 2027-05-10 | 11CP59-016 |  | 149d |
| 11CP59-018 |  | Izolacje – Sekcja 01 | 8d | 2027-05-11 | 2027-05-20 | 11CP59-017 |  | 149d |
| 11CP59-019 |  | Malowanie i oznakowanie – Sekcja 01 | 7d | 2027-05-14 | 2027-05-24 | 11CP59-018 FF+2d |  | 149d |
|  | SEKCJA 02 | **Sekcja 02** |  | 2026-01-09 | 2027-06-03 |  |  |  |
| 11CP59-020 |  | Prefabrykacja ruroci¹gów – Sekcja 02 | 5.4d | 2026-01-09 A | 2026-01-15 A | 11CP59-012, 11CP59-015 SS+5d | 100% |  |

| ID | WBS | Task | Duration | Start | Finish | Predecessors | Complete | Total float |
| --- | --- | --- | --- | --- | --- | --- | --- | --- |
| 11CP59-021 |  | Monta¿ ruroci¹gów – Sekcja 02 | 24.8d | 2027-04-19 | 2027-05-20 | 11CP59-020, 11CP59-014 SS+5d |  | 141d |
| 11CP59-022 |  | Próba ciœnieniowa – Sekcja 02 | 5d | 2027-05-21 | 2027-05-27 | 11CP59-021 |  | 141d |
| 11CP59-023 |  | Izolacje – Sekcja 02 | 3d | 2027-05-28 | 2027-06-01 | 11CP59-022 |  | 141d |
| 11CP59-024 |  | Malowanie i oznakowanie – Sekcja 02 | 3d | 2027-06-01 | 2027-06-03 | 11CP59-023 FF+2d |  | 141d |
|  | SEKCJA 03 | **Sekcja 03** |  | 2026-01-16 | 2027-05-18 |  |  |  |
|  | PODSEKCJA | **Podsekcja 03.A** |  | 2026-01-16 | 2027-05-18 |  |  |  |
| 11CP59-027 |  | Prefabrykacja ruroci¹gów – Sekcja 03 | 11.7d | 2026-01-16 A | 2026-02-04 A | 11CP59-012, 11CP59-020 SS+5d | 100% |  |
| 11CP59-028 |  | Monta¿ ruroci¹gów – Sekcja 03 | 10.1d | 2027-04-20 | 2027-05-03 | 11CP59-027, 11CP59-014 SS+6d |  | 192.7d |
| 11CP59-029 |  | Próba ciœnieniowa – Sekcja 03 | 2d | 2027-05-04 | 2027-05-05 | 11CP59-028 |  | 192.7d |
| 11CP59-030 |  | Izolacje – Sekcja 03 | 7d | 2027-05-06 | 2027-05-14 | 11CP59-029 |  | 192.7d |
| 11CP59-031 |  | Malowanie i oznakowanie – Sekcja 03 | 4d | 2027-05-13 | 2027-05-18 | 11CP59-030 FF+2d |  | 192.7d |
|  | SEKCJA 04 | **Sekcja 04** |  | 2026-01-23 | 2027-06-08 |  |  |  |
| 11CP59-032 |  | Prefabrykacja ruroci¹gów – Sekcja 04 | 4.1d | 2026-01-23 A | 2026-01-30 A | 11CP59-012, 11CP59-027 SS+5d | 100% |  |
| 11CP59-033 |  | Monta¿ ruroci¹gów – Sekcja 04 | 22.9d | 2027-04-15 | 2027-05-17 | 11CP59-032, 11CP59-014 SS+3d |  | 177.9d |
| 11CP59-034 |  | Próba ciœnieniowa – Sekcja 04 | 5d | 2027-05-18 | 2027-05-24 | 11CP59-033 |  | 177.9d |
| 11CP59-035 |  | Izolacje – Sekcja 04 | 9d | 2027-05-25 | 2027-06-04 | 11CP59-034 |  | 177.9d |
| 11CP59-036 |  | Malowanie i oznakowanie – Sekcja 04 | 8d | 2027-05-28 | 2027-06-08 | 11CP59-035 FF+2d |  | 177.9d |
|  | SEKCJA 05 | **Sekcja 05** |  | 2026-01-26 | 2027-05-14 |  |  |  |
| 11CP59-039 |  | Prefabrykacja ruroci¹gów – Sekcja 05 | 12.4d | 2026-01-26 A | 2026-02-12 A | 11CP59-012, 11CP59-032 SS+5d | 100% |  |
| 11CP59-040 |  | Monta¿ ruroci¹gów – Sekcja 05 | 11.8d | 2027-04-15 | 2027-04-29 | 11CP59-039, 11CP59-014 SS+3d |  | 194d |
| 11CP59-041 |  | Próba ciœnieniowa – Sekcja 05 | 4d | 2027-04-30 | 2027-05-05 | 11CP59-040 |  | 194d |
| 11CP59-042 |  | Izolacje – Sekcja 05 | 5d | 2027-05-06 | 2027-05-12 | 11CP59-041 |  | 194d |
| 11CP59-043 |  | Malowanie i oznakowanie – Sekcja 05 | 4d | 2027-05-11 | 2027-05-14 | 11CP59-042 FF+2d |  | 194d |
|  | SEKCJA 06 | **Sekcja 06** |  | 2026-02-05 | 2027-05-18 |  |  |  |
|  | PODSEKCJA | **Podsekcja 06.A** |  | 2026-02-05 | 2027-05-18 |  |  |  |
| 11CP59-044 |  | Prefabrykacja ruroci¹gów – Sekcja 06 | 4d | 2026-02-05 A | 2026-02-13 A | 11CP59-012, 11CP59-039 SS+5d | 100% |  |
| 11CP59-045 |  | Monta¿ ruroci¹gów – Sekcja 06 | 9.4d | 2027-04-14 | 2027-04-26 | 11CP59-044, 11CP59-014 SS+2d |  | 192.4d |
| 11CP59-046 |  | Próba ciœnieniowa – Sekcja 06 | 6d | 2027-04-27 | 2027-05-04 | 11CP59-045 |  | 192.4d |
| 11CP59-047 |  | Izolacje – Sekcja 06 | 8d | 2027-05-05 | 2027-05-14 | 11CP59-046 |  | 192.4d |
| 11CP59-048 |  | Malowanie i oznakowanie – Sekcja 06 | 5d | 2027-05-12 | 2027-05-18 | 11CP59-047 FF+2d |  | 192.4d |
|  | SEKCJA 07 | **Sekcja 07** |  | 2026-02-10 | 2027-05-25 |  |  |  |
| 11CP59-051 |  | Prefabrykacja ruroci¹gów – Sekcja 07 | 7.2d | 2026-02-10 A | 2026-02-19 A | 11CP59-012, 11CP59-044 SS+5d | 100% |  |
| 11CP59-052 |  | Monta¿ ruroci¹gów – Sekcja 07 | 15d | 2027-04-16 | 2027-05-06 | 11CP59-051, 11CP59-014 SS+4d |  | 187.8d |
| 11CP59-053 |  | Próba ciœnieniowa – Sekcja 07 | 6d | 2027-05-07 | 2027-05-14 | 11CP59-052 |  | 187.8d |
| 11CP59-054 |  | Izolacje – Sekcja 07 | 5d | 2027-05-17 | 2027-05-21 | 11CP59-053 |  | 187.8d |
| 11CP59-055 |  | Malowanie i oznakowanie – Sekcja 07 | 2d | 2027-05-24 | 2027-05-25 | 11CP59-054 FF+2d |  | 187.8d |
|  | SEKCJA 08 | **Sekcja 08** |  | 2026-02-17 | 2027-06-15 |  |  |  |
| 11CP59-056 |  | Prefabrykacja ruroci¹gów – Sekcja 08 | 8.4d | 2026-02-17 A | 2026-02-26 A | 11CP59-012, 11CP59-051 SS+5d | 100% |  |
| 11CP59-057 |  | Monta¿ ruroci¹gów – Sekcja 08 | 22.9d | 2027-04-20 | 2027-05-20 | 11CP59-056, 11CP59-014 SS+6d |  | 172.9d |
| 11CP59-058 |  | Próba ciœnieniowa – Sekcja 08 | 5d | 2027-05-21 | 2027-05-27 | 11CP59-057 |  | 172.9d |
| 11CP59-059 |  | Izolacje – Sekcja 08 | 11d | 2027-05-28 | 2027-06-11 | 11CP59-058 |  | 172.9d |
| 11CP59-060 |  | Malowanie i oznakowanie – Sekcja 08 | 4d | 2027-06-10 | 2027-06-15 | 11CP59-059 FF+2d |  | 172.9d |
|  | SEKCJA 09 | **Sekcja 09** |  | 2026-02-23 | 2027-05-21 |  |  |  |
|  | PODSEKCJA | **Podsekcja 09.A** |  | 2026-02-23 | 2027-05-21 |  |  |  |
| 11CP59-063 |  | Prefabrykacja ruroci¹gów – Sekcja 09 | 8.8d | 2026-02-23 A | 2026-03-06 A | 11CP59-012, 11CP59-056 SS+5d | 100% |  |
| 11CP59-064 |  | Monta¿ ruroci¹gów – Sekcja 09 | 11.5d | 2027-04-21 | 2027-05-05 | 11CP59-063, 11CP59-014 SS+7d |  | 189.3d |
| 11CP59-065 |  | Próba ciœnieniowa – Sekcja 09 | 2d | 2027-05-06 | 2027-05-07 | 11CP59-064 |  | 189.3d |
| 11CP59-066 |  | Izolacje – Sekcja 09 | 8d | 2027-05-10 | 2027-05-19 | 11CP59-065 |  | 189.3d |
| 11CP59-067 |  | Malowanie i oznakowanie – Sekcja 09 | 4d | 2027-05-18 | 2027-05-21 | 11CP59-066 FF+2d |  | 189.3d |
|  | SEKCJA 10 | **Sekcja 10** |  | 2026-03-05 | 2027-05-20 |  |  |  |
| 11CP59-068 |  | Prefabrykacja ruroci¹gów – Sekcja 10 | 10d | 2026-03-05 A | 2026-03-23 A | 11CP59-012, 11CP59-063 SS+5d | 100% |  |
| 11CP59-069 |  | Monta¿ ruroci¹gów – Sekcja 10 | 14d | 2027-04-13 | 2027-04-30 | 11CP59-068, 11CP59-014 SS+1d |  | 190.8d |
| 11CP59-070 |  | Próba ciœnieniowa – Sekcja 10 | 6d | 2027-05-03 | 2027-05-10 | 11CP59-069 |  | 190.8d |
| 11CP59-071 |  | Izolacje – Sekcja 10 | 6d | 2027-05-11 | 2027-05-18 | 11CP59-070 |  | 190.8d |
| 11CP59-072 |  | Malowanie i oznakowanie – Sekcja 10 | 6d | 2027-05-13 | 2027-05-20 | 11CP59-071 FF+2d |  | 190.8d |
|  | SEKCJA 11 | **Sekcja 11** |  | 2026-03-11 | 2027-06-04 |  |  |  |
| 11CP59-075 |  | Prefabrykacja ruroci¹gów – Sekcja 11 | 8.9d | 2026-03-11 A | 2026-03-20 A | 11CP59-012, 11CP59-068 SS+5d | 100% |  |
| 11CP59-076 |  | Monta¿ ruroci¹gów – Sekcja 11 | 11.8d | 2027-04-26 | 2027-05-10 | 11CP59-075, 11CP59-014 SS+10d |  | 179d |
| 11CP59-077 |  | Próba ciœnieniowa – Sekcja 11 | 6d | 2027-05-11 | 2027-05-18 | 11CP59-076 |  | 179d |
| 11CP59-078 |  | Izolacje – Sekcja 11 | 11d | 2027-05-19 | 2027-06-02 | 11CP59-077 |  | 179d |
| 11CP59-079 |  | Malowanie i oznakowanie – Sekcja 11 | 4d | 2027-06-01 | 2027-06-04 | 11CP59-078 FF+2d |  | 179d |
|  | SEKCJA 12 | **Sekcja 12** |  | 2026-03-17 | 2027-05-24 |  |  |  |
|  | PODSEKCJA | **Podsekcja 12.A** |  | 2026-03-17 | 2027-05-24 |  |  |  |
| 11CP59-080 |  | Prefabrykacja ruroci¹gów – Sekcja 12 | 4.8d | 2026-03-17 A | 2026-03-25 A | 11CP59-012, 11CP59-075 SS+5d | 100% |  |
| 11CP59-081 |  | Monta¿ ruroci¹gów – Sekcja 12 | 10.7d | 2027-04-19 | 2027-04-30 | 11CP59-080, 11CP59-014 SS+5d |  | 188.1d |
| 11CP59-082 |  | Próba ciœnieniowa – Sekcja 12 | 2d | 2027-05-03 | 2027-05-04 | 11CP59-081 |  | 188.1d |
| 11CP59-083 |  | Izolacje – Sekcja 12 | 12d | 2027-05-05 | 2027-05-20 | 11CP59-082 |  | 188.1d |
| 11CP59-084 |  | Malowanie i oznakowanie – Sekcja 12 | 4d | 2027-05-19 | 2027-05-24 | 11CP59-083 FF+2d |  | 188.1d |
|  | SEKCJA 13 | **Sekcja 13** |  | 2026-03-27 | 2027-06-08 |  |  |  |
| 11CP59-087 |  | Prefabrykacja ruroci¹gów – Sekcja 13 | 12.7d | 2026-03-27 A | 2026-04-14 A | 11CP59-012, 11CP59-080 SS+5d | 100% |  |

| ID | WBS | Task | Duration | Start | Finish | Predecessors | Complete | Total float |
| --- | --- | --- | --- | --- | --- | --- | --- | --- |
| 11CP59-088 |  | Monta¿ ruroci¹gów – Sekcja 13 | 21.4d | 2027-04-22 | 2027-05-20 | 11CP59-087, 11CP59-014 SS+8d |  | 177.4d |
| 11CP59-089 |  | Próba ciœnieniowa – Sekcja 13 | 6d | 2027-05-21 | 2027-05-28 | 11CP59-088 |  | 177.4d |
| 11CP59-090 |  | Izolacje – Sekcja 13 | 5d | 2027-05-31 | 2027-06-04 | 11CP59-089 |  | 177.4d |
| 11CP59-091 |  | Malowanie i oznakowanie – Sekcja 13 | 5d | 2027-06-02 | 2027-06-08 | 11CP59-090 FF+2d |  | 177.4d |
|  | SEKCJA 14 | **Sekcja 14** |  | 2026-04-01 | 2027-05-24 |  |  |  |
| 11CP59-092 |  | Prefabrykacja ruroci¹gów – Sekcja 14 | 6.6d | 2026-04-01 A | 2026-04-13 A | 11CP59-012, 11CP59-087 SS+5d | 100% |  |
| 11CP59-093 |  | Monta¿ ruroci¹gów – Sekcja 14 | 9.6d | 2027-04-22 | 2027-05-04 | 11CP59-092, 11CP59-014 SS+8d |  | 188.2d |
| 11CP59-094 |  | Próba ciœnieniowa – Sekcja 14 | 5d | 2027-05-05 | 2027-05-11 | 11CP59-093 |  | 188.2d |
| 11CP59-095 |  | Izolacje – Sekcja 14 | 7d | 2027-05-12 | 2027-05-20 | 11CP59-094 |  | 188.2d |
| 11CP59-096 |  | Malowanie i oznakowanie – Sekcja 14 | 4d | 2027-05-19 | 2027-05-24 | 11CP59-095 FF+2d |  | 188.2d |
|  | SEKCJA 15 | **Sekcja 15** |  | 2026-04-06 | 2027-05-21 |  |  |  |
|  | PODSEKCJA | **Podsekcja 15.A** |  | 2026-04-06 | 2027-05-21 |  |  |  |
| 11CP59-099 |  | Prefabrykacja ruroci¹gów – Sekcja 15 | 15d | 2026-04-06 A | 2026-04-29 A | 11CP59-012, 11CP59-092 SS+5d | 100% |  |
| 11CP59-100 |  | Monta¿ ruroci¹gów – Sekcja 15 | 6.4d | 2027-04-23 | 2027-04-30 | 11CP59-099, 11CP59-014 SS+9d |  | 189.4d |
| 11CP59-101 |  | Próba ciœnieniowa – Sekcja 15 | 4d | 2027-05-03 | 2027-05-06 | 11CP59-100 |  | 189.4d |
| 11CP59-102 |  | Izolacje – Sekcja 15 | 9d | 2027-05-07 | 2027-05-19 | 11CP59-101 |  | 189.4d |
| 11CP59-103 |  | Malowanie i oznakowanie – Sekcja 15 | 5d | 2027-05-17 | 2027-05-21 | 11CP59-102 FF+2d |  | 189.4d |
|  | SEKCJA 16 | **Sekcja 16** |  | 2026-04-13 | 2027-05-24 |  |  |  |
| 11CP59-104 |  | Prefabrykacja ruroci¹gów – Sekcja 16 | 5d | 2026-04-13 A | 2026-04-17 A | 11CP59-012, 11CP59-099 SS+5d | 100% |  |
| 11CP59-105 |  | Monta¿ ruroci¹gów – Sekcja 16 | 17.9d | 2027-04-13 | 2027-05-06 | 11CP59-104, 11CP59-014 SS+1d |  | 188.9d |
| 11CP59-106 |  | Próba ciœnieniowa – Sekcja 16 | 2d | 2027-05-07 | 2027-05-10 | 11CP59-105 |  | 188.9d |
| 11CP59-107 |  | Izolacje – Sekcja 16 | 8d | 2027-05-11 | 2027-05-20 | 11CP59-106 |  | 188.9d |
| 11CP59-108 |  | Malowanie i oznakowanie – Sekcja 16 | 5d | 2027-05-18 | 2027-05-24 | 11CP59-107 FF+2d |  | 188.9d |
|  | SEKCJA 17 | **Sekcja 17** |  | 2026-04-20 | 2027-06-07 |  |  |  |
| 11CP59-111 |  | Prefabrykacja ruroci¹gów – Sekcja 17 | 11.9d | 2026-04-20 A | 2026-05-07 A | 11CP59-012, 11CP59-104 SS+5d | 100% |  |
| 11CP59-112 |  | Monta¿ ruroci¹gów – Sekcja 17 | 16.9d | 2027-04-23 | 2027-05-17 | 11CP59-111, 11CP59-014 SS+9d |  | 178.9d |
| 11CP59-113 |  | Próba ciœnieniowa – Sekcja 17 | 4d | 2027-05-18 | 2027-05-21 | 11CP59-112 |  | 178.9d |
| 11CP59-114 |  | Izolacje – Sekcja 17 | 9d | 2027-05-24 | 2027-06-03 | 11CP59-113 |  | 178.9d |
| 11CP59-115 |  | Malowanie i oznakowanie – Sekcja 17 | 5d | 2027-06-01 | 2027-06-07 | 11CP59-114 FF+2d |  | 178.9d |
|  | SEKCJA 18 | **Sekcja 18** |  | 2026-05-01 | 2027-06-01 |  |  |  |
|  | PODSEKCJA | **Podsekcja 18.A** |  | 2026-05-01 | 2027-06-01 |  |  |  |
| 11CP59-116 |  | Prefabrykacja ruroci¹gów – Sekcja 18 | 4.3d | 2026-05-01 A | 2026-05-08 A | 11CP59-012, 11CP59-111 SS+5d | 100% |  |
| 11CP59-117 |  | Monta¿ ruroci¹gów – Sekcja 18 | 15.5d | 2027-04-26 | 2027-05-14 | 11CP59-116, 11CP59-014 SS+10d |  | 182.3d |
| 11CP59-118 |  | Próba ciœnieniowa – Sekcja 18 | 2d | 2027-05-17 | 2027-05-18 | 11CP59-117 |  | 182.3d |
| 11CP59-119 |  | Izolacje – Sekcja 18 | 8d | 2027-05-19 | 2027-05-28 | 11CP59-118 |  | 182.3d |
| 11CP59-120 |  | Malowanie i oznakowanie – Sekcja 18 | 3d | 2027-05-28 | 2027-06-01 | 11CP59-119 FF+2d |  | 182.3d |
|  | SEKCJA 19 | **Sekcja 19** |  | 2026-05-04 | 2027-05-18 |  |  |  |
| 11CP59-123 |  | Prefabrykacja ruroci¹gów – Sekcja 19 | 8d | 2026-05-04 A | 2026-05-18 A | 11CP59-012, 11CP59-116 SS+5d | 100% |  |
| 11CP59-124 |  | Monta¿ ruroci¹gów – Sekcja 19 | 8.8d | 2027-04-16 | 2027-04-27 | 11CP59-123, 11CP59-014 SS+4d |  | 192d |
| 11CP59-125 |  | Próba ciœnieniowa – Sekcja 19 | 2d | 2027-04-28 | 2027-04-29 | 11CP59-124 |  | 192d |
| 11CP59-126 |  | Izolacje – Sekcja 19 | 11d | 2027-04-30 | 2027-05-14 | 11CP59-125 |  | 192d |
| 11CP59-127 |  | Malowanie i oznakowanie – Sekcja 19 | 8d | 2027-05-07 | 2027-05-18 | 11CP59-126 FF+2d |  | 192d |
|  | SEKCJA 20 | **Sekcja 20** |  | 2026-05-11 | 2027-05-26 |  |  |  |
| 11CP59-128 |  | Prefabrykacja ruroci¹gów – Sekcja 20 | 11.4d | 2026-05-11 A | 2026-05-25 A | 11CP59-012, 11CP59-123 SS+5d | 100% |  |
| 11CP59-129 |  | Monta¿ ruroci¹gów – Sekcja 20 | 19.1d | 2027-04-12 | 2027-05-06 | 11CP59-128, 11CP59-014 SS |  | 147.7d |
| 11CP59-130 |  | Próba ciœnieniowa – Sekcja 20 | 3d | 2027-05-07 | 2027-05-11 | 11CP59-129 |  | 147.7d |
| 11CP59-131 |  | Izolacje – Sekcja 20 | 9d | 2027-05-12 | 2027-05-24 | 11CP59-130 |  | 147.7d |
| 11CP59-132 |  | Malowanie i oznakowanie – Sekcja 20 | 8d | 2027-05-17 | 2027-05-26 | 11CP59-131 FF+2d |  | 147.7d |
|  | SEKCJA 21 | **Sekcja 21** |  | 2026-05-18 | 2027-05-20 |  |  |  |
|  | PODSEKCJA | **Podsekcja 21.A** |  | 2026-05-18 | 2027-05-20 |  |  |  |
| 11CP59-135 |  | Prefabrykacja ruroci¹gów – Sekcja 21 | 12.1d | 2026-05-18 A | 2026-06-04 A | 11CP59-012, 11CP59-128 SS+5d | 100% |  |
| 11CP59-136 |  | Monta¿ ruroci¹gów – Sekcja 21 | 12.8d | 2027-04-13 | 2027-04-28 | 11CP59-135, 11CP59-014 SS+1d |  | 151d |
| 11CP59-137 |  | Próba ciœnieniowa – Sekcja 21 | 3d | 2027-04-29 | 2027-05-03 | 11CP59-136 |  | 151d |
| 11CP59-138 |  | Izolacje – Sekcja 21 | 11d | 2027-05-04 | 2027-05-18 | 11CP59-137 |  | 151d |
| 11CP59-139 |  | Malowanie i oznakowanie – Sekcja 21 | 4d | 2027-05-17 | 2027-05-20 | 11CP59-138 FF+2d |  | 151d |
|  | PROJ | **Projektowanie** |  | 2025-03-07 | 2025-10-08 |  |  |  |
|  | DOKUMENTAC | **Dokumentacja** |  | 2025-03-07 | 2025-10-08 |  |  |  |
| 11CP59-001 |  | Projekt wykonawczy – Pompy wody zasilaj¹cej | 114d | 2025-03-07 A | 2025-08-14 A |  | 100% |  |
| 11CP59-002 |  | Uzgodnienie dokumentacji z Inwestorem | 28d | 2025-08-13 A | 2025-09-22 A | 11CP59-001 | 100% |  |
| 11CP59-003 |  | Zatwierdzenie dokumentacji do realizacji | 12d | 2025-09-23 A | 2025-10-08 A | 11CP59-002 | 100% |  |
| 11CP59-004 |  | KM: Dokumentacja zatwierdzona – Pompy wody zasilaj¹cej | 0d | 2025-10-06 A | 2025-10-06 | 11CP59-003 | 100% |  |
|  | ROZR | **Rozruch** |  | 2027-06-11 | 2027-07-22 |  |  |  |
|  | ROZRUCH | **Rozruch** |  | 2027-06-11 | 2027-07-22 |  |  |  |
| 11CP59-142 |  | Przegl¹d gotowoœci do rozruchu | 5d | 2027-06-11 | 2027-06-17 | 11CP59-141, 11CP59-019, 11CP59-024, 11CP59-026 |  | 136.8d |
| 11CP59-143 |  | Rozruch na zimno | 9d | 2027-06-18 | 2027-06-30 | 11CP59-142 |  | 136.8d |
| 11CP59-144 |  | Rozruch na gor¹co / próby ruchowe | 15d | 2027-07-01 | 2027-07-21 | 11CP59-143 |  | 136.8d |
| 11CP59-145 |  | KM: Odbiór koñcowy – Pompy wody zasilaj¹cej | 0d | 2027-07-22 | 2027-07-22 | 11CP59-144 |  | 136.8d |
|  | ZAKU | **Zakupy** |  | 2025-04-07 | 2027-04-12 |  |  |  |
|  | DOSTAWY | **Dostawy** |  | 2025-10-22 | 2027-04-12 |  |  |  |
| 11CP59-008 |  | Produkcja u dostawcy | 254d | 2025-10-22 A | 2027-02-02 | 11CP59-007 | 65% | 217.9d |

| ID | WBS | Task | Duration | Start | Finish | Predecessors | Complete | Total float |
| --- | --- | --- | --- | --- | --- | --- | --- | --- |
| 11CP59-009 |  | Testy FAT | 8d | 2027-02-03 | 2027-02-12 | 11CP59-008 |  | 136.8d |
| 11CP59-010 |  | Transport i dostawa na plac budowy | 40d | 2027-02-15 | 2027-04-09 | 11CP59-009 |  | 136.8d |
| 11CP59-011 |  | KM: Dostawa na budowê – Pompy wody zasilaj¹cej | 0d | 2027-04-12 | 2027-04-12 | 11CP59-010 |  | 136.8d |
|  | ZAMÓWIENIA | **Zamówienia** |  | 2025-04-07 | 2025-10-20 |  |  |  |
| 11CP59-005 |  | Zapytanie ofertowe | 29d | 2025-04-07 A | 2025-05-15 A | 11CP59-001 SS+20d | 100% |  |
| 11CP59-006 |  | Analiza i wybór ofert | 10d | 2025-05-13 A | 2025-05-29 A | 11CP59-005 | 100% |  |
| 11CP59-007 |  | Zawarcie umowy / zamówienie | 9d | 2025-10-07 A | 2025-10-20 A | 11CP59-006, 11CP59-004 SS, 10TM34-004 FS+6d | 100% |  |
|  | 18CX52 | **18CX52 – Bêben wysokiego ciœnienia** |  | 2025-04-04 | 2026-10-19 |  |  |  |
|  | BUDO | **Budowa** |  | 2025-09-19 | 2026-10-19 |  |  |  |
|  | AKPIA | **AKPiA** |  | 2026-06-19 | 2026-07-22 |  |  |  |
| 18CX52-128 |  | Monta¿ uk³adów AKPiA | 23d | 2026-06-19 A | 2026-07-22 A | 18CX52-014 SS+5d | 100% |  |
|  | ELEKTRYKA | **Elektryka** |  | 2026-06-23 | 2026-10-12 |  |  |  |
| 18CX52-038 |  | Pod³¹czenia i pomiary – trasa 04 | 9d | 2026-06-23 A | 2026-07-07 A | 18CX52-037 FF | 100% |  |
| 18CX52-037 |  | Uk³adanie kabli – trasa 04 | 7d | 2026-06-24 A | 2026-07-03 A | 18CX52-014 SS+10d | 100% |  |
| 18CX52-049 |  | Uk³adanie kabli – trasa 06 | 18d | 2026-06-25 A | 2026-07-21 A | 18CX52-014 SS+10d | 100% |  |
| 18CX52-085 |  | Uk³adanie kabli – trasa 12 | 13d | 2026-06-25 A | 2026-07-16 A | 18CX52-014 SS+10d | 100% |  |
| 18CX52-098 |  | Pod³¹czenia i pomiary – trasa 14 | 10d | 2026-06-25 A | 2026-07-13 A | 18CX52-097 FF | 100% |  |
| 18CX52-025 |  | Uk³adanie kabli – trasa 02 | 17d | 2026-06-26 A | 2026-10-09 | 18CX52-014 SS+10d | 51% | 362.9d |
| 18CX52-109 |  | Uk³adanie kabli – trasa 16 | 18d | 2026-06-26 A | 2026-07-24 A | 18CX52-014 SS+10d | 100% |  |
| 18CX52-061 |  | Uk³adanie kabli – trasa 08 | 14d | 2026-06-29 A | 2026-07-21 A | 18CX52-014 SS+10d | 100% |  |
| 18CX52-073 |  | Uk³adanie kabli – trasa 10 | 9d | 2026-06-30 A | 2026-07-13 A | 18CX52-014 SS+10d | 100% |  |
| 18CX52-086 |  | Pod³¹czenia i pomiary – trasa 12 | 10d | 2026-06-30 A | 2026-07-15 A | 18CX52-085 FF | 100% |  |
| 18CX52-121 |  | Uk³adanie kabli – trasa 18 | 20d | 2026-06-30 A | 2026-07-27 A | 18CX52-014 SS+10d | 100% |  |
| 18CX52-110 |  | Pod³¹czenia i pomiary – trasa 16 | 10d | 2026-07-06 A | 2026-07-21 A | 18CX52-109 FF | 100% |  |
| 18CX52-074 |  | Pod³¹czenia i pomiary – trasa 10 | 3d | 2026-07-07 A | 2026-07-13 A | 18CX52-073 FF | 100% |  |
| 18CX52-122 |  | Pod³¹czenia i pomiary – trasa 18 | 10d | 2026-07-08 A | 2026-07-24 A | 18CX52-121 FF | 100% |  |
| 18CX52-050 |  | Pod³¹czenia i pomiary – trasa 06 | 6d | 2026-07-13 A | 2026-07-23 A | 18CX52-049 FF | 100% |  |
| 18CX52-062 |  | Pod³¹czenia i pomiary – trasa 08 | 3d | 2026-07-13 A | 2026-07-20 A | 18CX52-061 FF | 100% |  |
| 18CX52-026 |  | Pod³¹czenia i pomiary – trasa 02 | 4d | 2026-07-14 A | 2026-07-20 A | 18CX52-025 FF | 100% |  |
| 18CX52-097 |  | Uk³adanie kabli – trasa 14 | 9d | 2026-09-30 | 2026-10-12 | 18CX52-014 SS+10d |  | 348.9d |
|  | MONTA¯ | **Monta¿** |  | 2025-12-02 | 2026-08-13 |  |  |  |
| 18CX52-013 |  | Monta¿ konstrukcji stalowych | 26d | 2025-12-02 A | 2026-01-07 A | 18CX52-012 | 100% |  |
| 18CX52-014 |  | Monta¿ urz¹dzeñ g³ównych | 35d | 2026-06-16 A | 2026-08-04 A | 18CX52-013, 18CX52-011 | 100% |  |
| 18CX52-129 |  | KM: Zakoñczenie monta¿u – Bêben wysokiego ciœnienia | 0d | 2026-08-13 A | 2026-08-13 | 18CX52-120, 18CX52-122, 18CX52-127, 18CX52-128, 18CX52-014 | 100% |  |
|  | ROBOTY BUD | **Roboty budowlane** |  | 2025-09-19 | 2025-12-04 |  |  |  |
| 18CX52-012 |  | Fundamenty i roboty ziemne | 54d | 2025-09-19 A | 2025-12-04 A | 18CX52-007 FS+10d | 100% |  |
|  | RUROCI¥GI | **Ruroci¹gi** |  | 2025-12-03 | 2026-10-19 |  |  |  |
|  | SEKCJA 01 | **Sekcja 01** |  | 2025-12-03 | 2026-07-10 |  |  |  |
| 18CX52-015 |  | Prefabrykacja ruroci¹gów – Sekcja 01 | 9.5d | 2025-12-03 A | 2025-12-16 A | 18CX52-012 | 100% |  |
| 18CX52-016 |  | Monta¿ ruroci¹gów – Sekcja 01 | 8.3d | 2026-06-16 A | 2026-06-30 A | 18CX52-015, 18CX52-014 SS+1d | 100% |  |
| 18CX52-017 |  | Próba ciœnieniowa – Sekcja 01 | 2d | 2026-06-25 A | 2026-06-30 A | 18CX52-016 | 100% |  |
| 18CX52-018 |  | Izolacje – Sekcja 01 | 6d | 2026-07-01 A | 2026-07-08 A | 18CX52-017 | 100% |  |
| 18CX52-019 |  | Malowanie i oznakowanie – Sekcja 01 | 2d | 2026-07-06 A | 2026-07-10 A | 18CX52-018 FF+2d | 100% |  |
|  | SEKCJA 02 | **Sekcja 02** |  | 2025-12-10 | 2026-08-13 |  |  |  |
| 18CX52-020 |  | Prefabrykacja ruroci¹gów – Sekcja 02 | 9.1d | 2025-12-10 A | 2025-12-23 A | 18CX52-012, 18CX52-015 SS+5d | 100% |  |
| 18CX52-021 |  | Monta¿ ruroci¹gów – Sekcja 02 | 23.5d | 2026-06-23 A | 2026-07-24 A | 18CX52-020, 18CX52-014 SS+8d | 100% |  |
| 18CX52-022 |  | Próba ciœnieniowa – Sekcja 02 | 3d | 2026-07-24 A | 2026-07-30 A | 18CX52-021 | 100% |  |
| 18CX52-023 |  | Izolacje – Sekcja 02 | 8d | 2026-07-31 A | 2026-08-13 A | 18CX52-022 | 100% |  |
| 18CX52-024 |  | Malowanie i oznakowanie – Sekcja 02 | 2d | 2026-08-11 A | 2026-08-12 A | 18CX52-023 FF+2d | 100% |  |
|  | SEKCJA 03 | **Sekcja 03** |  | 2025-12-15 | 2026-08-06 |  |  |  |
|  | PODSEKCJA | **Podsekcja 03.A** |  | 2025-12-15 | 2026-08-06 |  |  |  |
| 18CX52-027 |  | Prefabrykacja ruroci¹gów – Sekcja 03 | 14.8d | 2025-12-15 A | 2026-01-05 A | 18CX52-012, 18CX52-020 SS+5d | 100% |  |
| 18CX52-028 |  | Monta¿ ruroci¹gów – Sekcja 03 | 19.2d | 2026-06-29 A | 2026-07-23 A | 18CX52-027, 18CX52-014 SS+9d | 100% |  |
| 18CX52-029 |  | Próba ciœnieniowa – Sekcja 03 | 6d | 2026-07-23 A | 2026-08-04 A | 18CX52-028 | 100% |  |
| 18CX52-030 |  | Izolacje – Sekcja 03 | 3d | 2026-07-29 A | 2026-08-03 A | 18CX52-029 | 100% |  |
| 18CX52-031 |  | Malowanie i oznakowanie – Sekcja 03 | 4d | 2026-07-31 A | 2026-08-06 A | 18CX52-030 FF+2d | 100% |  |
|  | SEKCJA 04 | **Sekcja 04** |  | 2025-12-24 | 2026-07-15 |  |  |  |
| 18CX52-032 |  | Prefabrykacja ruroci¹gów – Sekcja 04 | 12.3d | 2025-12-24 A | 2026-01-08 A | 18CX52-012, 18CX52-027 SS+5d | 100% |  |
| 18CX52-033 |  | Monta¿ ruroci¹gów – Sekcja 04 | 8.9d | 2026-06-18 A | 2026-06-29 A | 18CX52-032, 18CX52-014 SS+2d | 100% |  |
| 18CX52-034 |  | Próba ciœnieniowa – Sekcja 04 | 6d | 2026-06-30 A | 2026-07-10 A | 18CX52-033 | 100% |  |
| 18CX52-035 |  | Izolacje – Sekcja 04 | 4d | 2026-07-02 A | 2026-07-10 A | 18CX52-034 | 100% |  |
| 18CX52-036 |  | Malowanie i oznakowanie – Sekcja 04 | 3d | 2026-07-13 A | 2026-07-15 A | 18CX52-035 FF+2d | 100% |  |
|  | SEKCJA 05 | **Sekcja 05** |  | 2025-12-29 | 2026-07-23 |  |  |  |
| 18CX52-039 |  | Prefabrykacja ruroci¹gów – Sekcja 05 | 7.8d | 2025-12-29 A | 2026-01-09 A | 18CX52-012, 18CX52-032 SS+5d | 100% |  |
| 18CX52-040 |  | Monta¿ ruroci¹gów – Sekcja 05 | 7.7d | 2026-06-19 A | 2026-07-01 A | 18CX52-039, 18CX52-014 SS+4d | 100% |  |
| 18CX52-041 |  | Próba ciœnieniowa – Sekcja 05 | 3d | 2026-07-01 A | 2026-07-03 A | 18CX52-040 | 100% |  |
| 18CX52-042 |  | Izolacje – Sekcja 05 | 9d | 2026-07-03 A | 2026-07-15 A | 18CX52-041 | 100% |  |
| 18CX52-043 |  | Malowanie i oznakowanie – Sekcja 05 | 4d | 2026-07-15 A | 2026-07-23 A | 18CX52-042 FF+2d | 100% |  |
|  | SEKCJA 06 | **Sekcja 06** |  | 2026-01-02 | 2026-10-01 |  |  |  |
|  | PODSEKCJA | **Podsekcja 06.A** |  | 2026-01-02 | 2026-10-01 |  |  |  |

| ID | WBS | Task | Duration | Start | Finish | Predecessors | Complete | Total float |
| --- | --- | --- | --- | --- | --- | --- | --- | --- |
| 18CX52-044 |  | Prefabrykacja ruroci¹gów – Sekcja 06 | 10.8d | 2026-01-02 A | 2026-01-19 A | 18CX52-012, 18CX52-039 SS+5d | 100% |  |
| 18CX52-045 |  | Monta¿ ruroci¹gów – Sekcja 06 | 21.6d | 2026-06-22 A | 2026-07-22 A | 18CX52-044, 18CX52-014 SS+4d | 100% |  |
| 18CX52-046 |  | Próba ciœnieniowa – Sekcja 06 | 5d | 2026-07-20 A | 2026-10-01 | 18CX52-045 | 56% | 393.3d |
| 18CX52-047 |  | Izolacje – Sekcja 06 | 9d | 2026-07-23 A | 2026-08-07 A | 18CX52-046 | 100% |  |
| 18CX52-048 |  | Malowanie i oznakowanie – Sekcja 06 | 3d | 2026-08-03 A | 2026-08-07 A | 18CX52-047 FF+2d | 100% |  |
|  | SEKCJA 07 | **Sekcja 07** |  | 2026-01-15 | 2026-07-30 |  |  |  |
| 18CX52-051 |  | Prefabrykacja ruroci¹gów – Sekcja 07 | 10.2d | 2026-01-15 A | 2026-01-30 A | 18CX52-012, 18CX52-044 SS+5d | 100% |  |
| 18CX52-052 |  | Monta¿ ruroci¹gów – Sekcja 07 | 9.6d | 2026-06-25 A | 2026-07-09 A | 18CX52-051, 18CX52-014 SS+7d | 100% |  |
| 18CX52-053 |  | Próba ciœnieniowa – Sekcja 07 | 4d | 2026-07-02 A | 2026-07-09 A | 18CX52-052 | 100% |  |
| 18CX52-054 |  | Izolacje – Sekcja 07 | 12d | 2026-07-13 A | 2026-07-30 A | 18CX52-053 | 100% |  |
| 18CX52-055 |  | Malowanie i oznakowanie – Sekcja 07 | 3d | 2026-07-27 A | 2026-07-29 A | 18CX52-054 FF+2d | 100% |  |
|  | SEKCJA 08 | **Sekcja 08** |  | 2026-01-22 | 2026-09-30 |  |  |  |
| 18CX52-056 |  | Prefabrykacja ruroci¹gów – Sekcja 08 | 3.5d | 2026-01-22 A | 2026-01-27 A | 18CX52-012, 18CX52-051 SS+5d | 100% |  |
| 18CX52-057 |  | Monta¿ ruroci¹gów – Sekcja 08 | 12.4d | 2026-06-16 A | 2026-07-03 A | 18CX52-056, 18CX52-014 SS+2d | 100% |  |
| 18CX52-058 |  | Próba ciœnieniowa – Sekcja 08 | 3d | 2026-07-03 A | 2026-07-10 A | 18CX52-057 | 100% |  |
| 18CX52-059 |  | Izolacje – Sekcja 08 | 4d | 2026-07-08 A | 2026-09-30 | 18CX52-058 | 52% | 411.5d |
| 18CX52-060 |  | Malowanie i oznakowanie – Sekcja 08 | 3d | 2026-07-13 A | 2026-07-17 A | 18CX52-059 FF+2d | 100% |  |
|  | SEKCJA 09 | **Sekcja 09** |  | 2026-01-26 | 2026-09-30 |  |  |  |
|  | PODSEKCJA | **Podsekcja 09.A** |  | 2026-01-26 | 2026-09-30 |  |  |  |
| 18CX52-063 |  | Prefabrykacja ruroci¹gów – Sekcja 09 | 7.2d | 2026-01-26 A | 2026-09-30 | 18CX52-012, 18CX52-056 SS+5d | 85% | 406.2d |
| 18CX52-064 |  | Monta¿ ruroci¹gów – Sekcja 09 | 23.1d | 2026-06-22 A | 2026-07-24 A | 18CX52-063, 18CX52-014 SS+6d | 100% |  |
| 18CX52-065 |  | Próba ciœnieniowa – Sekcja 09 | 3d | 2026-07-22 A | 2026-07-27 A | 18CX52-064 | 100% |  |
| 18CX52-067 |  | Malowanie i oznakowanie – Sekcja 09 | 7d | 2026-07-24 A | 2026-08-05 A | 18CX52-066 FF+2d | 100% |  |
| 18CX52-066 |  | Izolacje – Sekcja 09 | 3d | 2026-07-27 A | 2026-07-29 A | 18CX52-065 | 100% |  |
|  | SEKCJA 10 | **Sekcja 10** |  | 2026-02-04 | 2026-08-12 |  |  |  |
| 18CX52-068 |  | Prefabrykacja ruroci¹gów – Sekcja 10 | 9.7d | 2026-02-04 A | 2026-02-19 A | 18CX52-012, 18CX52-063 SS+5d | 100% |  |
| 18CX52-069 |  | Monta¿ ruroci¹gów – Sekcja 10 | 20.1d | 2026-06-17 A | 2026-07-14 A | 18CX52-068, 18CX52-014 SS+3d | 100% |  |
| 18CX52-070 |  | Próba ciœnieniowa – Sekcja 10 | 6d | 2026-07-17 A | 2026-07-27 A | 18CX52-069 | 100% |  |
| 18CX52-071 |  | Izolacje – Sekcja 10 | 12d | 2026-07-21 A | 2026-08-10 A | 18CX52-070 | 100% |  |
| 18CX52-072 |  | Malowanie i oznakowanie – Sekcja 10 | 6d | 2026-08-04 A | 2026-08-12 A | 18CX52-071 FF+2d | 100% |  |
|  | SEKCJA 11 | **Sekcja 11** |  | 2026-02-12 | 2026-07-07 |  |  |  |
| 18CX52-075 |  | Prefabrykacja ruroci¹gów – Sekcja 11 | 6.9d | 2026-02-12 A | 2026-02-20 A | 18CX52-012, 18CX52-068 SS+5d | 100% |  |
| 18CX52-076 |  | Monta¿ ruroci¹gów – Sekcja 11 | 7.6d | 2026-06-17 A | 2026-06-30 A | 18CX52-075, 18CX52-014 SS+4d | 100% |  |
| 18CX52-077 |  | Próba ciœnieniowa – Sekcja 11 | 2d | 2026-06-26 A | 2026-07-02 A | 18CX52-076 | 100% |  |
| 18CX52-079 |  | Malowanie i oznakowanie – Sekcja 11 | 7d | 2026-06-26 A | 2026-07-07 A | 18CX52-078 FF+2d | 100% |  |
| 18CX52-078 |  | Izolacje – Sekcja 11 | 3d | 2026-06-29 A | 2026-07-03 A | 18CX52-077 | 100% |  |
|  | SEKCJA 12 | **Sekcja 12** |  | 2026-02-13 | 2026-10-05 |  |  |  |
|  | PODSEKCJA | **Podsekcja 12.A** |  | 2026-02-13 | 2026-10-05 |  |  |  |
| 18CX52-080 |  | Prefabrykacja ruroci¹gów – Sekcja 12 | 11.5d | 2026-02-13 A | 2026-03-02 A | 18CX52-012, 18CX52-075 SS+5d | 100% |  |
| 18CX52-081 |  | Monta¿ ruroci¹gów – Sekcja 12 | 17.1d | 2026-06-19 A | 2026-07-15 A | 18CX52-080, 18CX52-014 SS+4d | 100% |  |
| 18CX52-082 |  | Próba ciœnieniowa – Sekcja 12 | 4d | 2026-07-09 A | 2026-07-15 A | 18CX52-081 | 100% |  |
| 18CX52-084 |  | Malowanie i oznakowanie – Sekcja 12 | 7d | 2026-07-20 A | 2026-07-31 A | 18CX52-083 FF+2d | 100% |  |
| 18CX52-083 |  | Izolacje – Sekcja 12 | 8d | 2026-07-21 A | 2026-10-05 | 18CX52-082 | 50% | 398.8d |
|  | SEKCJA 13 | **Sekcja 13** |  | 2026-02-25 | 2026-08-19 |  |  |  |
| 18CX52-087 |  | Prefabrykacja ruroci¹gów – Sekcja 13 | 14.6d | 2026-02-25 A | 2026-03-19 A | 18CX52-012, 18CX52-080 SS+5d | 100% |  |
| 18CX52-088 |  | Monta¿ ruroci¹gów – Sekcja 13 | 24.7d | 2026-06-30 A | 2026-07-31 A | 18CX52-087, 18CX52-014 SS+10d | 100% |  |
| 18CX52-089 |  | Próba ciœnieniowa – Sekcja 13 | 4d | 2026-07-29 A | 2026-08-03 A | 18CX52-088 | 100% |  |
| 18CX52-090 |  | Izolacje – Sekcja 13 | 7d | 2026-08-06 A | 2026-08-17 A | 18CX52-089 | 100% |  |
| 18CX52-091 |  | Malowanie i oznakowanie – Sekcja 13 | 4d | 2026-08-12 A | 2026-08-19 A | 18CX52-090 FF+2d | 100% |  |
|  | SEKCJA 14 | **Sekcja 14** |  | 2026-03-03 | 2026-08-07 |  |  |  |
| 18CX52-092 |  | Prefabrykacja ruroci¹gów – Sekcja 14 | 12d | 2026-03-03 A | 2026-03-23 A | 18CX52-012, 18CX52-087 SS+5d | 100% |  |
| 18CX52-093 |  | Monta¿ ruroci¹gów – Sekcja 14 | 18.2d | 2026-06-22 A | 2026-07-15 A | 18CX52-092, 18CX52-014 SS+4d | 100% |  |
| 18CX52-094 |  | Próba ciœnieniowa – Sekcja 14 | 5d | 2026-07-13 A | 2026-07-21 A | 18CX52-093 | 100% |  |
| 18CX52-095 |  | Izolacje – Sekcja 14 | 9d | 2026-07-23 A | 2026-08-07 A | 18CX52-094 | 100% |  |
| 18CX52-096 |  | Malowanie i oznakowanie – Sekcja 14 | 6d | 2026-07-29 A | 2026-08-05 A | 18CX52-095 FF+2d | 100% |  |
|  | SEKCJA 15 | **Sekcja 15** |  | 2026-03-09 | 2026-07-24 |  |  |  |
|  | PODSEKCJA | **Podsekcja 15.A** |  | 2026-03-09 | 2026-07-24 |  |  |  |
| 18CX52-099 |  | Prefabrykacja ruroci¹gów – Sekcja 15 | 10.5d | 2026-03-09 A | 2026-03-25 A | 18CX52-012, 18CX52-092 SS+5d | 100% |  |
| 18CX52-100 |  | Monta¿ ruroci¹gów – Sekcja 15 | 16.4d | 2026-06-16 A | 2026-07-08 A | 18CX52-099, 18CX52-014 SS+2d | 100% |  |
| 18CX52-101 |  | Próba ciœnieniowa – Sekcja 15 | 3d | 2026-07-10 A | 2026-07-14 A | 18CX52-100 | 100% |  |
| 18CX52-102 |  | Izolacje – Sekcja 15 | 8d | 2026-07-14 A | 2026-07-24 A | 18CX52-101 | 100% |  |
| 18CX52-103 |  | Malowanie i oznakowanie – Sekcja 15 | 8d | 2026-07-14 A | 2026-07-23 A | 18CX52-102 FF+2d | 100% |  |
|  | SEKCJA 16 | **Sekcja 16** |  | 2026-06-17 | 2026-10-19 |  |  |  |
| 18CX52-105 |  | Monta¿ ruroci¹gów – Sekcja 16 | 23.6d | 2026-06-17 A | 2026-07-17 A | 18CX52-104, 18CX52-014 SS+5d | 100% |  |
| 18CX52-106 |  | Próba ciœnieniowa – Sekcja 16 | 4d | 2026-07-21 A | 2026-07-24 A | 18CX52-105 | 100% |  |
| 18CX52-107 |  | Izolacje – Sekcja 16 | 9d | 2026-07-27 A | 2026-08-07 A | 18CX52-106 | 100% |  |
| 18CX52-108 |  | Malowanie i oznakowanie – Sekcja 16 | 7d | 2026-08-04 A | 2026-08-17 A | 18CX52-107 FF+2d | 100% |  |
| 18CX52-104 |  | Prefabrykacja ruroci¹gów – Sekcja 16 | 14.6d | 2026-09-30 | 2026-10-19 | 18CX52-012, 18CX52-099 SS+5d |  | 264.2d |
|  | SEKCJA 17 | **Sekcja 17** |  | 2026-03-26 | 2026-08-10 |  |  |  |
| 18CX52-111 |  | Prefabrykacja ruroci¹gów – Sekcja 17 | 4.7d | 2026-03-26 A | 2026-04-01 A | 18CX52-012, 18CX52-104 SS+5d | 100% |  |

| ID | WBS | Task | Duration | Start | Finish | Predecessors | Complete | Total float |
| --- | --- | --- | --- | --- | --- | --- | --- | --- |
| 18CX52-112 |  | Monta¿ ruroci¹gów – Sekcja 17 | 23.5d | 2026-06-24 A | 2026-07-29 A | 18CX52-111, 18CX52-014 SS+8d | 100% |  |
| 18CX52-113 |  | Próba ciœnieniowa – Sekcja 17 | 2d | 2026-07-24 A | 2026-07-27 A | 18CX52-112 | 100% |  |
| 18CX52-115 |  | Malowanie i oznakowanie – Sekcja 17 | 8d | 2026-07-27 A | 2026-08-05 A | 18CX52-114 FF+2d | 100% |  |
| 18CX52-114 |  | Izolacje – Sekcja 17 | 4d | 2026-07-31 A | 2026-08-10 A | 18CX52-113 | 100% |  |
|  | SEKCJA 18 | **Sekcja 18** |  | 2026-03-27 | 2026-09-30 |  |  |  |
|  | PODSEKCJA | **Podsekcja 18.A** |  | 2026-03-27 | 2026-09-30 |  |  |  |
| 18CX52-116 |  | Prefabrykacja ruroci¹gów – Sekcja 18 | 4.3d | 2026-03-27 A | 2026-04-01 A | 18CX52-012, 18CX52-111 SS+5d | 100% |  |
| 18CX52-117 |  | Monta¿ ruroci¹gów – Sekcja 18 | 15.4d | 2026-06-23 A | 2026-07-16 A | 18CX52-116, 18CX52-014 SS+9d | 100% |  |
| 18CX52-118 |  | Próba ciœnieniowa – Sekcja 18 | 4d | 2026-07-16 A | 2026-07-24 A | 18CX52-117 | 100% |  |
| 18CX52-119 |  | Izolacje – Sekcja 18 | 12d | 2026-07-21 A | 2026-08-05 A | 18CX52-118 | 100% |  |
| 18CX52-120 |  | Malowanie i oznakowanie – Sekcja 18 | 3d | 2026-08-06 A | 2026-09-30 | 18CX52-119 FF+2d | 67% | 347.5d |
|  | SEKCJA 19 | **Sekcja 19** |  | 2026-04-09 | 2026-10-12 |  |  |  |
| 18CX52-123 |  | Prefabrykacja ruroci¹gów – Sekcja 19 | 7.4d | 2026-04-09 A | 2026-04-17 A | 18CX52-012, 18CX52-116 SS+5d | 100% |  |
| 18CX52-124 |  | Monta¿ ruroci¹gów – Sekcja 19 | 11.7d | 2026-06-12 A | 2026-10-12 | 18CX52-123, 18CX52-014 SS | 21% | 367.2d |
| 18CX52-125 |  | Próba ciœnieniowa – Sekcja 19 | 2d | 2026-06-26 A | 2026-07-02 A | 18CX52-124 | 100% |  |
| 18CX52-126 |  | Izolacje – Sekcja 19 | 7d | 2026-07-01 A | 2026-07-10 A | 18CX52-125 | 100% |  |
| 18CX52-127 |  | Malowanie i oznakowanie – Sekcja 19 | 7d | 2026-07-07 A | 2026-07-16 A | 18CX52-126 FF+2d | 100% |  |
|  | PROJ | **Projektowanie** |  | 2025-04-04 | 2026-10-06 |  |  |  |
|  | DOKUMENTAC | **Dokumentacja** |  | 2025-04-04 | 2026-10-06 |  |  |  |
| 18CX52-001 |  | Projekt wykonawczy – Bêben wysokiego ciœnienia | 74d | 2025-04-04 A | 2025-07-17 A |  | 100% |  |
| 18CX52-002 |  | Uzgodnienie dokumentacji z Inwestorem | 13d | 2025-07-23 A | 2025-08-08 A | 18CX52-001 | 100% |  |
| 18CX52-003 |  | Zatwierdzenie dokumentacji do realizacji | 10d | 2025-08-12 A | 2026-10-06 | 18CX52-002 | 44% | 223.9d |
| 18CX52-004 |  | KM: Dokumentacja zatwierdzona – Bêben wysokiego ciœnienia | 0d | 2025-08-19 A | 2025-08-19 | 18CX52-003 | 100% |  |
|  | ROZR | **Rozruch** |  | 2026-08-13 | 2026-10-09 |  |  |  |
|  | ROZRUCH | **Rozruch** |  | 2026-08-13 | 2026-10-09 |  |  |  |
| 18CX52-130 |  | Przegl¹d gotowoœci do rozruchu | 5d | 2026-08-13 A | 2026-08-21 A | 18CX52-129, 18CX52-019, 18CX52-024, 18CX52-026 | 100% |  |
| 18CX52-131 |  | Rozruch na zimno | 15d | 2026-08-19 A | 2026-09-08 A | 18CX52-130 | 100% |  |
| 18CX52-132 |  | Rozruch na gor¹co / próby ruchowe | 16d | 2026-09-14 A | 2026-10-08 | 18CX52-131 | 56% | 343.4d |
| 18CX52-133 |  | KM: Odbiór koñcowy – Bêben wysokiego ciœnienia | 0d | 2026-10-09 | 2026-10-09 | 18CX52-132 |  | 340.8d |
|  | ZAKU | **Zakupy** |  | 2025-05-08 | 2026-06-12 |  |  |  |
|  | DOSTAWY | **Dostawy** |  | 2025-09-05 | 2026-06-12 |  |  |  |
| 18CX52-008 |  | Produkcja u dostawcy | 184d | 2025-09-05 A | 2026-05-22 A | 18CX52-007 | 100% |  |
| 18CX52-009 |  | Testy FAT | 4d | 2026-05-15 A | 2026-05-21 A | 18CX52-008 | 100% |  |
| 18CX52-010 |  | Transport i dostawa na plac budowy | 14d | 2026-05-26 A | 2026-06-12 A | 18CX52-009 | 100% |  |
| 18CX52-011 |  | KM: Dostawa na budowê – Bêben wysokiego ciœnienia | 0d | 2026-06-10 A | 2026-06-10 | 18CX52-010 | 100% |  |
|  | ZAMÓWIENIA | **Zamówienia** |  | 2025-05-08 | 2025-09-05 |  |  |  |
| 18CX52-005 |  | Zapytanie ofertowe | 23d | 2025-05-08 A | 2025-06-09 A | 18CX52-001 SS+20d | 100% |  |
| 18CX52-006 |  | Analiza i wybór ofert | 19d | 2025-06-04 A | 2025-07-03 A | 18CX52-005 | 100% |  |
| 18CX52-007 |  | Zawarcie umowy / zamówienie | 5d | 2025-08-29 A | 2025-09-05 A | 18CX52-006, 18CX52-004 SS, 15BP15-004 SF+4d | 100% |  |
|  | 19FK60 | **19FK60 – Komin g³ówny** |  | 2025-05-29 | 2027-02-02 |  |  |  |
|  | BUDO | **Budowa** |  | 2026-01-21 | 2026-10-13 |  |  |  |
|  | AKPIA | **AKPiA** |  | 2026-08-03 | 2026-10-13 |  |  |  |
| 19FK60-116 |  | Monta¿ uk³adów AKPiA | 36d | 2026-08-03 A | 2026-10-13 | 19FK60-014 SS+5d | 70% | 311.9d |
|  | ELEKTRYKA | **Elektryka** |  | 2026-07-28 | 2026-10-06 |  |  |  |
| 19FK60-038 |  | Pod³¹czenia i pomiary – trasa 04 | 9d | 2026-07-28 A | 2026-08-10 A | 19FK60-037 FF | 100% |  |
| 19FK60-097 |  | Uk³adanie kabli – trasa 14 | 16d | 2026-08-04 A | 2026-08-26 A | 19FK60-014 SS+10d | 100% |  |
| 19FK60-025 |  | Uk³adanie kabli – trasa 02 | 5d | 2026-08-05 A | 2026-08-11 A | 19FK60-014 SS+10d | 100% |  |
| 19FK60-026 |  | Pod³¹czenia i pomiary – trasa 02 | 8d | 2026-08-05 A | 2026-08-14 A | 19FK60-025 FF | 100% |  |
| 19FK60-073 |  | Uk³adanie kabli – trasa 10 | 18d | 2026-08-05 A | 2026-09-02 A | 19FK60-014 SS+10d | 100% |  |
| 19FK60-037 |  | Uk³adanie kabli – trasa 04 | 4d | 2026-08-07 A | 2026-08-14 A | 19FK60-014 SS+10d | 100% |  |
| 19FK60-049 |  | Uk³adanie kabli – trasa 06 | 9d | 2026-08-07 A | 2026-08-21 A | 19FK60-014 SS+10d | 100% |  |
| 19FK60-061 |  | Uk³adanie kabli – trasa 08 | 10d | 2026-08-07 A | 2026-08-25 A | 19FK60-014 SS+10d | 100% |  |
| 19FK60-109 |  | Uk³adanie kabli – trasa 16 | 17d | 2026-08-07 A | 2026-09-01 A | 19FK60-014 SS+10d | 100% |  |
| 19FK60-085 |  | Uk³adanie kabli – trasa 12 | 9d | 2026-08-10 A | 2026-08-24 A | 19FK60-014 SS+10d | 100% |  |
| 19FK60-086 |  | Pod³¹czenia i pomiary – trasa 12 | 9d | 2026-08-11 A | 2026-10-06 | 19FK60-085 FF | 42% | 384.9d |
| 19FK60-050 |  | Pod³¹czenia i pomiary – trasa 06 | 7d | 2026-08-12 A | 2026-08-24 A | 19FK60-049 FF | 100% |  |
| 19FK60-062 |  | Pod³¹czenia i pomiary – trasa 08 | 6d | 2026-08-13 A | 2026-08-20 A | 19FK60-061 FF | 100% |  |
| 19FK60-074 |  | Pod³¹czenia i pomiary – trasa 10 | 10d | 2026-08-17 A | 2026-09-01 A | 19FK60-073 FF | 100% |  |
| 19FK60-110 |  | Pod³¹czenia i pomiary – trasa 16 | 5d | 2026-08-24 A | 2026-08-28 A | 19FK60-109 FF | 100% |  |
| 19FK60-098 |  | Pod³¹czenia i pomiary – trasa 14 | 3d | 2026-08-26 A | 2026-08-28 A | 19FK60-097 FF | 100% |  |
|  | MONTA¯ | **Monta¿** |  | 2026-03-09 | 2026-09-21 |  |  |  |
| 19FK60-013 |  | Monta¿ konstrukcji stalowych | 37d | 2026-03-09 A | 2026-04-30 A | 19FK60-012 | 100% |  |
| 19FK60-014 |  | Monta¿ urz¹dzeñ g³ównych | 28d | 2026-07-21 A | 2026-08-28 A | 19FK60-013, 19FK60-011 | 100% |  |
| 19FK60-117 |  | KM: Zakoñczenie monta¿u – Komin g³ówny | 0d | 2026-09-21 A | 2026-09-21 | 19FK60-108, 19FK60-110, 19FK60-115, 19FK60-116, 19FK60-014 | 100% |  |
|  | ROBOTY BUD | **Roboty budowlane** |  | 2026-01-21 | 2026-03-06 |  |  |  |
| 19FK60-012 |  | Fundamenty i roboty ziemne | 33d | 2026-01-21 A | 2026-03-06 A | 19FK60-007 FS+10d | 100% |  |
|  | RUROCI¥GI | **Ruroci¹gi** |  | 2026-03-06 | 2026-10-07 |  |  |  |
|  | SEKCJA 01 | **Sekcja 01** |  | 2026-03-06 | 2026-09-01 |  |  |  |
| 19FK60-015 |  | Prefabrykacja ruroci¹gów – Sekcja 01 | 12.5d | 2026-03-06 A | 2026-03-24 A | 19FK60-012 | 100% |  |
| 19FK60-016 |  | Monta¿ ruroci¹gów – Sekcja 01 | 8.3d | 2026-07-28 A | 2026-08-11 A | 19FK60-015, 19FK60-014 SS+4d | 100% |  |

| ID | WBS | Task | Duration | Start | Finish | Predecessors | Complete | Total float |
| --- | --- | --- | --- | --- | --- | --- | --- | --- |
| 19FK60-017 |  | Próba ciœnieniowa – Sekcja 01 | 3d | 2026-08-10 A | 2026-08-17 A | 19FK60-016 | 100% |  |
| 19FK60-018 |  | Izolacje – Sekcja 01 | 8d | 2026-08-14 A | 2026-08-25 A | 19FK60-017 | 100% |  |
| 19FK60-019 |  | Malowanie i oznakowanie – Sekcja 01 | 8d | 2026-08-19 A | 2026-09-01 A | 19FK60-018 FF+2d | 100% |  |
|  | SEKCJA 02 | **Sekcja 02** |  | 2026-03-11 | 2026-09-08 |  |  |  |
| 19FK60-020 |  | Prefabrykacja ruroci¹gów – Sekcja 02 | 9.6d | 2026-03-11 A | 2026-03-24 A | 19FK60-012, 19FK60-015 SS+5d | 100% |  |
| 19FK60-021 |  | Monta¿ ruroci¹gów – Sekcja 02 | 19.1d | 2026-07-30 A | 2026-08-26 A | 19FK60-020, 19FK60-014 SS+5d | 100% |  |
| 19FK60-022 |  | Próba ciœnieniowa – Sekcja 02 | 3d | 2026-08-27 A | 2026-09-02 A | 19FK60-021 | 100% |  |
| 19FK60-024 |  | Malowanie i oznakowanie – Sekcja 02 | 3d | 2026-09-01 A | 2026-09-08 A | 19FK60-023 FF+2d | 100% |  |
| 19FK60-023 |  | Izolacje – Sekcja 02 | 3d | 2026-09-02 A | 2026-09-04 A | 19FK60-022 | 100% |  |
|  | SEKCJA 03 | **Sekcja 03** |  | 2026-03-19 | 2026-10-02 |  |  |  |
|  | PODSEKCJA | **Podsekcja 03.A** |  | 2026-03-19 | 2026-10-02 |  |  |  |
| 19FK60-027 |  | Prefabrykacja ruroci¹gów – Sekcja 03 | 6d | 2026-03-19 A | 2026-03-30 A | 19FK60-012, 19FK60-020 SS+5d | 100% |  |
| 19FK60-028 |  | Monta¿ ruroci¹gów – Sekcja 03 | 12.1d | 2026-08-06 A | 2026-08-24 A | 19FK60-027, 19FK60-014 SS+8d | 100% |  |
| 19FK60-030 |  | Izolacje – Sekcja 03 | 10d | 2026-08-26 A | 2026-09-09 A | 19FK60-029 | 100% |  |
| 19FK60-031 |  | Malowanie i oznakowanie – Sekcja 03 | 4d | 2026-09-07 A | 2026-09-10 A | 19FK60-030 FF+2d | 100% |  |
| 19FK60-029 |  | Próba ciœnieniowa – Sekcja 03 | 3d | 2026-09-30 | 2026-10-02 | 19FK60-028 |  | 342.9d |
|  | SEKCJA 04 | **Sekcja 04** |  | 2026-03-26 | 2026-09-30 |  |  |  |
| 19FK60-032 |  | Prefabrykacja ruroci¹gów – Sekcja 04 | 12.2d | 2026-03-26 A | 2026-04-10 A | 19FK60-012, 19FK60-027 SS+5d | 100% |  |
| 19FK60-033 |  | Monta¿ ruroci¹gów – Sekcja 04 | 22.3d | 2026-08-05 A | 2026-09-03 A | 19FK60-032, 19FK60-014 SS+7d | 100% |  |
| 19FK60-034 |  | Próba ciœnieniowa – Sekcja 04 | 5d | 2026-09-02 A | 2026-09-09 A | 19FK60-033 | 100% |  |
| 19FK60-035 |  | Izolacje – Sekcja 04 | 6d | 2026-09-10 A | 2026-09-30 | 19FK60-034 | 82% | 363.6d |
| 19FK60-036 |  | Malowanie i oznakowanie – Sekcja 04 | 3d | 2026-09-16 A | 2026-09-22 A | 19FK60-035 FF+2d | 100% |  |
|  | SEKCJA 05 | **Sekcja 05** |  | 2026-04-03 | 2026-10-02 |  |  |  |
| 19FK60-039 |  | Prefabrykacja ruroci¹gów – Sekcja 05 | 8.8d | 2026-04-03 A | 2026-04-17 A | 19FK60-012, 19FK60-032 SS+5d | 100% |  |
| 19FK60-040 |  | Monta¿ ruroci¹gów – Sekcja 05 | 9.9d | 2026-08-04 A | 2026-08-18 A | 19FK60-039, 19FK60-014 SS+8d | 100% |  |
| 19FK60-041 |  | Próba ciœnieniowa – Sekcja 05 | 4d | 2026-08-14 A | 2026-10-02 | 19FK60-040 | 18% | 379d |
| 19FK60-042 |  | Izolacje – Sekcja 05 | 5d | 2026-08-20 A | 2026-08-27 A | 19FK60-041 | 100% |  |
| 19FK60-043 |  | Malowanie i oznakowanie – Sekcja 05 | 3d | 2026-08-26 A | 2026-09-01 A | 19FK60-042 FF+2d | 100% |  |
|  | SEKCJA 06 | **Sekcja 06** |  | 2026-04-09 | 2026-09-30 |  |  |  |
|  | PODSEKCJA | **Podsekcja 06.A** |  | 2026-04-09 | 2026-09-30 |  |  |  |
| 19FK60-044 |  | Prefabrykacja ruroci¹gów – Sekcja 06 | 14d | 2026-04-09 A | 2026-04-29 A | 19FK60-012, 19FK60-039 SS+5d | 100% |  |
| 19FK60-045 |  | Monta¿ ruroci¹gów – Sekcja 06 | 21.6d | 2026-08-06 A | 2026-09-03 A | 19FK60-044, 19FK60-014 SS+9d | 100% |  |
| 19FK60-046 |  | Próba ciœnieniowa – Sekcja 06 | 2d | 2026-09-02 A | 2026-09-30 | 19FK60-045 | 30% | 361.3d |
| 19FK60-047 |  | Izolacje – Sekcja 06 | 12d | 2026-09-09 A | 2026-09-25 A | 19FK60-046 | 100% |  |
| 19FK60-048 |  | Malowanie i oznakowanie – Sekcja 06 | 6d | 2026-09-15 A | 2026-09-22 A | 19FK60-047 FF+2d | 100% |  |
|  | SEKCJA 07 | **Sekcja 07** |  | 2026-04-15 | 2026-09-23 |  |  |  |
| 19FK60-051 |  | Prefabrykacja ruroci¹gów – Sekcja 07 | 6.3d | 2026-04-15 A | 2026-04-24 A | 19FK60-012, 19FK60-044 SS+5d | 100% |  |
| 19FK60-052 |  | Monta¿ ruroci¹gów – Sekcja 07 | 19.5d | 2026-07-31 A | 2026-08-27 A | 19FK60-051, 19FK60-014 SS+7d | 100% |  |
| 19FK60-053 |  | Próba ciœnieniowa – Sekcja 07 | 5d | 2026-08-31 A | 2026-09-08 A | 19FK60-052 | 100% |  |
| 19FK60-054 |  | Izolacje – Sekcja 07 | 10d | 2026-09-03 A | 2026-09-18 A | 19FK60-053 | 100% |  |
| 19FK60-055 |  | Malowanie i oznakowanie – Sekcja 07 | 4d | 2026-09-16 A | 2026-09-23 A | 19FK60-054 FF+2d | 100% |  |
|  | SEKCJA 08 | **Sekcja 08** |  | 2026-04-23 | 2026-10-07 |  |  |  |
| 19FK60-056 |  | Prefabrykacja ruroci¹gów – Sekcja 08 | 3.7d | 2026-04-23 A | 2026-04-30 A | 19FK60-012, 19FK60-051 SS+5d | 100% |  |
| 19FK60-057 |  | Monta¿ ruroci¹gów – Sekcja 08 | 7.5d | 2026-08-06 A | 2026-10-07 | 19FK60-056, 19FK60-014 SS+10d | 16% | 370.4d |
| 19FK60-058 |  | Próba ciœnieniowa – Sekcja 08 | 6d | 2026-08-18 A | 2026-10-05 | 19FK60-057 | 33% | 369.4d |
| 19FK60-059 |  | Izolacje – Sekcja 08 | 11d | 2026-08-24 A | 2026-09-08 A | 19FK60-058 | 100% |  |
| 19FK60-060 |  | Malowanie i oznakowanie – Sekcja 08 | 6d | 2026-09-07 A | 2026-09-16 A | 19FK60-059 FF+2d | 100% |  |
|  | SEKCJA 09 | **Sekcja 09** |  | 2026-04-30 | 2026-10-02 |  |  |  |
|  | PODSEKCJA | **Podsekcja 09.A** |  | 2026-04-30 | 2026-10-02 |  |  |  |
| 19FK60-063 |  | Prefabrykacja ruroci¹gów – Sekcja 09 | 10d | 2026-04-30 A | 2026-10-02 | 19FK60-012, 19FK60-056 SS+5d | 63% | 326.7d |
| 19FK60-064 |  | Monta¿ ruroci¹gów – Sekcja 09 | 12.3d | 2026-07-29 A | 2026-08-14 A | 19FK60-063, 19FK60-014 SS+6d | 100% |  |
| 19FK60-065 |  | Próba ciœnieniowa – Sekcja 09 | 6d | 2026-08-18 A | 2026-08-26 A | 19FK60-064 | 100% |  |
| 19FK60-066 |  | Izolacje – Sekcja 09 | 10d | 2026-08-28 A | 2026-09-15 A | 19FK60-065 | 100% |  |
| 19FK60-067 |  | Malowanie i oznakowanie – Sekcja 09 | 5d | 2026-09-08 A | 2026-09-15 A | 19FK60-066 FF+2d | 100% |  |
|  | SEKCJA 10 | **Sekcja 10** |  | 2026-05-12 | 2026-09-02 |  |  |  |
| 19FK60-068 |  | Prefabrykacja ruroci¹gów – Sekcja 10 | 11.6d | 2026-05-12 A | 2026-05-29 A | 19FK60-012, 19FK60-063 SS+5d | 100% |  |
| 19FK60-069 |  | Monta¿ ruroci¹gów – Sekcja 10 | 9.8d | 2026-07-31 A | 2026-08-14 A | 19FK60-068, 19FK60-014 SS+7d | 100% |  |
| 19FK60-070 |  | Próba ciœnieniowa – Sekcja 10 | 2d | 2026-08-17 A | 2026-08-18 A | 19FK60-069 | 100% |  |
| 19FK60-071 |  | Izolacje – Sekcja 10 | 10d | 2026-08-19 A | 2026-09-02 A | 19FK60-070 | 100% |  |
| 19FK60-072 |  | Malowanie i oznakowanie – Sekcja 10 | 5d | 2026-08-27 A | 2026-09-02 A | 19FK60-071 FF+2d | 100% |  |
|  | SEKCJA 11 | **Sekcja 11** |  | 2026-05-14 | 2026-09-16 |  |  |  |
| 19FK60-075 |  | Prefabrykacja ruroci¹gów – Sekcja 11 | 5.1d | 2026-05-14 A | 2026-05-21 A | 19FK60-012, 19FK60-068 SS+5d | 100% |  |
| 19FK60-076 |  | Monta¿ ruroci¹gów – Sekcja 11 | 17.6d | 2026-08-04 A | 2026-08-28 A | 19FK60-075, 19FK60-014 SS+7d | 100% |  |
| 19FK60-077 |  | Próba ciœnieniowa – Sekcja 11 | 3d | 2026-08-24 A | 2026-08-27 A | 19FK60-076 | 100% |  |
| 19FK60-078 |  | Izolacje – Sekcja 11 | 10d | 2026-08-27 A | 2026-09-14 A | 19FK60-077 | 100% |  |
| 19FK60-079 |  | Malowanie i oznakowanie – Sekcja 11 | 2d | 2026-09-10 A | 2026-09-16 A | 19FK60-078 FF+2d | 100% |  |
|  | SEKCJA 12 | **Sekcja 12** |  | 2026-05-25 | 2026-10-01 |  |  |  |
|  | PODSEKCJA | **Podsekcja 12.A** |  | 2026-05-25 | 2026-10-01 |  |  |  |
| 19FK60-080 |  | Prefabrykacja ruroci¹gów – Sekcja 12 | 14.3d | 2026-05-25 A | 2026-06-15 A | 19FK60-012, 19FK60-075 SS+5d | 100% |  |
| 19FK60-081 |  | Monta¿ ruroci¹gów – Sekcja 12 | 21.5d | 2026-07-28 A | 2026-08-27 A | 19FK60-080, 19FK60-014 SS+1d | 100% |  |

| ID | WBS | Task | Duration | Start | Finish | Predecessors | Complete | Total float |
| --- | --- | --- | --- | --- | --- | --- | --- | --- |
| 19FK60-082 |  | Próba ciœnieniowa – Sekcja 12 | 3d | 2026-08-24 A | 2026-10-01 | 19FK60-081 | 30% | 368.4d |
| 19FK60-083 |  | Izolacje – Sekcja 12 | 11d | 2026-08-26 A | 2026-09-11 A | 19FK60-082 | 100% |  |
| 19FK60-084 |  | Malowanie i oznakowanie – Sekcja 12 | 6d | 2026-09-03 A | 2026-09-14 A | 19FK60-083 FF+2d | 100% |  |
|  | SEKCJA 13 | **Sekcja 13** |  | 2026-05-27 | 2026-08-26 |  |  |  |
| 19FK60-087 |  | Prefabrykacja ruroci¹gów – Sekcja 13 | 7.8d | 2026-05-27 A | 2026-06-05 A | 19FK60-012, 19FK60-080 SS+5d | 100% |  |
| 19FK60-088 |  | Monta¿ ruroci¹gów – Sekcja 13 | 16.5d | 2026-07-21 A | 2026-08-11 A | 19FK60-087, 19FK60-014 SS | 100% |  |
| 19FK60-089 |  | Próba ciœnieniowa – Sekcja 13 | 2d | 2026-08-12 A | 2026-08-18 A | 19FK60-088 | 100% |  |
| 19FK60-090 |  | Izolacje – Sekcja 13 | 3d | 2026-08-17 A | 2026-08-20 A | 19FK60-089 | 100% |  |
| 19FK60-091 |  | Malowanie i oznakowanie – Sekcja 13 | 7d | 2026-08-18 A | 2026-08-26 A | 19FK60-090 FF+2d | 100% |  |
|  | SEKCJA 14 | **Sekcja 14** |  | 2026-06-08 | 2026-08-18 |  |  |  |
| 19FK60-092 |  | Prefabrykacja ruroci¹gów – Sekcja 14 | 9.8d | 2026-06-08 A | 2026-06-19 A | 19FK60-012, 19FK60-087 SS+5d | 100% |  |
| 19FK60-093 |  | Monta¿ ruroci¹gów – Sekcja 14 | 6.5d | 2026-07-27 A | 2026-08-04 A | 19FK60-092, 19FK60-014 SS+2d | 100% |  |
| 19FK60-094 |  | Próba ciœnieniowa – Sekcja 14 | 4d | 2026-08-04 A | 2026-08-11 A | 19FK60-093 | 100% |  |
| 19FK60-095 |  | Izolacje – Sekcja 14 | 7d | 2026-08-10 A | 2026-08-18 A | 19FK60-094 | 100% |  |
| 19FK60-096 |  | Malowanie i oznakowanie – Sekcja 14 | 4d | 2026-08-13 A | 2026-08-18 A | 19FK60-095 FF+2d | 100% |  |
|  | SEKCJA 15 | **Sekcja 15** |  | 2026-06-10 | 2026-09-16 |  |  |  |
|  | PODSEKCJA | **Podsekcja 15.A** |  | 2026-06-10 | 2026-09-16 |  |  |  |
| 19FK60-099 |  | Prefabrykacja ruroci¹gów – Sekcja 15 | 5.1d | 2026-06-10 A | 2026-06-19 A | 19FK60-012, 19FK60-092 SS+5d | 100% |  |
| 19FK60-100 |  | Monta¿ ruroci¹gów – Sekcja 15 | 16.6d | 2026-08-05 A | 2026-08-27 A | 19FK60-099, 19FK60-014 SS+10d | 100% |  |
| 19FK60-101 |  | Próba ciœnieniowa – Sekcja 15 | 5d | 2026-08-28 A | 2026-09-08 A | 19FK60-100 | 100% |  |
| 19FK60-102 |  | Izolacje – Sekcja 15 | 4d | 2026-09-07 A | 2026-09-15 A | 19FK60-101 | 100% |  |
| 19FK60-103 |  | Malowanie i oznakowanie – Sekcja 15 | 2d | 2026-09-11 A | 2026-09-16 A | 19FK60-102 FF+2d | 100% |  |
|  | SEKCJA 16 | **Sekcja 16** |  | 2026-06-22 | 2026-09-30 |  |  |  |
| 19FK60-104 |  | Prefabrykacja ruroci¹gów – Sekcja 16 | 7.5d | 2026-06-22 A | 2026-07-03 A | 19FK60-012, 19FK60-099 SS+5d | 100% |  |
| 19FK60-105 |  | Monta¿ ruroci¹gów – Sekcja 16 | 7.9d | 2026-07-28 A | 2026-08-10 A | 19FK60-104, 19FK60-014 SS+5d | 100% |  |
| 19FK60-106 |  | Próba ciœnieniowa – Sekcja 16 | 2d | 2026-08-10 A | 2026-08-11 A | 19FK60-105 | 100% |  |
| 19FK60-107 |  | Izolacje – Sekcja 16 | 5d | 2026-08-12 A | 2026-08-21 A | 19FK60-106 | 100% |  |
| 19FK60-108 |  | Malowanie i oznakowanie – Sekcja 16 | 4d | 2026-08-19 A | 2026-09-30 | 19FK60-107 FF+2d | 72% | 331d |
|  | SEKCJA 17 | **Sekcja 17** |  | 2026-06-30 | 2026-09-23 |  |  |  |
| 19FK60-111 |  | Prefabrykacja ruroci¹gów – Sekcja 17 | 11.2d | 2026-06-30 A | 2026-07-14 A | 19FK60-012, 19FK60-104 SS+5d | 100% |  |
| 19FK60-112 |  | Monta¿ ruroci¹gów – Sekcja 17 | 22d | 2026-07-30 A | 2026-08-31 A | 19FK60-111, 19FK60-014 SS+5d | 100% |  |
| 19FK60-113 |  | Próba ciœnieniowa – Sekcja 17 | 6d | 2026-08-27 A | 2026-09-04 A | 19FK60-112 | 100% |  |
| 19FK60-114 |  | Izolacje – Sekcja 17 | 7d | 2026-09-04 A | 2026-09-16 A | 19FK60-113 | 100% |  |
| 19FK60-115 |  | Malowanie i oznakowanie – Sekcja 17 | 8d | 2026-09-11 A | 2026-09-23 A | 19FK60-114 FF+2d | 100% |  |
|  | PROJ | **Projektowanie** |  | 2025-05-29 | 2027-02-02 |  |  |  |
|  | DOKUMENTAC | **Dokumentacja** |  | 2025-05-29 | 2027-02-02 |  |  |  |
| 19FK60-001 |  | Projekt wykonawczy – Komin g³ówny | 113d | 2025-05-29 A | 2027-02-02 |  | 20% | 313.9d |
| 19FK60-002 |  | Uzgodnienie dokumentacji z Inwestorem | 23d | 2025-11-06 A | 2025-12-10 A | 19FK60-001 | 100% |  |
| 19FK60-003 |  | Zatwierdzenie dokumentacji do realizacji | 13d | 2025-12-09 A | 2025-12-30 A | 19FK60-002 | 100% |  |
| 19FK60-004 |  | KM: Dokumentacja zatwierdzona – Komin g³ówny | 0d | 2025-12-23 A | 2025-12-23 | 19FK60-003 | 100% |  |
|  | ROZR | **Rozruch** |  | 2026-09-23 | 2026-11-06 |  |  |  |
|  | ROZRUCH | **Rozruch** |  | 2026-09-23 | 2026-11-06 |  |  |  |
| 19FK60-118 |  | Przegl¹d gotowoœci do rozruchu | 8d | 2026-09-23 A | 2026-09-29 A | 19FK60-117, 19FK60-019, 19FK60-024, 19FK60-026 | 100% |  |
| 19FK60-119 |  | Rozruch na zimno | 9d | 2026-09-30 A | 2026-10-01 | 19FK60-118 | 68% | 313.9d |
| 19FK60-120 |  | Rozruch na gor¹co / próby ruchowe | 25d | 2026-10-02 | 2026-11-05 | 19FK60-119 |  | 320d |
| 19FK60-121 |  | KM: Odbiór koñcowy – Komin g³ówny | 0d | 2026-11-06 | 2026-11-06 | 19FK60-120 |  | 320d |
|  | ZAKU | **Zakupy** |  | 2025-06-30 | 2026-07-22 |  |  |  |
|  | DOSTAWY | **Dostawy** |  | 2026-01-06 | 2026-07-22 |  |  |  |
| 19FK60-008 |  | Produkcja u dostawcy | 94d | 2026-01-06 A | 2026-05-18 A | 19FK60-007 | 100% |  |
| 19FK60-009 |  | Testy FAT | 8d | 2026-05-19 A | 2026-05-29 A | 19FK60-008 | 100% |  |
| 19FK60-010 |  | Transport i dostawa na plac budowy | 40d | 2026-05-28 A | 2026-07-22 A | 19FK60-009 | 100% |  |
| 19FK60-011 |  | KM: Dostawa na budowê – Komin g³ówny | 0d | 2026-07-22 A | 2026-07-22 | 19FK60-010 | 100% |  |
|  | ZAMÓWIENIA | **Zamówienia** |  | 2025-06-30 | 2026-01-08 |  |  |  |
| 19FK60-005 |  | Zapytanie ofertowe | 28d | 2025-06-30 A | 2025-08-06 A | 19FK60-001 SS+20d | 100% |  |
| 19FK60-006 |  | Analiza i wybór ofert | 15d | 2025-08-05 A | 2025-08-25 A | 19FK60-005 | 100% |  |
| 19FK60-007 |  | Zawarcie umowy / zamówienie | 8d | 2025-12-29 A | 2026-01-08 A | 19FK60-006, 19FK60-004 SS, 10TM34-004 FS+13d | 100% |  |
|  | 27XT34 | **27XT34 – Zbiornik wody zasilaj¹cej** |  | 2025-06-19 | 2027-02-12 |  |  |  |
|  | BUDO | **Budowa** |  | 2025-12-29 | 2026-12-02 |  |  |  |
|  | AKPIA | **AKPiA** |  | 2026-09-30 | 2026-10-07 |  |  |  |
| 27XT34-140 |  | Monta¿ uk³adów AKPiA | 10d | 2026-09-30 A | 2026-10-07 | 27XT34-014 SS+5d | 34% | 308.9d |
|  | ELEKTRYKA | **Elektryka** |  | 2026-10-06 | 2026-11-12 |  |  |  |
| 27XT34-086 |  | Pod³¹czenia i pomiary – trasa 12 | 9d | 2026-10-06 | 2026-10-16 | 27XT34-085 FF |  | 344.9d |
| 27XT34-025 |  | Uk³adanie kabli – trasa 02 | 7d | 2026-10-08 | 2026-10-16 | 27XT34-014 SS+10d |  | 305.9d |
| 27XT34-037 |  | Uk³adanie kabli – trasa 04 | 11d | 2026-10-08 | 2026-10-22 | 27XT34-014 SS+10d |  | 340.9d |
| 27XT34-049 |  | Uk³adanie kabli – trasa 06 | 20d | 2026-10-08 | 2026-11-04 | 27XT34-014 SS+10d |  | 331.9d |
| 27XT34-073 |  | Uk³adanie kabli – trasa 10 | 19d | 2026-10-08 | 2026-11-03 | 27XT34-014 SS+10d |  | 332.9d |
| 27XT34-085 |  | Uk³adanie kabli – trasa 12 | 7d | 2026-10-08 | 2026-10-16 | 27XT34-014 SS+10d |  | 344.9d |
| 27XT34-097 |  | Uk³adanie kabli – trasa 14 | 16d | 2026-10-08 | 2026-10-29 | 27XT34-014 SS+10d |  | 335.9d |
| 27XT34-109 |  | Uk³adanie kabli – trasa 16 | 14d | 2026-10-08 | 2026-10-27 | 27XT34-014 SS+10d |  | 337.9d |
| 27XT34-121 |  | Uk³adanie kabli – trasa 18 | 17d | 2026-10-08 | 2026-10-30 | 27XT34-014 SS+10d |  | 334.9d |

| ID | WBS | Task | Duration | Start | Finish | Predecessors | Complete | Total float |
| --- | --- | --- | --- | --- | --- | --- | --- | --- |
| 27XT34-133 |  | Uk³adanie kabli – trasa 20 | 11d | 2026-10-08 | 2026-10-22 | 27XT34-014 SS+10d |  | 301.9d |
| 27XT34-026 |  | Pod³¹czenia i pomiary – trasa 02 | 4d | 2026-10-13 | 2026-10-16 | 27XT34-025 FF |  | 305.9d |
| 27XT34-061 |  | Uk³adanie kabli – trasa 08 | 20d | 2026-10-16 | 2026-11-12 | 27XT34-014 SS+10d |  | 325.9d |
| 27XT34-038 |  | Pod³¹czenia i pomiary – trasa 04 | 3d | 2026-10-20 | 2026-10-22 | 27XT34-037 FF |  | 340.9d |
| 27XT34-134 |  | Pod³¹czenia i pomiary – trasa 20 | 3d | 2026-10-20 | 2026-10-22 | 27XT34-133 FF |  | 301.9d |
| 27XT34-074 |  | Pod³¹czenia i pomiary – trasa 10 | 10d | 2026-10-21 | 2026-11-03 | 27XT34-073 FF |  | 332.9d |
| 27XT34-098 |  | Pod³¹czenia i pomiary – trasa 14 | 7d | 2026-10-21 | 2026-10-29 | 27XT34-097 FF |  | 335.9d |
| 27XT34-110 |  | Pod³¹czenia i pomiary – trasa 16 | 4d | 2026-10-22 | 2026-10-27 | 27XT34-109 FF |  | 337.9d |
| 27XT34-050 |  | Pod³¹czenia i pomiary – trasa 06 | 9d | 2026-10-23 | 2026-11-04 | 27XT34-049 FF |  | 331.9d |
| 27XT34-122 |  | Pod³¹czenia i pomiary – trasa 18 | 4d | 2026-10-27 | 2026-10-30 | 27XT34-121 FF |  | 334.9d |
| 27XT34-062 |  | Pod³¹czenia i pomiary – trasa 08 | 7d | 2026-11-04 | 2026-11-12 | 27XT34-061 FF |  | 325.9d |
|  | MONTA¯ | **Monta¿** |  | 2026-03-10 | 2026-11-17 |  |  |  |
| 27XT34-013 |  | Monta¿ konstrukcji stalowych | 18d | 2026-03-10 A | 2026-04-03 A | 27XT34-012 | 100% |  |
| 27XT34-014 |  | Monta¿ urz¹dzeñ g³ównych | 34d | 2026-09-24 A | 2026-11-09 | 27XT34-013, 27XT34-011 | 13% | 272.5d |
| 27XT34-141 |  | KM: Zakoñczenie monta¿u – Zbiornik wody zasilaj¹cej | 0d | 2026-11-17 | 2026-11-17 | 27XT34-132, 27XT34-134, 27XT34-139, 27XT34-140, 27XT34-014 |  | 284.9d |
|  | ROBOTY BUD | **Roboty budowlane** |  | 2025-12-29 | 2026-03-13 |  |  |  |
| 27XT34-012 |  | Fundamenty i roboty ziemne | 52d | 2025-12-29 A | 2026-03-13 A | 27XT34-007 FS+7d | 100% |  |
|  | RUROCI¥GI | **Ruroci¹gi** |  | 2026-03-11 | 2026-12-02 |  |  |  |
|  | SEKCJA 01 | **Sekcja 01** |  | 2026-03-11 | 2026-12-02 |  |  |  |
| 27XT34-015 |  | Prefabrykacja ruroci¹gów – Sekcja 01 | 14.6d | 2026-03-11 A | 2026-03-31 A | 27XT34-012 | 100% |  |
| 27XT34-016 |  | Monta¿ ruroci¹gów – Sekcja 01 | 24.4d | 2026-10-06 | 2026-11-06 | 27XT34-015, 27XT34-014 SS+8d |  | 272.5d |
| 27XT34-017 |  | Próba ciœnieniowa – Sekcja 01 | 4d | 2026-11-09 | 2026-11-12 | 27XT34-016 |  | 272.5d |
| 27XT34-018 |  | Izolacje – Sekcja 01 | 12d | 2026-11-13 | 2026-11-30 | 27XT34-017 |  | 272.5d |
| 27XT34-019 |  | Malowanie i oznakowanie – Sekcja 01 | 6d | 2026-11-25 | 2026-12-02 | 27XT34-018 FF+2d |  | 272.5d |
|  | SEKCJA 02 | **Sekcja 02** |  | 2026-03-19 | 2026-11-17 |  |  |  |
| 27XT34-020 |  | Prefabrykacja ruroci¹gów – Sekcja 02 | 13.6d | 2026-03-19 A | 2026-04-06 A | 27XT34-012, 27XT34-015 SS+5d | 100% |  |
| 27XT34-021 |  | Monta¿ ruroci¹gów – Sekcja 02 | 19d | 2026-10-07 | 2026-11-02 | 27XT34-020, 27XT34-014 SS+9d |  | 283.9d |
| 27XT34-022 |  | Próba ciœnieniowa – Sekcja 02 | 3d | 2026-11-03 | 2026-11-05 | 27XT34-021 |  | 283.9d |
| 27XT34-023 |  | Izolacje – Sekcja 02 | 6d | 2026-11-06 | 2026-11-13 | 27XT34-022 |  | 283.9d |
| 27XT34-024 |  | Malowanie i oznakowanie – Sekcja 02 | 3d | 2026-11-13 | 2026-11-17 | 27XT34-023 FF+2d |  | 283.9d |
|  | SEKCJA 03 | **Sekcja 03** |  | 2026-03-23 | 2026-10-30 |  |  |  |
|  | PODSEKCJA | **Podsekcja 03.A** |  | 2026-03-23 | 2026-10-30 |  |  |  |
| 27XT34-027 |  | Prefabrykacja ruroci¹gów – Sekcja 03 | 10d | 2026-03-23 A | 2026-10-02 | 27XT34-012, 27XT34-020 SS+5d | 65% | 313.5d |
| 27XT34-028 |  | Monta¿ ruroci¹gów – Sekcja 03 | 7.2d | 2026-10-05 | 2026-10-13 | 27XT34-027, 27XT34-014 SS+4d |  | 334.2d |
| 27XT34-029 |  | Próba ciœnieniowa – Sekcja 03 | 2d | 2026-10-14 | 2026-10-15 | 27XT34-028 |  | 334.2d |
| 27XT34-030 |  | Izolacje – Sekcja 03 | 9d | 2026-10-16 | 2026-10-28 | 27XT34-029 |  | 334.2d |
| 27XT34-031 |  | Malowanie i oznakowanie – Sekcja 03 | 2d | 2026-10-29 | 2026-10-30 | 27XT34-030 FF+2d |  | 334.2d |
|  | SEKCJA 04 | **Sekcja 04** |  | 2026-03-30 | 2026-10-30 |  |  |  |
| 27XT34-032 |  | Prefabrykacja ruroci¹gów – Sekcja 04 | 10.3d | 2026-03-30 A | 2026-04-15 A | 27XT34-012, 27XT34-027 SS+5d | 100% |  |
| 27XT34-033 |  | Monta¿ ruroci¹gów – Sekcja 04 | 11.3d | 2026-10-02 | 2026-10-16 | 27XT34-032, 27XT34-014 SS+6d |  | 334.6d |
| 27XT34-034 |  | Próba ciœnieniowa – Sekcja 04 | 3d | 2026-10-19 | 2026-10-21 | 27XT34-033 |  | 334.6d |
| 27XT34-035 |  | Izolacje – Sekcja 04 | 5d | 2026-10-22 | 2026-10-28 | 27XT34-034 |  | 334.6d |
| 27XT34-036 |  | Malowanie i oznakowanie – Sekcja 04 | 7d | 2026-10-22 | 2026-10-30 | 27XT34-035 FF+2d |  | 334.6d |
|  | SEKCJA 05 | **Sekcja 05** |  | 2026-04-09 | 2026-11-11 |  |  |  |
| 27XT34-039 |  | Prefabrykacja ruroci¹gów – Sekcja 05 | 9.8d | 2026-04-09 A | 2026-04-23 A | 27XT34-012, 27XT34-032 SS+5d | 100% |  |
| 27XT34-040 |  | Monta¿ ruroci¹gów – Sekcja 05 | 14.1d | 2026-10-07 | 2026-10-26 | 27XT34-039, 27XT34-014 SS+9d |  | 326.8d |
| 27XT34-041 |  | Próba ciœnieniowa – Sekcja 05 | 4d | 2026-10-27 | 2026-10-30 | 27XT34-040 |  | 326.8d |
| 27XT34-042 |  | Izolacje – Sekcja 05 | 6d | 2026-11-02 | 2026-11-09 | 27XT34-041 |  | 326.8d |
| 27XT34-043 |  | Malowanie i oznakowanie – Sekcja 05 | 2d | 2026-11-10 | 2026-11-11 | 27XT34-042 FF+2d |  | 326.8d |
|  | SEKCJA 06 | **Sekcja 06** |  | 2026-04-16 | 2026-11-12 |  |  |  |
|  | PODSEKCJA | **Podsekcja 06.A** |  | 2026-04-16 | 2026-11-12 |  |  |  |
| 27XT34-044 |  | Prefabrykacja ruroci¹gów – Sekcja 06 | 6.9d | 2026-04-16 A | 2026-04-23 A | 27XT34-012, 27XT34-039 SS+5d | 100% |  |
| 27XT34-045 |  | Monta¿ ruroci¹gów – Sekcja 06 | 17.8d | 2026-09-24 A | 2026-10-19 | 27XT34-044, 27XT34-014 SS+2d | 17% | 326.1d |
| 27XT34-046 |  | Próba ciœnieniowa – Sekcja 06 | 5d | 2026-10-20 | 2026-10-26 | 27XT34-045 |  | 325.1d |
| 27XT34-047 |  | Izolacje – Sekcja 06 | 11d | 2026-10-27 | 2026-11-10 | 27XT34-046 |  | 325.1d |
| 27XT34-048 |  | Malowanie i oznakowanie – Sekcja 06 | 7d | 2026-11-04 | 2026-11-12 | 27XT34-047 FF+2d |  | 325.1d |
|  | SEKCJA 07 | **Sekcja 07** |  | 2026-04-22 | 2026-11-19 |  |  |  |
| 27XT34-051 |  | Prefabrykacja ruroci¹gów – Sekcja 07 | 6.7d | 2026-04-22 A | 2026-10-01 | 27XT34-012, 27XT34-044 SS+5d | 69% | 311.5d |
| 27XT34-052 |  | Monta¿ ruroci¹gów – Sekcja 07 | 19.9d | 2026-10-07 | 2026-11-02 | 27XT34-051, 27XT34-014 SS+9d |  | 320d |
| 27XT34-053 |  | Próba ciœnieniowa – Sekcja 07 | 5d | 2026-11-03 | 2026-11-09 | 27XT34-052 |  | 320d |
| 27XT34-054 |  | Izolacje – Sekcja 07 | 6d | 2026-11-10 | 2026-11-17 | 27XT34-053 |  | 320d |
| 27XT34-055 |  | Malowanie i oznakowanie – Sekcja 07 | 6d | 2026-11-12 | 2026-11-19 | 27XT34-054 FF+2d |  | 320d |
|  | SEKCJA 08 | **Sekcja 08** |  | 2026-04-30 | 2026-10-21 |  |  |  |
| 27XT34-056 |  | Prefabrykacja ruroci¹gów – Sekcja 08 | 11.6d | 2026-04-30 A | 2026-05-19 A | 27XT34-012, 27XT34-051 SS+5d | 100% |  |
| 27XT34-057 |  | Monta¿ ruroci¹gów – Sekcja 08 | 18.9d | 2026-09-30 A | 2026-10-08 | 27XT34-056, 27XT34-014 SS+3d | 62% | 330d |
| 27XT34-058 |  | Próba ciœnieniowa – Sekcja 08 | 4d | 2026-10-09 | 2026-10-14 | 27XT34-057 |  | 341.8d |
| 27XT34-059 |  | Izolacje – Sekcja 08 | 3d | 2026-10-15 | 2026-10-19 | 27XT34-058 |  | 341.8d |
| 27XT34-060 |  | Malowanie i oznakowanie – Sekcja 08 | 2d | 2026-10-20 | 2026-10-21 | 27XT34-059 FF+2d |  | 341.8d |
|  | SEKCJA 09 | **Sekcja 09** |  | 2026-05-04 | 2026-10-28 |  |  |  |
|  | PODSEKCJA | **Podsekcja 09.A** |  | 2026-05-04 | 2026-10-28 |  |  |  |

| ID | WBS | Task | Duration | Start | Finish | Predecessors | Complete | Total float |
| --- | --- | --- | --- | --- | --- | --- | --- | --- |
| 27XT34-063 |  | Prefabrykacja ruroci¹gów – Sekcja 09 | 4.1d | 2026-05-04 A | 2026-05-12 A | 27XT34-012, 27XT34-056 SS+5d | 100% |  |
| 27XT34-064 |  | Monta¿ ruroci¹gów – Sekcja 09 | 18.3d | 2026-09-24 A | 2026-10-08 | 27XT34-063, 27XT34-014 SS+1d | 60% | 329.6d |
| 27XT34-065 |  | Próba ciœnieniowa – Sekcja 09 | 5d | 2026-10-09 | 2026-10-15 | 27XT34-064 |  | 336.5d |
| 27XT34-066 |  | Izolacje – Sekcja 09 | 7d | 2026-10-16 | 2026-10-26 | 27XT34-065 |  | 336.5d |
| 27XT34-067 |  | Malowanie i oznakowanie – Sekcja 09 | 2d | 2026-10-27 | 2026-10-28 | 27XT34-066 FF+2d |  | 336.5d |
|  | SEKCJA 10 | **Sekcja 10** |  | 2026-05-12 | 2026-11-12 |  |  |  |
| 27XT34-068 |  | Prefabrykacja ruroci¹gów – Sekcja 10 | 12.6d | 2026-05-12 A | 2026-05-29 A | 27XT34-012, 27XT34-063 SS+5d | 100% |  |
| 27XT34-069 |  | Monta¿ ruroci¹gów – Sekcja 10 | 9.5d | 2026-09-30 | 2026-10-12 | 27XT34-068, 27XT34-014 SS+2d |  | 338.4d |
| 27XT34-070 |  | Próba ciœnieniowa – Sekcja 10 | 2d | 2026-10-13 | 2026-10-14 | 27XT34-069 |  | 338.4d |
| 27XT34-071 |  | Izolacje – Sekcja 10 | 6d | 2026-11-03 | 2026-11-10 | 27XT34-070 |  | 325.9d |
| 27XT34-072 |  | Malowanie i oznakowanie – Sekcja 10 | 3d | 2026-11-10 | 2026-11-12 | 27XT34-071 FF+2d |  | 325.9d |
|  | SEKCJA 11 | **Sekcja 11** |  | 2026-05-19 | 2026-10-27 |  |  |  |
| 27XT34-075 |  | Prefabrykacja ruroci¹gów – Sekcja 11 | 8.2d | 2026-05-19 A | 2026-06-01 A | 27XT34-012, 27XT34-068 SS+5d | 100% |  |
| 27XT34-076 |  | Monta¿ ruroci¹gów – Sekcja 11 | 19.3d | 2026-09-29 A | 2026-10-02 | 27XT34-075, 27XT34-014 SS+3d | 83% | 322.6d |
| 27XT34-077 |  | Próba ciœnieniowa – Sekcja 11 | 5d | 2026-10-05 | 2026-10-09 | 27XT34-076 |  | 337.7d |
| 27XT34-078 |  | Izolacje – Sekcja 11 | 10d | 2026-10-12 | 2026-10-23 | 27XT34-077 |  | 337.7d |
| 27XT34-079 |  | Malowanie i oznakowanie – Sekcja 11 | 5d | 2026-10-21 | 2026-10-27 | 27XT34-078 FF+2d |  | 337.7d |
|  | SEKCJA 12 | **Sekcja 12** |  | 2026-05-25 | 2026-10-27 |  |  |  |
|  | PODSEKCJA | **Podsekcja 12.A** |  | 2026-05-25 | 2026-10-27 |  |  |  |
| 27XT34-080 |  | Prefabrykacja ruroci¹gów – Sekcja 12 | 7.5d | 2026-05-25 A | 2026-06-02 A | 27XT34-012, 27XT34-075 SS+5d | 100% |  |
| 27XT34-081 |  | Monta¿ ruroci¹gów – Sekcja 12 | 21.2d | 2026-09-29 A | 2026-10-08 | 27XT34-080, 27XT34-014 SS+1d | 67% | 324.7d |
| 27XT34-082 |  | Próba ciœnieniowa – Sekcja 12 | 4d | 2026-10-09 | 2026-10-14 | 27XT34-081 |  | 337.8d |
| 27XT34-083 |  | Izolacje – Sekcja 12 | 7d | 2026-10-15 | 2026-10-23 | 27XT34-082 |  | 337.8d |
| 27XT34-084 |  | Malowanie i oznakowanie – Sekcja 12 | 3d | 2026-10-23 | 2026-10-27 | 27XT34-083 FF+2d |  | 337.8d |
|  | SEKCJA 13 | **Sekcja 13** |  | 2026-05-29 | 2026-10-27 |  |  |  |
| 27XT34-087 |  | Prefabrykacja ruroci¹gów – Sekcja 13 | 7d | 2026-05-29 A | 2026-06-09 A | 27XT34-012, 27XT34-080 SS+5d | 100% |  |
| 27XT34-088 |  | Monta¿ ruroci¹gów – Sekcja 13 | 22d | 2026-09-29 A | 2026-10-14 | 27XT34-087, 27XT34-014 SS+1d | 49% | 327.9d |
| 27XT34-089 |  | Próba ciœnieniowa – Sekcja 13 | 3d | 2026-10-15 | 2026-10-19 | 27XT34-088 |  | 337.6d |
| 27XT34-091 |  | Malowanie i oznakowanie – Sekcja 13 | 7d | 2026-10-19 | 2026-10-27 | 27XT34-090 FF+2d |  | 337.6d |
| 27XT34-090 |  | Izolacje – Sekcja 13 | 4d | 2026-10-20 | 2026-10-23 | 27XT34-089 |  | 337.6d |
|  | SEKCJA 14 | **Sekcja 14** |  | 2026-06-11 | 2026-11-16 |  |  |  |
| 27XT34-092 |  | Prefabrykacja ruroci¹gów – Sekcja 14 | 5.2d | 2026-06-11 A | 2026-09-30 | 27XT34-012, 27XT34-087 SS+5d | 63% | 310.5d |
| 27XT34-093 |  | Monta¿ ruroci¹gów – Sekcja 14 | 24.8d | 2026-09-25 A | 2026-10-21 | 27XT34-092, 27XT34-014 SS+1d | 35% | 318.1d |
| 27XT34-094 |  | Próba ciœnieniowa – Sekcja 14 | 6d | 2026-10-22 | 2026-10-29 | 27XT34-093 |  | 323.7d |
| 27XT34-095 |  | Izolacje – Sekcja 14 | 10d | 2026-10-30 | 2026-11-12 | 27XT34-094 |  | 323.7d |
| 27XT34-096 |  | Malowanie i oznakowanie – Sekcja 14 | 8d | 2026-11-05 | 2026-11-16 | 27XT34-095 FF+2d |  | 323.7d |
|  | SEKCJA 15 | **Sekcja 15** |  | 2026-06-18 | 2026-10-23 |  |  |  |
|  | PODSEKCJA | **Podsekcja 15.A** |  | 2026-06-18 | 2026-10-23 |  |  |  |
| 27XT34-099 |  | Prefabrykacja ruroci¹gów – Sekcja 15 | 10d | 2026-06-18 A | 2026-07-01 A | 27XT34-012, 27XT34-092 SS+5d | 100% |  |
| 27XT34-100 |  | Monta¿ ruroci¹gów – Sekcja 15 | 6.7d | 2026-09-30 A | 2026-10-02 | 27XT34-099, 27XT34-014 SS+6d | 45% | 336.2d |
| 27XT34-101 |  | Próba ciœnieniowa – Sekcja 15 | 6d | 2026-10-05 | 2026-10-12 | 27XT34-100 |  | 339.2d |
| 27XT34-102 |  | Izolacje – Sekcja 15 | 7d | 2026-10-13 | 2026-10-21 | 27XT34-101 |  | 339.2d |
| 27XT34-103 |  | Malowanie i oznakowanie – Sekcja 15 | 7d | 2026-10-15 | 2026-10-23 | 27XT34-102 FF+2d |  | 339.2d |
|  | SEKCJA 16 | **Sekcja 16** |  | 2026-06-22 | 2026-10-15 |  |  |  |
| 27XT34-104 |  | Prefabrykacja ruroci¹gów – Sekcja 16 | 12.9d | 2026-06-22 A | 2026-07-10 A | 27XT34-012, 27XT34-099 SS+5d | 100% |  |
| 27XT34-105 |  | Monta¿ ruroci¹gów – Sekcja 16 | 11.6d | 2026-09-28 A | 2026-09-30 | 27XT34-104, 27XT34-014 SS+1d | 89% | 337.3d |
| 27XT34-106 |  | Próba ciœnieniowa – Sekcja 16 | 5d | 2026-10-01 | 2026-10-07 | 27XT34-105 |  | 345.6d |
| 27XT34-108 |  | Malowanie i oznakowanie – Sekcja 16 | 8d | 2026-10-06 | 2026-10-15 | 27XT34-107 FF+2d |  | 345.6d |
| 27XT34-107 |  | Izolacje – Sekcja 16 | 4d | 2026-10-08 | 2026-10-13 | 27XT34-106 |  | 345.6d |
|  | SEKCJA 17 | **Sekcja 17** |  | 2026-07-02 | 2026-11-23 |  |  |  |
| 27XT34-111 |  | Prefabrykacja ruroci¹gów – Sekcja 17 | 4.9d | 2026-07-02 A | 2026-07-08 A | 27XT34-012, 27XT34-104 SS+5d | 100% |  |
| 27XT34-112 |  | Monta¿ ruroci¹gów – Sekcja 17 | 24d | 2026-10-06 | 2026-11-06 | 27XT34-111, 27XT34-014 SS+8d |  | 318.9d |
| 27XT34-113 |  | Próba ciœnieniowa – Sekcja 17 | 4d | 2026-11-09 | 2026-11-12 | 27XT34-112 |  | 318.9d |
| 27XT34-115 |  | Malowanie i oznakowanie – Sekcja 17 | 8d | 2026-11-12 | 2026-11-23 | 27XT34-114 FF+2d |  | 318.9d |
| 27XT34-114 |  | Izolacje – Sekcja 17 | 5d | 2026-11-13 | 2026-11-19 | 27XT34-113 |  | 318.9d |
|  | SEKCJA 18 | **Sekcja 18** |  | 2026-07-07 | 2026-10-13 |  |  |  |
|  | PODSEKCJA | **Podsekcja 18.A** |  | 2026-07-07 | 2026-10-13 |  |  |  |
| 27XT34-116 |  | Prefabrykacja ruroci¹gów – Sekcja 18 | 5.9d | 2026-07-07 A | 2026-07-14 A | 27XT34-012, 27XT34-111 SS+5d | 100% |  |
| 27XT34-117 |  | Monta¿ ruroci¹gów – Sekcja 18 | 21.2d | 2026-09-30 A | 2026-10-02 | 27XT34-116, 27XT34-014 SS+4d | 83% | 329.7d |
| 27XT34-118 |  | Próba ciœnieniowa – Sekcja 18 | 2d | 2026-10-05 | 2026-10-06 | 27XT34-117 |  | 347.2d |
| 27XT34-119 |  | Izolacje – Sekcja 18 | 3d | 2026-10-07 | 2026-10-09 | 27XT34-118 |  | 347.2d |
| 27XT34-120 |  | Malowanie i oznakowanie – Sekcja 18 | 4d | 2026-10-08 | 2026-10-13 | 27XT34-119 FF+2d |  | 347.2d |
|  | SEKCJA 19 | **Sekcja 19** |  | 2026-07-15 | 2026-11-26 |  |  |  |
| 27XT34-123 |  | Prefabrykacja ruroci¹gów – Sekcja 19 | 3.2d | 2026-07-15 A | 2026-07-22 A | 27XT34-012, 27XT34-116 SS+5d | 100% |  |
| 27XT34-124 |  | Monta¿ ruroci¹gów – Sekcja 19 | 24.9d | 2026-09-30 | 2026-11-02 | 27XT34-123, 27XT34-014 SS+4d |  | 315d |
| 27XT34-125 |  | Próba ciœnieniowa – Sekcja 19 | 5d | 2026-11-03 | 2026-11-09 | 27XT34-124 |  | 315d |
| 27XT34-126 |  | Izolacje – Sekcja 19 | 11d | 2026-11-10 | 2026-11-24 | 27XT34-125 |  | 315d |
| 27XT34-127 |  | Malowanie i oznakowanie – Sekcja 19 | 3d | 2026-11-24 | 2026-11-26 | 27XT34-126 FF+2d |  | 315d |
|  | SEKCJA 20 | **Sekcja 20** |  | 2026-07-20 | 2026-10-16 |  |  |  |
| 27XT34-128 |  | Prefabrykacja ruroci¹gów – Sekcja 20 | 7.1d | 2026-07-20 A | 2026-07-31 A | 27XT34-012, 27XT34-123 SS+5d | 100% |  |

| ID | WBS | Task | Duration | Start | Finish | Predecessors | Complete | Total float |
| --- | --- | --- | --- | --- | --- | --- | --- | --- |
| 27XT34-129 |  | Monta¿ ruroci¹gów – Sekcja 20 | 10.2d | 2026-09-25 A | 2026-10-02 | 27XT34-128, 27XT34-014 SS | 70% | 301.7d |
| 27XT34-130 |  | Próba ciœnieniowa – Sekcja 20 | 4d | 2026-10-05 | 2026-10-08 | 27XT34-129 |  | 305.8d |
| 27XT34-131 |  | Izolacje – Sekcja 20 | 4d | 2026-10-09 | 2026-10-14 | 27XT34-130 |  | 305.8d |
| 27XT34-132 |  | Malowanie i oznakowanie – Sekcja 20 | 4d | 2026-10-13 | 2026-10-16 | 27XT34-131 FF+2d |  | 305.8d |
|  | SEKCJA 21 | **Sekcja 21** |  | 2026-07-27 | 2026-11-16 |  |  |  |
|  | PODSEKCJA | **Podsekcja 21.A** |  | 2026-07-27 | 2026-11-16 |  |  |  |
| 27XT34-135 |  | Prefabrykacja ruroci¹gów – Sekcja 21 | 12d | 2026-07-27 A | 2026-08-12 A | 27XT34-012, 27XT34-128 SS+5d | 100% |  |
| 27XT34-136 |  | Monta¿ ruroci¹gów – Sekcja 21 | 24.4d | 2026-09-28 A | 2026-10-23 | 27XT34-135, 27XT34-014 SS+1d | 26% | 280.5d |
| 27XT34-137 |  | Próba ciœnieniowa – Sekcja 21 | 5d | 2026-10-26 | 2026-10-30 | 27XT34-136 |  | 284.9d |
| 27XT34-138 |  | Izolacje – Sekcja 21 | 9d | 2026-11-02 | 2026-11-12 | 27XT34-137 |  | 284.9d |
| 27XT34-139 |  | Malowanie i oznakowanie – Sekcja 21 | 6d | 2026-11-09 | 2026-11-16 | 27XT34-138 FF+2d |  | 284.9d |
|  | PROJ | **Projektowanie** |  | 2025-06-19 | 2025-12-11 |  |  |  |
|  | DOKUMENTAC | **Dokumentacja** |  | 2025-06-19 | 2025-12-11 |  |  |  |
| 27XT34-001 |  | Projekt wykonawczy – Zbiornik wody zasilaj¹cej | 86d | 2025-06-19 A | 2025-10-20 A |  | 100% |  |
| 27XT34-002 |  | Uzgodnienie dokumentacji z Inwestorem | 30d | 2025-10-21 A | 2025-12-03 A | 27XT34-001 | 100% |  |
| 27XT34-003 |  | Zatwierdzenie dokumentacji do realizacji | 6d | 2025-12-02 A | 2025-12-11 A | 27XT34-002 | 100% |  |
| 27XT34-004 |  | KM: Dokumentacja zatwierdzona – Zbiornik wody zasilaj¹cej | 0d | 2025-12-09 A | 2025-12-09 | 27XT34-003 | 100% |  |
|  | ROZR | **Rozruch** |  | 2026-12-03 | 2027-01-13 |  |  |  |
|  | ROZRUCH | **Rozruch** |  | 2026-12-03 | 2027-01-13 |  |  |  |
| 27XT34-142 |  | Przegl¹d gotowoœci do rozruchu | 5d | 2026-12-03 | 2026-12-09 | 27XT34-141, 27XT34-019, 27XT34-024, 27XT34-026 |  | 272.5d |
| 27XT34-143 |  | Rozruch na zimno | 10d | 2026-12-10 | 2026-12-23 | 27XT34-142 |  | 272.5d |
| 27XT34-144 |  | Rozruch na gor¹co / próby ruchowe | 14d | 2026-12-24 | 2027-01-12 | 27XT34-143 |  | 272.5d |
| 27XT34-145 |  | KM: Odbiór koñcowy – Zbiornik wody zasilaj¹cej | 0d | 2027-01-13 | 2027-01-13 | 27XT34-144 |  | 272.5d |
|  | ZAKU | **Zakupy** |  | 2025-07-21 | 2027-02-12 |  |  |  |
|  | DOSTAWY | **Dostawy** |  | 2025-12-22 | 2027-02-12 |  |  |  |
| 27XT34-008 |  | Produkcja u dostawcy | 158d | 2025-12-22 A | 2027-02-12 | 27XT34-007 | 38% | 270.5d |
| 27XT34-009 |  | Testy FAT | 5d | 2026-07-29 A | 2026-08-07 A | 27XT34-008 | 100% |  |
| 27XT34-010 |  | Transport i dostawa na plac budowy | 37d | 2026-08-03 A | 2026-09-22 A | 27XT34-009 | 100% |  |
| 27XT34-011 |  | KM: Dostawa na budowê – Zbiornik wody zasilaj¹cej | 0d | 2026-09-25 A | 2026-09-25 | 27XT34-010 | 100% |  |
|  | ZAMÓWIENIA | **Zamówienia** |  | 2025-07-21 | 2026-10-15 |  |  |  |
| 27XT34-005 |  | Zapytanie ofertowe | 15d | 2025-07-21 A | 2026-10-15 | 27XT34-001 SS+20d | 18% | 341.5d |
| 27XT34-006 |  | Analiza i wybór ofert | 17d | 2025-08-08 A | 2025-09-02 A | 27XT34-005 | 100% |  |
| 27XT34-007 |  | Zawarcie umowy / zamówienie | 7d | 2025-12-05 A | 2025-12-15 A | 27XT34-006, 27XT34-004 SS, 10BW45-004 SS+7d | 100% |  |
|  | 28BW90 | **28BW90 – Uk³ad by-pass pary** |  | 2025-05-20 | 2027-12-29 |  |  |  |
|  | BUDO | **Budowa** |  | 2025-11-03 | 2027-11-26 |  |  |  |
|  | AKPIA | **AKPiA** |  | 2027-09-28 | 2027-11-01 |  |  |  |
| 28BW90-104 |  | Monta¿ uk³adów AKPiA | 25d | 2027-09-28 | 2027-11-01 | 28BW90-014 SS+5d |  | 40.5d |
|  | ELEKTRYKA | **Elektryka** |  | 2027-10-05 | 2027-10-29 |  |  |  |
| 28BW90-025 |  | Uk³adanie kabli – trasa 02 | 10d | 2027-10-05 | 2027-10-18 | 28BW90-014 SS+10d |  | 50.5d |
| 28BW90-037 |  | Uk³adanie kabli – trasa 04 | 16d | 2027-10-05 | 2027-10-26 | 28BW90-014 SS+10d |  | 77.5d |
| 28BW90-049 |  | Uk³adanie kabli – trasa 06 | 8d | 2027-10-05 | 2027-10-14 | 28BW90-014 SS+10d |  | 85.5d |
| 28BW90-061 |  | Uk³adanie kabli – trasa 08 | 11d | 2027-10-05 | 2027-10-19 | 28BW90-014 SS+10d |  | 82.5d |
| 28BW90-073 |  | Uk³adanie kabli – trasa 10 | 19d | 2027-10-05 | 2027-10-29 | 28BW90-014 SS+10d |  | 74.5d |
| 28BW90-085 |  | Uk³adanie kabli – trasa 12 | 4d | 2027-10-05 | 2027-10-08 | 28BW90-014 SS+10d |  | 89.5d |
| 28BW90-097 |  | Uk³adanie kabli – trasa 14 | 8d | 2027-10-05 | 2027-10-14 | 28BW90-014 SS+10d |  | 52.5d |
| 28BW90-062 |  | Pod³¹czenia i pomiary – trasa 08 | 10d | 2027-10-06 | 2027-10-19 | 28BW90-061 FF |  | 82.5d |
| 28BW90-086 |  | Pod³¹czenia i pomiary – trasa 12 | 3d | 2027-10-06 | 2027-10-08 | 28BW90-085 FF |  | 89.5d |
| 28BW90-098 |  | Pod³¹czenia i pomiary – trasa 14 | 7d | 2027-10-06 | 2027-10-14 | 28BW90-097 FF |  | 52.5d |
| 28BW90-026 |  | Pod³¹czenia i pomiary – trasa 02 | 8d | 2027-10-07 | 2027-10-18 | 28BW90-025 FF |  | 50.5d |
| 28BW90-050 |  | Pod³¹czenia i pomiary – trasa 06 | 3d | 2027-10-12 | 2027-10-14 | 28BW90-049 FF |  | 85.5d |
| 28BW90-038 |  | Pod³¹czenia i pomiary – trasa 04 | 6d | 2027-10-19 | 2027-10-26 | 28BW90-037 FF |  | 77.5d |
| 28BW90-074 |  | Pod³¹czenia i pomiary – trasa 10 | 4d | 2027-10-26 | 2027-10-29 | 28BW90-073 FF |  | 74.5d |
|  | MONTA¯ | **Monta¿** |  | 2025-11-27 | 2027-11-26 |  |  |  |
| 28BW90-013 |  | Monta¿ konstrukcji stalowych | 33d | 2025-11-27 A | 2026-01-13 A | 28BW90-012 | 100% |  |
| 28BW90-014 |  | Monta¿ urz¹dzeñ g³ównych | 48d | 2027-09-21 | 2027-11-25 | 28BW90-013, 28BW90-011 |  | 22.5d |
| 28BW90-105 |  | KM: Zakoñczenie monta¿u – Uk³ad by-pass pary | 0d | 2027-11-26 | 2027-11-26 | 28BW90-096, 28BW90-098, 28BW90-103, 28BW90-104, 28BW90-014 |  | 22.5d |
|  | ROBOTY BUD | **Roboty budowlane** |  | 2025-11-03 | 2025-12-04 |  |  |  |
| 28BW90-012 |  | Fundamenty i roboty ziemne | 21d | 2025-11-03 A | 2025-12-04 A | 28BW90-007 FS+4d | 100% |  |
|  | RUROCI¥GI | **Ruroci¹gi** |  | 2025-12-01 | 2027-11-19 |  |  |  |
|  | SEKCJA 01 | **Sekcja 01** |  | 2025-12-01 | 2027-11-12 |  |  |  |
| 28BW90-015 |  | Prefabrykacja ruroci¹gów – Sekcja 01 | 13.3d | 2025-12-01 A | 2025-12-17 A | 28BW90-012 | 100% |  |
| 28BW90-016 |  | Monta¿ ruroci¹gów – Sekcja 01 | 17.2d | 2027-09-24 | 2027-10-18 | 28BW90-015, 28BW90-014 SS+3d |  | 31.3d |
| 28BW90-017 |  | Próba ciœnieniowa – Sekcja 01 | 5d | 2027-10-19 | 2027-10-25 | 28BW90-016 |  | 31.3d |
| 28BW90-018 |  | Izolacje – Sekcja 01 | 12d | 2027-10-26 | 2027-11-10 | 28BW90-017 |  | 31.3d |
| 28BW90-019 |  | Malowanie i oznakowanie – Sekcja 01 | 4d | 2027-11-09 | 2027-11-12 | 28BW90-018 FF+2d |  | 31.3d |
|  | SEKCJA 02 | **Sekcja 02** |  | 2025-12-09 | 2027-10-29 |  |  |  |
| 28BW90-020 |  | Prefabrykacja ruroci¹gów – Sekcja 02 | 10d | 2025-12-09 A | 2025-12-23 A | 28BW90-012, 28BW90-015 SS+5d | 100% |  |
| 28BW90-021 |  | Monta¿ ruroci¹gów – Sekcja 02 | 13d | 2027-09-29 | 2027-10-15 | 28BW90-020, 28BW90-014 SS+6d |  | 41.5d |
| 28BW90-022 |  | Próba ciœnieniowa – Sekcja 02 | 2d | 2027-10-18 | 2027-10-19 | 28BW90-021 |  | 41.5d |
| 28BW90-023 |  | Izolacje – Sekcja 02 | 6d | 2027-10-20 | 2027-10-27 | 28BW90-022 |  | 41.5d |

| ID | WBS | Task | Duration | Start | Finish | Predecessors | Complete | Total float |
| --- | --- | --- | --- | --- | --- | --- | --- | --- |
| 28BW90-024 |  | Malowanie i oznakowanie – Sekcja 02 | 4d | 2027-10-26 | 2027-10-29 | 28BW90-023 FF+2d |  | 41.5d |
|  | SEKCJA 03 | **Sekcja 03** |  | 2025-12-12 | 2027-11-15 |  |  |  |
|  | PODSEKCJA | **Podsekcja 03.A** |  | 2025-12-12 | 2027-11-15 |  |  |  |
| 28BW90-027 |  | Prefabrykacja ruroci¹gów – Sekcja 03 | 14.4d | 2025-12-12 A | 2026-01-01 A | 28BW90-012, 28BW90-020 SS+5d | 100% |  |
| 28BW90-028 |  | Monta¿ ruroci¹gów – Sekcja 03 | 23.4d | 2027-09-28 | 2027-10-28 | 28BW90-027, 28BW90-014 SS+5d |  | 63.1d |
| 28BW90-029 |  | Próba ciœnieniowa – Sekcja 03 | 3d | 2027-10-29 | 2027-11-02 | 28BW90-028 |  | 63.1d |
| 28BW90-030 |  | Izolacje – Sekcja 03 | 7d | 2027-11-03 | 2027-11-11 | 28BW90-029 |  | 63.1d |
| 28BW90-031 |  | Malowanie i oznakowanie – Sekcja 03 | 2d | 2027-11-12 | 2027-11-15 | 28BW90-030 FF+2d |  | 63.1d |
|  | SEKCJA 04 | **Sekcja 04** |  | 2025-12-24 | 2027-10-28 |  |  |  |
| 28BW90-032 |  | Prefabrykacja ruroci¹gów – Sekcja 04 | 6.1d | 2025-12-24 A | 2026-01-02 A | 28BW90-012, 28BW90-027 SS+5d | 100% |  |
| 28BW90-033 |  | Monta¿ ruroci¹gów – Sekcja 04 | 17.6d | 2027-09-21 | 2027-10-14 | 28BW90-032, 28BW90-014 SS |  | 75.9d |
| 28BW90-034 |  | Próba ciœnieniowa – Sekcja 04 | 5d | 2027-10-15 | 2027-10-21 | 28BW90-033 |  | 75.9d |
| 28BW90-036 |  | Malowanie i oznakowanie – Sekcja 04 | 8d | 2027-10-19 | 2027-10-28 | 28BW90-035 FF+2d |  | 75.9d |
| 28BW90-035 |  | Izolacje – Sekcja 04 | 3d | 2027-10-22 | 2027-10-26 | 28BW90-034 |  | 75.9d |
|  | SEKCJA 05 | **Sekcja 05** |  | 2025-12-31 | 2027-11-09 |  |  |  |
| 28BW90-039 |  | Prefabrykacja ruroci¹gów – Sekcja 05 | 5.7d | 2025-12-31 A | 2026-01-06 A | 28BW90-012, 28BW90-032 SS+5d | 100% |  |
| 28BW90-040 |  | Monta¿ ruroci¹gów – Sekcja 05 | 17.6d | 2027-09-30 | 2027-10-25 | 28BW90-039, 28BW90-014 SS+7d |  | 67.9d |
| 28BW90-041 |  | Próba ciœnieniowa – Sekcja 05 | 6d | 2027-10-26 | 2027-11-02 | 28BW90-040 |  | 67.9d |
| 28BW90-043 |  | Malowanie i oznakowanie – Sekcja 05 | 7d | 2027-11-01 | 2027-11-09 | 28BW90-042 FF+2d |  | 67.9d |
| 28BW90-042 |  | Izolacje – Sekcja 05 | 3d | 2027-11-03 | 2027-11-05 | 28BW90-041 |  | 67.9d |
|  | SEKCJA 06 | **Sekcja 06** |  | 2026-01-02 | 2027-11-19 |  |  |  |
|  | PODSEKCJA | **Podsekcja 06.A** |  | 2026-01-02 | 2027-11-19 |  |  |  |
| 28BW90-044 |  | Prefabrykacja ruroci¹gów – Sekcja 06 | 6.7d | 2026-01-02 A | 2026-01-13 A | 28BW90-012, 28BW90-039 SS+5d | 100% |  |
| 28BW90-045 |  | Monta¿ ruroci¹gów – Sekcja 06 | 21.3d | 2027-10-01 | 2027-10-29 | 28BW90-044, 28BW90-014 SS+8d |  | 59.2d |
| 28BW90-046 |  | Próba ciœnieniowa – Sekcja 06 | 2d | 2027-11-01 | 2027-11-02 | 28BW90-045 |  | 59.2d |
| 28BW90-047 |  | Izolacje – Sekcja 06 | 11d | 2027-11-03 | 2027-11-17 | 28BW90-046 |  | 59.2d |
| 28BW90-048 |  | Malowanie i oznakowanie – Sekcja 06 | 4d | 2027-11-16 | 2027-11-19 | 28BW90-047 FF+2d |  | 59.2d |
|  | SEKCJA 07 | **Sekcja 07** |  | 2026-01-08 | 2027-10-22 |  |  |  |
| 28BW90-051 |  | Prefabrykacja ruroci¹gów – Sekcja 07 | 5.8d | 2026-01-08 A | 2026-01-14 A | 28BW90-012, 28BW90-044 SS+5d | 100% |  |
| 28BW90-052 |  | Monta¿ ruroci¹gów – Sekcja 07 | 12.1d | 2027-09-21 | 2027-10-06 | 28BW90-051, 28BW90-014 SS |  | 79.4d |
| 28BW90-053 |  | Próba ciœnieniowa – Sekcja 07 | 3d | 2027-10-07 | 2027-10-11 | 28BW90-052 |  | 79.4d |
| 28BW90-054 |  | Izolacje – Sekcja 07 | 7d | 2027-10-12 | 2027-10-20 | 28BW90-053 |  | 79.4d |
| 28BW90-055 |  | Malowanie i oznakowanie – Sekcja 07 | 5d | 2027-10-18 | 2027-10-22 | 28BW90-054 FF+2d |  | 79.4d |
|  | SEKCJA 08 | **Sekcja 08** |  | 2026-01-21 | 2027-10-25 |  |  |  |
| 28BW90-056 |  | Prefabrykacja ruroci¹gów – Sekcja 08 | 4.6d | 2026-01-21 A | 2026-01-26 A | 28BW90-012, 28BW90-051 SS+5d | 100% |  |
| 28BW90-057 |  | Monta¿ ruroci¹gów – Sekcja 08 | 10.5d | 2027-09-30 | 2027-10-13 | 28BW90-056, 28BW90-014 SS+7d |  | 78d |
| 28BW90-058 |  | Próba ciœnieniowa – Sekcja 08 | 3d | 2027-10-14 | 2027-10-18 | 28BW90-057 |  | 78d |
| 28BW90-060 |  | Malowanie i oznakowanie – Sekcja 08 | 6d | 2027-10-18 | 2027-10-25 | 28BW90-059 FF+2d |  | 78d |
| 28BW90-059 |  | Izolacje – Sekcja 08 | 3d | 2027-10-19 | 2027-10-21 | 28BW90-058 |  | 78d |
|  | SEKCJA 09 | **Sekcja 09** |  | 2026-01-27 | 2027-11-05 |  |  |  |
|  | PODSEKCJA | **Podsekcja 09.A** |  | 2026-01-27 | 2027-11-05 |  |  |  |
| 28BW90-063 |  | Prefabrykacja ruroci¹gów – Sekcja 09 | 4.8d | 2026-01-27 A | 2026-02-04 A | 28BW90-012, 28BW90-056 SS+5d | 100% |  |
| 28BW90-064 |  | Monta¿ ruroci¹gów – Sekcja 09 | 13.6d | 2027-09-29 | 2027-10-18 | 28BW90-063, 28BW90-014 SS+6d |  | 69.9d |
| 28BW90-065 |  | Próba ciœnieniowa – Sekcja 09 | 3d | 2027-10-19 | 2027-10-21 | 28BW90-064 |  | 69.9d |
| 28BW90-066 |  | Izolacje – Sekcja 09 | 9d | 2027-10-22 | 2027-11-03 | 28BW90-065 |  | 69.9d |
| 28BW90-067 |  | Malowanie i oznakowanie – Sekcja 09 | 2d | 2027-11-04 | 2027-11-05 | 28BW90-066 FF+2d |  | 69.9d |
|  | SEKCJA 10 | **Sekcja 10** |  | 2026-02-02 | 2027-11-08 |  |  |  |
| 28BW90-068 |  | Prefabrykacja ruroci¹gów – Sekcja 10 | 6.2d | 2026-02-02 A | 2026-02-10 A | 28BW90-012, 28BW90-063 SS+5d | 100% |  |
| 28BW90-069 |  | Monta¿ ruroci¹gów – Sekcja 10 | 20.6d | 2027-09-22 | 2027-10-20 | 28BW90-068, 28BW90-014 SS+1d |  | 68.9d |
| 28BW90-070 |  | Próba ciœnieniowa – Sekcja 10 | 4d | 2027-10-21 | 2027-10-26 | 28BW90-069 |  | 68.9d |
| 28BW90-071 |  | Izolacje – Sekcja 10 | 7d | 2027-10-27 | 2027-11-04 | 28BW90-070 |  | 68.9d |
| 28BW90-072 |  | Malowanie i oznakowanie – Sekcja 10 | 7d | 2027-10-29 | 2027-11-08 | 28BW90-071 FF+2d |  | 68.9d |
|  | SEKCJA 11 | **Sekcja 11** |  | 2026-02-06 | 2027-11-03 |  |  |  |
| 28BW90-075 |  | Prefabrykacja ruroci¹gów – Sekcja 11 | 3.4d | 2026-02-06 A | 2026-02-11 A | 28BW90-012, 28BW90-068 SS+5d | 100% |  |
| 28BW90-076 |  | Monta¿ ruroci¹gów – Sekcja 11 | 19.5d | 2027-09-22 | 2027-10-18 | 28BW90-075, 28BW90-014 SS+1d |  | 71d |
| 28BW90-077 |  | Próba ciœnieniowa – Sekcja 11 | 5d | 2027-10-19 | 2027-10-25 | 28BW90-076 |  | 71d |
| 28BW90-078 |  | Izolacje – Sekcja 11 | 5d | 2027-10-26 | 2027-11-01 | 28BW90-077 |  | 71d |
| 28BW90-079 |  | Malowanie i oznakowanie – Sekcja 11 | 4d | 2027-10-29 | 2027-11-03 | 28BW90-078 FF+2d |  | 71d |
|  | SEKCJA 12 | **Sekcja 12** |  | 2026-02-16 | 2027-11-01 |  |  |  |
|  | PODSEKCJA | **Podsekcja 12.A** |  | 2026-02-16 | 2027-11-01 |  |  |  |
| 28BW90-080 |  | Prefabrykacja ruroci¹gów – Sekcja 12 | 11.3d | 2026-02-16 A | 2026-03-05 A | 28BW90-012, 28BW90-075 SS+5d | 100% |  |
| 28BW90-081 |  | Monta¿ ruroci¹gów – Sekcja 12 | 7d | 2027-10-01 | 2027-10-11 | 28BW90-080, 28BW90-014 SS+8d |  | 73.5d |
| 28BW90-082 |  | Próba ciœnieniowa – Sekcja 12 | 4d | 2027-10-12 | 2027-10-15 | 28BW90-081 |  | 73.5d |
| 28BW90-083 |  | Izolacje – Sekcja 12 | 9d | 2027-10-18 | 2027-10-28 | 28BW90-082 |  | 73.5d |
| 28BW90-084 |  | Malowanie i oznakowanie – Sekcja 12 | 5d | 2027-10-26 | 2027-11-01 | 28BW90-083 FF+2d |  | 73.5d |
|  | SEKCJA 13 | **Sekcja 13** |  | 2026-02-19 | 2027-10-28 |  |  |  |
| 28BW90-087 |  | Prefabrykacja ruroci¹gów – Sekcja 13 | 7.4d | 2026-02-19 A | 2026-03-03 A | 28BW90-012, 28BW90-080 SS+5d | 100% |  |
| 28BW90-088 |  | Monta¿ ruroci¹gów – Sekcja 13 | 11.7d | 2027-09-27 | 2027-10-12 | 28BW90-087, 28BW90-014 SS+4d |  | 75.8d |
| 28BW90-089 |  | Próba ciœnieniowa – Sekcja 13 | 5d | 2027-10-13 | 2027-10-19 | 28BW90-088 |  | 75.8d |
| 28BW90-090 |  | Izolacje – Sekcja 13 | 5d | 2027-10-20 | 2027-10-26 | 28BW90-089 |  | 75.8d |

| ID | WBS | Task | Duration | Start | Finish | Predecessors | Complete | Total float |
| --- | --- | --- | --- | --- | --- | --- | --- | --- |
| 28BW90-091 |  | Malowanie i oznakowanie – Sekcja 13 | 7d | 2027-10-20 | 2027-10-28 | 28BW90-090 FF+2d |  | 75.8d |
|  | SEKCJA 14 | **Sekcja 14** |  | 2026-02-27 | 2027-11-11 |  |  |  |
| 28BW90-092 |  | Prefabrykacja ruroci¹gów – Sekcja 14 | 11.7d | 2026-02-27 A | 2026-03-13 A | 28BW90-012, 28BW90-087 SS+5d | 100% |  |
| 28BW90-093 |  | Monta¿ ruroci¹gów – Sekcja 14 | 16.8d | 2027-10-05 | 2027-10-27 | 28BW90-092, 28BW90-014 SS+10d |  | 32.7d |
| 28BW90-094 |  | Próba ciœnieniowa – Sekcja 14 | 3d | 2027-10-28 | 2027-11-01 | 28BW90-093 |  | 32.7d |
| 28BW90-095 |  | Izolacje – Sekcja 14 | 6d | 2027-11-02 | 2027-11-09 | 28BW90-094 |  | 32.7d |
| 28BW90-096 |  | Malowanie i oznakowanie – Sekcja 14 | 6d | 2027-11-04 | 2027-11-11 | 28BW90-095 FF+2d |  | 32.7d |
|  | SEKCJA 15 | **Sekcja 15** |  | 2026-03-12 | 2027-11-12 |  |  |  |
|  | PODSEKCJA | **Podsekcja 15.A** |  | 2026-03-12 | 2027-11-12 |  |  |  |
| 28BW90-099 |  | Prefabrykacja ruroci¹gów – Sekcja 15 | 10.8d | 2026-03-12 A | 2026-10-07 | 28BW90-012, 28BW90-092 SS+5d | 44% | 426.1d |
| 28BW90-100 |  | Monta¿ ruroci¹gów – Sekcja 15 | 15d | 2027-09-30 | 2027-10-20 | 28BW90-099, 28BW90-014 SS+7d |  | 31.5d |
| 28BW90-101 |  | Próba ciœnieniowa – Sekcja 15 | 3d | 2027-10-21 | 2027-10-25 | 28BW90-100 |  | 31.5d |
| 28BW90-102 |  | Izolacje – Sekcja 15 | 12d | 2027-10-26 | 2027-11-10 | 28BW90-101 |  | 31.5d |
| 28BW90-103 |  | Malowanie i oznakowanie – Sekcja 15 | 8d | 2027-11-03 | 2027-11-12 | 28BW90-102 FF+2d |  | 31.5d |
|  | PROJ | **Projektowanie** |  | 2025-05-20 | 2025-09-15 |  |  |  |
|  | DOKUMENTAC | **Dokumentacja** |  | 2025-05-20 | 2025-09-15 |  |  |  |
| 28BW90-001 |  | Projekt wykonawczy – Uk³ad by-pass pary | 55d | 2025-05-20 A | 2025-08-06 A |  | 100% |  |
| 28BW90-002 |  | Uzgodnienie dokumentacji z Inwestorem | 23d | 2025-08-07 A | 2025-09-08 A | 28BW90-001 | 100% |  |
| 28BW90-003 |  | Zatwierdzenie dokumentacji do realizacji | 5d | 2025-09-04 A | 2025-09-12 A | 28BW90-002 | 100% |  |
| 28BW90-004 |  | KM: Dokumentacja zatwierdzona – Uk³ad by-pass pary | 0d | 2025-09-15 A | 2025-09-15 | 28BW90-003 | 100% |  |
|  | ROZR | **Rozruch** |  | 2027-11-26 | 2027-12-29 |  |  |  |
|  | ROZRUCH | **Rozruch** |  | 2027-11-26 | 2027-12-29 |  |  |  |
| 28BW90-106 |  | Przegl¹d gotowoœci do rozruchu | 8d | 2027-11-26 | 2027-12-07 | 28BW90-105, 28BW90-019, 28BW90-024, 28BW90-026 |  | 22.5d |
| 28BW90-107 |  | Rozruch na zimno | 5d | 2027-12-08 | 2027-12-14 | 28BW90-106 |  | 22.5d |
| 28BW90-108 |  | Rozruch na gor¹co / próby ruchowe | 10d | 2027-12-15 | 2027-12-28 | 28BW90-107 |  | 22.5d |
| 28BW90-109 |  | KM: Odbiór koñcowy – Uk³ad by-pass pary | 0d | 2027-12-29 | 2027-12-29 | 28BW90-108 |  | 22.5d |
|  | ZAKU | **Zakupy** |  | 2025-06-16 | 2027-09-21 |  |  |  |
|  | DOSTAWY | **Dostawy** |  | 2025-10-29 | 2027-09-21 |  |  |  |
| 28BW90-008 |  | Produkcja u dostawcy | 287d | 2025-10-29 A | 2027-08-02 | 28BW90-007 | 24% | 194.9d |
| 28BW90-009 |  | Testy FAT | 5d | 2027-08-03 | 2027-08-09 | 28BW90-008 |  | 22.5d |
| 28BW90-010 |  | Transport i dostawa na plac budowy | 30d | 2027-08-10 | 2027-09-20 | 28BW90-009 |  | 22.5d |
| 28BW90-011 |  | KM: Dostawa na budowê – Uk³ad by-pass pary | 0d | 2027-09-21 | 2027-09-21 | 28BW90-010 |  | 22.5d |
|  | ZAMÓWIENIA | **Zamówienia** |  | 2025-06-16 | 2025-10-24 |  |  |  |
| 28BW90-005 |  | Zapytanie ofertowe | 22d | 2025-06-16 A | 2025-07-16 A | 28BW90-001 SS+20d | 100% |  |
| 28BW90-006 |  | Analiza i wybór ofert | 10d | 2025-07-16 A | 2025-07-30 A | 28BW90-005 | 100% |  |
| 28BW90-007 |  | Zawarcie umowy / zamówienie | 6d | 2025-10-16 A | 2025-10-24 A | 28BW90-006, 28BW90-004 SS, 11CP59-004 FS+7d, 18CX52-004 FS+11d | 100% |  |
|  | 30BU48 | **30BU48 – Kocio³ odzyskowy HRSG** |  | 2025-01-13 | 2027-02-16 |  |  |  |
|  | BUDO | **Budowa** |  | 2025-07-28 | 2026-10-14 |  |  |  |
|  | AKPIA | **AKPiA** |  | 2026-07-17 | 2026-09-10 |  |  |  |
| 30BU48-147 |  | Monta¿ uk³adów AKPiA | 40d | 2026-07-17 A | 2026-09-10 A | 30BU48-014 SS+5d | 100% |  |
|  | ELEKTRYKA | **Elektryka** |  | 2026-07-17 | 2026-10-01 |  |  |  |
| 30BU48-074 |  | Pod³¹czenia i pomiary – trasa 10 | 10d | 2026-07-17 A | 2026-07-30 A | 30BU48-073 FF | 100% |  |
| 30BU48-025 |  | Uk³adanie kabli – trasa 02 | 10d | 2026-07-23 A | 2026-08-06 A | 30BU48-014 SS+10d | 100% |  |
| 30BU48-061 |  | Uk³adanie kabli – trasa 08 | 17d | 2026-07-23 A | 2026-08-18 A | 30BU48-014 SS+10d | 100% |  |
| 30BU48-121 |  | Uk³adanie kabli – trasa 18 | 17d | 2026-07-23 A | 2026-08-17 A | 30BU48-014 SS+10d | 100% |  |
| 30BU48-145 |  | Uk³adanie kabli – trasa 22 | 20d | 2026-07-23 A | 2026-08-21 A | 30BU48-014 SS+10d | 100% |  |
| 30BU48-073 |  | Uk³adanie kabli – trasa 10 | 6d | 2026-07-24 A | 2026-07-31 A | 30BU48-014 SS+10d | 100% |  |
| 30BU48-109 |  | Uk³adanie kabli – trasa 16 | 16d | 2026-07-27 A | 2026-08-17 A | 30BU48-014 SS+10d | 100% |  |
| 30BU48-037 |  | Uk³adanie kabli – trasa 04 | 19d | 2026-07-28 A | 2026-08-25 A | 30BU48-014 SS+10d | 100% |  |
| 30BU48-049 |  | Uk³adanie kabli – trasa 06 | 8d | 2026-07-28 A | 2026-08-10 A | 30BU48-014 SS+10d | 100% |  |
| 30BU48-085 |  | Uk³adanie kabli – trasa 12 | 12d | 2026-07-28 A | 2026-08-13 A | 30BU48-014 SS+10d | 100% |  |
| 30BU48-133 |  | Uk³adanie kabli – trasa 20 | 6d | 2026-07-28 A | 2026-08-04 A | 30BU48-014 SS+10d | 100% |  |
| 30BU48-050 |  | Pod³¹czenia i pomiary – trasa 06 | 5d | 2026-07-29 A | 2026-08-04 A | 30BU48-049 FF | 100% |  |
| 30BU48-097 |  | Uk³adanie kabli – trasa 14 | 15d | 2026-07-29 A | 2026-08-19 A | 30BU48-014 SS+10d | 100% |  |
| 30BU48-134 |  | Pod³¹czenia i pomiary – trasa 20 | 4d | 2026-07-30 A | 2026-08-06 A | 30BU48-133 FF | 100% |  |
| 30BU48-062 |  | Pod³¹czenia i pomiary – trasa 08 | 9d | 2026-08-04 A | 2026-08-19 A | 30BU48-061 FF | 100% |  |
| 30BU48-026 |  | Pod³¹czenia i pomiary – trasa 02 | 4d | 2026-08-06 A | 2026-08-12 A | 30BU48-025 FF | 100% |  |
| 30BU48-086 |  | Pod³¹czenia i pomiary – trasa 12 | 3d | 2026-08-06 A | 2026-08-10 A | 30BU48-085 FF | 100% |  |
| 30BU48-098 |  | Pod³¹czenia i pomiary – trasa 14 | 3d | 2026-08-10 A | 2026-08-12 A | 30BU48-097 FF | 100% |  |
| 30BU48-110 |  | Pod³¹czenia i pomiary – trasa 16 | 5d | 2026-08-11 A | 2026-08-17 A | 30BU48-109 FF | 100% |  |
| 30BU48-122 |  | Pod³¹czenia i pomiary – trasa 18 | 7d | 2026-08-12 A | 2026-08-20 A | 30BU48-121 FF | 100% |  |
| 30BU48-038 |  | Pod³¹czenia i pomiary – trasa 04 | 8d | 2026-08-13 A | 2026-08-24 A | 30BU48-037 FF | 100% |  |
| 30BU48-146 |  | Pod³¹czenia i pomiary – trasa 22 | 4d | 2026-08-20 A | 2026-10-01 | 30BU48-145 FF | 30% | 340.9d |
|  | MONTA¯ | **Monta¿** |  | 2025-09-15 | 2026-09-16 |  |  |  |
| 30BU48-013 |  | Monta¿ konstrukcji stalowych | 39d | 2025-09-15 A | 2025-11-07 A | 30BU48-012 | 100% |  |
| 30BU48-014 |  | Monta¿ urz¹dzeñ g³ównych | 26d | 2026-07-09 A | 2026-08-14 A | 30BU48-013, 30BU48-011 | 100% |  |
| 30BU48-148 |  | KM: Zakoñczenie monta¿u – Kocio³ odzyskowy HRSG | 0d | 2026-09-16 A | 2026-09-16 | 30BU48-139, 30BU48-144, 30BU48-146, 30BU48-147, 30BU48-014 | 100% |  |
|  | ROBOTY BUD | **Roboty budowlane** |  | 2025-07-28 | 2025-09-15 |  |  |  |
| 30BU48-012 |  | Fundamenty i roboty ziemne | 34d | 2025-07-28 A | 2025-09-15 A | 30BU48-007 FS+14d | 100% |  |
|  | RUROCI¥GI | **Ruroci¹gi** |  | 2025-09-15 | 2026-10-14 |  |  |  |

| ID | WBS | Task | Duration | Start | Finish | Predecessors | Complete | Total float |
| --- | --- | --- | --- | --- | --- | --- | --- | --- |
|  | SEKCJA 01 | **Sekcja 01** |  | 2025-09-15 | 2026-09-30 |  |  |  |
| 30BU48-015 |  | Prefabrykacja ruroci¹gów – Sekcja 01 | 14.6d | 2025-09-15 A | 2025-10-03 A | 30BU48-012 | 100% |  |
| 30BU48-016 |  | Monta¿ ruroci¹gów – Sekcja 01 | 17.9d | 2026-07-23 A | 2026-08-14 A | 30BU48-015, 30BU48-014 SS+10d | 100% |  |
| 30BU48-017 |  | Próba ciœnieniowa – Sekcja 01 | 3d | 2026-08-19 A | 2026-08-26 A | 30BU48-016 | 100% |  |
| 30BU48-018 |  | Izolacje – Sekcja 01 | 6d | 2026-08-21 A | 2026-08-31 A | 30BU48-017 | 100% |  |
| 30BU48-019 |  | Malowanie i oznakowanie – Sekcja 01 | 2d | 2026-08-31 A | 2026-09-30 | 30BU48-018 FF+2d | 50% | 335d |
|  | SEKCJA 02 | **Sekcja 02** |  | 2025-09-23 | 2026-10-02 |  |  |  |
| 30BU48-020 |  | Prefabrykacja ruroci¹gów – Sekcja 02 | 4.9d | 2025-09-23 A | 2025-09-30 A | 30BU48-012, 30BU48-015 SS+5d | 100% |  |
| 30BU48-021 |  | Monta¿ ruroci¹gów – Sekcja 02 | 24.9d | 2026-07-17 A | 2026-08-24 A | 30BU48-020, 30BU48-014 SS+5d | 100% |  |
| 30BU48-022 |  | Próba ciœnieniowa – Sekcja 02 | 5d | 2026-08-24 A | 2026-10-02 | 30BU48-021 | 34% | 324d |
| 30BU48-023 |  | Izolacje – Sekcja 02 | 11d | 2026-08-27 A | 2026-09-10 A | 30BU48-022 | 100% |  |
| 30BU48-024 |  | Malowanie i oznakowanie – Sekcja 02 | 4d | 2026-09-11 A | 2026-09-21 A | 30BU48-023 FF+2d | 100% |  |
|  | SEKCJA 03 | **Sekcja 03** |  | 2025-09-30 | 2026-10-13 |  |  |  |
|  | PODSEKCJA | **Podsekcja 03.A** |  | 2025-09-30 | 2026-10-13 |  |  |  |
| 30BU48-027 |  | Prefabrykacja ruroci¹gów – Sekcja 03 | 11.4d | 2025-09-30 A | 2025-10-15 A | 30BU48-012, 30BU48-020 SS+5d | 100% |  |
| 30BU48-028 |  | Monta¿ ruroci¹gów – Sekcja 03 | 20.2d | 2026-07-29 A | 2026-10-02 | 30BU48-027, 30BU48-014 SS+10d | 82% | 365.7d |
| 30BU48-029 |  | Próba ciœnieniowa – Sekcja 03 | 3d | 2026-08-20 A | 2026-08-25 A | 30BU48-028 | 100% |  |
| 30BU48-030 |  | Izolacje – Sekcja 03 | 12d | 2026-08-28 A | 2026-10-13 | 30BU48-029 | 16% | 366.7d |
| 30BU48-031 |  | Malowanie i oznakowanie – Sekcja 03 | 2d | 2026-09-16 A | 2026-09-17 A | 30BU48-030 FF+2d | 100% |  |
|  | SEKCJA 04 | **Sekcja 04** |  | 2025-10-07 | 2026-08-14 |  |  |  |
| 30BU48-032 |  | Prefabrykacja ruroci¹gów – Sekcja 04 | 7.1d | 2025-10-07 A | 2025-10-16 A | 30BU48-012, 30BU48-027 SS+5d | 100% |  |
| 30BU48-033 |  | Monta¿ ruroci¹gów – Sekcja 04 | 11.6d | 2026-07-14 A | 2026-07-30 A | 30BU48-032, 30BU48-014 SS+3d | 100% |  |
| 30BU48-034 |  | Próba ciœnieniowa – Sekcja 04 | 3d | 2026-08-04 A | 2026-08-11 A | 30BU48-033 | 100% |  |
| 30BU48-035 |  | Izolacje – Sekcja 04 | 5d | 2026-08-06 A | 2026-08-13 A | 30BU48-034 | 100% |  |
| 30BU48-036 |  | Malowanie i oznakowanie – Sekcja 04 | 2d | 2026-08-10 A | 2026-08-14 A | 30BU48-035 FF+2d | 100% |  |
|  | SEKCJA 05 | **Sekcja 05** |  | 2025-10-13 | 2026-09-08 |  |  |  |
| 30BU48-039 |  | Prefabrykacja ruroci¹gów – Sekcja 05 | 3.4d | 2025-10-13 A | 2025-10-15 A | 30BU48-012, 30BU48-032 SS+5d | 100% |  |
| 30BU48-040 |  | Monta¿ ruroci¹gów – Sekcja 05 | 21.5d | 2026-07-24 A | 2026-08-21 A | 30BU48-039, 30BU48-014 SS+9d | 100% |  |
| 30BU48-041 |  | Próba ciœnieniowa – Sekcja 05 | 3d | 2026-08-21 A | 2026-08-28 A | 30BU48-040 | 100% |  |
| 30BU48-042 |  | Izolacje – Sekcja 05 | 6d | 2026-08-31 A | 2026-09-07 A | 30BU48-041 | 100% |  |
| 30BU48-043 |  | Malowanie i oznakowanie – Sekcja 05 | 2d | 2026-09-03 A | 2026-09-08 A | 30BU48-042 FF+2d | 100% |  |
|  | SEKCJA 06 | **Sekcja 06** |  | 2025-10-17 | 2026-09-07 |  |  |  |
|  | PODSEKCJA | **Podsekcja 06.A** |  | 2025-10-17 | 2026-09-07 |  |  |  |
| 30BU48-044 |  | Prefabrykacja ruroci¹gów – Sekcja 06 | 14.7d | 2025-10-17 A | 2025-11-07 A | 30BU48-012, 30BU48-039 SS+5d | 100% |  |
| 30BU48-045 |  | Monta¿ ruroci¹gów – Sekcja 06 | 19.2d | 2026-07-17 A | 2026-08-13 A | 30BU48-044, 30BU48-014 SS+5d | 100% |  |
| 30BU48-046 |  | Próba ciœnieniowa – Sekcja 06 | 4d | 2026-08-18 A | 2026-08-25 A | 30BU48-045 | 100% |  |
| 30BU48-047 |  | Izolacje – Sekcja 06 | 9d | 2026-08-21 A | 2026-09-07 A | 30BU48-046 | 100% |  |
| 30BU48-048 |  | Malowanie i oznakowanie – Sekcja 06 | 6d | 2026-08-26 A | 2026-09-03 A | 30BU48-047 FF+2d | 100% |  |
|  | SEKCJA 07 | **Sekcja 07** |  | 2025-10-24 | 2026-08-20 |  |  |  |
| 30BU48-051 |  | Prefabrykacja ruroci¹gów – Sekcja 07 | 12.6d | 2025-10-24 A | 2025-11-12 A | 30BU48-012, 30BU48-044 SS+5d | 100% |  |
| 30BU48-052 |  | Monta¿ ruroci¹gów – Sekcja 07 | 10.5d | 2026-07-24 A | 2026-08-10 A | 30BU48-051, 30BU48-014 SS+7d | 100% |  |
| 30BU48-053 |  | Próba ciœnieniowa – Sekcja 07 | 3d | 2026-08-04 A | 2026-08-06 A | 30BU48-052 | 100% |  |
| 30BU48-054 |  | Izolacje – Sekcja 07 | 5d | 2026-08-11 A | 2026-08-20 A | 30BU48-053 | 100% |  |
| 30BU48-055 |  | Malowanie i oznakowanie – Sekcja 07 | 8d | 2026-08-11 A | 2026-08-20 A | 30BU48-054 FF+2d | 100% |  |
|  | SEKCJA 08 | **Sekcja 08** |  | 2025-11-05 | 2026-09-10 |  |  |  |
| 30BU48-056 |  | Prefabrykacja ruroci¹gów – Sekcja 08 | 6.2d | 2025-11-05 A | 2025-11-13 A | 30BU48-012, 30BU48-051 SS+5d | 100% |  |
| 30BU48-057 |  | Monta¿ ruroci¹gów – Sekcja 08 | 21.9d | 2026-07-14 A | 2026-08-14 A | 30BU48-056, 30BU48-014 SS | 100% |  |
| 30BU48-058 |  | Próba ciœnieniowa – Sekcja 08 | 5d | 2026-08-12 A | 2026-08-21 A | 30BU48-057 | 100% |  |
| 30BU48-059 |  | Izolacje – Sekcja 08 | 12d | 2026-08-20 A | 2026-09-07 A | 30BU48-058 | 100% |  |
| 30BU48-060 |  | Malowanie i oznakowanie – Sekcja 08 | 8d | 2026-08-27 A | 2026-09-10 A | 30BU48-059 FF+2d | 100% |  |
|  | SEKCJA 09 | **Sekcja 09** |  | 2025-11-11 | 2026-08-31 |  |  |  |
|  | PODSEKCJA | **Podsekcja 09.A** |  | 2025-11-11 | 2026-08-31 |  |  |  |
| 30BU48-063 |  | Prefabrykacja ruroci¹gów – Sekcja 09 | 5.3d | 2025-11-11 A | 2025-11-19 A | 30BU48-012, 30BU48-056 SS+5d | 100% |  |
| 30BU48-064 |  | Monta¿ ruroci¹gów – Sekcja 09 | 11.2d | 2026-07-24 A | 2026-08-12 A | 30BU48-063, 30BU48-014 SS+7d | 100% |  |
| 30BU48-065 |  | Próba ciœnieniowa – Sekcja 09 | 6d | 2026-08-06 A | 2026-08-13 A | 30BU48-064 | 100% |  |
| 30BU48-066 |  | Izolacje – Sekcja 09 | 9d | 2026-08-12 A | 2026-08-24 A | 30BU48-065 | 100% |  |
| 30BU48-067 |  | Malowanie i oznakowanie – Sekcja 09 | 5d | 2026-08-24 A | 2026-08-31 A | 30BU48-066 FF+2d | 100% |  |
|  | SEKCJA 10 | **Sekcja 10** |  | 2025-11-14 | 2026-09-08 |  |  |  |
| 30BU48-068 |  | Prefabrykacja ruroci¹gów – Sekcja 10 | 5d | 2025-11-14 A | 2025-11-25 A | 30BU48-012, 30BU48-063 SS+5d | 100% |  |
| 30BU48-069 |  | Monta¿ ruroci¹gów – Sekcja 10 | 19.1d | 2026-07-20 A | 2026-08-14 A | 30BU48-068, 30BU48-014 SS+7d | 100% |  |
| 30BU48-070 |  | Próba ciœnieniowa – Sekcja 10 | 5d | 2026-08-17 A | 2026-08-25 A | 30BU48-069 | 100% |  |
| 30BU48-071 |  | Izolacje – Sekcja 10 | 10d | 2026-08-21 A | 2026-09-07 A | 30BU48-070 | 100% |  |
| 30BU48-072 |  | Malowanie i oznakowanie – Sekcja 10 | 7d | 2026-08-31 A | 2026-09-08 A | 30BU48-071 FF+2d | 100% |  |
|  | SEKCJA 11 | **Sekcja 11** |  | 2025-11-26 | 2026-09-01 |  |  |  |
| 30BU48-075 |  | Prefabrykacja ruroci¹gów – Sekcja 11 | 8.4d | 2025-11-26 A | 2025-12-10 A | 30BU48-012, 30BU48-068 SS+5d | 100% |  |
| 30BU48-076 |  | Monta¿ ruroci¹gów – Sekcja 11 | 13.7d | 2026-07-17 A | 2026-08-06 A | 30BU48-075, 30BU48-014 SS+4d | 100% |  |
| 30BU48-077 |  | Próba ciœnieniowa – Sekcja 11 | 6d | 2026-08-04 A | 2026-08-12 A | 30BU48-076 | 100% |  |
| 30BU48-078 |  | Izolacje – Sekcja 11 | 10d | 2026-08-13 A | 2026-08-26 A | 30BU48-077 | 100% |  |
| 30BU48-079 |  | Malowanie i oznakowanie – Sekcja 11 | 2d | 2026-08-27 A | 2026-09-01 A | 30BU48-078 FF+2d | 100% |  |
|  | SEKCJA 12 | **Sekcja 12** |  | 2025-12-02 | 2026-10-13 |  |  |  |

| ID | WBS | Task | Duration | Start | Finish | Predecessors | Complete | Total float |
| --- | --- | --- | --- | --- | --- | --- | --- | --- |
|  | PODSEKCJA | **Podsekcja 12.A** |  | 2025-12-02 | 2026-10-13 |  |  |  |
| 30BU48-080 |  | Prefabrykacja ruroci¹gów – Sekcja 12 | 13.7d | 2025-12-02 A | 2026-10-13 | 30BU48-012, 30BU48-075 SS+5d | 20% | 446.1d |
| 30BU48-081 |  | Monta¿ ruroci¹gów – Sekcja 12 | 11.3d | 2026-07-22 A | 2026-08-10 A | 30BU48-080, 30BU48-014 SS+9d | 100% |  |
| 30BU48-082 |  | Próba ciœnieniowa – Sekcja 12 | 2d | 2026-08-06 A | 2026-08-07 A | 30BU48-081 | 100% |  |
| 30BU48-083 |  | Izolacje – Sekcja 12 | 8d | 2026-08-12 A | 2026-08-26 A | 30BU48-082 | 100% |  |
| 30BU48-084 |  | Malowanie i oznakowanie – Sekcja 12 | 8d | 2026-08-17 A | 2026-08-28 A | 30BU48-083 FF+2d | 100% |  |
|  | SEKCJA 13 | **Sekcja 13** |  | 2025-12-09 | 2026-09-02 |  |  |  |
| 30BU48-087 |  | Prefabrykacja ruroci¹gów – Sekcja 13 | 8.9d | 2025-12-09 A | 2025-12-19 A | 30BU48-012, 30BU48-080 SS+5d | 100% |  |
| 30BU48-088 |  | Monta¿ ruroci¹gów – Sekcja 13 | 18.8d | 2026-07-27 A | 2026-08-24 A | 30BU48-087, 30BU48-014 SS+10d | 100% |  |
| 30BU48-089 |  | Próba ciœnieniowa – Sekcja 13 | 3d | 2026-08-20 A | 2026-08-27 A | 30BU48-088 | 100% |  |
| 30BU48-090 |  | Izolacje – Sekcja 13 | 5d | 2026-08-26 A | 2026-09-02 A | 30BU48-089 | 100% |  |
| 30BU48-091 |  | Malowanie i oznakowanie – Sekcja 13 | 3d | 2026-08-27 A | 2026-09-02 A | 30BU48-090 FF+2d | 100% |  |
|  | SEKCJA 14 | **Sekcja 14** |  | 2025-12-17 | 2026-09-03 |  |  |  |
| 30BU48-092 |  | Prefabrykacja ruroci¹gów – Sekcja 14 | 5.3d | 2025-12-17 A | 2025-12-24 A | 30BU48-012, 30BU48-087 SS+5d | 100% |  |
| 30BU48-093 |  | Monta¿ ruroci¹gów – Sekcja 14 | 13.6d | 2026-07-21 A | 2026-08-11 A | 30BU48-092, 30BU48-014 SS+7d | 100% |  |
| 30BU48-094 |  | Próba ciœnieniowa – Sekcja 14 | 6d | 2026-08-11 A | 2026-08-20 A | 30BU48-093 | 100% |  |
| 30BU48-095 |  | Izolacje – Sekcja 14 | 12d | 2026-08-18 A | 2026-09-02 A | 30BU48-094 | 100% |  |
| 30BU48-096 |  | Malowanie i oznakowanie – Sekcja 14 | 4d | 2026-08-28 A | 2026-09-03 A | 30BU48-095 FF+2d | 100% |  |
|  | SEKCJA 15 | **Sekcja 15** |  | 2025-12-22 | 2026-08-26 |  |  |  |
|  | PODSEKCJA | **Podsekcja 15.A** |  | 2025-12-22 | 2026-08-26 |  |  |  |
| 30BU48-099 |  | Prefabrykacja ruroci¹gów – Sekcja 15 | 5.5d | 2025-12-22 A | 2025-12-29 A | 30BU48-012, 30BU48-092 SS+5d | 100% |  |
| 30BU48-100 |  | Monta¿ ruroci¹gów – Sekcja 15 | 9.3d | 2026-07-14 A | 2026-07-27 A | 30BU48-099, 30BU48-014 SS+3d | 100% |  |
| 30BU48-101 |  | Próba ciœnieniowa – Sekcja 15 | 2d | 2026-07-30 A | 2026-08-03 A | 30BU48-100 | 100% |  |
| 30BU48-102 |  | Izolacje – Sekcja 15 | 12d | 2026-08-03 A | 2026-08-18 A | 30BU48-101 | 100% |  |
| 30BU48-103 |  | Malowanie i oznakowanie – Sekcja 15 | 2d | 2026-08-20 A | 2026-08-26 A | 30BU48-102 FF+2d | 100% |  |
|  | SEKCJA 16 | **Sekcja 16** |  | 2025-12-30 | 2026-09-30 |  |  |  |
| 30BU48-104 |  | Prefabrykacja ruroci¹gów – Sekcja 16 | 11.6d | 2025-12-30 A | 2026-01-14 A | 30BU48-012, 30BU48-099 SS+5d | 100% |  |
| 30BU48-105 |  | Monta¿ ruroci¹gów – Sekcja 16 | 24.7d | 2026-07-23 A | 2026-08-27 A | 30BU48-104, 30BU48-014 SS+8d | 100% |  |
| 30BU48-106 |  | Próba ciœnieniowa – Sekcja 16 | 4d | 2026-08-27 A | 2026-09-02 A | 30BU48-105 | 100% |  |
| 30BU48-107 |  | Izolacje – Sekcja 16 | 11d | 2026-08-28 A | 2026-09-11 A | 30BU48-106 | 100% |  |
| 30BU48-108 |  | Malowanie i oznakowanie – Sekcja 16 | 2d | 2026-09-16 A | 2026-09-30 | 30BU48-107 FF+2d | 15% | 365.2d |
|  | SEKCJA 17 | **Sekcja 17** |  | 2026-01-05 | 2026-08-14 |  |  |  |
| 30BU48-111 |  | Prefabrykacja ruroci¹gów – Sekcja 17 | 11.4d | 2026-01-05 A | 2026-01-20 A | 30BU48-012, 30BU48-104 SS+5d | 100% |  |
| 30BU48-112 |  | Monta¿ ruroci¹gów – Sekcja 17 | 13d | 2026-07-15 A | 2026-08-05 A | 30BU48-111, 30BU48-014 SS | 100% |  |
| 30BU48-113 |  | Próba ciœnieniowa – Sekcja 17 | 2d | 2026-07-30 A | 2026-07-31 A | 30BU48-112 | 100% |  |
| 30BU48-114 |  | Izolacje – Sekcja 17 | 3d | 2026-07-31 A | 2026-08-04 A | 30BU48-113 | 100% |  |
| 30BU48-115 |  | Malowanie i oznakowanie – Sekcja 17 | 2d | 2026-08-10 A | 2026-08-14 A | 30BU48-114 FF+2d | 100% |  |
|  | SEKCJA 18 | **Sekcja 18** |  | 2026-01-09 | 2026-09-02 |  |  |  |
|  | PODSEKCJA | **Podsekcja 18.A** |  | 2026-01-09 | 2026-09-02 |  |  |  |
| 30BU48-116 |  | Prefabrykacja ruroci¹gów – Sekcja 18 | 3.1d | 2026-01-09 A | 2026-01-13 A | 30BU48-012, 30BU48-111 SS+5d | 100% |  |
| 30BU48-117 |  | Monta¿ ruroci¹gów – Sekcja 18 | 12.4d | 2026-07-27 A | 2026-08-11 A | 30BU48-116, 30BU48-014 SS+10d | 100% |  |
| 30BU48-118 |  | Próba ciœnieniowa – Sekcja 18 | 6d | 2026-08-10 A | 2026-08-17 A | 30BU48-117 | 100% |  |
| 30BU48-119 |  | Izolacje – Sekcja 18 | 3d | 2026-08-20 A | 2026-08-27 A | 30BU48-118 | 100% |  |
| 30BU48-120 |  | Malowanie i oznakowanie – Sekcja 18 | 6d | 2026-08-21 A | 2026-09-02 A | 30BU48-119 FF+2d | 100% |  |
|  | SEKCJA 19 | **Sekcja 19** |  | 2026-01-19 | 2026-10-14 |  |  |  |
| 30BU48-123 |  | Prefabrykacja ruroci¹gów – Sekcja 19 | 6.8d | 2026-01-19 A | 2026-01-27 A | 30BU48-012, 30BU48-116 SS+5d | 100% |  |
| 30BU48-124 |  | Monta¿ ruroci¹gów – Sekcja 19 | 15.8d | 2026-07-24 A | 2026-10-14 | 30BU48-123, 30BU48-014 SS+8d | 28% | 376.1d |
| 30BU48-125 |  | Próba ciœnieniowa – Sekcja 19 | 4d | 2026-08-14 A | 2026-08-21 A | 30BU48-124 | 100% |  |
| 30BU48-126 |  | Izolacje – Sekcja 19 | 8d | 2026-08-18 A | 2026-08-28 A | 30BU48-125 | 100% |  |
| 30BU48-127 |  | Malowanie i oznakowanie – Sekcja 19 | 8d | 2026-08-25 A | 2026-09-07 A | 30BU48-126 FF+2d | 100% |  |
|  | SEKCJA 20 | **Sekcja 20** |  | 2026-01-28 | 2026-09-07 |  |  |  |
| 30BU48-128 |  | Prefabrykacja ruroci¹gów – Sekcja 20 | 9.3d | 2026-01-28 A | 2026-02-09 A | 30BU48-012, 30BU48-123 SS+5d | 100% |  |
| 30BU48-129 |  | Monta¿ ruroci¹gów – Sekcja 20 | 18.2d | 2026-07-20 A | 2026-08-13 A | 30BU48-128, 30BU48-014 SS+6d | 100% |  |
| 30BU48-130 |  | Próba ciœnieniowa – Sekcja 20 | 3d | 2026-08-12 A | 2026-08-18 A | 30BU48-129 | 100% |  |
| 30BU48-131 |  | Izolacje – Sekcja 20 | 8d | 2026-08-19 A | 2026-09-01 A | 30BU48-130 | 100% |  |
| 30BU48-132 |  | Malowanie i oznakowanie – Sekcja 20 | 3d | 2026-08-31 A | 2026-09-07 A | 30BU48-131 FF+2d | 100% |  |
|  | SEKCJA 21 | **Sekcja 21** |  | 2026-01-29 | 2026-09-11 |  |  |  |
|  | PODSEKCJA | **Podsekcja 21.A** |  | 2026-01-29 | 2026-09-11 |  |  |  |
| 30BU48-135 |  | Prefabrykacja ruroci¹gów – Sekcja 21 | 6.7d | 2026-01-29 A | 2026-02-05 A | 30BU48-012, 30BU48-128 SS+5d | 100% |  |
| 30BU48-136 |  | Monta¿ ruroci¹gów – Sekcja 21 | 21.3d | 2026-07-22 A | 2026-08-19 A | 30BU48-135, 30BU48-014 SS+9d | 100% |  |
| 30BU48-137 |  | Próba ciœnieniowa – Sekcja 21 | 4d | 2026-08-20 A | 2026-08-26 A | 30BU48-136 | 100% |  |
| 30BU48-138 |  | Izolacje – Sekcja 21 | 6d | 2026-08-26 A | 2026-09-07 A | 30BU48-137 | 100% |  |
| 30BU48-139 |  | Malowanie i oznakowanie – Sekcja 21 | 6d | 2026-09-02 A | 2026-09-11 A | 30BU48-138 FF+2d | 100% |  |
|  | SEKCJA 22 | **Sekcja 22** |  | 2026-02-06 | 2026-10-06 |  |  |  |
| 30BU48-140 |  | Prefabrykacja ruroci¹gów – Sekcja 22 | 5.8d | 2026-02-06 A | 2026-02-16 A | 30BU48-012, 30BU48-135 SS+5d | 100% |  |
| 30BU48-141 |  | Monta¿ ruroci¹gów – Sekcja 22 | 19d | 2026-07-23 A | 2026-08-20 A | 30BU48-140, 30BU48-014 SS+8d | 100% |  |
| 30BU48-142 |  | Próba ciœnieniowa – Sekcja 22 | 5d | 2026-08-21 A | 2026-09-01 A | 30BU48-141 | 100% |  |
| 30BU48-144 |  | Malowanie i oznakowanie – Sekcja 22 | 7d | 2026-08-26 A | 2026-10-06 | 30BU48-143 FF+2d | 16% | 333.9d |
| 30BU48-143 |  | Izolacje – Sekcja 22 | 4d | 2026-08-28 A | 2026-09-02 A | 30BU48-142 | 100% |  |
|  | PROJ | **Projektowanie** |  | 2025-01-13 | 2025-07-01 |  |  |  |

| ID | WBS | Task | Duration | Start | Finish | Predecessors | Complete | Total float |
| --- | --- | --- | --- | --- | --- | --- | --- | --- |
|  | DOKUMENTAC | **Dokumentacja** |  | 2025-01-13 | 2025-07-01 |  |  |  |
| 30BU48-001 |  | Projekt wykonawczy – Kocio³ odzyskowy HRSG | 98d | 2025-01-13 A | 2025-05-30 A |  | 100% |  |
| 30BU48-002 |  | Uzgodnienie dokumentacji z Inwestorem | 10d | 2025-05-28 A | 2025-06-12 A | 30BU48-001 | 100% |  |
| 30BU48-003 |  | Zatwierdzenie dokumentacji do realizacji | 12d | 2025-06-11 A | 2025-06-27 A | 30BU48-002 | 100% |  |
| 30BU48-004 |  | KM: Dokumentacja zatwierdzona – Kocio³ odzyskowy HRSG | 0d | 2025-07-01 A | 2025-07-01 | 30BU48-003 | 100% |  |
|  | ROZR | **Rozruch** |  | 2026-09-14 | 2026-11-02 |  |  |  |
|  | ROZRUCH | **Rozruch** |  | 2026-09-14 | 2026-11-02 |  |  |  |
| 30BU48-149 |  | Przegl¹d gotowoœci do rozruchu | 5d | 2026-09-14 A | 2026-09-18 A | 30BU48-148, 30BU48-019, 30BU48-024, 30BU48-026 | 100% |  |
| 30BU48-150 |  | Rozruch na zimno | 9d | 2026-09-22 A | 2026-10-06 | 30BU48-149 | 40% | 326d |
| 30BU48-151 |  | Rozruch na gor¹co / próby ruchowe | 18d | 2026-10-07 | 2026-10-30 | 30BU48-150 |  | 324.5d |
| 30BU48-152 |  | KM: Odbiór koñcowy – Kocio³ odzyskowy HRSG | 0d | 2026-11-02 | 2026-11-02 | 30BU48-151 |  | 324.5d |
|  | ZAKU | **Zakupy** |  | 2025-02-10 | 2027-02-16 |  |  |  |
|  | DOSTAWY | **Dostawy** |  | 2025-07-14 | 2027-02-16 |  |  |  |
| 30BU48-008 |  | Produkcja u dostawcy | 241d | 2025-07-14 A | 2027-02-16 | 30BU48-007 | 58% | 322d |
| 30BU48-009 |  | Testy FAT | 4d | 2026-06-09 A | 2026-06-15 A | 30BU48-008 | 100% |  |
| 30BU48-010 |  | Transport i dostawa na plac budowy | 18d | 2026-06-17 A | 2026-07-13 A | 30BU48-009 | 100% |  |
| 30BU48-011 |  | KM: Dostawa na budowê – Kocio³ odzyskowy HRSG | 0d | 2026-07-10 A | 2026-07-10 | 30BU48-010 | 100% |  |
|  | ZAMÓWIENIA | **Zamówienia** |  | 2025-02-10 | 2025-07-11 |  |  |  |
| 30BU48-005 |  | Zapytanie ofertowe | 23d | 2025-02-10 A | 2025-03-13 A | 30BU48-001 SS+20d | 100% |  |
| 30BU48-006 |  | Analiza i wybór ofert | 16d | 2025-03-18 A | 2025-04-08 A | 30BU48-005 | 100% |  |
| 30BU48-007 |  | Zawarcie umowy / zamówienie | 6d | 2025-07-01 A | 2025-07-11 A | 30BU48-006, 30BU48-004 SS, 29UF44-004 SF+15d | 100% |  |
|  | WYSPA_TURBIN | **Wyspa turbinowa** |  | 2025-01-16 | 2028-02-11 |  |  |  |
|  | 10BW45 | **10BW45 – Generator** |  | 2025-04-02 | 2026-10-16 |  |  |  |
|  | BUDO | **Budowa** |  | 2025-11-17 | 2026-10-07 |  |  |  |
|  | AKPIA | **AKPiA** |  | 2026-04-30 | 2026-05-20 |  |  |  |
| 10BW45-092 |  | Monta¿ uk³adów AKPiA | 13d | 2026-04-30 A | 2026-05-20 A | 10BW45-014 SS+5d | 100% |  |
|  | ELEKTRYKA | **Elektryka** |  | 2026-05-08 | 2026-06-09 |  |  |  |
| 10BW45-025 |  | Uk³adanie kabli – trasa 02 | 20d | 2026-05-08 A | 2026-06-08 A | 10BW45-014 SS+10d | 100% |  |
| 10BW45-073 |  | Uk³adanie kabli – trasa 10 | 9d | 2026-05-08 A | 2026-05-21 A | 10BW45-014 SS+10d | 100% |  |
| 10BW45-049 |  | Uk³adanie kabli – trasa 06 | 18d | 2026-05-12 A | 2026-06-09 A | 10BW45-014 SS+10d | 100% |  |
| 10BW45-037 |  | Uk³adanie kabli – trasa 04 | 7d | 2026-05-13 A | 2026-05-22 A | 10BW45-014 SS+10d | 100% |  |
| 10BW45-038 |  | Pod³¹czenia i pomiary – trasa 04 | 5d | 2026-05-13 A | 2026-05-21 A | 10BW45-037 FF | 100% |  |
| 10BW45-061 |  | Uk³adanie kabli – trasa 08 | 17d | 2026-05-13 A | 2026-06-09 A | 10BW45-014 SS+10d | 100% |  |
| 10BW45-085 |  | Uk³adanie kabli – trasa 12 | 8d | 2026-05-13 A | 2026-05-26 A | 10BW45-014 SS+10d | 100% |  |
| 10BW45-086 |  | Pod³¹czenia i pomiary – trasa 12 | 7d | 2026-05-13 A | 2026-05-21 A | 10BW45-085 FF | 100% |  |
| 10BW45-074 |  | Pod³¹czenia i pomiary – trasa 10 | 6d | 2026-05-18 A | 2026-05-27 A | 10BW45-073 FF | 100% |  |
| 10BW45-050 |  | Pod³¹czenia i pomiary – trasa 06 | 6d | 2026-05-25 A | 2026-06-01 A | 10BW45-049 FF | 100% |  |
| 10BW45-026 |  | Pod³¹czenia i pomiary – trasa 02 | 7d | 2026-05-27 A | 2026-06-08 A | 10BW45-025 FF | 100% |  |
| 10BW45-062 |  | Pod³¹czenia i pomiary – trasa 08 | 6d | 2026-05-27 A | 2026-06-05 A | 10BW45-061 FF | 100% |  |
|  | MONTA¯ | **Monta¿** |  | 2026-01-20 | 2026-07-28 |  |  |  |
| 10BW45-013 |  | Monta¿ konstrukcji stalowych | 18d | 2026-01-20 A | 2026-02-16 A | 10BW45-012 | 100% |  |
| 10BW45-014 |  | Monta¿ urz¹dzeñ g³ównych | 64d | 2026-04-27 A | 2026-07-23 A | 10BW45-013, 10BW45-011 | 100% |  |
| 10BW45-093 |  | KM: Zakoñczenie monta¿u – Generator | 0d | 2026-07-28 A | 2026-07-28 | 10BW45-084, 10BW45-086, 10BW45-091, 10BW45-092, 10BW45-014 | 100% |  |
|  | ROBOTY BUD | **Roboty budowlane** |  | 2025-11-17 | 2026-01-19 |  |  |  |
| 10BW45-012 |  | Fundamenty i roboty ziemne | 44d | 2025-11-17 A | 2026-01-19 A | 10BW45-007 FS+9d | 100% |  |
|  | RUROCI¥GI | **Ruroci¹gi** |  | 2026-01-15 | 2026-10-07 |  |  |  |
|  | SEKCJA 01 | **Sekcja 01** |  | 2026-01-15 | 2026-06-17 |  |  |  |
| 10BW45-015 |  | Prefabrykacja ruroci¹gów – Sekcja 01 | 12.9d | 2026-01-15 A | 2026-01-30 A | 10BW45-012 | 100% |  |
| 10BW45-016 |  | Monta¿ ruroci¹gów – Sekcja 01 | 15.8d | 2026-05-08 A | 2026-05-29 A | 10BW45-015, 10BW45-014 SS+8d | 100% |  |
| 10BW45-017 |  | Próba ciœnieniowa – Sekcja 01 | 3d | 2026-05-29 A | 2026-06-05 A | 10BW45-016 | 100% |  |
| 10BW45-018 |  | Izolacje – Sekcja 01 | 8d | 2026-06-03 A | 2026-06-15 A | 10BW45-017 | 100% |  |
| 10BW45-019 |  | Malowanie i oznakowanie – Sekcja 01 | 8d | 2026-06-04 A | 2026-06-17 A | 10BW45-018 FF+2d | 100% |  |
|  | SEKCJA 02 | **Sekcja 02** |  | 2026-01-26 | 2026-06-12 |  |  |  |
| 10BW45-020 |  | Prefabrykacja ruroci¹gów – Sekcja 02 | 8.1d | 2026-01-26 A | 2026-02-04 A | 10BW45-012, 10BW45-015 SS+5d | 100% |  |
| 10BW45-021 |  | Monta¿ ruroci¹gów – Sekcja 02 | 8.2d | 2026-05-11 A | 2026-05-22 A | 10BW45-020, 10BW45-014 SS+10d | 100% |  |
| 10BW45-022 |  | Próba ciœnieniowa – Sekcja 02 | 6d | 2026-05-21 A | 2026-05-29 A | 10BW45-021 | 100% |  |
| 10BW45-023 |  | Izolacje – Sekcja 02 | 7d | 2026-05-28 A | 2026-06-08 A | 10BW45-022 | 100% |  |
| 10BW45-024 |  | Malowanie i oznakowanie – Sekcja 02 | 5d | 2026-06-04 A | 2026-06-12 A | 10BW45-023 FF+2d | 100% |  |
|  | SEKCJA 03 | **Sekcja 03** |  | 2026-02-02 | 2026-06-09 |  |  |  |
|  | PODSEKCJA | **Podsekcja 03.A** |  | 2026-02-02 | 2026-06-09 |  |  |  |
| 10BW45-027 |  | Prefabrykacja ruroci¹gów – Sekcja 03 | 5.5d | 2026-02-02 A | 2026-02-11 A | 10BW45-012, 10BW45-020 SS+5d | 100% |  |
| 10BW45-028 |  | Monta¿ ruroci¹gów – Sekcja 03 | 14.7d | 2026-05-01 A | 2026-05-20 A | 10BW45-027, 10BW45-014 SS+6d | 100% |  |
| 10BW45-029 |  | Próba ciœnieniowa – Sekcja 03 | 3d | 2026-05-27 A | 2026-05-29 A | 10BW45-028 | 100% |  |
| 10BW45-030 |  | Izolacje – Sekcja 03 | 4d | 2026-05-29 A | 2026-06-08 A | 10BW45-029 | 100% |  |
| 10BW45-031 |  | Malowanie i oznakowanie – Sekcja 03 | 5d | 2026-06-01 A | 2026-06-09 A | 10BW45-030 FF+2d | 100% |  |
|  | SEKCJA 04 | **Sekcja 04** |  | 2026-02-09 | 2026-10-07 |  |  |  |
| 10BW45-032 |  | Prefabrykacja ruroci¹gów – Sekcja 04 | 10.9d | 2026-02-09 A | 2026-10-07 | 10BW45-012, 10BW45-027 SS+5d | 42% | 387.2d |
| 10BW45-033 |  | Monta¿ ruroci¹gów – Sekcja 04 | 21.5d | 2026-05-12 A | 2026-06-12 A | 10BW45-032, 10BW45-014 SS+10d | 100% |  |
| 10BW45-035 |  | Izolacje – Sekcja 04 | 8d | 2026-06-09 A | 2026-06-22 A | 10BW45-034 | 100% |  |
| 10BW45-034 |  | Próba ciœnieniowa – Sekcja 04 | 2d | 2026-06-11 A | 2026-06-16 A | 10BW45-033 | 100% |  |

| ID | WBS | Task | Duration | Start | Finish | Predecessors | Complete | Total float |
| --- | --- | --- | --- | --- | --- | --- | --- | --- |
| 10BW45-036 |  | Malowanie i oznakowanie – Sekcja 04 | 2d | 2026-06-22 A | 2026-06-26 A | 10BW45-035 FF+2d | 100% |  |
|  | SEKCJA 05 | **Sekcja 05** |  | 2026-02-11 | 2026-10-01 |  |  |  |
| 10BW45-039 |  | Prefabrykacja ruroci¹gów – Sekcja 05 | 9.1d | 2026-02-11 A | 2026-02-25 A | 10BW45-012, 10BW45-032 SS+5d | 100% |  |
| 10BW45-040 |  | Monta¿ ruroci¹gów – Sekcja 05 | 8.9d | 2026-05-11 A | 2026-10-01 | 10BW45-039, 10BW45-014 SS+7d | 72% | 439d |
| 10BW45-041 |  | Próba ciœnieniowa – Sekcja 05 | 4d | 2026-05-15 A | 2026-05-20 A | 10BW45-040 | 100% |  |
| 10BW45-042 |  | Izolacje – Sekcja 05 | 6d | 2026-05-21 A | 2026-05-28 A | 10BW45-041 | 100% |  |
| 10BW45-043 |  | Malowanie i oznakowanie – Sekcja 05 | 3d | 2026-05-29 A | 2026-06-05 A | 10BW45-042 FF+2d | 100% |  |
|  | SEKCJA 06 | **Sekcja 06** |  | 2026-02-20 | 2026-06-15 |  |  |  |
|  | PODSEKCJA | **Podsekcja 06.A** |  | 2026-02-20 | 2026-06-15 |  |  |  |
| 10BW45-044 |  | Prefabrykacja ruroci¹gów – Sekcja 06 | 3.9d | 2026-02-20 A | 2026-02-27 A | 10BW45-012, 10BW45-039 SS+5d | 100% |  |
| 10BW45-045 |  | Monta¿ ruroci¹gów – Sekcja 06 | 18.7d | 2026-05-04 A | 2026-05-29 A | 10BW45-044, 10BW45-014 SS+7d | 100% |  |
| 10BW45-046 |  | Próba ciœnieniowa – Sekcja 06 | 3d | 2026-06-02 A | 2026-06-04 A | 10BW45-045 | 100% |  |
| 10BW45-047 |  | Izolacje – Sekcja 06 | 4d | 2026-06-03 A | 2026-06-09 A | 10BW45-046 | 100% |  |
| 10BW45-048 |  | Malowanie i oznakowanie – Sekcja 06 | 3d | 2026-06-10 A | 2026-06-15 A | 10BW45-047 FF+2d | 100% |  |
|  | SEKCJA 07 | **Sekcja 07** |  | 2026-03-02 | 2026-06-16 |  |  |  |
| 10BW45-051 |  | Prefabrykacja ruroci¹gów – Sekcja 07 | 7.9d | 2026-03-02 A | 2026-03-13 A | 10BW45-012, 10BW45-044 SS+5d | 100% |  |
| 10BW45-052 |  | Monta¿ ruroci¹gów – Sekcja 07 | 21.7d | 2026-05-07 A | 2026-06-08 A | 10BW45-051, 10BW45-014 SS+6d | 100% |  |
| 10BW45-053 |  | Próba ciœnieniowa – Sekcja 07 | 2d | 2026-06-05 A | 2026-06-10 A | 10BW45-052 | 100% |  |
| 10BW45-054 |  | Izolacje – Sekcja 07 | 4d | 2026-06-08 A | 2026-06-12 A | 10BW45-053 | 100% |  |
| 10BW45-055 |  | Malowanie i oznakowanie – Sekcja 07 | 3d | 2026-06-12 A | 2026-06-16 A | 10BW45-054 FF+2d | 100% |  |
|  | SEKCJA 08 | **Sekcja 08** |  | 2026-03-04 | 2026-06-05 |  |  |  |
| 10BW45-056 |  | Prefabrykacja ruroci¹gów – Sekcja 08 | 11.6d | 2026-03-04 A | 2026-03-23 A | 10BW45-012, 10BW45-051 SS+5d | 100% |  |
| 10BW45-057 |  | Monta¿ ruroci¹gów – Sekcja 08 | 7.4d | 2026-04-29 A | 2026-05-12 A | 10BW45-056, 10BW45-014 SS | 100% |  |
| 10BW45-058 |  | Próba ciœnieniowa – Sekcja 08 | 6d | 2026-05-08 A | 2026-05-15 A | 10BW45-057 | 100% |  |
| 10BW45-059 |  | Izolacje – Sekcja 08 | 12d | 2026-05-18 A | 2026-06-05 A | 10BW45-058 | 100% |  |
| 10BW45-060 |  | Malowanie i oznakowanie – Sekcja 08 | 2d | 2026-06-02 A | 2026-06-03 A | 10BW45-059 FF+2d | 100% |  |
|  | SEKCJA 09 | **Sekcja 09** |  | 2026-03-11 | 2026-10-05 |  |  |  |
|  | PODSEKCJA | **Podsekcja 09.A** |  | 2026-03-11 | 2026-10-05 |  |  |  |
| 10BW45-063 |  | Prefabrykacja ruroci¹gów – Sekcja 09 | 11.5d | 2026-03-11 A | 2026-03-30 A | 10BW45-012, 10BW45-056 SS+5d | 100% |  |
| 10BW45-064 |  | Monta¿ ruroci¹gów – Sekcja 09 | 19.6d | 2026-05-08 A | 2026-06-03 A | 10BW45-063, 10BW45-014 SS+7d | 100% |  |
| 10BW45-065 |  | Próba ciœnieniowa – Sekcja 09 | 6d | 2026-05-29 A | 2026-06-09 A | 10BW45-064 | 100% |  |
| 10BW45-066 |  | Izolacje – Sekcja 09 | 11d | 2026-06-10 A | 2026-10-05 | 10BW45-065 | 57% | 424.3d |
| 10BW45-067 |  | Malowanie i oznakowanie – Sekcja 09 | 4d | 2026-06-25 A | 2026-07-01 A | 10BW45-066 FF+2d | 100% |  |
|  | SEKCJA 10 | **Sekcja 10** |  | 2026-03-20 | 2026-06-22 |  |  |  |
| 10BW45-068 |  | Prefabrykacja ruroci¹gów – Sekcja 10 | 7.6d | 2026-03-20 A | 2026-03-31 A | 10BW45-012, 10BW45-063 SS+5d | 100% |  |
| 10BW45-069 |  | Monta¿ ruroci¹gów – Sekcja 10 | 21.5d | 2026-05-07 A | 2026-06-09 A | 10BW45-068, 10BW45-014 SS+8d | 100% |  |
| 10BW45-070 |  | Próba ciœnieniowa – Sekcja 10 | 4d | 2026-06-08 A | 2026-06-16 A | 10BW45-069 | 100% |  |
| 10BW45-071 |  | Izolacje – Sekcja 10 | 3d | 2026-06-10 A | 2026-06-15 A | 10BW45-070 | 100% |  |
| 10BW45-072 |  | Malowanie i oznakowanie – Sekcja 10 | 2d | 2026-06-16 A | 2026-06-22 A | 10BW45-071 FF+2d | 100% |  |
|  | SEKCJA 11 | **Sekcja 11** |  | 2026-03-26 | 2026-06-15 |  |  |  |
| 10BW45-075 |  | Prefabrykacja ruroci¹gów – Sekcja 11 | 6.2d | 2026-03-26 A | 2026-04-06 A | 10BW45-012, 10BW45-068 SS+5d | 100% |  |
| 10BW45-076 |  | Monta¿ ruroci¹gów – Sekcja 11 | 10.5d | 2026-05-08 A | 2026-05-25 A | 10BW45-075, 10BW45-014 SS+10d | 100% |  |
| 10BW45-077 |  | Próba ciœnieniowa – Sekcja 11 | 2d | 2026-05-21 A | 2026-05-27 A | 10BW45-076 | 100% |  |
| 10BW45-078 |  | Izolacje – Sekcja 11 | 8d | 2026-05-28 A | 2026-06-09 A | 10BW45-077 | 100% |  |
| 10BW45-079 |  | Malowanie i oznakowanie – Sekcja 11 | 2d | 2026-06-10 A | 2026-06-15 A | 10BW45-078 FF+2d | 100% |  |
|  | SEKCJA 12 | **Sekcja 12** |  | 2026-04-01 | 2026-06-29 |  |  |  |
|  | PODSEKCJA | **Podsekcja 12.A** |  | 2026-04-01 | 2026-06-29 |  |  |  |
| 10BW45-080 |  | Prefabrykacja ruroci¹gów – Sekcja 12 | 11.7d | 2026-04-01 A | 2026-04-15 A | 10BW45-012, 10BW45-075 SS+5d | 100% |  |
| 10BW45-081 |  | Monta¿ ruroci¹gów – Sekcja 12 | 25d | 2026-05-06 A | 2026-06-10 A | 10BW45-080, 10BW45-014 SS+7d | 100% |  |
| 10BW45-082 |  | Próba ciœnieniowa – Sekcja 12 | 5d | 2026-06-08 A | 2026-06-15 A | 10BW45-081 | 100% |  |
| 10BW45-083 |  | Izolacje – Sekcja 12 | 5d | 2026-06-17 A | 2026-06-25 A | 10BW45-082 | 100% |  |
| 10BW45-084 |  | Malowanie i oznakowanie – Sekcja 12 | 3d | 2026-06-24 A | 2026-06-29 A | 10BW45-083 FF+2d | 100% |  |
|  | SEKCJA 13 | **Sekcja 13** |  | 2026-04-08 | 2026-06-11 |  |  |  |
| 10BW45-087 |  | Prefabrykacja ruroci¹gów – Sekcja 13 | 7d | 2026-04-08 A | 2026-04-17 A | 10BW45-012, 10BW45-080 SS+5d | 100% |  |
| 10BW45-088 |  | Monta¿ ruroci¹gów – Sekcja 13 | 14.3d | 2026-05-05 A | 2026-05-22 A | 10BW45-087, 10BW45-014 SS+6d | 100% |  |
| 10BW45-089 |  | Próba ciœnieniowa – Sekcja 13 | 2d | 2026-05-25 A | 2026-05-26 A | 10BW45-088 | 100% |  |
| 10BW45-090 |  | Izolacje – Sekcja 13 | 9d | 2026-05-25 A | 2026-06-05 A | 10BW45-089 | 100% |  |
| 10BW45-091 |  | Malowanie i oznakowanie – Sekcja 13 | 6d | 2026-06-02 A | 2026-06-11 A | 10BW45-090 FF+2d | 100% |  |
|  | PROJ | **Projektowanie** |  | 2025-04-02 | 2026-09-30 |  |  |  |
|  | DOKUMENTAC | **Dokumentacja** |  | 2025-04-02 | 2026-09-30 |  |  |  |
| 10BW45-001 |  | Projekt wykonawczy – Generator | 93d | 2025-04-02 A | 2025-08-13 A |  | 100% |  |
| 10BW45-002 |  | Uzgodnienie dokumentacji z Inwestorem | 19d | 2025-08-12 A | 2025-09-09 A | 10BW45-001 | 100% |  |
| 10BW45-003 |  | Zatwierdzenie dokumentacji do realizacji | 9d | 2025-09-11 A | 2025-09-25 A | 10BW45-002 | 100% |  |
| 10BW45-004 |  | KM: Dokumentacja zatwierdzona – Generator | 0d | 2026-09-30 | 2026-09-30 | 10BW45-003 |  | -47.1d |
|  | ROZR | **Rozruch** |  | 2026-07-22 | 2026-09-15 |  |  |  |
|  | ROZRUCH | **Rozruch** |  | 2026-07-22 | 2026-09-15 |  |  |  |
| 10BW45-094 |  | Przegl¹d gotowoœci do rozruchu | 3d | 2026-07-22 A | 2026-07-24 A | 10BW45-093, 10BW45-019, 10BW45-024, 10BW45-026 | 100% |  |
| 10BW45-095 |  | Rozruch na zimno | 15d | 2026-07-29 A | 2026-08-18 A | 10BW45-094 | 100% |  |
| 10BW45-096 |  | Rozruch na gor¹co / próby ruchowe | 21d | 2026-08-17 A | 2026-09-14 A | 10BW45-095 | 100% |  |
| 10BW45-097 |  | KM: Odbiór koñcowy – Generator | 0d | 2026-09-15 | 2026-09-15 A | 10BW45-096 | 100% |  |

| ID | WBS | Task | Duration | Start | Finish | Predecessors | Complete | Total float |
| --- | --- | --- | --- | --- | --- | --- | --- | --- |
|  | ZAKU | **Zakupy** |  | 2025-05-01 | 2026-10-16 |  |  |  |
|  | DOSTAWY | **Dostawy** |  | 2025-11-03 | 2026-04-30 |  |  |  |
| 10BW45-008 |  | Produkcja u dostawcy | 97d | 2025-11-03 A | 2026-03-18 A | 10BW45-007 | 100% |  |
| 10BW45-009 |  | Testy FAT | 10d | 2026-03-19 A | 2026-04-03 A | 10BW45-008 | 100% |  |
| 10BW45-010 |  | Transport i dostawa na plac budowy | 17d | 2026-04-03 A | 2026-04-30 A | 10BW45-009 | 100% |  |
| 10BW45-011 |  | KM: Dostawa na budowê – Generator | 0d | 2026-04-27 A | 2026-04-27 | 10BW45-010 | 100% |  |
|  | ZAMÓWIENIA | **Zamówienia** |  | 2025-05-01 | 2026-10-16 |  |  |  |
| 10BW45-005 |  | Zapytanie ofertowe | 24d | 2025-05-01 A | 2025-06-04 A | 10BW45-001 SS+20d | 100% |  |
| 10BW45-007 |  | Zawarcie umowy / zamówienie | 9d | 2025-10-24 A | 2025-11-10 A | 10BW45-006, 10BW45-004 SS, 24PY38-004 FS+11d | 100% |  |
| 10BW45-006 |  | Analiza i wybór ofert | 13d | 2026-09-30 | 2026-10-16 | 10BW45-005 |  | 98.9d |
|  | 10TM34 | **10TM34 – Hala maszyn** |  | 2025-01-16 | 2026-12-11 |  |  |  |
|  | BUDO | **Budowa** |  | 2025-09-25 | 2026-11-18 |  |  |  |
|  | AKPIA | **AKPiA** |  | 2026-09-30 | 2026-11-11 |  |  |  |
| 10TM34-075 |  | Monta¿ uk³adów AKPiA | 31d | 2026-09-30 | 2026-11-11 | 10TM34-014 SS+5d |  | 295.9d |
|  | ELEKTRYKA | **Elektryka** |  | 2026-09-28 | 2026-10-09 |  |  |  |
| 10TM34-062 |  | Pod³¹czenia i pomiary – trasa 08 | 9d | 2026-09-28 A | 2026-10-07 | 10TM34-061 FF | 31% | 350.9d |
| 10TM34-061 |  | Uk³adanie kabli – trasa 08 | 7d | 2026-09-29 A | 2026-10-01 | 10TM34-014 SS+10d | 63% | 351.9d |
| 10TM34-025 |  | Uk³adanie kabli – trasa 02 | 19d | 2026-09-30 A | 2026-10-07 | 10TM34-014 SS+10d | 67% | 307.9d |
| 10TM34-037 |  | Uk³adanie kabli – trasa 04 | 11d | 2026-09-30 A | 2026-10-09 | 10TM34-014 SS+10d | 21% | 346.9d |
| 10TM34-038 |  | Pod³¹czenia i pomiary – trasa 04 | 8d | 2026-09-30 | 2026-10-09 | 10TM34-037 FF |  | 349.2d |
| 10TM34-049 |  | Uk³adanie kabli – trasa 06 | 11d | 2026-09-30 A | 2026-10-09 | 10TM34-014 SS+10d | 23% | 346.9d |
| 10TM34-050 |  | Pod³¹czenia i pomiary – trasa 06 | 10d | 2026-09-30 A | 2026-10-01 | 10TM34-049 FF | 76% | 347.9d |
| 10TM34-073 |  | Uk³adanie kabli – trasa 10 | 10d | 2026-09-30 A | 2026-10-08 | 10TM34-014 SS+10d | 25% | 316.9d |
| 10TM34-074 |  | Pod³¹czenia i pomiary – trasa 10 | 8d | 2026-09-30 | 2026-10-09 | 10TM34-073 FF |  | 318.9d |
| 10TM34-026 |  | Pod³¹czenia i pomiary – trasa 02 | 3d | 2026-10-05 | 2026-10-07 | 10TM34-025 FF |  | 320.6d |
|  | MONTA¯ | **Monta¿** |  | 2025-11-06 | 2026-11-12 |  |  |  |
| 10TM34-013 |  | Monta¿ konstrukcji stalowych | 38d | 2025-11-06 A | 2025-12-29 A | 10TM34-012 | 100% |  |
| 10TM34-014 |  | Monta¿ urz¹dzeñ g³ównych | 52d | 2026-09-16 A | 2026-11-10 | 10TM34-013, 10TM34-011 | 42% | 284.9d |
| 10TM34-076 |  | KM: Zakoñczenie monta¿u – Hala maszyn | 0d | 2026-11-12 | 2026-11-12 | 10TM34-067, 10TM34-072, 10TM34-074, 10TM34-075, 10TM34-014 |  | 295.9d |
|  | ROBOTY BUD | **Roboty budowlane** |  | 2025-09-25 | 2025-11-04 |  |  |  |
| 10TM34-012 |  | Fundamenty i roboty ziemne | 29d | 2025-09-25 A | 2025-11-04 A | 10TM34-007 FS+2d | 100% |  |
|  | RUROCI¥GI | **Ruroci¹gi** |  | 2025-11-05 | 2026-11-18 |  |  |  |
|  | SEKCJA 01 | **Sekcja 01** |  | 2025-11-05 | 2026-10-22 |  |  |  |
| 10TM34-015 |  | Prefabrykacja ruroci¹gów – Sekcja 01 | 10.4d | 2025-11-05 A | 2025-11-21 A | 10TM34-012 | 100% |  |
| 10TM34-016 |  | Monta¿ ruroci¹gów – Sekcja 01 | 9.4d | 2026-09-21 A | 2026-09-29 A | 10TM34-015, 10TM34-014 SS+2d | 100% |  |
| 10TM34-017 |  | Próba ciœnieniowa – Sekcja 01 | 3d | 2026-09-30 | 2026-10-02 | 10TM34-016 |  | 309.9d |
| 10TM34-018 |  | Izolacje – Sekcja 01 | 12d | 2026-10-05 | 2026-10-20 | 10TM34-017 |  | 309.9d |
| 10TM34-019 |  | Malowanie i oznakowanie – Sekcja 01 | 2d | 2026-10-21 | 2026-10-22 | 10TM34-018 FF+2d |  | 309.9d |
|  | SEKCJA 02 | **Sekcja 02** |  | 2025-11-12 | 2026-11-03 |  |  |  |
| 10TM34-020 |  | Prefabrykacja ruroci¹gów – Sekcja 02 | 4.3d | 2025-11-12 A | 2025-11-17 A | 10TM34-012, 10TM34-015 SS+5d | 100% |  |
| 10TM34-021 |  | Monta¿ ruroci¹gów – Sekcja 02 | 20.4d | 2026-09-17 A | 2026-10-16 | 10TM34-020, 10TM34-014 SS | 36% | 303.5d |
| 10TM34-022 |  | Próba ciœnieniowa – Sekcja 02 | 3d | 2026-10-19 | 2026-10-21 | 10TM34-021 |  | 301.8d |
| 10TM34-023 |  | Izolacje – Sekcja 02 | 7d | 2026-10-22 | 2026-10-30 | 10TM34-022 |  | 301.8d |
| 10TM34-024 |  | Malowanie i oznakowanie – Sekcja 02 | 2d | 2026-11-02 | 2026-11-03 | 10TM34-023 FF+2d |  | 301.8d |
|  | SEKCJA 03 | **Sekcja 03** |  | 2025-11-21 | 2026-11-18 |  |  |  |
|  | PODSEKCJA | **Podsekcja 03.A** |  | 2025-11-21 | 2026-11-18 |  |  |  |
| 10TM34-027 |  | Prefabrykacja ruroci¹gów – Sekcja 03 | 10.3d | 2025-11-21 A | 2025-12-04 A | 10TM34-012, 10TM34-020 SS+5d | 100% |  |
| 10TM34-028 |  | Monta¿ ruroci¹gów – Sekcja 03 | 24.1d | 2026-09-18 A | 2026-10-27 | 10TM34-027, 10TM34-014 SS+1d | 17% | 325.8d |
| 10TM34-029 |  | Próba ciœnieniowa – Sekcja 03 | 5d | 2026-10-28 | 2026-11-03 | 10TM34-028 |  | 321.8d |
| 10TM34-030 |  | Izolacje – Sekcja 03 | 9d | 2026-11-04 | 2026-11-16 | 10TM34-029 |  | 321.8d |
| 10TM34-031 |  | Malowanie i oznakowanie – Sekcja 03 | 4d | 2026-11-13 | 2026-11-18 | 10TM34-030 FF+2d |  | 321.8d |
|  | SEKCJA 04 | **Sekcja 04** |  | 2025-12-02 | 2026-11-02 |  |  |  |
| 10TM34-032 |  | Prefabrykacja ruroci¹gów – Sekcja 04 | 12.4d | 2025-12-02 A | 2025-12-19 A | 10TM34-012, 10TM34-027 SS+5d | 100% |  |
| 10TM34-033 |  | Monta¿ ruroci¹gów – Sekcja 04 | 9.3d | 2026-09-23 A | 2026-10-06 | 10TM34-032, 10TM34-014 SS+2d | 37% | 334.6d |
| 10TM34-034 |  | Próba ciœnieniowa – Sekcja 04 | 6d | 2026-10-07 | 2026-10-14 | 10TM34-033 |  | 333d |
| 10TM34-035 |  | Izolacje – Sekcja 04 | 11d | 2026-10-15 | 2026-10-29 | 10TM34-034 |  | 333d |
| 10TM34-036 |  | Malowanie i oznakowanie – Sekcja 04 | 2d | 2026-10-30 | 2026-11-02 | 10TM34-035 FF+2d |  | 333d |
|  | SEKCJA 05 | **Sekcja 05** |  | 2025-12-04 | 2026-11-05 |  |  |  |
| 10TM34-039 |  | Prefabrykacja ruroci¹gów – Sekcja 05 | 14.3d | 2025-12-04 A | 2025-12-24 A | 10TM34-012, 10TM34-032 SS+5d | 100% |  |
| 10TM34-040 |  | Monta¿ ruroci¹gów – Sekcja 05 | 17d | 2026-09-30 A | 2026-10-16 | 10TM34-039, 10TM34-014 SS+10d | 21% | 326.9d |
| 10TM34-041 |  | Próba ciœnieniowa – Sekcja 05 | 4d | 2026-10-19 | 2026-10-22 | 10TM34-040 |  | 330.4d |
| 10TM34-042 |  | Izolacje – Sekcja 05 | 8d | 2026-10-23 | 2026-11-03 | 10TM34-041 |  | 330.4d |
| 10TM34-043 |  | Malowanie i oznakowanie – Sekcja 05 | 4d | 2026-11-02 | 2026-11-05 | 10TM34-042 FF+2d |  | 330.4d |
|  | SEKCJA 06 | **Sekcja 06** |  | 2025-12-11 | 2026-11-03 |  |  |  |
|  | PODSEKCJA | **Podsekcja 06.A** |  | 2025-12-11 | 2026-11-03 |  |  |  |
| 10TM34-044 |  | Prefabrykacja ruroci¹gów – Sekcja 06 | 3.6d | 2025-12-11 A | 2025-12-17 A | 10TM34-012, 10TM34-039 SS+5d | 100% |  |
| 10TM34-045 |  | Monta¿ ruroci¹gów – Sekcja 06 | 21.2d | 2026-09-30 A | 2026-10-16 | 10TM34-044, 10TM34-014 SS+10d | 39% | 324.7d |
| 10TM34-046 |  | Próba ciœnieniowa – Sekcja 06 | 3d | 2026-10-19 | 2026-10-21 | 10TM34-045 |  | 332.9d |
| 10TM34-047 |  | Izolacje – Sekcja 06 | 7d | 2026-10-22 | 2026-10-30 | 10TM34-046 |  | 332.9d |
| 10TM34-048 |  | Malowanie i oznakowanie – Sekcja 06 | 8d | 2026-10-23 | 2026-11-03 | 10TM34-047 FF+2d |  | 332.9d |

| ID | WBS | Task | Duration | Start | Finish | Predecessors | Complete | Total float |
| --- | --- | --- | --- | --- | --- | --- | --- | --- |
|  | SEKCJA 07 | **Sekcja 07** |  | 2025-12-17 | 2026-10-28 |  |  |  |
| 10TM34-051 |  | Prefabrykacja ruroci¹gów – Sekcja 07 | 8.9d | 2025-12-17 A | 2025-12-29 A | 10TM34-012, 10TM34-044 SS+5d | 100% |  |
| 10TM34-052 |  | Monta¿ ruroci¹gów – Sekcja 07 | 13.7d | 2026-09-25 A | 2026-10-09 | 10TM34-051, 10TM34-014 SS+4d | 36% | 334.2d |
| 10TM34-053 |  | Próba ciœnieniowa – Sekcja 07 | 4d | 2026-10-12 | 2026-10-15 | 10TM34-052 |  | 336.2d |
| 10TM34-054 |  | Izolacje – Sekcja 07 | 7d | 2026-10-16 | 2026-10-26 | 10TM34-053 |  | 336.2d |
| 10TM34-055 |  | Malowanie i oznakowanie – Sekcja 07 | 3d | 2026-10-26 | 2026-10-28 | 10TM34-054 FF+2d |  | 336.2d |
|  | SEKCJA 08 | **Sekcja 08** |  | 2025-12-25 | 2026-10-21 |  |  |  |
| 10TM34-056 |  | Prefabrykacja ruroci¹gów – Sekcja 08 | 6.6d | 2025-12-25 A | 2026-01-02 A | 10TM34-012, 10TM34-051 SS+5d | 100% |  |
| 10TM34-057 |  | Monta¿ ruroci¹gów – Sekcja 08 | 9.3d | 2026-09-22 A | 2026-09-30 | 10TM34-056, 10TM34-014 SS+3d | 89% | 339.6d |
| 10TM34-058 |  | Próba ciœnieniowa – Sekcja 08 | 2d | 2026-10-01 | 2026-10-02 | 10TM34-057 |  | 341.9d |
| 10TM34-059 |  | Izolacje – Sekcja 08 | 11d | 2026-10-05 | 2026-10-19 | 10TM34-058 |  | 341.9d |
| 10TM34-060 |  | Malowanie i oznakowanie – Sekcja 08 | 7d | 2026-10-13 | 2026-10-21 | 10TM34-059 FF+2d |  | 341.9d |
|  | SEKCJA 09 | **Sekcja 09** |  | 2026-01-05 | 2026-11-06 |  |  |  |
|  | PODSEKCJA | **Podsekcja 09.A** |  | 2026-01-05 | 2026-11-06 |  |  |  |
| 10TM34-063 |  | Prefabrykacja ruroci¹gów – Sekcja 09 | 11.8d | 2026-01-05 A | 2026-01-21 A | 10TM34-012, 10TM34-056 SS+5d | 100% |  |
| 10TM34-064 |  | Monta¿ ruroci¹gów – Sekcja 09 | 18.1d | 2026-09-16 A | 2026-10-13 | 10TM34-063, 10TM34-014 SS+1d | 44% | 300.8d |
| 10TM34-065 |  | Próba ciœnieniowa – Sekcja 09 | 6d | 2026-10-14 | 2026-10-21 | 10TM34-064 |  | 298.8d |
| 10TM34-066 |  | Izolacje – Sekcja 09 | 10d | 2026-10-22 | 2026-11-04 | 10TM34-065 |  | 298.8d |
| 10TM34-067 |  | Malowanie i oznakowanie – Sekcja 09 | 5d | 2026-11-02 | 2026-11-06 | 10TM34-066 FF+2d |  | 298.8d |
|  | SEKCJA 10 | **Sekcja 10** |  | 2026-01-13 | 2026-11-10 |  |  |  |
| 10TM34-068 |  | Prefabrykacja ruroci¹gów – Sekcja 10 | 12.4d | 2026-01-13 A | 2026-02-02 A | 10TM34-012, 10TM34-063 SS+5d | 100% |  |
| 10TM34-069 |  | Monta¿ ruroci¹gów – Sekcja 10 | 14.8d | 2026-09-30 | 2026-10-19 | 10TM34-068, 10TM34-014 SS+5d |  | 296.1d |
| 10TM34-070 |  | Próba ciœnieniowa – Sekcja 10 | 4d | 2026-10-20 | 2026-10-23 | 10TM34-069 |  | 296.1d |
| 10TM34-071 |  | Izolacje – Sekcja 10 | 10d | 2026-10-26 | 2026-11-06 | 10TM34-070 |  | 296.1d |
| 10TM34-072 |  | Malowanie i oznakowanie – Sekcja 10 | 8d | 2026-10-30 | 2026-11-10 | 10TM34-071 FF+2d |  | 296.1d |
|  | PROJ | **Projektowanie** |  | 2025-01-16 | 2025-05-23 |  |  |  |
|  | DOKUMENTAC | **Dokumentacja** |  | 2025-01-16 | 2025-05-23 |  |  |  |
| 10TM34-001 |  | Projekt wykonawczy – Hala maszyn | 52d | 2025-01-16 A | 2025-04-01 A |  | 100% |  |
| 10TM34-002 |  | Uzgodnienie dokumentacji z Inwestorem | 25d | 2025-04-01 A | 2025-05-05 A | 10TM34-001 | 100% |  |
| 10TM34-003 |  | Zatwierdzenie dokumentacji do realizacji | 12d | 2025-05-05 A | 2025-05-20 A | 10TM34-002 | 100% |  |
| 10TM34-004 |  | KM: Dokumentacja zatwierdzona – Hala maszyn | 0d | 2025-05-23 A | 2025-05-23 | 10TM34-003 | 100% |  |
|  | ROZR | **Rozruch** |  | 2026-11-12 | 2026-12-11 |  |  |  |
|  | ROZRUCH | **Rozruch** |  | 2026-11-12 | 2026-12-11 |  |  |  |
| 10TM34-077 |  | Przegl¹d gotowoœci do rozruchu | 6d | 2026-11-12 | 2026-11-19 | 10TM34-076, 10TM34-019, 10TM34-024, 10TM34-026 |  | 295.9d |
| 10TM34-078 |  | Rozruch na zimno | 5d | 2026-11-20 | 2026-11-26 | 10TM34-077 |  | 295.9d |
| 10TM34-079 |  | Rozruch na gor¹co / próby ruchowe | 10d | 2026-11-27 | 2026-12-10 | 10TM34-078 |  | 295.9d |
| 10TM34-080 |  | KM: Odbiór koñcowy – Hala maszyn | 0d | 2026-12-11 | 2026-12-11 | 10TM34-079 |  | 295.9d |
|  | ZAKU | **Zakupy** |  | 2025-02-13 | 2026-10-07 |  |  |  |
|  | DOSTAWY | **Dostawy** |  | 2025-09-24 | 2026-09-15 |  |  |  |
| 10TM34-008 |  | Produkcja u dostawcy | 232d | 2025-09-24 A | 2026-08-13 A | 10TM34-007 | 100% |  |
| 10TM34-009 |  | Testy FAT | 5d | 2026-08-14 A | 2026-08-21 A | 10TM34-008 | 100% |  |
| 10TM34-010 |  | Transport i dostawa na plac budowy | 17d | 2026-08-24 A | 2026-09-15 A | 10TM34-009 | 100% |  |
| 10TM34-011 |  | KM: Dostawa na budowê – Hala maszyn | 0d | 2026-09-15 A | 2026-09-15 | 10TM34-010 | 100% |  |
|  | ZAMÓWIENIA | **Zamówienia** |  | 2025-02-13 | 2026-10-07 |  |  |  |
| 10TM34-005 |  | Zapytanie ofertowe | 28d | 2025-02-13 A | 2026-10-07 | 10TM34-001 SS+20d | 79% | 393.9d |
| 10TM34-006 |  | Analiza i wybór ofert | 17d | 2025-03-28 A | 2025-04-22 A | 10TM34-005 | 100% |  |
| 10TM34-007 |  | Zawarcie umowy / zamówienie | 6d | 2025-09-22 A | 2026-10-02 | 10TM34-006, 10TM34-004 SS, 15BP15-004 SS+14d, 15BP15-004 SS+7d | 43% | 281.9d |
|  | 12FX78 | **12FX78 – Turbina parowa** |  | 2025-05-27 | 2026-12-10 |  |  |  |
|  | BUDO | **Budowa** |  | 2025-12-31 | 2026-12-10 |  |  |  |
|  | AKPIA | **AKPiA** |  | 2026-07-10 | 2026-08-11 |  |  |  |
| 12FX78-099 |  | Monta¿ uk³adów AKPiA | 22d | 2026-07-10 A | 2026-08-11 A | 12FX78-014 SS+5d | 100% |  |
|  | ELEKTRYKA | **Elektryka** |  | 2026-07-16 | 2026-08-11 |  |  |  |
| 12FX78-098 |  | Pod³¹czenia i pomiary – trasa 14 | 5d | 2026-07-16 A | 2026-07-24 A | 12FX78-097 FF | 100% |  |
| 12FX78-050 |  | Pod³¹czenia i pomiary – trasa 06 | 10d | 2026-07-17 A | 2026-07-30 A | 12FX78-049 FF | 100% |  |
| 12FX78-061 |  | Uk³adanie kabli – trasa 08 | 9d | 2026-07-17 A | 2026-07-31 A | 12FX78-014 SS+10d | 100% |  |
| 12FX78-074 |  | Pod³¹czenia i pomiary – trasa 10 | 9d | 2026-07-17 A | 2026-07-29 A | 12FX78-073 FF | 100% |  |
| 12FX78-085 |  | Uk³adanie kabli – trasa 12 | 14d | 2026-07-17 A | 2026-08-10 A | 12FX78-014 SS+10d | 100% |  |
| 12FX78-037 |  | Uk³adanie kabli – trasa 04 | 6d | 2026-07-20 A | 2026-07-30 A | 12FX78-014 SS+10d | 100% |  |
| 12FX78-073 |  | Uk³adanie kabli – trasa 10 | 8d | 2026-07-20 A | 2026-07-29 A | 12FX78-014 SS+10d | 100% |  |
| 12FX78-025 |  | Uk³adanie kabli – trasa 02 | 12d | 2026-07-21 A | 2026-08-07 A | 12FX78-014 SS+10d | 100% |  |
| 12FX78-097 |  | Uk³adanie kabli – trasa 14 | 4d | 2026-07-22 A | 2026-07-28 A | 12FX78-014 SS+10d | 100% |  |
| 12FX78-049 |  | Uk³adanie kabli – trasa 06 | 9d | 2026-07-23 A | 2026-08-05 A | 12FX78-014 SS+10d | 100% |  |
| 12FX78-062 |  | Pod³¹czenia i pomiary – trasa 08 | 8d | 2026-07-23 A | 2026-08-05 A | 12FX78-061 FF | 100% |  |
| 12FX78-038 |  | Pod³¹czenia i pomiary – trasa 04 | 3d | 2026-07-27 A | 2026-07-30 A | 12FX78-037 FF | 100% |  |
| 12FX78-086 |  | Pod³¹czenia i pomiary – trasa 12 | 6d | 2026-07-29 A | 2026-08-06 A | 12FX78-085 FF | 100% |  |
| 12FX78-026 |  | Pod³¹czenia i pomiary – trasa 02 | 4d | 2026-08-03 A | 2026-08-11 A | 12FX78-025 FF | 100% |  |
|  | MONTA¯ | **Monta¿** |  | 2025-12-31 | 2026-09-08 |  |  |  |
| 12FX78-013 |  | Monta¿ konstrukcji stalowych | 49d | 2025-12-31 A | 2026-03-10 A | 12FX78-012 | 100% |  |
| 12FX78-014 |  | Monta¿ urz¹dzeñ g³ównych | 45d | 2026-07-06 A | 2026-09-08 A | 12FX78-013, 12FX78-011 | 100% |  |
| 12FX78-100 |  | KM: Zakoñczenie monta¿u – Turbina parowa | 0d | 2026-09-08 A | 2026-09-08 | 12FX78-091, 12FX78-096, 12FX78-098, 12FX78-099, 12FX78-014 | 100% |  |

| ID | WBS | Task | Duration | Start | Finish | Predecessors | Complete | Total float |
| --- | --- | --- | --- | --- | --- | --- | --- | --- |
|  | ROBOTY BUD | **Roboty budowlane** |  | 2026-09-30 | 2026-12-10 |  |  |  |
| 12FX78-012 |  | Fundamenty i roboty ziemne | 52d | 2026-09-30 | 2026-12-10 | 12FX78-007 |  | 167.4d |
|  | RUROCI¥GI | **Ruroci¹gi** |  | 2026-01-02 | 2026-10-14 |  |  |  |
|  | SEKCJA 01 | **Sekcja 01** |  | 2026-01-02 | 2026-08-07 |  |  |  |
| 12FX78-015 |  | Prefabrykacja ruroci¹gów – Sekcja 01 | 6.8d | 2026-01-02 A | 2026-01-14 A | 12FX78-012 | 100% |  |
| 12FX78-016 |  | Monta¿ ruroci¹gów – Sekcja 01 | 10.5d | 2026-07-14 A | 2026-07-27 A | 12FX78-015, 12FX78-014 SS+6d | 100% |  |
| 12FX78-017 |  | Próba ciœnieniowa – Sekcja 01 | 2d | 2026-07-29 A | 2026-07-31 A | 12FX78-016 | 100% |  |
| 12FX78-018 |  | Izolacje – Sekcja 01 | 3d | 2026-07-31 A | 2026-08-07 A | 12FX78-017 | 100% |  |
| 12FX78-019 |  | Malowanie i oznakowanie – Sekcja 01 | 4d | 2026-08-03 A | 2026-08-07 A | 12FX78-018 FF+2d | 100% |  |
|  | SEKCJA 02 | **Sekcja 02** |  | 2026-01-06 | 2026-09-30 |  |  |  |
| 12FX78-020 |  | Prefabrykacja ruroci¹gów – Sekcja 02 | 6.1d | 2026-01-06 A | 2026-01-13 A | 12FX78-012, 12FX78-015 SS+5d | 100% |  |
| 12FX78-021 |  | Monta¿ ruroci¹gów – Sekcja 02 | 20.6d | 2026-07-14 A | 2026-08-11 A | 12FX78-020, 12FX78-014 SS+7d | 100% |  |
| 12FX78-022 |  | Próba ciœnieniowa – Sekcja 02 | 3d | 2026-08-17 A | 2026-08-19 A | 12FX78-021 | 100% |  |
| 12FX78-023 |  | Izolacje – Sekcja 02 | 10d | 2026-08-19 A | 2026-09-30 | 12FX78-022 | 85% | 335.3d |
| 12FX78-024 |  | Malowanie i oznakowanie – Sekcja 02 | 8d | 2026-08-25 A | 2026-09-07 A | 12FX78-023 FF+2d | 100% |  |
|  | SEKCJA 03 | **Sekcja 03** |  | 2026-01-15 | 2026-08-18 |  |  |  |
|  | PODSEKCJA | **Podsekcja 03.A** |  | 2026-01-15 | 2026-08-18 |  |  |  |
| 12FX78-027 |  | Prefabrykacja ruroci¹gów – Sekcja 03 | 9d | 2026-01-15 A | 2026-01-27 A | 12FX78-012, 12FX78-020 SS+5d | 100% |  |
| 12FX78-028 |  | Monta¿ ruroci¹gów – Sekcja 03 | 13.5d | 2026-07-06 A | 2026-07-27 A | 12FX78-027, 12FX78-014 SS | 100% |  |
| 12FX78-029 |  | Próba ciœnieniowa – Sekcja 03 | 6d | 2026-07-23 A | 2026-08-03 A | 12FX78-028 | 100% |  |
| 12FX78-030 |  | Izolacje – Sekcja 03 | 7d | 2026-08-04 A | 2026-08-17 A | 12FX78-029 | 100% |  |
| 12FX78-031 |  | Malowanie i oznakowanie – Sekcja 03 | 4d | 2026-08-12 A | 2026-08-18 A | 12FX78-030 FF+2d | 100% |  |
|  | SEKCJA 04 | **Sekcja 04** |  | 2026-01-22 | 2026-10-14 |  |  |  |
| 12FX78-032 |  | Prefabrykacja ruroci¹gów – Sekcja 04 | 4d | 2026-01-22 A | 2026-01-30 A | 12FX78-012, 12FX78-027 SS+5d | 100% |  |
| 12FX78-034 |  | Próba ciœnieniowa – Sekcja 04 | 2d | 2026-07-22 A | 2026-07-28 A | 12FX78-033 | 100% |  |
| 12FX78-035 |  | Izolacje – Sekcja 04 | 5d | 2026-07-27 A | 2026-08-03 A | 12FX78-034 | 100% |  |
| 12FX78-036 |  | Malowanie i oznakowanie – Sekcja 04 | 2d | 2026-08-06 A | 2026-08-12 A | 12FX78-035 FF+2d | 100% |  |
| 12FX78-033 |  | Monta¿ ruroci¹gów – Sekcja 04 | 11.5d | 2026-09-30 | 2026-10-14 | 12FX78-032, 12FX78-014 SS+2d |  | 337.4d |
|  | SEKCJA 05 | **Sekcja 05** |  | 2026-01-28 | 2026-08-10 |  |  |  |
| 12FX78-039 |  | Prefabrykacja ruroci¹gów – Sekcja 05 | 6.3d | 2026-01-28 A | 2026-02-09 A | 12FX78-012, 12FX78-032 SS+5d | 100% |  |
| 12FX78-040 |  | Monta¿ ruroci¹gów – Sekcja 05 | 5.9d | 2026-07-07 A | 2026-07-15 A | 12FX78-039, 12FX78-014 SS+1d | 100% |  |
| 12FX78-041 |  | Próba ciœnieniowa – Sekcja 05 | 5d | 2026-07-17 A | 2026-07-23 A | 12FX78-040 | 100% |  |
| 12FX78-042 |  | Izolacje – Sekcja 05 | 9d | 2026-07-23 A | 2026-08-05 A | 12FX78-041 | 100% |  |
| 12FX78-043 |  | Malowanie i oznakowanie – Sekcja 05 | 6d | 2026-07-30 A | 2026-08-10 A | 12FX78-042 FF+2d | 100% |  |
|  | SEKCJA 06 | **Sekcja 06** |  | 2026-02-04 | 2026-08-26 |  |  |  |
|  | PODSEKCJA | **Podsekcja 06.A** |  | 2026-02-04 | 2026-08-26 |  |  |  |
| 12FX78-044 |  | Prefabrykacja ruroci¹gów – Sekcja 06 | 11d | 2026-02-04 A | 2026-02-23 A | 12FX78-012, 12FX78-039 SS+5d | 100% |  |
| 12FX78-045 |  | Monta¿ ruroci¹gów – Sekcja 06 | 20.1d | 2026-07-08 A | 2026-08-04 A | 12FX78-044, 12FX78-014 SS+2d | 100% |  |
| 12FX78-046 |  | Próba ciœnieniowa – Sekcja 06 | 3d | 2026-08-05 A | 2026-08-11 A | 12FX78-045 | 100% |  |
| 12FX78-047 |  | Izolacje – Sekcja 06 | 5d | 2026-08-13 A | 2026-08-24 A | 12FX78-046 | 100% |  |
| 12FX78-048 |  | Malowanie i oznakowanie – Sekcja 06 | 5d | 2026-08-17 A | 2026-08-26 A | 12FX78-047 FF+2d | 100% |  |
|  | SEKCJA 07 | **Sekcja 07** |  | 2026-02-12 | 2026-08-20 |  |  |  |
| 12FX78-051 |  | Prefabrykacja ruroci¹gów – Sekcja 07 | 9d | 2026-02-12 A | 2026-02-25 A | 12FX78-012, 12FX78-044 SS+5d | 100% |  |
| 12FX78-052 |  | Monta¿ ruroci¹gów – Sekcja 07 | 11.2d | 2026-07-20 A | 2026-08-03 A | 12FX78-051, 12FX78-014 SS+7d | 100% |  |
| 12FX78-053 |  | Próba ciœnieniowa – Sekcja 07 | 6d | 2026-07-31 A | 2026-08-10 A | 12FX78-052 | 100% |  |
| 12FX78-054 |  | Izolacje – Sekcja 07 | 7d | 2026-08-07 A | 2026-08-18 A | 12FX78-053 | 100% |  |
| 12FX78-055 |  | Malowanie i oznakowanie – Sekcja 07 | 4d | 2026-08-17 A | 2026-08-20 A | 12FX78-054 FF+2d | 100% |  |
|  | SEKCJA 08 | **Sekcja 08** |  | 2026-02-19 | 2026-08-24 |  |  |  |
| 12FX78-056 |  | Prefabrykacja ruroci¹gów – Sekcja 08 | 11d | 2026-02-19 A | 2026-03-05 A | 12FX78-012, 12FX78-051 SS+5d | 100% |  |
| 12FX78-057 |  | Monta¿ ruroci¹gów – Sekcja 08 | 15.1d | 2026-07-16 A | 2026-08-07 A | 12FX78-056, 12FX78-014 SS+5d | 100% |  |
| 12FX78-058 |  | Próba ciœnieniowa – Sekcja 08 | 6d | 2026-08-03 A | 2026-08-10 A | 12FX78-057 | 100% |  |
| 12FX78-059 |  | Izolacje – Sekcja 08 | 8d | 2026-08-10 A | 2026-08-21 A | 12FX78-058 | 100% |  |
| 12FX78-060 |  | Malowanie i oznakowanie – Sekcja 08 | 4d | 2026-08-19 A | 2026-08-24 A | 12FX78-059 FF+2d | 100% |  |
|  | SEKCJA 09 | **Sekcja 09** |  | 2026-02-24 | 2026-10-01 |  |  |  |
|  | PODSEKCJA | **Podsekcja 09.A** |  | 2026-02-24 | 2026-10-01 |  |  |  |
| 12FX78-063 |  | Prefabrykacja ruroci¹gów – Sekcja 09 | 4.1d | 2026-02-24 A | 2026-03-02 A | 12FX78-012, 12FX78-056 SS+5d | 100% |  |
| 12FX78-064 |  | Monta¿ ruroci¹gów – Sekcja 09 | 21.6d | 2026-07-15 A | 2026-08-12 A | 12FX78-063, 12FX78-014 SS+8d | 100% |  |
| 12FX78-065 |  | Próba ciœnieniowa – Sekcja 09 | 6d | 2026-08-18 A | 2026-08-25 A | 12FX78-064 | 100% |  |
| 12FX78-066 |  | Izolacje – Sekcja 09 | 12d | 2026-08-24 A | 2026-10-01 | 12FX78-065 | 82% | 370.3d |
| 12FX78-067 |  | Malowanie i oznakowanie – Sekcja 09 | 2d | 2026-09-14 A | 2026-09-15 A | 12FX78-066 FF+2d | 100% |  |
|  | SEKCJA 10 | **Sekcja 10** |  | 2026-03-05 | 2026-08-17 |  |  |  |
| 12FX78-068 |  | Prefabrykacja ruroci¹gów – Sekcja 10 | 14.6d | 2026-03-05 A | 2026-03-26 A | 12FX78-012, 12FX78-063 SS+5d | 100% |  |
| 12FX78-069 |  | Monta¿ ruroci¹gów – Sekcja 10 | 14.6d | 2026-07-09 A | 2026-07-28 A | 12FX78-068, 12FX78-014 SS+1d | 100% |  |
| 12FX78-070 |  | Próba ciœnieniowa – Sekcja 10 | 4d | 2026-07-29 A | 2026-08-03 A | 12FX78-069 | 100% |  |
| 12FX78-071 |  | Izolacje – Sekcja 10 | 9d | 2026-08-04 A | 2026-08-14 A | 12FX78-070 | 100% |  |
| 12FX78-072 |  | Malowanie i oznakowanie – Sekcja 10 | 6d | 2026-08-07 A | 2026-08-17 A | 12FX78-071 FF+2d | 100% |  |
|  | SEKCJA 11 | **Sekcja 11** |  | 2026-03-16 | 2026-08-03 |  |  |  |
| 12FX78-075 |  | Prefabrykacja ruroci¹gów – Sekcja 11 | 6.4d | 2026-03-16 A | 2026-03-25 A | 12FX78-012, 12FX78-068 SS+5d | 100% |  |
| 12FX78-076 |  | Monta¿ ruroci¹gów – Sekcja 11 | 5.6d | 2026-07-20 A | 2026-07-27 A | 12FX78-075, 12FX78-014 SS+7d | 100% |  |
| 12FX78-077 |  | Próba ciœnieniowa – Sekcja 11 | 2d | 2026-07-22 A | 2026-07-27 A | 12FX78-076 | 100% |  |

| ID | WBS | Task | Duration | Start | Finish | Predecessors | Complete | Total float |
| --- | --- | --- | --- | --- | --- | --- | --- | --- |
| 12FX78-078 |  | Izolacje – Sekcja 11 | 3d | 2026-07-24 A | 2026-07-29 A | 12FX78-077 | 100% |  |
| 12FX78-079 |  | Malowanie i oznakowanie – Sekcja 11 | 2d | 2026-07-30 A | 2026-08-03 A | 12FX78-078 FF+2d | 100% |  |
|  | SEKCJA 12 | **Sekcja 12** |  | 2026-03-17 | 2026-08-25 |  |  |  |
|  | PODSEKCJA | **Podsekcja 12.A** |  | 2026-03-17 | 2026-08-25 |  |  |  |
| 12FX78-080 |  | Prefabrykacja ruroci¹gów – Sekcja 12 | 4.5d | 2026-03-17 A | 2026-03-24 A | 12FX78-012, 12FX78-075 SS+5d | 100% |  |
| 12FX78-081 |  | Monta¿ ruroci¹gów – Sekcja 12 | 16.2d | 2026-07-14 A | 2026-08-06 A | 12FX78-080, 12FX78-014 SS+5d | 100% |  |
| 12FX78-082 |  | Próba ciœnieniowa – Sekcja 12 | 6d | 2026-08-04 A | 2026-08-12 A | 12FX78-081 | 100% |  |
| 12FX78-083 |  | Izolacje – Sekcja 12 | 5d | 2026-08-12 A | 2026-08-21 A | 12FX78-082 | 100% |  |
| 12FX78-084 |  | Malowanie i oznakowanie – Sekcja 12 | 6d | 2026-08-18 A | 2026-08-25 A | 12FX78-083 FF+2d | 100% |  |
|  | SEKCJA 13 | **Sekcja 13** |  | 2026-03-24 | 2026-08-14 |  |  |  |
| 12FX78-087 |  | Prefabrykacja ruroci¹gów – Sekcja 13 | 8.8d | 2026-03-24 A | 2026-04-06 A | 12FX78-012, 12FX78-080 SS+5d | 100% |  |
| 12FX78-088 |  | Monta¿ ruroci¹gów – Sekcja 13 | 15.7d | 2026-07-13 A | 2026-08-04 A | 12FX78-087, 12FX78-014 SS+3d | 100% |  |
| 12FX78-089 |  | Próba ciœnieniowa – Sekcja 13 | 5d | 2026-08-03 A | 2026-08-10 A | 12FX78-088 | 100% |  |
| 12FX78-091 |  | Malowanie i oznakowanie – Sekcja 13 | 7d | 2026-08-05 A | 2026-08-13 A | 12FX78-090 FF+2d | 100% |  |
| 12FX78-090 |  | Izolacje – Sekcja 13 | 4d | 2026-08-07 A | 2026-08-14 A | 12FX78-089 | 100% |  |
|  | SEKCJA 14 | **Sekcja 14** |  | 2026-04-02 | 2026-08-21 |  |  |  |
| 12FX78-092 |  | Prefabrykacja ruroci¹gów – Sekcja 14 | 3.1d | 2026-04-02 A | 2026-04-08 A | 12FX78-012, 12FX78-087 SS+5d | 100% |  |
| 12FX78-093 |  | Monta¿ ruroci¹gów – Sekcja 14 | 13.4d | 2026-07-10 A | 2026-07-28 A | 12FX78-092, 12FX78-014 SS+1d | 100% |  |
| 12FX78-094 |  | Próba ciœnieniowa – Sekcja 14 | 3d | 2026-07-27 A | 2026-07-30 A | 12FX78-093 | 100% |  |
| 12FX78-095 |  | Izolacje – Sekcja 14 | 12d | 2026-08-03 A | 2026-08-21 A | 12FX78-094 | 100% |  |
| 12FX78-096 |  | Malowanie i oznakowanie – Sekcja 14 | 6d | 2026-08-10 A | 2026-08-18 A | 12FX78-095 FF+2d | 100% |  |
|  | PROJ | **Projektowanie** |  | 2025-05-27 | 2025-09-22 |  |  |  |
|  | DOKUMENTAC | **Dokumentacja** |  | 2025-05-27 | 2025-09-22 |  |  |  |
| 12FX78-001 |  | Projekt wykonawczy – Turbina parowa | 53d | 2025-05-27 A | 2025-08-07 A |  | 100% |  |
| 12FX78-002 |  | Uzgodnienie dokumentacji z Inwestorem | 15d | 2025-08-11 A | 2025-09-02 A | 12FX78-001 | 100% |  |
| 12FX78-003 |  | Zatwierdzenie dokumentacji do realizacji | 12d | 2025-09-02 A | 2025-09-22 A | 12FX78-002 | 100% |  |
| 12FX78-004 |  | KM: Dokumentacja zatwierdzona – Turbina parowa | 0d | 2025-09-16 A | 2025-09-16 | 12FX78-003 | 100% |  |
|  | ROZR | **Rozruch** |  | 2026-09-08 | 2026-10-20 |  |  |  |
|  | ROZRUCH | **Rozruch** |  | 2026-09-08 | 2026-10-20 |  |  |  |
| 12FX78-101 |  | Przegl¹d gotowoœci do rozruchu | 5d | 2026-09-08 A | 2026-09-16 A | 12FX78-100, 12FX78-019, 12FX78-024, 12FX78-026 | 100% |  |
| 12FX78-102 |  | Rozruch na zimno | 7d | 2026-09-15 A | 2026-09-25 A | 12FX78-101 | 100% |  |
| 12FX78-103 |  | Rozruch na gor¹co / próby ruchowe | 18d | 2026-09-24 A | 2026-10-19 | 12FX78-102 | 21% | 333.9d |
| 12FX78-104 |  | KM: Odbiór koñcowy – Turbina parowa | 0d | 2026-10-20 | 2026-10-20 | 12FX78-103 |  | 333.7d |
|  | ZAKU | **Zakupy** |  | 2025-06-27 | 2026-10-21 |  |  |  |
|  | DOSTAWY | **Dostawy** |  | 2025-10-22 | 2026-07-13 |  |  |  |
| 12FX78-008 |  | Produkcja u dostawcy | 150d | 2025-10-22 A | 2026-05-22 A | 12FX78-007 | 100% |  |
| 12FX78-009 |  | Testy FAT | 10d | 2026-05-15 A | 2026-05-28 A | 12FX78-008 | 100% |  |
| 12FX78-010 |  | Transport i dostawa na plac budowy | 25d | 2026-06-04 A | 2026-07-13 A | 12FX78-009 | 100% |  |
| 12FX78-011 |  | KM: Dostawa na budowê – Turbina parowa | 0d | 2026-07-03 A | 2026-07-03 | 12FX78-010 | 100% |  |
|  | ZAMÓWIENIA | **Zamówienia** |  | 2025-06-27 | 2026-10-21 |  |  |  |
| 12FX78-005 |  | Zapytanie ofertowe | 29d | 2025-06-27 A | 2026-10-21 | 12FX78-001 SS+20d | 42% | 360.9d |
| 12FX78-006 |  | Analiza i wybór ofert | 20d | 2025-08-04 A | 2025-09-02 A | 12FX78-005 | 100% |  |
| 12FX78-007 |  | Zawarcie umowy / zamówienie | 6d | 2025-10-13 A | 2025-10-22 A | 12FX78-006, 12FX78-004 SS, 10BW45-004 SF+9d, 24PY38-004 SS+4d | 100% |  |
|  | 12PB41 | **12PB41 – Skraplacz** |  | 2025-02-13 | 2026-10-28 |  |  |  |
|  | BUDO | **Budowa** |  | 2025-11-14 | 2026-10-28 |  |  |  |
|  | AKPIA | **AKPiA** |  | 2026-04-01 | 2026-05-25 |  |  |  |
| 12PB41-183 |  | Monta¿ uk³adów AKPiA | 38d | 2026-04-01 A | 2026-05-25 A | 12PB41-014 SS+5d | 100% |  |
|  | ELEKTRYKA | **Elektryka** |  | 2026-03-30 | 2026-10-01 |  |  |  |
| 12PB41-074 |  | Pod³¹czenia i pomiary – trasa 10 | 10d | 2026-03-30 A | 2026-04-10 A | 12PB41-073 FF | 100% |  |
| 12PB41-122 |  | Pod³¹czenia i pomiary – trasa 18 | 10d | 2026-03-31 A | 2026-04-16 A | 12PB41-121 FF | 100% |  |
| 12PB41-049 |  | Uk³adanie kabli – trasa 06 | 9d | 2026-04-03 A | 2026-04-20 A | 12PB41-014 SS+10d | 100% |  |
| 12PB41-061 |  | Uk³adanie kabli – trasa 08 | 15d | 2026-04-03 A | 2026-04-23 A | 12PB41-014 SS+10d | 100% |  |
| 12PB41-085 |  | Uk³adanie kabli – trasa 12 | 13d | 2026-04-03 A | 2026-04-21 A | 12PB41-014 SS+10d | 100% |  |
| 12PB41-181 |  | Uk³adanie kabli – trasa 28 | 20d | 2026-04-03 A | 2026-05-01 A | 12PB41-014 SS+10d | 100% |  |
| 12PB41-133 |  | Uk³adanie kabli – trasa 20 | 16d | 2026-04-06 A | 2026-04-27 A | 12PB41-014 SS+10d | 100% |  |
| 12PB41-037 |  | Uk³adanie kabli – trasa 04 | 17d | 2026-04-07 A | 2026-04-30 A | 12PB41-014 SS+10d | 100% |  |
| 12PB41-073 |  | Uk³adanie kabli – trasa 10 | 6d | 2026-04-07 A | 2026-04-16 A | 12PB41-014 SS+10d | 100% |  |
| 12PB41-097 |  | Uk³adanie kabli – trasa 14 | 12d | 2026-04-07 A | 2026-04-23 A | 12PB41-014 SS+10d | 100% |  |
| 12PB41-169 |  | Uk³adanie kabli – trasa 26 | 8d | 2026-04-07 A | 2026-04-21 A | 12PB41-014 SS+10d | 100% |  |
| 12PB41-025 |  | Uk³adanie kabli – trasa 02 | 13d | 2026-04-08 A | 2026-10-01 | 12PB41-014 SS+10d | 82% | 422.9d |
| 12PB41-109 |  | Uk³adanie kabli – trasa 16 | 11d | 2026-04-08 A | 2026-04-23 A | 12PB41-014 SS+10d | 100% |  |
| 12PB41-121 |  | Uk³adanie kabli – trasa 18 | 6d | 2026-04-08 A | 2026-04-15 A | 12PB41-014 SS+10d | 100% |  |
| 12PB41-145 |  | Uk³adanie kabli – trasa 22 | 18d | 2026-04-08 A | 2026-05-01 A | 12PB41-014 SS+10d | 100% |  |
| 12PB41-157 |  | Uk³adanie kabli – trasa 24 | 14d | 2026-04-08 A | 2026-04-30 A | 12PB41-014 SS+10d | 100% |  |
| 12PB41-050 |  | Pod³¹czenia i pomiary – trasa 06 | 6d | 2026-04-09 A | 2026-04-16 A | 12PB41-049 FF | 100% |  |
| 12PB41-062 |  | Pod³¹czenia i pomiary – trasa 08 | 8d | 2026-04-14 A | 2026-04-28 A | 12PB41-061 FF | 100% |  |
| 12PB41-086 |  | Pod³¹czenia i pomiary – trasa 12 | 8d | 2026-04-14 A | 2026-04-28 A | 12PB41-085 FF | 100% |  |
| 12PB41-170 |  | Pod³¹czenia i pomiary – trasa 26 | 3d | 2026-04-15 A | 2026-04-17 A | 12PB41-169 FF | 100% |  |
| 12PB41-038 |  | Pod³¹czenia i pomiary – trasa 04 | 10d | 2026-04-16 A | 2026-04-29 A | 12PB41-037 FF | 100% |  |
| 12PB41-098 |  | Pod³¹czenia i pomiary – trasa 14 | 5d | 2026-04-17 A | 2026-04-27 A | 12PB41-097 FF | 100% |  |

| ID | WBS | Task | Duration | Start | Finish | Predecessors | Complete | Total float |
| --- | --- | --- | --- | --- | --- | --- | --- | --- |
| 12PB41-110 |  | Pod³¹czenia i pomiary – trasa 16 | 4d | 2026-04-20 A | 2026-04-23 A | 12PB41-109 FF | 100% |  |
| 12PB41-182 |  | Pod³¹czenia i pomiary – trasa 28 | 10d | 2026-04-20 A | 2026-10-01 | 12PB41-181 FF | 79% | 417.9d |
| 12PB41-146 |  | Pod³¹czenia i pomiary – trasa 22 | 7d | 2026-04-21 A | 2026-04-30 A | 12PB41-145 FF | 100% |  |
| 12PB41-026 |  | Pod³¹czenia i pomiary – trasa 02 | 4d | 2026-04-22 A | 2026-04-30 A | 12PB41-025 FF | 100% |  |
| 12PB41-158 |  | Pod³¹czenia i pomiary – trasa 24 | 4d | 2026-04-22 A | 2026-04-29 A | 12PB41-157 FF | 100% |  |
| 12PB41-134 |  | Pod³¹czenia i pomiary – trasa 20 | 3d | 2026-04-27 A | 2026-04-29 A | 12PB41-133 FF | 100% |  |
|  | MONTA¯ | **Monta¿** |  | 2025-12-22 | 2026-08-25 |  |  |  |
| 12PB41-013 |  | Monta¿ konstrukcji stalowych | 39d | 2025-12-22 A | 2026-02-17 A | 12PB41-012 | 100% |  |
| 12PB41-014 |  | Monta¿ urz¹dzeñ g³ównych | 50d | 2026-03-24 A | 2026-06-02 A | 12PB41-013, 12PB41-011 | 100% |  |
| 12PB41-184 |  | KM: Zakoñczenie monta¿u – Skraplacz | 0d | 2026-08-25 A | 2026-08-25 | 12PB41-175, 12PB41-180, 12PB41-182, 12PB41-183, 12PB41-014 | 100% |  |
|  | ROBOTY BUD | **Roboty budowlane** |  | 2025-11-14 | 2025-12-23 |  |  |  |
| 12PB41-012 |  | Fundamenty i roboty ziemne | 25d | 2025-11-14 A | 2025-12-23 A | 12PB41-007 FS+11d | 100% |  |
|  | RUROCI¥GI | **Ruroci¹gi** |  | 2025-12-22 | 2026-10-28 |  |  |  |
|  | SEKCJA 01 | **Sekcja 01** |  | 2025-12-22 | 2026-05-13 |  |  |  |
| 12PB41-015 |  | Prefabrykacja ruroci¹gów – Sekcja 01 | 4.1d | 2025-12-22 A | 2025-12-29 A | 12PB41-012 | 100% |  |
| 12PB41-016 |  | Monta¿ ruroci¹gów – Sekcja 01 | 18.5d | 2026-04-06 A | 2026-05-01 A | 12PB41-015, 12PB41-014 SS+7d | 100% |  |
| 12PB41-017 |  | Próba ciœnieniowa – Sekcja 01 | 4d | 2026-04-29 A | 2026-05-07 A | 12PB41-016 | 100% |  |
| 12PB41-018 |  | Izolacje – Sekcja 01 | 4d | 2026-04-30 A | 2026-05-05 A | 12PB41-017 | 100% |  |
| 12PB41-019 |  | Malowanie i oznakowanie – Sekcja 01 | 8d | 2026-05-01 A | 2026-05-13 A | 12PB41-018 FF+2d | 100% |  |
|  | SEKCJA 02 | **Sekcja 02** |  | 2025-12-29 | 2026-10-01 |  |  |  |
| 12PB41-020 |  | Prefabrykacja ruroci¹gów – Sekcja 02 | 11.1d | 2025-12-29 A | 2026-01-13 A | 12PB41-012, 12PB41-015 SS+5d | 100% |  |
| 12PB41-021 |  | Monta¿ ruroci¹gów – Sekcja 02 | 12.2d | 2026-04-01 A | 2026-04-17 A | 12PB41-020, 12PB41-014 SS+5d | 100% |  |
| 12PB41-022 |  | Próba ciœnieniowa – Sekcja 02 | 6d | 2026-04-14 A | 2026-04-23 A | 12PB41-021 | 100% |  |
| 12PB41-023 |  | Izolacje – Sekcja 02 | 10d | 2026-04-23 A | 2026-10-01 | 12PB41-022 | 76% | 412.7d |
| 12PB41-024 |  | Malowanie i oznakowanie – Sekcja 02 | 6d | 2026-05-04 A | 2026-05-11 A | 12PB41-023 FF+2d | 100% |  |
|  | SEKCJA 03 | **Sekcja 03** |  | 2025-12-31 | 2026-05-29 |  |  |  |
|  | PODSEKCJA | **Podsekcja 03.A** |  | 2025-12-31 | 2026-05-29 |  |  |  |
| 12PB41-027 |  | Prefabrykacja ruroci¹gów – Sekcja 03 | 9.3d | 2025-12-31 A | 2026-01-13 A | 12PB41-012, 12PB41-020 SS+5d | 100% |  |
| 12PB41-028 |  | Monta¿ ruroci¹gów – Sekcja 03 | 21d | 2026-04-03 A | 2026-05-05 A | 12PB41-027, 12PB41-014 SS+10d | 100% |  |
| 12PB41-029 |  | Próba ciœnieniowa – Sekcja 03 | 3d | 2026-05-06 A | 2026-05-11 A | 12PB41-028 | 100% |  |
| 12PB41-030 |  | Izolacje – Sekcja 03 | 10d | 2026-05-08 A | 2026-05-25 A | 12PB41-029 | 100% |  |
| 12PB41-031 |  | Malowanie i oznakowanie – Sekcja 03 | 5d | 2026-05-22 A | 2026-05-29 A | 12PB41-030 FF+2d | 100% |  |
|  | SEKCJA 04 | **Sekcja 04** |  | 2026-01-07 | 2026-10-28 |  |  |  |
| 12PB41-032 |  | Prefabrykacja ruroci¹gów – Sekcja 04 | 3.3d | 2026-01-07 A | 2026-01-12 A | 12PB41-012, 12PB41-027 SS+5d | 100% |  |
| 12PB41-034 |  | Próba ciœnieniowa – Sekcja 04 | 5d | 2026-04-24 A | 2026-04-30 A | 12PB41-033 | 100% |  |
| 12PB41-035 |  | Izolacje – Sekcja 04 | 12d | 2026-04-29 A | 2026-05-14 A | 12PB41-034 | 100% |  |
| 12PB41-036 |  | Malowanie i oznakowanie – Sekcja 04 | 2d | 2026-05-19 A | 2026-05-21 A | 12PB41-035 FF+2d | 100% |  |
| 12PB41-033 |  | Monta¿ ruroci¹gów – Sekcja 04 | 21d | 2026-09-30 | 2026-10-28 | 12PB41-032, 12PB41-014 SS |  | 317.9d |
|  | SEKCJA 05 | **Sekcja 05** |  | 2026-01-16 | 2026-04-29 |  |  |  |
| 12PB41-039 |  | Prefabrykacja ruroci¹gów – Sekcja 05 | 11.2d | 2026-01-16 A | 2026-02-04 A | 12PB41-012, 12PB41-032 SS+5d | 100% |  |
| 12PB41-040 |  | Monta¿ ruroci¹gów – Sekcja 05 | 10.3d | 2026-03-25 A | 2026-04-07 A | 12PB41-039, 12PB41-014 SS+3d | 100% |  |
| 12PB41-041 |  | Próba ciœnieniowa – Sekcja 05 | 6d | 2026-04-09 A | 2026-04-16 A | 12PB41-040 | 100% |  |
| 12PB41-043 |  | Malowanie i oznakowanie – Sekcja 05 | 6d | 2026-04-20 A | 2026-04-29 A | 12PB41-042 FF+2d | 100% |  |
| 12PB41-042 |  | Izolacje – Sekcja 05 | 5d | 2026-04-21 A | 2026-04-29 A | 12PB41-041 | 100% |  |
|  | SEKCJA 06 | **Sekcja 06** |  | 2026-01-23 | 2026-05-20 |  |  |  |
|  | PODSEKCJA | **Podsekcja 06.A** |  | 2026-01-23 | 2026-05-20 |  |  |  |
| 12PB41-044 |  | Prefabrykacja ruroci¹gów – Sekcja 06 | 12.1d | 2026-01-23 A | 2026-02-11 A | 12PB41-012, 12PB41-039 SS+5d | 100% |  |
| 12PB41-045 |  | Monta¿ ruroci¹gów – Sekcja 06 | 16.6d | 2026-04-03 A | 2026-04-27 A | 12PB41-044, 12PB41-014 SS+7d | 100% |  |
| 12PB41-046 |  | Próba ciœnieniowa – Sekcja 06 | 6d | 2026-04-24 A | 2026-05-06 A | 12PB41-045 | 100% |  |
| 12PB41-047 |  | Izolacje – Sekcja 06 | 9d | 2026-05-01 A | 2026-05-18 A | 12PB41-046 | 100% |  |
| 12PB41-048 |  | Malowanie i oznakowanie – Sekcja 06 | 4d | 2026-05-13 A | 2026-05-20 A | 12PB41-047 FF+2d | 100% |  |
|  | SEKCJA 07 | **Sekcja 07** |  | 2026-01-28 | 2026-05-21 |  |  |  |
| 12PB41-051 |  | Prefabrykacja ruroci¹gów – Sekcja 07 | 3.2d | 2026-01-28 A | 2026-02-03 A | 12PB41-012, 12PB41-044 SS+5d | 100% |  |
| 12PB41-052 |  | Monta¿ ruroci¹gów – Sekcja 07 | 24.9d | 2026-03-30 A | 2026-05-05 A | 12PB41-051, 12PB41-014 SS+2d | 100% |  |
| 12PB41-053 |  | Próba ciœnieniowa – Sekcja 07 | 5d | 2026-04-30 A | 2026-05-06 A | 12PB41-052 | 100% |  |
| 12PB41-054 |  | Izolacje – Sekcja 07 | 8d | 2026-05-05 A | 2026-05-14 A | 12PB41-053 | 100% |  |
| 12PB41-055 |  | Malowanie i oznakowanie – Sekcja 07 | 4d | 2026-05-14 A | 2026-05-21 A | 12PB41-054 FF+2d | 100% |  |
|  | SEKCJA 08 | **Sekcja 08** |  | 2026-02-03 | 2026-05-11 |  |  |  |
| 12PB41-056 |  | Prefabrykacja ruroci¹gów – Sekcja 08 | 5.4d | 2026-02-03 A | 2026-02-09 A | 12PB41-012, 12PB41-051 SS+5d | 100% |  |
| 12PB41-057 |  | Monta¿ ruroci¹gów – Sekcja 08 | 14.8d | 2026-03-30 A | 2026-04-17 A | 12PB41-056, 12PB41-014 SS+4d | 100% |  |
| 12PB41-058 |  | Próba ciœnieniowa – Sekcja 08 | 5d | 2026-04-15 A | 2026-04-24 A | 12PB41-057 | 100% |  |
| 12PB41-059 |  | Izolacje – Sekcja 08 | 8d | 2026-04-22 A | 2026-05-05 A | 12PB41-058 | 100% |  |
| 12PB41-060 |  | Malowanie i oznakowanie – Sekcja 08 | 4d | 2026-05-01 A | 2026-05-11 A | 12PB41-059 FF+2d | 100% |  |
|  | SEKCJA 09 | **Sekcja 09** |  | 2026-02-13 | 2026-05-26 |  |  |  |
|  | PODSEKCJA | **Podsekcja 09.A** |  | 2026-02-13 | 2026-05-26 |  |  |  |
| 12PB41-063 |  | Prefabrykacja ruroci¹gów – Sekcja 09 | 14.2d | 2026-02-13 A | 2026-03-05 A | 12PB41-012, 12PB41-056 SS+5d | 100% |  |
| 12PB41-064 |  | Monta¿ ruroci¹gów – Sekcja 09 | 20.5d | 2026-04-09 A | 2026-05-07 A | 12PB41-063, 12PB41-014 SS+10d | 100% |  |
| 12PB41-065 |  | Próba ciœnieniowa – Sekcja 09 | 5d | 2026-05-06 A | 2026-05-13 A | 12PB41-064 | 100% |  |
| 12PB41-066 |  | Izolacje – Sekcja 09 | 6d | 2026-05-14 A | 2026-05-21 A | 12PB41-065 | 100% |  |
| 12PB41-067 |  | Malowanie i oznakowanie – Sekcja 09 | 2d | 2026-05-22 A | 2026-05-26 A | 12PB41-066 FF+2d | 100% |  |

| ID | WBS | Task | Duration | Start | Finish | Predecessors | Complete | Total float |
| --- | --- | --- | --- | --- | --- | --- | --- | --- |
|  | SEKCJA 10 | **Sekcja 10** |  | 2026-02-23 | 2026-05-25 |  |  |  |
| 12PB41-068 |  | Prefabrykacja ruroci¹gów – Sekcja 10 | 13.7d | 2026-02-23 A | 2026-03-16 A | 12PB41-012, 12PB41-063 SS+5d | 100% |  |
| 12PB41-069 |  | Monta¿ ruroci¹gów – Sekcja 10 | 24.5d | 2026-04-01 A | 2026-05-05 A | 12PB41-068, 12PB41-014 SS+6d | 100% |  |
| 12PB41-070 |  | Próba ciœnieniowa – Sekcja 10 | 5d | 2026-05-06 A | 2026-05-14 A | 12PB41-069 | 100% |  |
| 12PB41-071 |  | Izolacje – Sekcja 10 | 6d | 2026-05-11 A | 2026-05-21 A | 12PB41-070 | 100% |  |
| 12PB41-072 |  | Malowanie i oznakowanie – Sekcja 10 | 2d | 2026-05-22 A | 2026-05-25 A | 12PB41-071 FF+2d | 100% |  |
|  | SEKCJA 11 | **Sekcja 11** |  | 2026-02-24 | 2026-05-21 |  |  |  |
| 12PB41-075 |  | Prefabrykacja ruroci¹gów – Sekcja 11 | 9.3d | 2026-02-24 A | 2026-03-09 A | 12PB41-012, 12PB41-068 SS+5d | 100% |  |
| 12PB41-076 |  | Monta¿ ruroci¹gów – Sekcja 11 | 15.8d | 2026-04-09 A | 2026-04-29 A | 12PB41-075, 12PB41-014 SS+10d | 100% |  |
| 12PB41-077 |  | Próba ciœnieniowa – Sekcja 11 | 6d | 2026-04-24 A | 2026-05-01 A | 12PB41-076 | 100% |  |
| 12PB41-078 |  | Izolacje – Sekcja 11 | 7d | 2026-05-04 A | 2026-05-13 A | 12PB41-077 | 100% |  |
| 12PB41-079 |  | Malowanie i oznakowanie – Sekcja 11 | 4d | 2026-05-15 A | 2026-05-21 A | 12PB41-078 FF+2d | 100% |  |
|  | SEKCJA 12 | **Sekcja 12** |  | 2026-03-05 | 2026-10-12 |  |  |  |
|  | PODSEKCJA | **Podsekcja 12.A** |  | 2026-03-05 | 2026-10-12 |  |  |  |
| 12PB41-080 |  | Prefabrykacja ruroci¹gów – Sekcja 12 | 3.7d | 2026-03-05 A | 2026-10-01 | 12PB41-012, 12PB41-075 SS+5d | 24% | 338.6d |
| 12PB41-081 |  | Monta¿ ruroci¹gów – Sekcja 12 | 14.7d | 2026-04-06 A | 2026-04-28 A | 12PB41-080, 12PB41-014 SS+9d | 100% |  |
| 12PB41-082 |  | Próba ciœnieniowa – Sekcja 12 | 3d | 2026-04-24 A | 2026-04-28 A | 12PB41-081 | 100% |  |
| 12PB41-083 |  | Izolacje – Sekcja 12 | 11d | 2026-04-29 A | 2026-10-12 | 12PB41-082 | 10% | 454.2d |
| 12PB41-084 |  | Malowanie i oznakowanie – Sekcja 12 | 6d | 2026-05-07 A | 2026-05-15 A | 12PB41-083 FF+2d | 100% |  |
|  | SEKCJA 13 | **Sekcja 13** |  | 2026-03-12 | 2026-05-05 |  |  |  |
| 12PB41-087 |  | Prefabrykacja ruroci¹gów – Sekcja 13 | 4.4d | 2026-03-12 A | 2026-03-17 A | 12PB41-012, 12PB41-080 SS+5d | 100% |  |
| 12PB41-088 |  | Monta¿ ruroci¹gów – Sekcja 13 | 10.3d | 2026-04-01 A | 2026-04-16 A | 12PB41-087, 12PB41-014 SS+4d | 100% |  |
| 12PB41-089 |  | Próba ciœnieniowa – Sekcja 13 | 4d | 2026-04-09 A | 2026-04-14 A | 12PB41-088 | 100% |  |
| 12PB41-090 |  | Izolacje – Sekcja 13 | 9d | 2026-04-20 A | 2026-05-05 A | 12PB41-089 | 100% |  |
| 12PB41-091 |  | Malowanie i oznakowanie – Sekcja 13 | 5d | 2026-04-28 A | 2026-05-05 A | 12PB41-090 FF+2d | 100% |  |
|  | SEKCJA 14 | **Sekcja 14** |  | 2026-03-20 | 2026-05-13 |  |  |  |
| 12PB41-092 |  | Prefabrykacja ruroci¹gów – Sekcja 14 | 9.5d | 2026-03-20 A | 2026-04-02 A | 12PB41-012, 12PB41-087 SS+5d | 100% |  |
| 12PB41-093 |  | Monta¿ ruroci¹gów – Sekcja 14 | 13.8d | 2026-04-02 A | 2026-04-22 A | 12PB41-092, 12PB41-014 SS+9d | 100% |  |
| 12PB41-094 |  | Próba ciœnieniowa – Sekcja 14 | 3d | 2026-04-22 A | 2026-04-27 A | 12PB41-093 | 100% |  |
| 12PB41-095 |  | Izolacje – Sekcja 14 | 9d | 2026-04-28 A | 2026-05-08 A | 12PB41-094 | 100% |  |
| 12PB41-096 |  | Malowanie i oznakowanie – Sekcja 14 | 4d | 2026-05-06 A | 2026-05-13 A | 12PB41-095 FF+2d | 100% |  |
|  | SEKCJA 15 | **Sekcja 15** |  | 2026-03-31 | 2026-09-30 |  |  |  |
|  | PODSEKCJA | **Podsekcja 15.A** |  | 2026-03-31 | 2026-09-30 |  |  |  |
| 12PB41-099 |  | Prefabrykacja ruroci¹gów – Sekcja 15 | 11.9d | 2026-03-31 A | 2026-09-30 | 12PB41-012, 12PB41-092 SS+5d | 85% | 335.6d |
| 12PB41-100 |  | Monta¿ ruroci¹gów – Sekcja 15 | 12.1d | 2026-04-14 A | 2026-05-04 A | 12PB41-099, 12PB41-014 SS+8d | 100% |  |
| 12PB41-102 |  | Izolacje – Sekcja 15 | 12d | 2026-04-30 A | 2026-05-20 A | 12PB41-101 | 100% |  |
| 12PB41-101 |  | Próba ciœnieniowa – Sekcja 15 | 2d | 2026-05-01 A | 2026-05-06 A | 12PB41-100 | 100% |  |
| 12PB41-103 |  | Malowanie i oznakowanie – Sekcja 15 | 5d | 2026-05-18 A | 2026-05-25 A | 12PB41-102 FF+2d | 100% |  |
|  | SEKCJA 16 | **Sekcja 16** |  | 2026-04-02 | 2026-09-30 |  |  |  |
| 12PB41-104 |  | Prefabrykacja ruroci¹gów – Sekcja 16 | 4.4d | 2026-04-02 A | 2026-09-30 | 12PB41-012, 12PB41-099 SS+5d | 66% | 338.6d |
| 12PB41-105 |  | Monta¿ ruroci¹gów – Sekcja 16 | 11.2d | 2026-04-09 A | 2026-04-28 A | 12PB41-104, 12PB41-014 SS+8d | 100% |  |
| 12PB41-106 |  | Próba ciœnieniowa – Sekcja 16 | 6d | 2026-04-24 A | 2026-05-05 A | 12PB41-105 | 100% |  |
| 12PB41-107 |  | Izolacje – Sekcja 16 | 10d | 2026-04-30 A | 2026-05-18 A | 12PB41-106 | 100% |  |
| 12PB41-108 |  | Malowanie i oznakowanie – Sekcja 16 | 8d | 2026-05-11 A | 2026-05-22 A | 12PB41-107 FF+2d | 100% |  |
|  | SEKCJA 17 | **Sekcja 17** |  | 2026-04-09 | 2026-09-30 |  |  |  |
| 12PB41-111 |  | Prefabrykacja ruroci¹gów – Sekcja 17 | 13d | 2026-04-09 A | 2026-04-27 A | 12PB41-012, 12PB41-104 SS+5d | 100% |  |
| 12PB41-112 |  | Monta¿ ruroci¹gów – Sekcja 17 | 11d | 2026-04-24 A | 2026-05-11 A | 12PB41-111, 12PB41-014 SS+4d | 100% |  |
| 12PB41-113 |  | Próba ciœnieniowa – Sekcja 17 | 3d | 2026-05-13 A | 2026-09-30 | 12PB41-112 | 53% | 444.9d |
| 12PB41-114 |  | Izolacje – Sekcja 17 | 8d | 2026-05-18 A | 2026-06-01 A | 12PB41-113 | 100% |  |
| 12PB41-115 |  | Malowanie i oznakowanie – Sekcja 17 | 7d | 2026-05-19 A | 2026-06-01 A | 12PB41-114 FF+2d | 100% |  |
|  | SEKCJA 18 | **Sekcja 18** |  | 2026-04-15 | 2026-06-02 |  |  |  |
|  | PODSEKCJA | **Podsekcja 18.A** |  | 2026-04-15 | 2026-06-02 |  |  |  |
| 12PB41-116 |  | Prefabrykacja ruroci¹gów – Sekcja 18 | 3.5d | 2026-04-15 A | 2026-04-17 A | 12PB41-012, 12PB41-111 SS+5d | 100% |  |
| 12PB41-117 |  | Monta¿ ruroci¹gów – Sekcja 18 | 10d | 2026-04-23 A | 2026-05-07 A | 12PB41-116, 12PB41-014 SS+9d | 100% |  |
| 12PB41-118 |  | Próba ciœnieniowa – Sekcja 18 | 4d | 2026-05-05 A | 2026-05-12 A | 12PB41-117 | 100% |  |
| 12PB41-119 |  | Izolacje – Sekcja 18 | 11d | 2026-05-07 A | 2026-05-21 A | 12PB41-118 | 100% |  |
| 12PB41-120 |  | Malowanie i oznakowanie – Sekcja 18 | 6d | 2026-05-21 A | 2026-06-02 A | 12PB41-119 FF+2d | 100% |  |
|  | SEKCJA 19 | **Sekcja 19** |  | 2026-04-22 | 2026-06-19 |  |  |  |
| 12PB41-123 |  | Prefabrykacja ruroci¹gów – Sekcja 19 | 5.9d | 2026-04-22 A | 2026-04-28 A | 12PB41-012, 12PB41-116 SS+5d | 100% |  |
| 12PB41-124 |  | Monta¿ ruroci¹gów – Sekcja 19 | 20.7d | 2026-04-28 A | 2026-05-28 A | 12PB41-123, 12PB41-014 SS+8d | 100% |  |
| 12PB41-125 |  | Próba ciœnieniowa – Sekcja 19 | 6d | 2026-05-29 A | 2026-06-09 A | 12PB41-124 | 100% |  |
| 12PB41-126 |  | Izolacje – Sekcja 19 | 5d | 2026-06-09 A | 2026-06-17 A | 12PB41-125 | 100% |  |
| 12PB41-127 |  | Malowanie i oznakowanie – Sekcja 19 | 2d | 2026-06-17 A | 2026-06-19 A | 12PB41-126 FF+2d | 100% |  |
|  | SEKCJA 20 | **Sekcja 20** |  | 2026-05-01 | 2026-06-22 |  |  |  |
| 12PB41-128 |  | Prefabrykacja ruroci¹gów – Sekcja 20 | 5.7d | 2026-05-01 A | 2026-05-11 A | 12PB41-012, 12PB41-123 SS+5d | 100% |  |
| 12PB41-129 |  | Monta¿ ruroci¹gów – Sekcja 20 | 15.2d | 2026-05-11 A | 2026-05-29 A | 12PB41-128, 12PB41-014 SS+9d | 100% |  |
| 12PB41-130 |  | Próba ciœnieniowa – Sekcja 20 | 5d | 2026-05-27 A | 2026-06-04 A | 12PB41-129 | 100% |  |
| 12PB41-131 |  | Izolacje – Sekcja 20 | 6d | 2026-06-05 A | 2026-06-15 A | 12PB41-130 | 100% |  |
| 12PB41-132 |  | Malowanie i oznakowanie – Sekcja 20 | 7d | 2026-06-09 A | 2026-06-22 A | 12PB41-131 FF+2d | 100% |  |
|  | SEKCJA 21 | **Sekcja 21** |  | 2026-05-05 | 2026-06-30 |  |  |  |

| ID | WBS | Task | Duration | Start | Finish | Predecessors | Complete | Total float |
| --- | --- | --- | --- | --- | --- | --- | --- | --- |
|  | PODSEKCJA | **Podsekcja 21.A** |  | 2026-05-05 | 2026-06-30 |  |  |  |
| 12PB41-135 |  | Prefabrykacja ruroci¹gów – Sekcja 21 | 9.3d | 2026-05-05 A | 2026-05-19 A | 12PB41-012, 12PB41-128 SS+5d | 100% |  |
| 12PB41-136 |  | Monta¿ ruroci¹gów – Sekcja 21 | 21.1d | 2026-05-22 A | 2026-06-24 A | 12PB41-135, 12PB41-014 SS+5d | 100% |  |
| 12PB41-137 |  | Próba ciœnieniowa – Sekcja 21 | 2d | 2026-06-19 A | 2026-06-24 A | 12PB41-136 | 100% |  |
| 12PB41-139 |  | Malowanie i oznakowanie – Sekcja 21 | 5d | 2026-06-19 A | 2026-06-30 A | 12PB41-138 FF+2d | 100% |  |
| 12PB41-138 |  | Izolacje – Sekcja 21 | 3d | 2026-06-23 A | 2026-06-26 A | 12PB41-137 | 100% |  |
|  | SEKCJA 22 | **Sekcja 22** |  | 2026-05-14 | 2026-07-07 |  |  |  |
| 12PB41-140 |  | Prefabrykacja ruroci¹gów – Sekcja 22 | 11d | 2026-05-14 A | 2026-06-02 A | 12PB41-012, 12PB41-135 SS+5d | 100% |  |
| 12PB41-141 |  | Monta¿ ruroci¹gów – Sekcja 22 | 18d | 2026-06-01 A | 2026-06-25 A | 12PB41-140, 12PB41-014 SS+10d | 100% |  |
| 12PB41-142 |  | Próba ciœnieniowa – Sekcja 22 | 3d | 2026-06-22 A | 2026-06-25 A | 12PB41-141 | 100% |  |
| 12PB41-144 |  | Malowanie i oznakowanie – Sekcja 22 | 6d | 2026-06-24 A | 2026-07-06 A | 12PB41-143 FF+2d | 100% |  |
| 12PB41-143 |  | Izolacje – Sekcja 22 | 3d | 2026-07-01 A | 2026-07-07 A | 12PB41-142 | 100% |  |
|  | SEKCJA 23 | **Sekcja 23** |  | 2026-05-19 | 2026-07-16 |  |  |  |
| 12PB41-147 |  | Prefabrykacja ruroci¹gów – Sekcja 23 | 6.8d | 2026-05-19 A | 2026-05-26 A | 12PB41-012, 12PB41-140 SS+5d | 100% |  |
| 12PB41-148 |  | Monta¿ ruroci¹gów – Sekcja 23 | 22.7d | 2026-05-28 A | 2026-07-01 A | 12PB41-147, 12PB41-014 SS+3d | 100% |  |
| 12PB41-149 |  | Próba ciœnieniowa – Sekcja 23 | 6d | 2026-07-03 A | 2026-07-13 A | 12PB41-148 | 100% |  |
| 12PB41-150 |  | Izolacje – Sekcja 23 | 5d | 2026-07-08 A | 2026-07-14 A | 12PB41-149 | 100% |  |
| 12PB41-151 |  | Malowanie i oznakowanie – Sekcja 23 | 6d | 2026-07-08 A | 2026-07-16 A | 12PB41-150 FF+2d | 100% |  |
|  | SEKCJA 24 | **Sekcja 24** |  | 2026-05-27 | 2026-07-13 |  |  |  |
|  | PODSEKCJA | **Podsekcja 24.A** |  | 2026-05-27 | 2026-07-13 |  |  |  |
| 12PB41-152 |  | Prefabrykacja ruroci¹gów – Sekcja 24 | 12.7d | 2026-05-27 A | 2026-06-16 A | 12PB41-012, 12PB41-147 SS+5d | 100% |  |
| 12PB41-153 |  | Monta¿ ruroci¹gów – Sekcja 24 | 8.6d | 2026-06-16 A | 2026-06-29 A | 12PB41-152, 12PB41-014 SS+3d | 100% |  |
| 12PB41-154 |  | Próba ciœnieniowa – Sekcja 24 | 4d | 2026-06-24 A | 2026-07-01 A | 12PB41-153 | 100% |  |
| 12PB41-156 |  | Malowanie i oznakowanie – Sekcja 24 | 5d | 2026-07-02 A | 2026-07-13 A | 12PB41-155 FF+2d | 100% |  |
| 12PB41-155 |  | Izolacje – Sekcja 24 | 3d | 2026-07-03 A | 2026-07-10 A | 12PB41-154 | 100% |  |
|  | SEKCJA 25 | **Sekcja 25** |  | 2026-06-05 | 2026-08-13 |  |  |  |
| 12PB41-159 |  | Prefabrykacja ruroci¹gów – Sekcja 25 | 12.6d | 2026-06-05 A | 2026-06-25 A | 12PB41-012, 12PB41-152 SS+5d | 100% |  |
| 12PB41-160 |  | Monta¿ ruroci¹gów – Sekcja 25 | 20d | 2026-06-24 A | 2026-07-22 A | 12PB41-159, 12PB41-014 SS+2d | 100% |  |
| 12PB41-161 |  | Próba ciœnieniowa – Sekcja 25 | 5d | 2026-07-20 A | 2026-07-24 A | 12PB41-160 | 100% |  |
| 12PB41-162 |  | Izolacje – Sekcja 25 | 10d | 2026-07-24 A | 2026-08-10 A | 12PB41-161 | 100% |  |
| 12PB41-163 |  | Malowanie i oznakowanie – Sekcja 25 | 2d | 2026-08-10 A | 2026-08-13 A | 12PB41-162 FF+2d | 100% |  |
|  | SEKCJA 26 | **Sekcja 26** |  | 2026-06-09 | 2026-08-20 |  |  |  |
| 12PB41-164 |  | Prefabrykacja ruroci¹gów – Sekcja 26 | 11.7d | 2026-06-09 A | 2026-06-23 A | 12PB41-012, 12PB41-159 SS+5d | 100% |  |
| 12PB41-165 |  | Monta¿ ruroci¹gów – Sekcja 26 | 23.2d | 2026-06-24 A | 2026-07-28 A | 12PB41-164, 12PB41-014 SS+4d | 100% |  |
| 12PB41-166 |  | Próba ciœnieniowa – Sekcja 26 | 5d | 2026-07-29 A | 2026-08-04 A | 12PB41-165 | 100% |  |
| 12PB41-167 |  | Izolacje – Sekcja 26 | 7d | 2026-08-07 A | 2026-08-20 A | 12PB41-166 | 100% |  |
| 12PB41-168 |  | Malowanie i oznakowanie – Sekcja 26 | 5d | 2026-08-11 A | 2026-08-17 A | 12PB41-167 FF+2d | 100% |  |
|  | SEKCJA 27 | **Sekcja 27** |  | 2026-06-18 | 2026-08-25 |  |  |  |
|  | PODSEKCJA | **Podsekcja 27.A** |  | 2026-06-18 | 2026-08-25 |  |  |  |
| 12PB41-171 |  | Prefabrykacja ruroci¹gów – Sekcja 27 | 8.8d | 2026-06-18 A | 2026-07-02 A | 12PB41-012, 12PB41-164 SS+5d | 100% |  |
| 12PB41-172 |  | Monta¿ ruroci¹gów – Sekcja 27 | 23.5d | 2026-07-01 A | 2026-08-05 A | 12PB41-171, 12PB41-014 SS+4d | 100% |  |
| 12PB41-173 |  | Próba ciœnieniowa – Sekcja 27 | 2d | 2026-08-04 A | 2026-08-05 A | 12PB41-172 | 100% |  |
| 12PB41-174 |  | Izolacje – Sekcja 27 | 10d | 2026-08-07 A | 2026-08-24 A | 12PB41-173 | 100% |  |
| 12PB41-175 |  | Malowanie i oznakowanie – Sekcja 27 | 2d | 2026-08-19 A | 2026-08-25 A | 12PB41-174 FF+2d | 100% |  |
|  | SEKCJA 28 | **Sekcja 28** |  | 2026-06-24 | 2026-08-14 |  |  |  |
| 12PB41-176 |  | Prefabrykacja ruroci¹gów – Sekcja 28 | 3.5d | 2026-06-24 A | 2026-06-26 A | 12PB41-012, 12PB41-171 SS+5d | 100% |  |
| 12PB41-177 |  | Monta¿ ruroci¹gów – Sekcja 28 | 20.3d | 2026-06-30 A | 2026-07-28 A | 12PB41-176, 12PB41-014 SS | 100% |  |
| 12PB41-178 |  | Próba ciœnieniowa – Sekcja 28 | 4d | 2026-07-29 A | 2026-08-05 A | 12PB41-177 | 100% |  |
| 12PB41-179 |  | Izolacje – Sekcja 28 | 7d | 2026-08-04 A | 2026-08-12 A | 12PB41-178 | 100% |  |
| 12PB41-180 |  | Malowanie i oznakowanie – Sekcja 28 | 2d | 2026-08-12 A | 2026-08-14 A | 12PB41-179 FF+2d | 100% |  |
|  | PROJ | **Projektowanie** |  | 2025-02-13 | 2025-06-17 |  |  |  |
|  | DOKUMENTAC | **Dokumentacja** |  | 2025-02-13 | 2025-06-17 |  |  |  |
| 12PB41-001 |  | Projekt wykonawczy – Skraplacz | 53d | 2025-02-13 A | 2025-04-30 A |  | 100% |  |
| 12PB41-002 |  | Uzgodnienie dokumentacji z Inwestorem | 23d | 2025-04-23 A | 2025-05-28 A | 12PB41-001 | 100% |  |
| 12PB41-003 |  | Zatwierdzenie dokumentacji do realizacji | 12d | 2025-05-29 A | 2025-06-17 A | 12PB41-002 | 100% |  |
| 12PB41-004 |  | KM: Dokumentacja zatwierdzona – Skraplacz | 0d | 2025-06-17 A | 2025-06-17 | 12PB41-003 | 100% |  |
|  | ROZR | **Rozruch** |  | 2026-08-25 | 2026-10-13 |  |  |  |
|  | ROZRUCH | **Rozruch** |  | 2026-08-25 | 2026-10-13 |  |  |  |
| 12PB41-185 |  | Przegl¹d gotowoœci do rozruchu | 5d | 2026-08-25 A | 2026-09-01 A | 12PB41-184, 12PB41-019, 12PB41-024, 12PB41-026 | 100% |  |
| 12PB41-186 |  | Rozruch na zimno | 7d | 2026-08-31 A | 2026-09-11 A | 12PB41-185 | 100% |  |
| 12PB41-187 |  | Rozruch na gor¹co / próby ruchowe | 25d | 2026-09-08 A | 2026-10-12 | 12PB41-186 | 63% | 338.6d |
| 12PB41-188 |  | KM: Odbiór koñcowy – Skraplacz | 0d | 2026-10-13 | 2026-10-13 | 12PB41-187 |  | 338.6d |
|  | ZAKU | **Zakupy** |  | 2025-03-11 | 2026-03-24 |  |  |  |
|  | DOSTAWY | **Dostawy** |  | 2025-10-27 | 2026-03-24 |  |  |  |
| 12PB41-008 |  | Produkcja u dostawcy | 83d | 2025-10-27 A | 2026-02-23 A | 12PB41-007 | 100% |  |
| 12PB41-009 |  | Testy FAT | 4d | 2026-02-25 A | 2026-03-03 A | 12PB41-008 | 100% |  |
| 12PB41-010 |  | Transport i dostawa na plac budowy | 17d | 2026-03-02 A | 2026-03-24 A | 12PB41-009 | 100% |  |
| 12PB41-011 |  | KM: Dostawa na budowê – Skraplacz | 0d | 2026-03-20 A | 2026-03-20 | 12PB41-010 | 100% |  |
|  | ZAMÓWIENIA | **Zamówienia** |  | 2025-03-11 | 2025-10-29 |  |  |  |
| 12PB41-005 |  | Zapytanie ofertowe | 24d | 2025-03-11 A | 2025-04-14 A | 12PB41-001 SS+20d | 100% |  |

| ID | WBS | Task | Duration | Start | Finish | Predecessors | Complete | Total float |
| --- | --- | --- | --- | --- | --- | --- | --- | --- |
| 12PB41-006 |  | Analiza i wybór ofert | 14d | 2025-04-15 A | 2025-05-06 A | 12PB41-005 | 100% |  |
| 12PB41-007 |  | Zawarcie umowy / zamówienie | 8d | 2025-10-17 A | 2025-10-29 A | 12PB41-006, 12PB41-004 SS, 24PY38-004 SS+8d | 100% |  |
|  | 14NX42 | **14NX42 – Uk³ad paliwa gazowego** |  | 2025-04-04 | 2026-10-14 |  |  |  |
|  | BUDO | **Budowa** |  | 2025-09-17 | 2026-10-12 |  |  |  |
|  | AKPIA | **AKPiA** |  | 2026-04-10 | 2026-05-12 |  |  |  |
| 14NX42-176 |  | Monta¿ uk³adów AKPiA | 21d | 2026-04-10 A | 2026-05-12 A | 14NX42-014 SS+5d | 100% |  |
|  | ELEKTRYKA | **Elektryka** |  | 2026-04-16 | 2026-05-25 |  |  |  |
| 14NX42-170 |  | Pod³¹czenia i pomiary – trasa 26 | 7d | 2026-04-16 A | 2026-04-24 A | 14NX42-169 FF | 100% |  |
| 14NX42-037 |  | Uk³adanie kabli – trasa 04 | 15d | 2026-04-17 A | 2026-05-12 A | 14NX42-014 SS+10d | 100% |  |
| 14NX42-061 |  | Uk³adanie kabli – trasa 08 | 17d | 2026-04-17 A | 2026-05-14 A | 14NX42-014 SS+10d | 100% |  |
| 14NX42-085 |  | Uk³adanie kabli – trasa 12 | 13d | 2026-04-17 A | 2026-05-07 A | 14NX42-014 SS+10d | 100% |  |
| 14NX42-097 |  | Uk³adanie kabli – trasa 14 | 19d | 2026-04-17 A | 2026-05-15 A | 14NX42-014 SS+10d | 100% |  |
| 14NX42-049 |  | Uk³adanie kabli – trasa 06 | 11d | 2026-04-20 A | 2026-05-06 A | 14NX42-014 SS+10d | 100% |  |
| 14NX42-146 |  | Pod³¹czenia i pomiary – trasa 22 | 6d | 2026-04-20 A | 2026-04-28 A | 14NX42-145 FF | 100% |  |
| 14NX42-073 |  | Uk³adanie kabli – trasa 10 | 8d | 2026-04-21 A | 2026-04-30 A | 14NX42-014 SS+10d | 100% |  |
| 14NX42-133 |  | Uk³adanie kabli – trasa 20 | 15d | 2026-04-21 A | 2026-05-13 A | 14NX42-014 SS+10d | 100% |  |
| 14NX42-121 |  | Uk³adanie kabli – trasa 18 | 16d | 2026-04-22 A | 2026-05-14 A | 14NX42-014 SS+10d | 100% |  |
| 14NX42-025 |  | Uk³adanie kabli – trasa 02 | 11d | 2026-04-23 A | 2026-05-11 A | 14NX42-014 SS+10d | 100% |  |
| 14NX42-074 |  | Pod³¹czenia i pomiary – trasa 10 | 5d | 2026-04-23 A | 2026-05-01 A | 14NX42-073 FF | 100% |  |
| 14NX42-109 |  | Uk³adanie kabli – trasa 16 | 20d | 2026-04-23 A | 2026-05-25 A | 14NX42-014 SS+10d | 100% |  |
| 14NX42-145 |  | Uk³adanie kabli – trasa 22 | 5d | 2026-04-23 A | 2026-04-30 A | 14NX42-014 SS+10d | 100% |  |
| 14NX42-157 |  | Uk³adanie kabli – trasa 24 | 20d | 2026-04-23 A | 2026-05-22 A | 14NX42-014 SS+10d | 100% |  |
| 14NX42-169 |  | Uk³adanie kabli – trasa 26 | 4d | 2026-04-23 A | 2026-04-28 A | 14NX42-014 SS+10d | 100% |  |
| 14NX42-086 |  | Pod³¹czenia i pomiary – trasa 12 | 8d | 2026-04-27 A | 2026-05-07 A | 14NX42-085 FF | 100% |  |
| 14NX42-122 |  | Pod³¹czenia i pomiary – trasa 18 | 10d | 2026-04-29 A | 2026-05-15 A | 14NX42-121 FF | 100% |  |
| 14NX42-026 |  | Pod³¹czenia i pomiary – trasa 02 | 4d | 2026-04-30 A | 2026-05-08 A | 14NX42-025 FF | 100% |  |
| 14NX42-050 |  | Pod³¹czenia i pomiary – trasa 06 | 3d | 2026-04-30 A | 2026-05-04 A | 14NX42-049 FF | 100% |  |
| 14NX42-134 |  | Pod³¹czenia i pomiary – trasa 20 | 4d | 2026-05-04 A | 2026-05-08 A | 14NX42-133 FF | 100% |  |
| 14NX42-062 |  | Pod³¹czenia i pomiary – trasa 08 | 9d | 2026-05-05 A | 2026-05-15 A | 14NX42-061 FF | 100% |  |
| 14NX42-098 |  | Pod³¹czenia i pomiary – trasa 14 | 7d | 2026-05-05 A | 2026-05-13 A | 14NX42-097 FF | 100% |  |
| 14NX42-110 |  | Pod³¹czenia i pomiary – trasa 16 | 9d | 2026-05-08 A | 2026-05-22 A | 14NX42-109 FF | 100% |  |
| 14NX42-038 |  | Pod³¹czenia i pomiary – trasa 04 | 3d | 2026-05-11 A | 2026-05-13 A | 14NX42-037 FF | 100% |  |
| 14NX42-158 |  | Pod³¹czenia i pomiary – trasa 24 | 4d | 2026-05-12 A | 2026-05-18 A | 14NX42-157 FF | 100% |  |
|  | MONTA¯ | **Monta¿** |  | 2025-11-26 | 2026-07-27 |  |  |  |
| 14NX42-013 |  | Monta¿ konstrukcji stalowych | 40d | 2025-11-26 A | 2026-01-23 A | 14NX42-012 | 100% |  |
| 14NX42-014 |  | Monta¿ urz¹dzeñ g³ównych | 68d | 2026-04-08 A | 2026-07-15 A | 14NX42-013, 14NX42-011 | 100% |  |
| 14NX42-177 |  | KM: Zakoñczenie monta¿u – Uk³ad paliwa gazowego | 0d | 2026-07-27 A | 2026-07-27 | 14NX42-168, 14NX42-170, 14NX42-175, 14NX42-176, 14NX42-014 | 100% |  |
|  | ROBOTY BUD | **Roboty budowlane** |  | 2025-09-17 | 2025-12-01 |  |  |  |
| 14NX42-012 |  | Fundamenty i roboty ziemne | 51d | 2025-09-17 A | 2025-12-01 A | 14NX42-007 FS+15d | 100% |  |
|  | RUROCI¥GI | **Ruroci¹gi** |  | 2025-11-26 | 2026-10-12 |  |  |  |
|  | SEKCJA 01 | **Sekcja 01** |  | 2025-11-26 | 2026-10-01 |  |  |  |
| 14NX42-015 |  | Prefabrykacja ruroci¹gów – Sekcja 01 | 6.6d | 2025-11-26 A | 2025-12-04 A | 14NX42-012 | 100% |  |
| 14NX42-016 |  | Monta¿ ruroci¹gów – Sekcja 01 | 5.3d | 2026-04-14 A | 2026-04-20 A | 14NX42-015, 14NX42-014 SS+5d | 100% |  |
| 14NX42-017 |  | Próba ciœnieniowa – Sekcja 01 | 5d | 2026-04-20 A | 2026-10-01 | 14NX42-016 | 60% | 420.6d |
| 14NX42-019 |  | Malowanie i oznakowanie – Sekcja 01 | 8d | 2026-04-27 A | 2026-05-06 A | 14NX42-018 FF+2d | 100% |  |
| 14NX42-018 |  | Izolacje – Sekcja 01 | 6d | 2026-04-28 A | 2026-05-08 A | 14NX42-017 | 100% |  |
|  | SEKCJA 02 | **Sekcja 02** |  | 2025-12-08 | 2026-06-08 |  |  |  |
| 14NX42-020 |  | Prefabrykacja ruroci¹gów – Sekcja 02 | 6.1d | 2025-12-08 A | 2025-12-18 A | 14NX42-012, 14NX42-015 SS+5d | 100% |  |
| 14NX42-021 |  | Monta¿ ruroci¹gów – Sekcja 02 | 20.2d | 2026-04-21 A | 2026-05-21 A | 14NX42-020, 14NX42-014 SS+9d | 100% |  |
| 14NX42-022 |  | Próba ciœnieniowa – Sekcja 02 | 5d | 2026-05-14 A | 2026-05-25 A | 14NX42-021 | 100% |  |
| 14NX42-023 |  | Izolacje – Sekcja 02 | 4d | 2026-05-22 A | 2026-05-27 A | 14NX42-022 | 100% |  |
| 14NX42-024 |  | Malowanie i oznakowanie – Sekcja 02 | 5d | 2026-05-28 A | 2026-06-08 A | 14NX42-023 FF+2d | 100% |  |
|  | SEKCJA 03 | **Sekcja 03** |  | 2025-12-16 | 2026-05-26 |  |  |  |
|  | PODSEKCJA | **Podsekcja 03.A** |  | 2025-12-16 | 2026-05-26 |  |  |  |
| 14NX42-027 |  | Prefabrykacja ruroci¹gów – Sekcja 03 | 4.8d | 2025-12-16 A | 2025-12-23 A | 14NX42-012, 14NX42-020 SS+5d | 100% |  |
| 14NX42-028 |  | Monta¿ ruroci¹gów – Sekcja 03 | 13d | 2026-04-13 A | 2026-05-01 A | 14NX42-027, 14NX42-014 SS+2d | 100% |  |
| 14NX42-029 |  | Próba ciœnieniowa – Sekcja 03 | 4d | 2026-04-29 A | 2026-05-04 A | 14NX42-028 | 100% |  |
| 14NX42-030 |  | Izolacje – Sekcja 03 | 12d | 2026-05-01 A | 2026-05-19 A | 14NX42-029 | 100% |  |
| 14NX42-031 |  | Malowanie i oznakowanie – Sekcja 03 | 7d | 2026-05-13 A | 2026-05-26 A | 14NX42-030 FF+2d | 100% |  |
|  | SEKCJA 04 | **Sekcja 04** |  | 2025-12-19 | 2026-09-30 |  |  |  |
| 14NX42-032 |  | Prefabrykacja ruroci¹gów – Sekcja 04 | 3.5d | 2025-12-19 A | 2025-12-23 A | 14NX42-012, 14NX42-027 SS+5d | 100% |  |
| 14NX42-033 |  | Monta¿ ruroci¹gów – Sekcja 04 | 20.5d | 2026-04-20 A | 2026-05-19 A | 14NX42-032, 14NX42-014 SS+8d | 100% |  |
| 14NX42-034 |  | Próba ciœnieniowa – Sekcja 04 | 5d | 2026-05-15 A | 2026-09-30 | 14NX42-033 | 80% | 445.4d |
| 14NX42-035 |  | Izolacje – Sekcja 04 | 3d | 2026-05-26 A | 2026-05-29 A | 14NX42-034 | 100% |  |
| 14NX42-036 |  | Malowanie i oznakowanie – Sekcja 04 | 3d | 2026-05-27 A | 2026-06-02 A | 14NX42-035 FF+2d | 100% |  |
|  | SEKCJA 05 | **Sekcja 05** |  | 2025-12-24 | 2026-05-21 |  |  |  |
| 14NX42-039 |  | Prefabrykacja ruroci¹gów – Sekcja 05 | 11.5d | 2025-12-24 A | 2026-01-07 A | 14NX42-012, 14NX42-032 SS+5d | 100% |  |
| 14NX42-040 |  | Monta¿ ruroci¹gów – Sekcja 05 | 7.1d | 2026-04-16 A | 2026-04-27 A | 14NX42-039, 14NX42-014 SS+8d | 100% |  |
| 14NX42-041 |  | Próba ciœnieniowa – Sekcja 05 | 4d | 2026-04-27 A | 2026-05-01 A | 14NX42-040 | 100% |  |
| 14NX42-042 |  | Izolacje – Sekcja 05 | 10d | 2026-05-01 A | 2026-05-19 A | 14NX42-041 | 100% |  |

| ID | WBS | Task | Duration | Start | Finish | Predecessors | Complete | Total float |
| --- | --- | --- | --- | --- | --- | --- | --- | --- |
| 14NX42-043 |  | Malowanie i oznakowanie – Sekcja 05 | 5d | 2026-05-13 A | 2026-05-21 A | 14NX42-042 FF+2d | 100% |  |
|  | SEKCJA 06 | **Sekcja 06** |  | 2026-01-06 | 2026-05-29 |  |  |  |
|  | PODSEKCJA | **Podsekcja 06.A** |  | 2026-01-06 | 2026-05-29 |  |  |  |
| 14NX42-044 |  | Prefabrykacja ruroci¹gów – Sekcja 06 | 14.8d | 2026-01-06 A | 2026-01-23 A | 14NX42-012, 14NX42-039 SS+5d | 100% |  |
| 14NX42-045 |  | Monta¿ ruroci¹gów – Sekcja 06 | 18.4d | 2026-04-08 A | 2026-05-01 A | 14NX42-044, 14NX42-014 SS+3d | 100% |  |
| 14NX42-046 |  | Próba ciœnieniowa – Sekcja 06 | 6d | 2026-05-05 A | 2026-05-15 A | 14NX42-045 | 100% |  |
| 14NX42-047 |  | Izolacje – Sekcja 06 | 5d | 2026-05-14 A | 2026-05-21 A | 14NX42-046 | 100% |  |
| 14NX42-048 |  | Malowanie i oznakowanie – Sekcja 06 | 6d | 2026-05-19 A | 2026-05-29 A | 14NX42-047 FF+2d | 100% |  |
|  | SEKCJA 07 | **Sekcja 07** |  | 2026-01-13 | 2026-10-05 |  |  |  |
| 14NX42-051 |  | Prefabrykacja ruroci¹gów – Sekcja 07 | 11.5d | 2026-01-13 A | 2026-01-28 A | 14NX42-012, 14NX42-044 SS+5d | 100% |  |
| 14NX42-052 |  | Monta¿ ruroci¹gów – Sekcja 07 | 9.3d | 2026-04-20 A | 2026-05-01 A | 14NX42-051, 14NX42-014 SS+10d | 100% |  |
| 14NX42-053 |  | Próba ciœnieniowa – Sekcja 07 | 6d | 2026-05-05 A | 2026-10-05 | 14NX42-052 | 28% | 444.6d |
| 14NX42-054 |  | Izolacje – Sekcja 07 | 11d | 2026-05-13 A | 2026-06-01 A | 14NX42-053 | 100% |  |
| 14NX42-055 |  | Malowanie i oznakowanie – Sekcja 07 | 2d | 2026-05-25 A | 2026-05-29 A | 14NX42-054 FF+2d | 100% |  |
|  | SEKCJA 08 | **Sekcja 08** |  | 2026-01-20 | 2026-06-02 |  |  |  |
| 14NX42-056 |  | Prefabrykacja ruroci¹gów – Sekcja 08 | 9.6d | 2026-01-20 A | 2026-01-30 A | 14NX42-012, 14NX42-051 SS+5d | 100% |  |
| 14NX42-057 |  | Monta¿ ruroci¹gów – Sekcja 08 | 23.1d | 2026-04-13 A | 2026-05-14 A | 14NX42-056, 14NX42-014 SS+3d | 100% |  |
| 14NX42-058 |  | Próba ciœnieniowa – Sekcja 08 | 6d | 2026-05-13 A | 2026-05-22 A | 14NX42-057 | 100% |  |
| 14NX42-060 |  | Malowanie i oznakowanie – Sekcja 08 | 5d | 2026-05-20 A | 2026-05-29 A | 14NX42-059 FF+2d | 100% |  |
| 14NX42-059 |  | Izolacje – Sekcja 08 | 4d | 2026-05-25 A | 2026-06-02 A | 14NX42-058 | 100% |  |
|  | SEKCJA 09 | **Sekcja 09** |  | 2026-01-22 | 2026-10-09 |  |  |  |
|  | PODSEKCJA | **Podsekcja 09.A** |  | 2026-01-22 | 2026-10-09 |  |  |  |
| 14NX42-063 |  | Prefabrykacja ruroci¹gów – Sekcja 09 | 6.8d | 2026-01-22 A | 2026-01-30 A | 14NX42-012, 14NX42-056 SS+5d | 100% |  |
| 14NX42-064 |  | Monta¿ ruroci¹gów – Sekcja 09 | 15.3d | 2026-04-20 A | 2026-10-09 | 14NX42-063, 14NX42-014 SS+8d | 46% | 442.6d |
| 14NX42-065 |  | Próba ciœnieniowa – Sekcja 09 | 4d | 2026-05-06 A | 2026-05-12 A | 14NX42-064 | 100% |  |
| 14NX42-066 |  | Izolacje – Sekcja 09 | 11d | 2026-05-14 A | 2026-05-29 A | 14NX42-065 | 100% |  |
| 14NX42-067 |  | Malowanie i oznakowanie – Sekcja 09 | 5d | 2026-05-26 A | 2026-06-01 A | 14NX42-066 FF+2d | 100% |  |
|  | SEKCJA 10 | **Sekcja 10** |  | 2026-01-29 | 2026-05-20 |  |  |  |
| 14NX42-068 |  | Prefabrykacja ruroci¹gów – Sekcja 10 | 3.1d | 2026-01-29 A | 2026-02-02 A | 14NX42-012, 14NX42-063 SS+5d | 100% |  |
| 14NX42-069 |  | Monta¿ ruroci¹gów – Sekcja 10 | 13.4d | 2026-04-14 A | 2026-04-30 A | 14NX42-068, 14NX42-014 SS+4d | 100% |  |
| 14NX42-070 |  | Próba ciœnieniowa – Sekcja 10 | 2d | 2026-04-29 A | 2026-05-01 A | 14NX42-069 | 100% |  |
| 14NX42-071 |  | Izolacje – Sekcja 10 | 10d | 2026-04-30 A | 2026-05-18 A | 14NX42-070 | 100% |  |
| 14NX42-072 |  | Malowanie i oznakowanie – Sekcja 10 | 2d | 2026-05-14 A | 2026-05-20 A | 14NX42-071 FF+2d | 100% |  |
|  | SEKCJA 11 | **Sekcja 11** |  | 2026-02-05 | 2026-10-12 |  |  |  |
| 14NX42-075 |  | Prefabrykacja ruroci¹gów – Sekcja 11 | 12.8d | 2026-02-05 A | 2026-02-20 A | 14NX42-012, 14NX42-068 SS+5d | 100% |  |
| 14NX42-076 |  | Monta¿ ruroci¹gów – Sekcja 11 | 18.8d | 2026-04-07 A | 2026-10-05 | 14NX42-075, 14NX42-014 SS+1d | 76% | 445.1d |
| 14NX42-077 |  | Próba ciœnieniowa – Sekcja 11 | 6d | 2026-05-05 A | 2026-05-14 A | 14NX42-076 | 100% |  |
| 14NX42-078 |  | Izolacje – Sekcja 11 | 12d | 2026-05-15 A | 2026-10-12 | 14NX42-077 | 25% | 441.1d |
| 14NX42-079 |  | Malowanie i oznakowanie – Sekcja 11 | 3d | 2026-05-29 A | 2026-06-04 A | 14NX42-078 FF+2d | 100% |  |
|  | SEKCJA 12 | **Sekcja 12** |  | 2026-02-17 | 2026-09-30 |  |  |  |
|  | PODSEKCJA | **Podsekcja 12.A** |  | 2026-02-17 | 2026-09-30 |  |  |  |
| 14NX42-080 |  | Prefabrykacja ruroci¹gów – Sekcja 12 | 9.4d | 2026-02-17 A | 2026-03-03 A | 14NX42-012, 14NX42-075 SS+5d | 100% |  |
| 14NX42-081 |  | Monta¿ ruroci¹gów – Sekcja 12 | 9.9d | 2026-04-15 A | 2026-04-29 A | 14NX42-080, 14NX42-014 SS+6d | 100% |  |
| 14NX42-082 |  | Próba ciœnieniowa – Sekcja 12 | 5d | 2026-04-27 A | 2026-09-30 | 14NX42-081 | 80% | 456d |
| 14NX42-084 |  | Malowanie i oznakowanie – Sekcja 12 | 8d | 2026-05-01 A | 2026-05-15 A | 14NX42-083 FF+2d | 100% |  |
| 14NX42-083 |  | Izolacje – Sekcja 12 | 6d | 2026-05-05 A | 2026-05-13 A | 14NX42-082 | 100% |  |
|  | SEKCJA 13 | **Sekcja 13** |  | 2026-02-24 | 2026-05-18 |  |  |  |
| 14NX42-087 |  | Prefabrykacja ruroci¹gów – Sekcja 13 | 7.9d | 2026-02-24 A | 2026-03-04 A | 14NX42-012, 14NX42-080 SS+5d | 100% |  |
| 14NX42-088 |  | Monta¿ ruroci¹gów – Sekcja 13 | 10.7d | 2026-04-20 A | 2026-05-05 A | 14NX42-087, 14NX42-014 SS+7d | 100% |  |
| 14NX42-089 |  | Próba ciœnieniowa – Sekcja 13 | 5d | 2026-04-29 A | 2026-05-07 A | 14NX42-088 | 100% |  |
| 14NX42-091 |  | Malowanie i oznakowanie – Sekcja 13 | 5d | 2026-05-06 A | 2026-05-12 A | 14NX42-090 FF+2d | 100% |  |
| 14NX42-090 |  | Izolacje – Sekcja 13 | 3d | 2026-05-11 A | 2026-05-18 A | 14NX42-089 | 100% |  |
|  | SEKCJA 14 | **Sekcja 14** |  | 2026-03-02 | 2026-09-30 |  |  |  |
| 14NX42-092 |  | Prefabrykacja ruroci¹gów – Sekcja 14 | 11d | 2026-03-02 A | 2026-03-19 A | 14NX42-012, 14NX42-087 SS+5d | 100% |  |
| 14NX42-093 |  | Monta¿ ruroci¹gów – Sekcja 14 | 17.7d | 2026-04-07 A | 2026-05-01 A | 14NX42-092, 14NX42-014 SS | 100% |  |
| 14NX42-096 |  | Malowanie i oznakowanie – Sekcja 14 | 8d | 2026-04-29 A | 2026-05-08 A | 14NX42-095 FF+2d | 100% |  |
| 14NX42-094 |  | Próba ciœnieniowa – Sekcja 14 | 3d | 2026-05-01 A | 2026-09-30 | 14NX42-093 | 67% | 457.2d |
| 14NX42-095 |  | Izolacje – Sekcja 14 | 3d | 2026-05-01 A | 2026-05-08 A | 14NX42-094 | 100% |  |
|  | SEKCJA 15 | **Sekcja 15** |  | 2026-03-09 | 2026-05-21 |  |  |  |
|  | PODSEKCJA | **Podsekcja 15.A** |  | 2026-03-09 | 2026-05-21 |  |  |  |
| 14NX42-099 |  | Prefabrykacja ruroci¹gów – Sekcja 15 | 9.5d | 2026-03-09 A | 2026-03-23 A | 14NX42-012, 14NX42-092 SS+5d | 100% |  |
| 14NX42-100 |  | Monta¿ ruroci¹gów – Sekcja 15 | 10.4d | 2026-04-15 A | 2026-04-30 A | 14NX42-099, 14NX42-014 SS+6d | 100% |  |
| 14NX42-101 |  | Próba ciœnieniowa – Sekcja 15 | 5d | 2026-05-01 A | 2026-05-11 A | 14NX42-100 | 100% |  |
| 14NX42-102 |  | Izolacje – Sekcja 15 | 10d | 2026-05-04 A | 2026-05-19 A | 14NX42-101 | 100% |  |
| 14NX42-103 |  | Malowanie i oznakowanie – Sekcja 15 | 6d | 2026-05-14 A | 2026-05-21 A | 14NX42-102 FF+2d | 100% |  |
|  | SEKCJA 16 | **Sekcja 16** |  | 2026-03-11 | 2026-05-15 |  |  |  |
| 14NX42-104 |  | Prefabrykacja ruroci¹gów – Sekcja 16 | 5.1d | 2026-03-11 A | 2026-03-19 A | 14NX42-012, 14NX42-099 SS+5d | 100% |  |
| 14NX42-105 |  | Monta¿ ruroci¹gów – Sekcja 16 | 7.9d | 2026-04-03 A | 2026-04-14 A | 14NX42-104, 14NX42-014 SS | 100% |  |
| 14NX42-106 |  | Próba ciœnieniowa – Sekcja 16 | 5d | 2026-04-15 A | 2026-04-23 A | 14NX42-105 | 100% |  |
| 14NX42-107 |  | Izolacje – Sekcja 16 | 12d | 2026-04-27 A | 2026-05-15 A | 14NX42-106 | 100% |  |

| ID | WBS | Task | Duration | Start | Finish | Predecessors | Complete | Total float |
| --- | --- | --- | --- | --- | --- | --- | --- | --- |
| 14NX42-108 |  | Malowanie i oznakowanie – Sekcja 16 | 5d | 2026-05-05 A | 2026-05-14 A | 14NX42-107 FF+2d | 100% |  |
|  | SEKCJA 17 | **Sekcja 17** |  | 2026-03-20 | 2026-10-12 |  |  |  |
| 14NX42-111 |  | Prefabrykacja ruroci¹gów – Sekcja 17 | 13.2d | 2026-03-20 A | 2026-04-07 A | 14NX42-012, 14NX42-104 SS+5d | 100% |  |
| 14NX42-112 |  | Monta¿ ruroci¹gów – Sekcja 17 | 16.7d | 2026-04-10 A | 2026-05-05 A | 14NX42-111, 14NX42-014 SS+3d | 100% |  |
| 14NX42-113 |  | Próba ciœnieniowa – Sekcja 17 | 2d | 2026-05-05 A | 2026-05-08 A | 14NX42-112 | 100% |  |
| 14NX42-114 |  | Izolacje – Sekcja 17 | 11d | 2026-05-08 A | 2026-10-12 | 14NX42-113 | 15% | 447.2d |
| 14NX42-115 |  | Malowanie i oznakowanie – Sekcja 17 | 6d | 2026-05-15 A | 2026-05-22 A | 14NX42-114 FF+2d | 100% |  |
|  | SEKCJA 18 | **Sekcja 18** |  | 2026-03-26 | 2026-10-06 |  |  |  |
|  | PODSEKCJA | **Podsekcja 18.A** |  | 2026-03-26 | 2026-10-06 |  |  |  |
| 14NX42-116 |  | Prefabrykacja ruroci¹gów – Sekcja 18 | 9.6d | 2026-03-26 A | 2026-10-06 | 14NX42-012, 14NX42-111 SS+5d | 43% | 364.8d |
| 14NX42-117 |  | Monta¿ ruroci¹gów – Sekcja 18 | 16.1d | 2026-04-17 A | 2026-05-08 A | 14NX42-116, 14NX42-014 SS+6d | 100% |  |
| 14NX42-119 |  | Izolacje – Sekcja 18 | 9d | 2026-05-08 A | 2026-05-22 A | 14NX42-118 | 100% |  |
| 14NX42-118 |  | Próba ciœnieniowa – Sekcja 18 | 2d | 2026-05-11 A | 2026-05-15 A | 14NX42-117 | 100% |  |
| 14NX42-120 |  | Malowanie i oznakowanie – Sekcja 18 | 2d | 2026-05-26 A | 2026-05-28 A | 14NX42-119 FF+2d | 100% |  |
|  | SEKCJA 19 | **Sekcja 19** |  | 2026-04-06 | 2026-05-18 |  |  |  |
| 14NX42-123 |  | Prefabrykacja ruroci¹gów – Sekcja 19 | 7.9d | 2026-04-06 A | 2026-04-16 A | 14NX42-012, 14NX42-116 SS+5d | 100% |  |
| 14NX42-124 |  | Monta¿ ruroci¹gów – Sekcja 19 | 11.3d | 2026-04-15 A | 2026-04-30 A | 14NX42-123, 14NX42-014 SS+4d | 100% |  |
| 14NX42-125 |  | Próba ciœnieniowa – Sekcja 19 | 5d | 2026-05-01 A | 2026-05-11 A | 14NX42-124 | 100% |  |
| 14NX42-126 |  | Izolacje – Sekcja 19 | 5d | 2026-05-05 A | 2026-05-12 A | 14NX42-125 | 100% |  |
| 14NX42-127 |  | Malowanie i oznakowanie – Sekcja 19 | 3d | 2026-05-12 A | 2026-05-18 A | 14NX42-126 FF+2d | 100% |  |
|  | SEKCJA 20 | **Sekcja 20** |  | 2026-04-09 | 2026-10-01 |  |  |  |
| 14NX42-128 |  | Prefabrykacja ruroci¹gów – Sekcja 20 | 11.1d | 2026-04-09 A | 2026-04-23 A | 14NX42-012, 14NX42-123 SS+5d | 100% |  |
| 14NX42-129 |  | Monta¿ ruroci¹gów – Sekcja 20 | 22.7d | 2026-04-29 A | 2026-05-29 A | 14NX42-128, 14NX42-014 SS+2d | 100% |  |
| 14NX42-131 |  | Izolacje – Sekcja 20 | 10d | 2026-05-28 A | 2026-06-10 A | 14NX42-130 | 100% |  |
| 14NX42-132 |  | Malowanie i oznakowanie – Sekcja 20 | 4d | 2026-06-12 A | 2026-06-19 A | 14NX42-131 FF+2d | 100% |  |
| 14NX42-130 |  | Próba ciœnieniowa – Sekcja 20 | 2d | 2026-09-30 | 2026-10-01 | 14NX42-129 |  | 343.9d |
|  | SEKCJA 21 | **Sekcja 21** |  | 2026-04-20 | 2026-06-12 |  |  |  |
|  | PODSEKCJA | **Podsekcja 21.A** |  | 2026-04-20 | 2026-06-12 |  |  |  |
| 14NX42-135 |  | Prefabrykacja ruroci¹gów – Sekcja 21 | 11.8d | 2026-04-20 A | 2026-05-06 A | 14NX42-012, 14NX42-128 SS+5d | 100% |  |
| 14NX42-136 |  | Monta¿ ruroci¹gów – Sekcja 21 | 18.2d | 2026-04-30 A | 2026-05-28 A | 14NX42-135, 14NX42-014 SS+1d | 100% |  |
| 14NX42-137 |  | Próba ciœnieniowa – Sekcja 21 | 4d | 2026-05-27 A | 2026-06-04 A | 14NX42-136 | 100% |  |
| 14NX42-139 |  | Malowanie i oznakowanie – Sekcja 21 | 7d | 2026-05-29 A | 2026-06-10 A | 14NX42-138 FF+2d | 100% |  |
| 14NX42-138 |  | Izolacje – Sekcja 21 | 3d | 2026-06-08 A | 2026-06-12 A | 14NX42-137 | 100% |  |
|  | SEKCJA 22 | **Sekcja 22** |  | 2026-04-24 | 2026-06-04 |  |  |  |
| 14NX42-140 |  | Prefabrykacja ruroci¹gów – Sekcja 22 | 4.8d | 2026-04-24 A | 2026-05-04 A | 14NX42-012, 14NX42-135 SS+5d | 100% |  |
| 14NX42-141 |  | Monta¿ ruroci¹gów – Sekcja 22 | 8.7d | 2026-04-29 A | 2026-05-14 A | 14NX42-140, 14NX42-014 SS | 100% |  |
| 14NX42-142 |  | Próba ciœnieniowa – Sekcja 22 | 2d | 2026-05-15 A | 2026-05-18 A | 14NX42-141 | 100% |  |
| 14NX42-143 |  | Izolacje – Sekcja 22 | 10d | 2026-05-15 A | 2026-06-01 A | 14NX42-142 | 100% |  |
| 14NX42-144 |  | Malowanie i oznakowanie – Sekcja 22 | 8d | 2026-05-21 A | 2026-06-04 A | 14NX42-143 FF+2d | 100% |  |
|  | SEKCJA 23 | **Sekcja 23** |  | 2026-04-30 | 2026-10-01 |  |  |  |
| 14NX42-147 |  | Prefabrykacja ruroci¹gów – Sekcja 23 | 6.3d | 2026-04-30 A | 2026-05-08 A | 14NX42-012, 14NX42-140 SS+5d | 100% |  |
| 14NX42-148 |  | Monta¿ ruroci¹gów – Sekcja 23 | 18.9d | 2026-05-13 A | 2026-06-10 A | 14NX42-147, 14NX42-014 SS+7d | 100% |  |
| 14NX42-149 |  | Próba ciœnieniowa – Sekcja 23 | 6d | 2026-06-05 A | 2026-10-01 | 14NX42-148 | 60% | 427.7d |
| 14NX42-151 |  | Malowanie i oznakowanie – Sekcja 23 | 5d | 2026-06-15 A | 2026-06-23 A | 14NX42-150 FF+2d | 100% |  |
| 14NX42-150 |  | Izolacje – Sekcja 23 | 5d | 2026-06-17 A | 2026-06-24 A | 14NX42-149 | 100% |  |
|  | SEKCJA 24 | **Sekcja 24** |  | 2026-05-13 | 2026-10-07 |  |  |  |
|  | PODSEKCJA | **Podsekcja 24.A** |  | 2026-05-13 | 2026-10-07 |  |  |  |
| 14NX42-152 |  | Prefabrykacja ruroci¹gów – Sekcja 24 | 9.4d | 2026-05-13 A | 2026-10-07 | 14NX42-012, 14NX42-147 SS+5d | 31% | 360.8d |
| 14NX42-153 |  | Monta¿ ruroci¹gów – Sekcja 24 | 24.6d | 2026-05-20 A | 2026-06-24 A | 14NX42-152, 14NX42-014 SS+4d | 100% |  |
| 14NX42-154 |  | Próba ciœnieniowa – Sekcja 24 | 2d | 2026-06-25 A | 2026-06-26 A | 14NX42-153 | 100% |  |
| 14NX42-155 |  | Izolacje – Sekcja 24 | 6d | 2026-06-30 A | 2026-07-07 A | 14NX42-154 | 100% |  |
| 14NX42-156 |  | Malowanie i oznakowanie – Sekcja 24 | 7d | 2026-07-01 A | 2026-07-10 A | 14NX42-155 FF+2d | 100% |  |
|  | SEKCJA 25 | **Sekcja 25** |  | 2026-05-19 | 2026-06-29 |  |  |  |
| 14NX42-159 |  | Prefabrykacja ruroci¹gów – Sekcja 25 | 6.1d | 2026-05-19 A | 2026-05-29 A | 14NX42-012, 14NX42-152 SS+5d | 100% |  |
| 14NX42-160 |  | Monta¿ ruroci¹gów – Sekcja 25 | 10.7d | 2026-05-21 A | 2026-06-03 A | 14NX42-159, 14NX42-014 SS+10d | 100% |  |
| 14NX42-161 |  | Próba ciœnieniowa – Sekcja 25 | 5d | 2026-06-10 A | 2026-06-16 A | 14NX42-160 | 100% |  |
| 14NX42-162 |  | Izolacje – Sekcja 25 | 10d | 2026-06-12 A | 2026-06-26 A | 14NX42-161 | 100% |  |
| 14NX42-163 |  | Malowanie i oznakowanie – Sekcja 25 | 4d | 2026-06-23 A | 2026-06-29 A | 14NX42-162 FF+2d | 100% |  |
|  | SEKCJA 26 | **Sekcja 26** |  | 2026-05-26 | 2026-07-27 |  |  |  |
| 14NX42-164 |  | Prefabrykacja ruroci¹gów – Sekcja 26 | 11.6d | 2026-05-26 A | 2026-06-10 A | 14NX42-012, 14NX42-159 SS+5d | 100% |  |
| 14NX42-165 |  | Monta¿ ruroci¹gów – Sekcja 26 | 20.5d | 2026-06-09 A | 2026-07-09 A | 14NX42-164, 14NX42-014 SS+3d | 100% |  |
| 14NX42-166 |  | Próba ciœnieniowa – Sekcja 26 | 4d | 2026-07-09 A | 2026-07-15 A | 14NX42-165 | 100% |  |
| 14NX42-167 |  | Izolacje – Sekcja 26 | 8d | 2026-07-09 A | 2026-07-21 A | 14NX42-166 | 100% |  |
| 14NX42-168 |  | Malowanie i oznakowanie – Sekcja 26 | 6d | 2026-07-16 A | 2026-07-27 A | 14NX42-167 FF+2d | 100% |  |
|  | SEKCJA 27 | **Sekcja 27** |  | 2026-05-27 | 2026-07-13 |  |  |  |
|  | PODSEKCJA | **Podsekcja 27.A** |  | 2026-05-27 | 2026-07-13 |  |  |  |
| 14NX42-171 |  | Prefabrykacja ruroci¹gów – Sekcja 27 | 5.5d | 2026-05-27 A | 2026-06-05 A | 14NX42-012, 14NX42-164 SS+5d | 100% |  |
| 14NX42-172 |  | Monta¿ ruroci¹gów – Sekcja 27 | 14.5d | 2026-06-05 A | 2026-06-30 A | 14NX42-171, 14NX42-014 SS | 100% |  |
| 14NX42-173 |  | Próba ciœnieniowa – Sekcja 27 | 3d | 2026-06-25 A | 2026-06-30 A | 14NX42-172 | 100% |  |
| 14NX42-174 |  | Izolacje – Sekcja 27 | 5d | 2026-07-01 A | 2026-07-09 A | 14NX42-173 | 100% |  |

| ID | WBS | Task | Duration | Start | Finish | Predecessors | Complete | Total float |
| --- | --- | --- | --- | --- | --- | --- | --- | --- |
| 14NX42-175 |  | Malowanie i oznakowanie – Sekcja 27 | 3d | 2026-07-06 A | 2026-07-13 A | 14NX42-174 FF+2d | 100% |  |
|  | PROJ | **Projektowanie** |  | 2025-04-04 | 2025-08-22 |  |  |  |
|  | DOKUMENTAC | **Dokumentacja** |  | 2025-04-04 | 2025-08-22 |  |  |  |
| 14NX42-001 |  | Projekt wykonawczy – Uk³ad paliwa gazowego | 63d | 2025-04-04 A | 2025-07-04 A |  | 100% |  |
| 14NX42-002 |  | Uzgodnienie dokumentacji z Inwestorem | 28d | 2025-06-30 A | 2025-08-07 A | 14NX42-001 | 100% |  |
| 14NX42-003 |  | Zatwierdzenie dokumentacji do realizacji | 9d | 2025-08-08 A | 2025-08-21 A | 14NX42-002 | 100% |  |
| 14NX42-004 |  | KM: Dokumentacja zatwierdzona – Uk³ad paliwa gazowego | 0d | 2025-08-22 A | 2025-08-22 | 14NX42-003 | 100% |  |
|  | ROZR | **Rozruch** |  | 2026-07-23 | 2026-09-30 |  |  |  |
|  | ROZRUCH | **Rozruch** |  | 2026-07-23 | 2026-09-30 |  |  |  |
| 14NX42-178 |  | Przegl¹d gotowoœci do rozruchu | 6d | 2026-07-23 A | 2026-08-04 A | 14NX42-177, 14NX42-019, 14NX42-024, 14NX42-026 | 100% |  |
| 14NX42-179 |  | Rozruch na zimno | 14d | 2026-08-04 A | 2026-08-21 A | 14NX42-178 | 100% |  |
| 14NX42-180 |  | Rozruch na gor¹co / próby ruchowe | 11d | 2026-08-26 A | 2026-09-09 A | 14NX42-179 | 100% |  |
| 14NX42-181 |  | KM: Odbiór koñcowy – Uk³ad paliwa gazowego | 0d | 2026-09-30 | 2026-09-30 | 14NX42-180 |  | 347.9d |
|  | ZAKU | **Zakupy** |  | 2025-05-02 | 2026-10-14 |  |  |  |
|  | DOSTAWY | **Dostawy** |  | 2025-08-29 | 2026-04-07 |  |  |  |
| 14NX42-008 |  | Produkcja u dostawcy | 123d | 2025-08-29 A | 2026-02-20 A | 14NX42-007 | 100% |  |
| 14NX42-009 |  | Testy FAT | 7d | 2026-02-19 A | 2026-03-04 A | 14NX42-008 | 100% |  |
| 14NX42-010 |  | Transport i dostawa na plac budowy | 28d | 2026-02-25 A | 2026-04-07 A | 14NX42-009 | 100% |  |
| 14NX42-011 |  | KM: Dostawa na budowê – Uk³ad paliwa gazowego | 0d | 2026-04-07 A | 2026-04-07 | 14NX42-010 | 100% |  |
|  | ZAMÓWIENIA | **Zamówienia** |  | 2025-05-02 | 2026-10-14 |  |  |  |
| 14NX42-005 |  | Zapytanie ofertowe | 27d | 2025-05-02 A | 2025-06-09 A | 14NX42-001 SS+20d | 100% |  |
| 14NX42-007 |  | Zawarcie umowy / zamówienie | 6d | 2025-08-22 A | 2025-09-02 A | 14NX42-006, 14NX42-004 SS, 29UF44-004 SS+9d | 100% |  |
| 14NX42-006 |  | Analiza i wybór ofert | 11d | 2026-09-30 | 2026-10-14 | 14NX42-005 |  | 62.8d |
|  | 15BP15 | **15BP15 – Uk³ad oleju smarnego** |  | 2025-02-24 | 2026-11-25 |  |  |  |
|  | BUDO | **Budowa** |  | 2025-10-31 | 2026-10-14 |  |  |  |
|  | AKPIA | **AKPiA** |  | 2026-08-21 | 2026-09-14 |  |  |  |
| 15BP15-068 |  | Monta¿ uk³adów AKPiA | 17d | 2026-08-21 A | 2026-09-14 A | 15BP15-014 SS+5d | 100% |  |
|  | ELEKTRYKA | **Elektryka** |  | 2026-08-24 | 2026-10-08 |  |  |  |
| 15BP15-025 |  | Uk³adanie kabli – trasa 02 | 5d | 2026-08-24 A | 2026-09-02 A | 15BP15-014 SS+10d | 100% |  |
| 15BP15-049 |  | Uk³adanie kabli – trasa 06 | 20d | 2026-08-25 A | 2026-09-24 A | 15BP15-014 SS+10d | 100% |  |
| 15BP15-037 |  | Uk³adanie kabli – trasa 04 | 16d | 2026-08-26 A | 2026-09-21 A | 15BP15-014 SS+10d | 100% |  |
| 15BP15-026 |  | Pod³¹czenia i pomiary – trasa 02 | 5d | 2026-08-27 A | 2026-09-02 A | 15BP15-025 FF | 100% |  |
| 15BP15-061 |  | Uk³adanie kabli – trasa 08 | 19d | 2026-08-28 A | 2026-09-23 A | 15BP15-014 SS+10d | 100% |  |
| 15BP15-062 |  | Pod³¹czenia i pomiary – trasa 08 | 9d | 2026-09-08 A | 2026-10-08 | 15BP15-061 FF | 14% | 318.9d |
| 15BP15-038 |  | Pod³¹czenia i pomiary – trasa 04 | 4d | 2026-09-14 A | 2026-09-18 A | 15BP15-037 FF | 100% |  |
| 15BP15-050 |  | Pod³¹czenia i pomiary – trasa 06 | 3d | 2026-09-17 A | 2026-09-23 A | 15BP15-049 FF | 100% |  |
|  | MONTA¯ | **Monta¿** |  | 2025-12-03 | 2026-09-22 |  |  |  |
| 15BP15-013 |  | Monta¿ konstrukcji stalowych | 38d | 2025-12-03 A | 2026-01-23 A | 15BP15-012 | 100% |  |
| 15BP15-014 |  | Monta¿ urz¹dzeñ g³ównych | 23d | 2026-08-11 A | 2026-09-11 A | 15BP15-013, 15BP15-011 | 100% |  |
| 15BP15-069 |  | KM: Zakoñczenie monta¿u – Uk³ad oleju smarnego | 0d | 2026-09-22 A | 2026-09-22 | 15BP15-060, 15BP15-062, 15BP15-067, 15BP15-068, 15BP15-014 | 100% |  |
|  | ROBOTY BUD | **Roboty budowlane** |  | 2025-10-31 | 2025-12-10 |  |  |  |
| 15BP15-012 |  | Fundamenty i roboty ziemne | 27d | 2025-10-31 A | 2025-12-10 A | 15BP15-007 FS+13d | 100% |  |
|  | RUROCI¥GI | **Ruroci¹gi** |  | 2025-12-05 | 2026-10-14 |  |  |  |
|  | SEKCJA 01 | **Sekcja 01** |  | 2025-12-05 | 2026-10-05 |  |  |  |
| 15BP15-015 |  | Prefabrykacja ruroci¹gów – Sekcja 01 | 8.8d | 2025-12-05 A | 2025-12-16 A | 15BP15-012 | 100% |  |
| 15BP15-016 |  | Monta¿ ruroci¹gów – Sekcja 01 | 18.4d | 2026-08-24 A | 2026-09-17 A | 15BP15-015, 15BP15-014 SS+9d | 100% |  |
| 15BP15-017 |  | Próba ciœnieniowa – Sekcja 01 | 4d | 2026-09-21 A | 2026-09-24 A | 15BP15-016 | 100% |  |
| 15BP15-018 |  | Izolacje – Sekcja 01 | 9d | 2026-09-23 A | 2026-09-30 | 15BP15-017 | 89% | 305.5d |
| 15BP15-019 |  | Malowanie i oznakowanie – Sekcja 01 | 4d | 2026-09-30 | 2026-10-05 | 15BP15-018 FF+2d |  | 307.9d |
|  | SEKCJA 02 | **Sekcja 02** |  | 2025-12-11 | 2026-10-14 |  |  |  |
| 15BP15-020 |  | Prefabrykacja ruroci¹gów – Sekcja 02 | 5.4d | 2025-12-11 A | 2025-12-18 A | 15BP15-012, 15BP15-015 SS+5d | 100% |  |
| 15BP15-021 |  | Monta¿ ruroci¹gów – Sekcja 02 | 14.8d | 2026-08-26 A | 2026-10-14 | 15BP15-020, 15BP15-014 SS+10d | 20% | 307.1d |
| 15BP15-022 |  | Próba ciœnieniowa – Sekcja 02 | 4d | 2026-09-15 A | 2026-09-23 A | 15BP15-021 | 100% |  |
| 15BP15-023 |  | Izolacje – Sekcja 02 | 9d | 2026-09-24 A | 2026-10-08 | 15BP15-022 | 17% | 304.1d |
| 15BP15-024 |  | Malowanie i oznakowanie – Sekcja 02 | 5d | 2026-09-30 A | 2026-10-01 | 15BP15-023 FF+2d | 50% | 306.9d |
|  | SEKCJA 03 | **Sekcja 03** |  | 2025-12-23 | 2026-09-07 |  |  |  |
|  | PODSEKCJA | **Podsekcja 03.A** |  | 2025-12-23 | 2026-09-07 |  |  |  |
| 15BP15-027 |  | Prefabrykacja ruroci¹gów – Sekcja 03 | 8.5d | 2025-12-23 A | 2026-01-02 A | 15BP15-012, 15BP15-020 SS+5d | 100% |  |
| 15BP15-028 |  | Monta¿ ruroci¹gów – Sekcja 03 | 8.2d | 2026-08-17 A | 2026-08-27 A | 15BP15-027, 15BP15-014 SS+1d | 100% |  |
| 15BP15-029 |  | Próba ciœnieniowa – Sekcja 03 | 2d | 2026-08-25 A | 2026-08-31 A | 15BP15-028 | 100% |  |
| 15BP15-030 |  | Izolacje – Sekcja 03 | 6d | 2026-08-27 A | 2026-09-03 A | 15BP15-029 | 100% |  |
| 15BP15-031 |  | Malowanie i oznakowanie – Sekcja 03 | 7d | 2026-08-27 A | 2026-09-07 A | 15BP15-030 FF+2d | 100% |  |
|  | SEKCJA 04 | **Sekcja 04** |  | 2025-12-26 | 2026-09-18 |  |  |  |
| 15BP15-032 |  | Prefabrykacja ruroci¹gów – Sekcja 04 | 10.4d | 2025-12-26 A | 2026-01-13 A | 15BP15-012, 15BP15-027 SS+5d | 100% |  |
| 15BP15-033 |  | Monta¿ ruroci¹gów – Sekcja 04 | 11.4d | 2026-08-20 A | 2026-09-04 A | 15BP15-032, 15BP15-014 SS+4d | 100% |  |
| 15BP15-034 |  | Próba ciœnieniowa – Sekcja 04 | 5d | 2026-09-04 A | 2026-09-14 A | 15BP15-033 | 100% |  |
| 15BP15-035 |  | Izolacje – Sekcja 04 | 4d | 2026-09-09 A | 2026-09-17 A | 15BP15-034 | 100% |  |
| 15BP15-036 |  | Malowanie i oznakowanie – Sekcja 04 | 5d | 2026-09-14 A | 2026-09-18 A | 15BP15-035 FF+2d | 100% |  |
|  | SEKCJA 05 | **Sekcja 05** |  | 2026-01-05 | 2026-10-08 |  |  |  |
| 15BP15-039 |  | Prefabrykacja ruroci¹gów – Sekcja 05 | 13.3d | 2026-01-05 A | 2026-10-08 | 15BP15-012, 15BP15-032 SS+5d | 47% | 459.9d |

| ID | WBS | Task | Duration | Start | Finish | Predecessors | Complete | Total float |
| --- | --- | --- | --- | --- | --- | --- | --- | --- |
| 15BP15-040 |  | Monta¿ ruroci¹gów – Sekcja 05 | 5.2d | 2026-08-27 A | 2026-09-03 A | 15BP15-039, 15BP15-014 SS+10d | 100% |  |
| 15BP15-041 |  | Próba ciœnieniowa – Sekcja 05 | 3d | 2026-08-31 A | 2026-09-03 A | 15BP15-040 | 100% |  |
| 15BP15-042 |  | Izolacje – Sekcja 05 | 9d | 2026-09-04 A | 2026-09-18 A | 15BP15-041 | 100% |  |
| 15BP15-043 |  | Malowanie i oznakowanie – Sekcja 05 | 4d | 2026-09-15 A | 2026-09-21 A | 15BP15-042 FF+2d | 100% |  |
|  | SEKCJA 06 | **Sekcja 06** |  | 2026-01-09 | 2026-10-01 |  |  |  |
|  | PODSEKCJA | **Podsekcja 06.A** |  | 2026-01-09 | 2026-10-01 |  |  |  |
| 15BP15-044 |  | Prefabrykacja ruroci¹gów – Sekcja 06 | 13.3d | 2026-01-09 A | 2026-01-27 A | 15BP15-012, 15BP15-039 SS+5d | 100% |  |
| 15BP15-045 |  | Monta¿ ruroci¹gów – Sekcja 06 | 10d | 2026-08-12 A | 2026-08-26 A | 15BP15-044, 15BP15-014 SS+1d | 100% |  |
| 15BP15-046 |  | Próba ciœnieniowa – Sekcja 06 | 3d | 2026-08-27 A | 2026-09-02 A | 15BP15-045 | 100% |  |
| 15BP15-047 |  | Izolacje – Sekcja 06 | 4d | 2026-09-01 A | 2026-10-01 | 15BP15-046 | 35% | 372.9d |
| 15BP15-048 |  | Malowanie i oznakowanie – Sekcja 06 | 2d | 2026-09-07 A | 2026-09-09 A | 15BP15-047 FF+2d | 100% |  |
|  | SEKCJA 07 | **Sekcja 07** |  | 2026-01-20 | 2026-09-16 |  |  |  |
| 15BP15-051 |  | Prefabrykacja ruroci¹gów – Sekcja 07 | 6.9d | 2026-01-20 A | 2026-01-30 A | 15BP15-012, 15BP15-044 SS+5d | 100% |  |
| 15BP15-052 |  | Monta¿ ruroci¹gów – Sekcja 07 | 10.4d | 2026-08-17 A | 2026-08-31 A | 15BP15-051, 15BP15-014 SS+4d | 100% |  |
| 15BP15-053 |  | Próba ciœnieniowa – Sekcja 07 | 5d | 2026-08-28 A | 2026-09-04 A | 15BP15-052 | 100% |  |
| 15BP15-055 |  | Malowanie i oznakowanie – Sekcja 07 | 8d | 2026-09-03 A | 2026-09-15 A | 15BP15-054 FF+2d | 100% |  |
| 15BP15-054 |  | Izolacje – Sekcja 07 | 3d | 2026-09-09 A | 2026-09-16 A | 15BP15-053 | 100% |  |
|  | SEKCJA 08 | **Sekcja 08** |  | 2026-01-23 | 2026-10-05 |  |  |  |
| 15BP15-056 |  | Prefabrykacja ruroci¹gów – Sekcja 08 | 6.9d | 2026-01-23 A | 2026-02-02 A | 15BP15-012, 15BP15-051 SS+5d | 100% |  |
| 15BP15-057 |  | Monta¿ ruroci¹gów – Sekcja 08 | 9.1d | 2026-08-14 A | 2026-10-05 | 15BP15-056, 15BP15-014 SS+1d | 56% | 322.8d |
| 15BP15-058 |  | Próba ciœnieniowa – Sekcja 08 | 4d | 2026-08-24 A | 2026-08-31 A | 15BP15-057 | 100% |  |
| 15BP15-059 |  | Izolacje – Sekcja 08 | 7d | 2026-09-02 A | 2026-09-15 A | 15BP15-058 | 100% |  |
| 15BP15-060 |  | Malowanie i oznakowanie – Sekcja 08 | 4d | 2026-09-30 | 2026-10-05 | 15BP15-059 FF+2d |  | 307.9d |
|  | SEKCJA 09 | **Sekcja 09** |  | 2026-01-30 | 2026-09-08 |  |  |  |
|  | PODSEKCJA | **Podsekcja 09.A** |  | 2026-01-30 | 2026-09-08 |  |  |  |
| 15BP15-063 |  | Prefabrykacja ruroci¹gów – Sekcja 09 | 6.9d | 2026-01-30 A | 2026-02-09 A | 15BP15-012, 15BP15-056 SS+5d | 100% |  |
| 15BP15-064 |  | Monta¿ ruroci¹gów – Sekcja 09 | 5.1d | 2026-08-12 A | 2026-08-18 A | 15BP15-063, 15BP15-014 SS+1d | 100% |  |
| 15BP15-065 |  | Próba ciœnieniowa – Sekcja 09 | 5d | 2026-08-24 A | 2026-08-31 A | 15BP15-064 | 100% |  |
| 15BP15-066 |  | Izolacje – Sekcja 09 | 5d | 2026-08-26 A | 2026-09-03 A | 15BP15-065 | 100% |  |
| 15BP15-067 |  | Malowanie i oznakowanie – Sekcja 09 | 3d | 2026-09-03 A | 2026-09-08 A | 15BP15-066 FF+2d | 100% |  |
|  | PROJ | **Projektowanie** |  | 2025-02-24 | 2025-09-02 |  |  |  |
|  | DOKUMENTAC | **Dokumentacja** |  | 2025-02-24 | 2025-09-02 |  |  |  |
| 15BP15-001 |  | Projekt wykonawczy – Uk³ad oleju smarnego | 105d | 2025-02-24 A | 2025-07-22 A |  | 100% |  |
| 15BP15-002 |  | Uzgodnienie dokumentacji z Inwestorem | 16d | 2025-07-21 A | 2025-08-13 A | 15BP15-001 | 100% |  |
| 15BP15-003 |  | Zatwierdzenie dokumentacji do realizacji | 13d | 2025-08-12 A | 2025-09-02 A | 15BP15-002 | 100% |  |
| 15BP15-004 |  | KM: Dokumentacja zatwierdzona – Uk³ad oleju smarnego | 0d | 2025-08-27 A | 2025-08-27 | 15BP15-003 | 100% |  |
|  | ROZR | **Rozruch** |  | 2026-10-06 | 2026-11-25 |  |  |  |
|  | ROZRUCH | **Rozruch** |  | 2026-10-06 | 2026-11-25 |  |  |  |
| 15BP15-070 |  | Przegl¹d gotowoœci do rozruchu | 7d | 2026-10-06 | 2026-10-14 | 15BP15-069, 15BP15-019, 15BP15-024, 15BP15-026 |  | 307.9d |
| 15BP15-071 |  | Rozruch na zimno | 5d | 2026-10-15 | 2026-10-21 | 15BP15-070 |  | 307.9d |
| 15BP15-072 |  | Rozruch na gor¹co / próby ruchowe | 24d | 2026-10-22 | 2026-11-24 | 15BP15-071 |  | 307.9d |
| 15BP15-073 |  | KM: Odbiór koñcowy – Uk³ad oleju smarnego | 0d | 2026-11-25 | 2026-11-25 | 15BP15-072 |  | 307.9d |
|  | ZAKU | **Zakupy** |  | 2025-03-26 | 2026-10-16 |  |  |  |
|  | DOSTAWY | **Dostawy** |  | 2025-10-10 | 2026-08-12 |  |  |  |
| 15BP15-008 |  | Produkcja u dostawcy | 203d | 2025-10-10 A | 2026-07-21 A | 15BP15-007 | 100% |  |
| 15BP15-009 |  | Testy FAT | 5d | 2026-07-20 A | 2026-07-27 A | 15BP15-008 | 100% |  |
| 15BP15-010 |  | Transport i dostawa na plac budowy | 10d | 2026-07-27 A | 2026-08-11 A | 15BP15-009 | 100% |  |
| 15BP15-011 |  | KM: Dostawa na budowê – Uk³ad oleju smarnego | 0d | 2026-08-12 A | 2026-08-12 | 15BP15-010 | 100% |  |
|  | ZAMÓWIENIA | **Zamówienia** |  | 2025-03-26 | 2026-10-16 |  |  |  |
| 15BP15-005 |  | Zapytanie ofertowe | 17d | 2025-03-26 A | 2026-10-16 | 15BP15-001 SS+20d | 19% | 407.5d |
| 15BP15-006 |  | Analiza i wybór ofert | 15d | 2025-04-15 A | 2025-05-08 A | 15BP15-005 | 100% |  |
| 15BP15-007 |  | Zawarcie umowy / zamówienie | 7d | 2025-10-03 A | 2025-10-13 A | 15BP15-006, 15BP15-004 SS, 12FX78-004 FS+2d, 24PY38-004 SF+3d | 100% |  |
|  | 24PY38 | **24PY38 – Turbina gazowa** |  | 2025-06-04 | 2028-02-11 |  |  |  |
|  | BUDO | **Budowa** |  | 2025-10-23 | 2026-12-22 |  |  |  |
|  | AKPIA | **AKPiA** |  | 2026-10-09 | 2026-10-23 |  |  |  |
| 24PY38-171 |  | Monta¿ uk³adów AKPiA | 11d | 2026-10-09 | 2026-10-23 | 24PY38-014 SS+5d |  | 303.9d |
|  | ELEKTRYKA | **Elektryka** |  | 2026-10-13 | 2026-11-10 |  |  |  |
| 24PY38-062 |  | Pod³¹czenia i pomiary – trasa 08 | 9d | 2026-10-13 | 2026-10-23 | 24PY38-061 FF |  | 339.9d |
| 24PY38-146 |  | Pod³¹czenia i pomiary – trasa 22 | 8d | 2026-10-15 | 2026-10-26 | 24PY38-145 FF |  | 338.9d |
| 24PY38-025 |  | Uk³adanie kabli – trasa 02 | 5d | 2026-10-16 | 2026-10-22 | 24PY38-014 SS+10d |  | 304.9d |
| 24PY38-037 |  | Uk³adanie kabli – trasa 04 | 18d | 2026-10-16 | 2026-11-10 | 24PY38-014 SS+10d |  | 327.9d |
| 24PY38-049 |  | Uk³adanie kabli – trasa 06 | 7d | 2026-10-16 | 2026-10-26 | 24PY38-014 SS+10d |  | 338.9d |
| 24PY38-061 |  | Uk³adanie kabli – trasa 08 | 6d | 2026-10-16 | 2026-10-23 | 24PY38-014 SS+10d |  | 339.9d |
| 24PY38-073 |  | Uk³adanie kabli – trasa 10 | 17d | 2026-10-16 | 2026-11-09 | 24PY38-014 SS+10d |  | 328.9d |
| 24PY38-085 |  | Uk³adanie kabli – trasa 12 | 8d | 2026-10-16 | 2026-10-27 | 24PY38-014 SS+10d |  | 337.9d |
| 24PY38-097 |  | Uk³adanie kabli – trasa 14 | 8d | 2026-10-16 | 2026-10-27 | 24PY38-014 SS+10d |  | 337.9d |
| 24PY38-109 |  | Uk³adanie kabli – trasa 16 | 12d | 2026-10-16 | 2026-11-02 | 24PY38-014 SS+10d |  | 333.9d |
| 24PY38-121 |  | Uk³adanie kabli – trasa 18 | 7d | 2026-10-16 | 2026-10-26 | 24PY38-014 SS+10d |  | 338.9d |
| 24PY38-122 |  | Pod³¹czenia i pomiary – trasa 18 | 7d | 2026-10-16 | 2026-10-26 | 24PY38-121 FF |  | 338.9d |
| 24PY38-133 |  | Uk³adanie kabli – trasa 20 | 17d | 2026-10-16 | 2026-11-09 | 24PY38-014 SS+10d |  | 328.9d |

| ID | WBS | Task | Duration | Start | Finish | Predecessors | Complete | Total float |
| --- | --- | --- | --- | --- | --- | --- | --- | --- |
| 24PY38-145 |  | Uk³adanie kabli – trasa 22 | 7d | 2026-10-16 | 2026-10-26 | 24PY38-014 SS+10d |  | 338.9d |
| 24PY38-157 |  | Uk³adanie kabli – trasa 24 | 17d | 2026-10-16 | 2026-11-09 | 24PY38-014 SS+10d |  | 328.9d |
| 24PY38-169 |  | Uk³adanie kabli – trasa 26 | 10d | 2026-10-16 | 2026-10-29 | 24PY38-014 SS+10d |  | 299.9d |
| 24PY38-026 |  | Pod³¹czenia i pomiary – trasa 02 | 4d | 2026-10-19 | 2026-10-22 | 24PY38-025 FF |  | 304.9d |
| 24PY38-050 |  | Pod³¹czenia i pomiary – trasa 06 | 4d | 2026-10-21 | 2026-10-26 | 24PY38-049 FF |  | 338.9d |
| 24PY38-098 |  | Pod³¹czenia i pomiary – trasa 14 | 5d | 2026-10-21 | 2026-10-27 | 24PY38-097 FF |  | 337.9d |
| 24PY38-110 |  | Pod³¹czenia i pomiary – trasa 16 | 9d | 2026-10-21 | 2026-11-02 | 24PY38-109 FF |  | 333.9d |
| 24PY38-170 |  | Pod³¹czenia i pomiary – trasa 26 | 7d | 2026-10-21 | 2026-10-29 | 24PY38-169 FF |  | 299.9d |
| 24PY38-086 |  | Pod³¹czenia i pomiary – trasa 12 | 3d | 2026-10-23 | 2026-10-27 | 24PY38-085 FF |  | 337.9d |
| 24PY38-074 |  | Pod³¹czenia i pomiary – trasa 10 | 10d | 2026-10-27 | 2026-11-09 | 24PY38-073 FF |  | 328.9d |
| 24PY38-134 |  | Pod³¹czenia i pomiary – trasa 20 | 9d | 2026-10-28 | 2026-11-09 | 24PY38-133 FF |  | 328.9d |
| 24PY38-158 |  | Pod³¹czenia i pomiary – trasa 24 | 6d | 2026-11-02 | 2026-11-09 | 24PY38-157 FF |  | 328.9d |
| 24PY38-038 |  | Pod³¹czenia i pomiary – trasa 04 | 5d | 2026-11-04 | 2026-11-10 | 24PY38-037 FF |  | 327.9d |
|  | MONTA¯ | **Monta¿** |  | 2026-01-09 | 2026-12-22 |  |  |  |
| 24PY38-013 |  | Monta¿ konstrukcji stalowych | 17d | 2026-01-09 A | 2026-02-02 A | 24PY38-012 | 100% |  |
| 24PY38-014 |  | Monta¿ urz¹dzeñ g³ównych | 57d | 2026-10-02 | 2026-12-21 | 24PY38-013, 24PY38-011 |  | 262.9d |
| 24PY38-172 |  | KM: Zakoñczenie monta¿u – Turbina gazowa | 0d | 2026-12-22 | 2026-12-22 | 24PY38-163, 24PY38-168, 24PY38-170, 24PY38-171, 24PY38-014 |  | 262.9d |
|  | ROBOTY BUD | **Roboty budowlane** |  | 2025-10-23 | 2026-11-06 |  |  |  |
| 24PY38-012 |  | Fundamenty i roboty ziemne | 56d | 2025-10-23 A | 2026-11-06 | 24PY38-007 FS+5d | 48% | 333.3d |
|  | RUROCI¥GI | **Ruroci¹gi** |  | 2026-01-13 | 2026-12-14 |  |  |  |
|  | SEKCJA 01 | **Sekcja 01** |  | 2026-01-13 | 2026-11-25 |  |  |  |
| 24PY38-015 |  | Prefabrykacja ruroci¹gów – Sekcja 01 | 9.6d | 2026-01-13 A | 2026-01-28 A | 24PY38-012 | 100% |  |
| 24PY38-016 |  | Monta¿ ruroci¹gów – Sekcja 01 | 19.8d | 2026-10-16 | 2026-11-11 | 24PY38-015, 24PY38-014 SS+10d |  | 280.1d |
| 24PY38-017 |  | Próba ciœnieniowa – Sekcja 01 | 5d | 2026-11-12 | 2026-11-18 | 24PY38-016 |  | 280.1d |
| 24PY38-018 |  | Izolacje – Sekcja 01 | 3d | 2026-11-19 | 2026-11-23 | 24PY38-017 |  | 280.1d |
| 24PY38-019 |  | Malowanie i oznakowanie – Sekcja 01 | 3d | 2026-11-23 | 2026-11-25 | 24PY38-018 FF+2d |  | 280.1d |
|  | SEKCJA 02 | **Sekcja 02** |  | 2026-01-21 | 2026-11-25 |  |  |  |
| 24PY38-020 |  | Prefabrykacja ruroci¹gów – Sekcja 02 | 13.4d | 2026-01-21 A | 2026-02-09 A | 24PY38-012, 24PY38-015 SS+5d | 100% |  |
| 24PY38-021 |  | Monta¿ ruroci¹gów – Sekcja 02 | 16.7d | 2026-10-13 | 2026-11-03 | 24PY38-020, 24PY38-014 SS+7d |  | 280.2d |
| 24PY38-022 |  | Próba ciœnieniowa – Sekcja 02 | 2d | 2026-11-04 | 2026-11-05 | 24PY38-021 |  | 280.2d |
| 24PY38-023 |  | Izolacje – Sekcja 02 | 12d | 2026-11-06 | 2026-11-23 | 24PY38-022 |  | 280.2d |
| 24PY38-024 |  | Malowanie i oznakowanie – Sekcja 02 | 8d | 2026-11-16 | 2026-11-25 | 24PY38-023 FF+2d |  | 280.2d |
|  | SEKCJA 03 | **Sekcja 03** |  | 2026-01-23 | 2026-12-01 |  |  |  |
|  | PODSEKCJA | **Podsekcja 03.A** |  | 2026-01-23 | 2026-12-01 |  |  |  |
| 24PY38-027 |  | Prefabrykacja ruroci¹gów – Sekcja 03 | 6d | 2026-01-23 A | 2026-10-02 | 24PY38-012, 24PY38-020 SS+5d | 37% | 333.3d |
| 24PY38-028 |  | Monta¿ ruroci¹gów – Sekcja 03 | 17.2d | 2026-10-16 | 2026-11-09 | 24PY38-027, 24PY38-014 SS+10d |  | 312.7d |
| 24PY38-029 |  | Próba ciœnieniowa – Sekcja 03 | 6d | 2026-11-10 | 2026-11-17 | 24PY38-028 |  | 312.7d |
| 24PY38-030 |  | Izolacje – Sekcja 03 | 8d | 2026-11-18 | 2026-11-27 | 24PY38-029 |  | 312.7d |
| 24PY38-031 |  | Malowanie i oznakowanie – Sekcja 03 | 7d | 2026-11-23 | 2026-12-01 | 24PY38-030 FF+2d |  | 312.7d |
|  | SEKCJA 04 | **Sekcja 04** |  | 2026-02-02 | 2026-10-29 |  |  |  |
| 24PY38-032 |  | Prefabrykacja ruroci¹gów – Sekcja 04 | 10.8d | 2026-02-02 A | 2026-02-17 A | 24PY38-012, 24PY38-027 SS+5d | 100% |  |
| 24PY38-033 |  | Monta¿ ruroci¹gów – Sekcja 04 | 6.5d | 2026-10-13 | 2026-10-20 | 24PY38-032, 24PY38-014 SS+7d |  | 335.4d |
| 24PY38-034 |  | Próba ciœnieniowa – Sekcja 04 | 2d | 2026-10-21 | 2026-10-22 | 24PY38-033 |  | 335.4d |
| 24PY38-036 |  | Malowanie i oznakowanie – Sekcja 04 | 7d | 2026-10-21 | 2026-10-29 | 24PY38-035 FF+2d |  | 335.4d |
| 24PY38-035 |  | Izolacje – Sekcja 04 | 3d | 2026-10-23 | 2026-10-27 | 24PY38-034 |  | 335.4d |
|  | SEKCJA 05 | **Sekcja 05** |  | 2026-02-06 | 2026-11-03 |  |  |  |
| 24PY38-039 |  | Prefabrykacja ruroci¹gów – Sekcja 05 | 9.1d | 2026-02-06 A | 2026-02-18 A | 24PY38-012, 24PY38-032 SS+5d | 100% |  |
| 24PY38-040 |  | Monta¿ ruroci¹gów – Sekcja 05 | 10.1d | 2026-10-07 | 2026-10-20 | 24PY38-039, 24PY38-014 SS+3d |  | 332.8d |
| 24PY38-041 |  | Próba ciœnieniowa – Sekcja 05 | 2d | 2026-10-21 | 2026-10-22 | 24PY38-040 |  | 332.8d |
| 24PY38-042 |  | Izolacje – Sekcja 05 | 6d | 2026-10-23 | 2026-10-30 | 24PY38-041 |  | 332.8d |
| 24PY38-043 |  | Malowanie i oznakowanie – Sekcja 05 | 2d | 2026-11-02 | 2026-11-03 | 24PY38-042 FF+2d |  | 332.8d |
|  | SEKCJA 06 | **Sekcja 06** |  | 2026-02-17 | 2026-11-19 |  |  |  |
|  | PODSEKCJA | **Podsekcja 06.A** |  | 2026-02-17 | 2026-11-19 |  |  |  |
| 24PY38-044 |  | Prefabrykacja ruroci¹gów – Sekcja 06 | 12d | 2026-02-17 A | 2026-03-09 A | 24PY38-012, 24PY38-039 SS+5d | 100% |  |
| 24PY38-045 |  | Monta¿ ruroci¹gów – Sekcja 06 | 11.5d | 2026-10-09 | 2026-10-23 | 24PY38-044, 24PY38-014 SS+5d |  | 322.4d |
| 24PY38-046 |  | Próba ciœnieniowa – Sekcja 06 | 6d | 2026-10-28 | 2026-11-04 | 24PY38-045 |  | 320.9d |
| 24PY38-047 |  | Izolacje – Sekcja 06 | 9d | 2026-11-05 | 2026-11-17 | 24PY38-046 |  | 320.9d |
| 24PY38-048 |  | Malowanie i oznakowanie – Sekcja 06 | 4d | 2026-11-16 | 2026-11-19 | 24PY38-047 FF+2d |  | 320.9d |
|  | SEKCJA 07 | **Sekcja 07** |  | 2026-02-20 | 2026-11-26 |  |  |  |
| 24PY38-051 |  | Prefabrykacja ruroci¹gów – Sekcja 07 | 11.1d | 2026-02-20 A | 2026-03-09 A | 24PY38-012, 24PY38-044 SS+5d | 100% |  |
| 24PY38-052 |  | Monta¿ ruroci¹gów – Sekcja 07 | 20.8d | 2026-10-16 | 2026-11-12 | 24PY38-051, 24PY38-014 SS+10d |  | 315.1d |
| 24PY38-053 |  | Próba ciœnieniowa – Sekcja 07 | 5d | 2026-11-13 | 2026-11-19 | 24PY38-052 |  | 315.1d |
| 24PY38-054 |  | Izolacje – Sekcja 07 | 3d | 2026-11-20 | 2026-11-24 | 24PY38-053 |  | 315.1d |
| 24PY38-055 |  | Malowanie i oznakowanie – Sekcja 07 | 3d | 2026-11-24 | 2026-11-26 | 24PY38-054 FF+2d |  | 315.1d |
|  | SEKCJA 08 | **Sekcja 08** |  | 2026-02-26 | 2026-11-30 |  |  |  |
| 24PY38-056 |  | Prefabrykacja ruroci¹gów – Sekcja 08 | 6d | 2026-02-26 A | 2026-03-09 A | 24PY38-012, 24PY38-051 SS+5d | 100% |  |
| 24PY38-057 |  | Monta¿ ruroci¹gów – Sekcja 08 | 17.5d | 2026-10-15 | 2026-11-06 | 24PY38-056, 24PY38-014 SS+9d |  | 313.4d |
| 24PY38-058 |  | Próba ciœnieniowa – Sekcja 08 | 3d | 2026-11-09 | 2026-11-11 | 24PY38-057 |  | 313.4d |
| 24PY38-059 |  | Izolacje – Sekcja 08 | 11d | 2026-11-12 | 2026-11-26 | 24PY38-058 |  | 313.4d |
| 24PY38-060 |  | Malowanie i oznakowanie – Sekcja 08 | 6d | 2026-11-23 | 2026-11-30 | 24PY38-059 FF+2d |  | 313.4d |

| ID | WBS | Task | Duration | Start | Finish | Predecessors | Complete | Total float |
| --- | --- | --- | --- | --- | --- | --- | --- | --- |
|  | SEKCJA 09 | **Sekcja 09** |  | 2026-03-11 | 2026-12-14 |  |  |  |
|  | PODSEKCJA | **Podsekcja 09.A** |  | 2026-03-11 | 2026-12-14 |  |  |  |
| 24PY38-063 |  | Prefabrykacja ruroci¹gów – Sekcja 09 | 10.5d | 2026-03-11 A | 2026-03-25 A | 24PY38-012, 24PY38-056 SS+5d | 100% |  |
| 24PY38-064 |  | Monta¿ ruroci¹gów – Sekcja 09 | 13.3d | 2026-11-04 | 2026-11-20 | 24PY38-063, 24PY38-014 SS+10d |  | 303.6d |
| 24PY38-065 |  | Próba ciœnieniowa – Sekcja 09 | 5d | 2026-11-23 | 2026-11-27 | 24PY38-064 |  | 303.6d |
| 24PY38-066 |  | Izolacje – Sekcja 09 | 9d | 2026-11-30 | 2026-12-10 | 24PY38-065 |  | 303.6d |
| 24PY38-067 |  | Malowanie i oznakowanie – Sekcja 09 | 6d | 2026-12-07 | 2026-12-14 | 24PY38-066 FF+2d |  | 303.6d |
|  | SEKCJA 10 | **Sekcja 10** |  | 2026-03-16 | 2026-11-16 |  |  |  |
| 24PY38-068 |  | Prefabrykacja ruroci¹gów – Sekcja 10 | 5.7d | 2026-03-16 A | 2026-03-25 A | 24PY38-012, 24PY38-063 SS+5d | 100% |  |
| 24PY38-069 |  | Monta¿ ruroci¹gów – Sekcja 10 | 10.1d | 2026-10-15 | 2026-10-28 | 24PY38-068, 24PY38-014 SS+9d |  | 323.8d |
| 24PY38-070 |  | Próba ciœnieniowa – Sekcja 10 | 3d | 2026-10-29 | 2026-11-02 | 24PY38-069 |  | 323.8d |
| 24PY38-071 |  | Izolacje – Sekcja 10 | 8d | 2026-11-03 | 2026-11-12 | 24PY38-070 |  | 323.8d |
| 24PY38-072 |  | Malowanie i oznakowanie – Sekcja 10 | 2d | 2026-11-13 | 2026-11-16 | 24PY38-071 FF+2d |  | 323.8d |
|  | SEKCJA 11 | **Sekcja 11** |  | 2026-03-25 | 2026-11-10 |  |  |  |
| 24PY38-075 |  | Prefabrykacja ruroci¹gów – Sekcja 11 | 11.8d | 2026-03-25 A | 2026-04-08 A | 24PY38-012, 24PY38-068 SS+5d | 100% |  |
| 24PY38-076 |  | Monta¿ ruroci¹gów – Sekcja 11 | 7.1d | 2026-10-15 | 2026-10-23 | 24PY38-075, 24PY38-014 SS+9d |  | 327.8d |
| 24PY38-077 |  | Próba ciœnieniowa – Sekcja 11 | 6d | 2026-10-26 | 2026-11-02 | 24PY38-076 |  | 327.8d |
| 24PY38-078 |  | Izolacje – Sekcja 11 | 4d | 2026-11-03 | 2026-11-06 | 24PY38-077 |  | 327.8d |
| 24PY38-079 |  | Malowanie i oznakowanie – Sekcja 11 | 5d | 2026-11-04 | 2026-11-10 | 24PY38-078 FF+2d |  | 327.8d |
|  | SEKCJA 12 | **Sekcja 12** |  | 2026-03-27 | 2026-11-04 |  |  |  |
|  | PODSEKCJA | **Podsekcja 12.A** |  | 2026-03-27 | 2026-11-04 |  |  |  |
| 24PY38-080 |  | Prefabrykacja ruroci¹gów – Sekcja 12 | 12d | 2026-03-27 A | 2026-04-13 A | 24PY38-012, 24PY38-075 SS+5d | 100% |  |
| 24PY38-081 |  | Monta¿ ruroci¹gów – Sekcja 12 | 6.4d | 2026-10-09 | 2026-10-16 | 24PY38-080, 24PY38-014 SS+5d |  | 331.5d |
| 24PY38-082 |  | Próba ciœnieniowa – Sekcja 12 | 4d | 2026-10-19 | 2026-10-22 | 24PY38-081 |  | 331.5d |
| 24PY38-083 |  | Izolacje – Sekcja 12 | 7d | 2026-10-23 | 2026-11-02 | 24PY38-082 |  | 331.5d |
| 24PY38-084 |  | Malowanie i oznakowanie – Sekcja 12 | 3d | 2026-11-02 | 2026-11-04 | 24PY38-083 FF+2d |  | 331.5d |
|  | SEKCJA 13 | **Sekcja 13** |  | 2026-04-06 | 2026-11-23 |  |  |  |
| 24PY38-087 |  | Prefabrykacja ruroci¹gów – Sekcja 13 | 7.4d | 2026-04-06 A | 2026-04-15 A | 24PY38-012, 24PY38-080 SS+5d | 100% |  |
| 24PY38-088 |  | Monta¿ ruroci¹gów – Sekcja 13 | 10.5d | 2026-10-15 | 2026-10-28 | 24PY38-087, 24PY38-014 SS+9d |  | 318.4d |
| 24PY38-089 |  | Próba ciœnieniowa – Sekcja 13 | 4d | 2026-10-29 | 2026-11-03 | 24PY38-088 |  | 318.4d |
| 24PY38-090 |  | Izolacje – Sekcja 13 | 12d | 2026-11-04 | 2026-11-19 | 24PY38-089 |  | 318.4d |
| 24PY38-091 |  | Malowanie i oznakowanie – Sekcja 13 | 8d | 2026-11-12 | 2026-11-23 | 24PY38-090 FF+2d |  | 318.4d |
|  | SEKCJA 14 | **Sekcja 14** |  | 2026-04-13 | 2026-11-18 |  |  |  |
| 24PY38-092 |  | Prefabrykacja ruroci¹gów – Sekcja 14 | 7.5d | 2026-04-13 A | 2026-04-24 A | 24PY38-012, 24PY38-087 SS+5d | 100% |  |
| 24PY38-093 |  | Monta¿ ruroci¹gów – Sekcja 14 | 16.4d | 2026-10-13 | 2026-11-03 | 24PY38-092, 24PY38-014 SS+7d |  | 321.5d |
| 24PY38-094 |  | Próba ciœnieniowa – Sekcja 14 | 3d | 2026-11-04 | 2026-11-06 | 24PY38-093 |  | 321.5d |
| 24PY38-095 |  | Izolacje – Sekcja 14 | 6d | 2026-11-09 | 2026-11-16 | 24PY38-094 |  | 321.5d |
| 24PY38-096 |  | Malowanie i oznakowanie – Sekcja 14 | 5d | 2026-11-12 | 2026-11-18 | 24PY38-095 FF+2d |  | 321.5d |
|  | SEKCJA 15 | **Sekcja 15** |  | 2026-04-20 | 2026-12-07 |  |  |  |
|  | PODSEKCJA | **Podsekcja 15.A** |  | 2026-04-20 | 2026-12-07 |  |  |  |
| 24PY38-099 |  | Prefabrykacja ruroci¹gów – Sekcja 15 | 10.1d | 2026-04-20 A | 2026-05-04 A | 24PY38-012, 24PY38-092 SS+5d | 100% |  |
| 24PY38-100 |  | Monta¿ ruroci¹gów – Sekcja 15 | 20.4d | 2026-10-16 | 2026-11-12 | 24PY38-099, 24PY38-014 SS+10d |  | 308.5d |
| 24PY38-101 |  | Próba ciœnieniowa – Sekcja 15 | 4d | 2026-11-13 | 2026-11-18 | 24PY38-100 |  | 308.5d |
| 24PY38-102 |  | Izolacje – Sekcja 15 | 11d | 2026-11-19 | 2026-12-03 | 24PY38-101 |  | 308.5d |
| 24PY38-103 |  | Malowanie i oznakowanie – Sekcja 15 | 2d | 2026-12-04 | 2026-12-07 | 24PY38-102 FF+2d |  | 308.5d |
|  | SEKCJA 16 | **Sekcja 16** |  | 2026-04-24 | 2026-11-20 |  |  |  |
| 24PY38-104 |  | Prefabrykacja ruroci¹gów – Sekcja 16 | 11.6d | 2026-04-24 A | 2026-05-08 A | 24PY38-012, 24PY38-099 SS+5d | 100% |  |
| 24PY38-105 |  | Monta¿ ruroci¹gów – Sekcja 16 | 11.3d | 2026-10-12 | 2026-10-26 | 24PY38-104, 24PY38-014 SS+6d |  | 319.6d |
| 24PY38-106 |  | Próba ciœnieniowa – Sekcja 16 | 6d | 2026-10-27 | 2026-11-03 | 24PY38-105 |  | 319.6d |
| 24PY38-107 |  | Izolacje – Sekcja 16 | 11d | 2026-11-04 | 2026-11-18 | 24PY38-106 |  | 319.6d |
| 24PY38-108 |  | Malowanie i oznakowanie – Sekcja 16 | 5d | 2026-11-16 | 2026-11-20 | 24PY38-107 FF+2d |  | 319.6d |
|  | SEKCJA 17 | **Sekcja 17** |  | 2026-05-01 | 2026-11-18 |  |  |  |
| 24PY38-111 |  | Prefabrykacja ruroci¹gów – Sekcja 17 | 10.7d | 2026-05-01 A | 2026-05-15 A | 24PY38-012, 24PY38-104 SS+5d | 100% |  |
| 24PY38-112 |  | Monta¿ ruroci¹gów – Sekcja 17 | 13.9d | 2026-10-14 | 2026-10-30 | 24PY38-111, 24PY38-014 SS+8d |  | 321d |
| 24PY38-113 |  | Próba ciœnieniowa – Sekcja 17 | 5d | 2026-11-02 | 2026-11-06 | 24PY38-112 |  | 321d |
| 24PY38-114 |  | Izolacje – Sekcja 17 | 6d | 2026-11-09 | 2026-11-16 | 24PY38-113 |  | 321d |
| 24PY38-115 |  | Malowanie i oznakowanie – Sekcja 17 | 8d | 2026-11-09 | 2026-11-18 | 24PY38-114 FF+2d |  | 321d |
|  | SEKCJA 18 | **Sekcja 18** |  | 2026-05-11 | 2026-11-20 |  |  |  |
|  | PODSEKCJA | **Podsekcja 18.A** |  | 2026-05-11 | 2026-11-20 |  |  |  |
| 24PY38-116 |  | Prefabrykacja ruroci¹gów – Sekcja 18 | 7.9d | 2026-05-11 A | 2026-05-21 A | 24PY38-012, 24PY38-111 SS+5d | 100% |  |
| 24PY38-117 |  | Monta¿ ruroci¹gów – Sekcja 18 | 19.7d | 2026-10-13 | 2026-11-06 | 24PY38-116, 24PY38-014 SS+7d |  | 319.2d |
| 24PY38-118 |  | Próba ciœnieniowa – Sekcja 18 | 2d | 2026-11-09 | 2026-11-10 | 24PY38-117 |  | 319.2d |
| 24PY38-119 |  | Izolacje – Sekcja 18 | 6d | 2026-11-11 | 2026-11-18 | 24PY38-118 |  | 319.2d |
| 24PY38-120 |  | Malowanie i oznakowanie – Sekcja 18 | 4d | 2026-11-17 | 2026-11-20 | 24PY38-119 FF+2d |  | 319.2d |
|  | SEKCJA 19 | **Sekcja 19** |  | 2026-05-20 | 2026-12-08 |  |  |  |
| 24PY38-123 |  | Prefabrykacja ruroci¹gów – Sekcja 19 | 5.6d | 2026-05-20 A | 2026-05-27 A | 24PY38-012, 24PY38-116 SS+5d | 100% |  |
| 24PY38-124 |  | Monta¿ ruroci¹gów – Sekcja 19 | 8.5d | 2026-11-02 | 2026-11-11 | 24PY38-123, 24PY38-014 SS+10d |  | 307.4d |
| 24PY38-125 |  | Próba ciœnieniowa – Sekcja 19 | 5d | 2026-11-12 | 2026-11-18 | 24PY38-124 |  | 307.4d |
| 24PY38-126 |  | Izolacje – Sekcja 19 | 12d | 2026-11-19 | 2026-12-04 | 24PY38-125 |  | 307.4d |
| 24PY38-127 |  | Malowanie i oznakowanie – Sekcja 19 | 3d | 2026-12-04 | 2026-12-08 | 24PY38-126 FF+2d |  | 307.4d |

| ID | WBS | Task | Duration | Start | Finish | Predecessors | Complete | Total float |
| --- | --- | --- | --- | --- | --- | --- | --- | --- |
|  | SEKCJA 20 | **Sekcja 20** |  | 2026-05-25 | 2026-11-23 |  |  |  |
| 24PY38-128 |  | Prefabrykacja ruroci¹gów – Sekcja 20 | 9.3d | 2026-05-25 A | 2026-06-09 A | 24PY38-012, 24PY38-123 SS+5d | 100% |  |
| 24PY38-129 |  | Monta¿ ruroci¹gów – Sekcja 20 | 11d | 2026-10-16 | 2026-10-30 | 24PY38-128, 24PY38-014 SS+10d |  | 318.9d |
| 24PY38-130 |  | Próba ciœnieniowa – Sekcja 20 | 6d | 2026-11-02 | 2026-11-09 | 24PY38-129 |  | 318.9d |
| 24PY38-131 |  | Izolacje – Sekcja 20 | 8d | 2026-11-10 | 2026-11-19 | 24PY38-130 |  | 318.9d |
| 24PY38-132 |  | Malowanie i oznakowanie – Sekcja 20 | 3d | 2026-11-19 | 2026-11-23 | 24PY38-131 FF+2d |  | 318.9d |
|  | SEKCJA 21 | **Sekcja 21** |  | 2026-06-03 | 2026-11-26 |  |  |  |
|  | PODSEKCJA | **Podsekcja 21.A** |  | 2026-06-03 | 2026-11-26 |  |  |  |
| 24PY38-135 |  | Prefabrykacja ruroci¹gów – Sekcja 21 | 7.3d | 2026-06-03 A | 2026-10-01 | 24PY38-012, 24PY38-128 SS+5d | 68% | 330.3d |
| 24PY38-136 |  | Monta¿ ruroci¹gów – Sekcja 21 | 17.5d | 2026-10-15 | 2026-11-06 | 24PY38-135, 24PY38-014 SS+9d |  | 315.4d |
| 24PY38-137 |  | Próba ciœnieniowa – Sekcja 21 | 5d | 2026-11-09 | 2026-11-13 | 24PY38-136 |  | 315.4d |
| 24PY38-138 |  | Izolacje – Sekcja 21 | 7d | 2026-11-16 | 2026-11-24 | 24PY38-137 |  | 315.4d |
| 24PY38-139 |  | Malowanie i oznakowanie – Sekcja 21 | 3d | 2026-11-24 | 2026-11-26 | 24PY38-138 FF+2d |  | 315.4d |
|  | SEKCJA 22 | **Sekcja 22** |  | 2026-06-04 | 2026-10-26 |  |  |  |
| 24PY38-140 |  | Prefabrykacja ruroci¹gów – Sekcja 22 | 11.9d | 2026-06-04 A | 2026-06-18 A | 24PY38-012, 24PY38-135 SS+5d | 100% |  |
| 24PY38-141 |  | Monta¿ ruroci¹gów – Sekcja 22 | 6.4d | 2026-10-02 | 2026-10-09 | 24PY38-140, 24PY38-014 SS |  | 338.5d |
| 24PY38-142 |  | Próba ciœnieniowa – Sekcja 22 | 3d | 2026-10-12 | 2026-10-14 | 24PY38-141 |  | 338.5d |
| 24PY38-143 |  | Izolacje – Sekcja 22 | 6d | 2026-10-15 | 2026-10-22 | 24PY38-142 |  | 338.5d |
| 24PY38-144 |  | Malowanie i oznakowanie – Sekcja 22 | 2d | 2026-10-23 | 2026-10-26 | 24PY38-143 FF+2d |  | 338.5d |
|  | SEKCJA 23 | **Sekcja 23** |  | 2026-06-15 | 2026-11-23 |  |  |  |
| 24PY38-147 |  | Prefabrykacja ruroci¹gów – Sekcja 23 | 12d | 2026-06-15 A | 2026-07-02 A | 24PY38-012, 24PY38-140 SS+5d | 100% |  |
| 24PY38-148 |  | Monta¿ ruroci¹gów – Sekcja 23 | 10.4d | 2026-10-15 | 2026-10-28 | 24PY38-147, 24PY38-014 SS+9d |  | 318.5d |
| 24PY38-149 |  | Próba ciœnieniowa – Sekcja 23 | 4d | 2026-10-29 | 2026-11-03 | 24PY38-148 |  | 318.5d |
| 24PY38-150 |  | Izolacje – Sekcja 23 | 12d | 2026-11-04 | 2026-11-19 | 24PY38-149 |  | 318.5d |
| 24PY38-151 |  | Malowanie i oznakowanie – Sekcja 23 | 7d | 2026-11-13 | 2026-11-23 | 24PY38-150 FF+2d |  | 318.5d |
|  | SEKCJA 24 | **Sekcja 24** |  | 2026-06-22 | 2026-11-11 |  |  |  |
|  | PODSEKCJA | **Podsekcja 24.A** |  | 2026-06-22 | 2026-11-11 |  |  |  |
| 24PY38-152 |  | Prefabrykacja ruroci¹gów – Sekcja 24 | 13d | 2026-06-22 A | 2026-07-13 A | 24PY38-012, 24PY38-147 SS+5d | 100% |  |
| 24PY38-153 |  | Monta¿ ruroci¹gów – Sekcja 24 | 8d | 2026-10-13 | 2026-10-22 | 24PY38-152, 24PY38-014 SS+7d |  | 326.9d |
| 24PY38-154 |  | Próba ciœnieniowa – Sekcja 24 | 5d | 2026-10-23 | 2026-10-29 | 24PY38-153 |  | 326.9d |
| 24PY38-155 |  | Izolacje – Sekcja 24 | 7d | 2026-10-30 | 2026-11-09 | 24PY38-154 |  | 326.9d |
| 24PY38-156 |  | Malowanie i oznakowanie – Sekcja 24 | 2d | 2026-11-10 | 2026-11-11 | 24PY38-155 FF+2d |  | 326.9d |
|  | SEKCJA 25 | **Sekcja 25** |  | 2026-07-02 | 2026-11-19 |  |  |  |
| 24PY38-159 |  | Prefabrykacja ruroci¹gów – Sekcja 25 | 6.4d | 2026-07-02 A | 2026-10-05 | 24PY38-012, 24PY38-152 SS+5d | 38% | 329.3d |
| 24PY38-160 |  | Monta¿ ruroci¹gów – Sekcja 25 | 22.6d | 2026-10-07 | 2026-11-05 | 24PY38-159, 24PY38-014 SS+3d |  | 284.3d |
| 24PY38-161 |  | Próba ciœnieniowa – Sekcja 25 | 2d | 2026-11-06 | 2026-11-09 | 24PY38-160 |  | 284.3d |
| 24PY38-162 |  | Izolacje – Sekcja 25 | 6d | 2026-11-10 | 2026-11-17 | 24PY38-161 |  | 284.3d |
| 24PY38-163 |  | Malowanie i oznakowanie – Sekcja 25 | 5d | 2026-11-13 | 2026-11-19 | 24PY38-162 FF+2d |  | 284.3d |
|  | SEKCJA 26 | **Sekcja 26** |  | 2026-07-06 | 2026-12-03 |  |  |  |
| 24PY38-164 |  | Prefabrykacja ruroci¹gów – Sekcja 26 | 11.6d | 2026-07-06 A | 2026-07-23 A | 24PY38-012, 24PY38-159 SS+5d | 100% |  |
| 24PY38-165 |  | Monta¿ ruroci¹gów – Sekcja 26 | 24d | 2026-10-09 | 2026-11-11 | 24PY38-164, 24PY38-014 SS+5d |  | 274.9d |
| 24PY38-166 |  | Próba ciœnieniowa – Sekcja 26 | 2d | 2026-11-12 | 2026-11-13 | 24PY38-165 |  | 274.9d |
| 24PY38-167 |  | Izolacje – Sekcja 26 | 12d | 2026-11-16 | 2026-12-01 | 24PY38-166 |  | 274.9d |
| 24PY38-168 |  | Malowanie i oznakowanie – Sekcja 26 | 5d | 2026-11-27 | 2026-12-03 | 24PY38-167 FF+2d |  | 274.9d |
|  | PROJ | **Projektowanie** |  | 2025-06-04 | 2025-10-07 |  |  |  |
|  | DOKUMENTAC | **Dokumentacja** |  | 2025-06-04 | 2025-10-07 |  |  |  |
| 24PY38-001 |  | Projekt wykonawczy – Turbina gazowa | 72d | 2025-06-04 A | 2025-09-16 A |  | 100% |  |
| 24PY38-002 |  | Uzgodnienie dokumentacji z Inwestorem | 12d | 2025-09-09 A | 2025-09-24 A | 24PY38-001 | 100% |  |
| 24PY38-003 |  | Zatwierdzenie dokumentacji do realizacji | 6d | 2025-09-29 A | 2025-10-07 A | 24PY38-002 | 100% |  |
| 24PY38-004 |  | KM: Dokumentacja zatwierdzona – Turbina gazowa | 0d | 2025-10-03 A | 2025-10-03 | 24PY38-003 | 100% |  |
|  | ROZR | **Rozruch** |  | 2026-12-22 | 2028-02-11 |  |  |  |
|  | KAMIENIE M | **Kamienie milowe** |  | 2027-12-29 | 2028-02-11 |  |  |  |
| 24PY38-177 |  | KM: Zakoñczenie rozruchu – PL5001-SE-01 | 0d | 2027-12-29 | 2027-12-29 | 24PY38-176, 10BW45-097, 12FX78-104, 12PB41-188, 29UF44-097, 15BP15-073, 10TM34-080, 14NX42-181, 30BU48-152, 19FK60-121, 18CX52-133, 11CP59-145, 28BW90-109, 10YD43-073, 27XT34-145 |  | 22.5d |
| 24PY38-178 |  | KM: Synchronizacja bloku z sieci¹ | 0d | 2028-02-11 | 2028-02-11 | 24PY38-177 FS+10d, 18TY85-074 FS+10d, 10PQ22-122 FS+10d |  | 0d |
|  | ROZRUCH | **Rozruch** |  | 2026-12-22 | 2027-01-27 |  |  |  |
| 24PY38-173 |  | Przegl¹d gotowoœci do rozruchu | 3d | 2026-12-22 | 2026-12-24 | 24PY38-172, 24PY38-019, 24PY38-024, 24PY38-026 |  | 262.9d |
| 24PY38-174 |  | Rozruch na zimno | 8d | 2026-12-25 | 2027-01-05 | 24PY38-173 |  | 262.9d |
| 24PY38-175 |  | Rozruch na gor¹co / próby ruchowe | 15d | 2027-01-06 | 2027-01-26 | 24PY38-174 |  | 262.9d |
| 24PY38-176 |  | KM: Odbiór koñcowy – Turbina gazowa | 0d | 2027-01-27 | 2027-01-27 | 24PY38-175 |  | 262.9d |
|  | ZAKU | **Zakupy** |  | 2025-07-02 | 2026-10-02 |  |  |  |
|  | DOSTAWY | **Dostawy** |  | 2025-10-21 | 2026-10-02 |  |  |  |
| 24PY38-008 |  | Produkcja u dostawcy | 238d | 2025-10-21 A | 2026-09-22 A | 24PY38-007 | 100% |  |
| 24PY38-009 |  | Testy FAT | 4d | 2026-09-16 A | 2026-09-22 A | 24PY38-008 | 100% |  |
| 24PY38-010 |  | Transport i dostawa na plac budowy | 12d | 2026-09-24 A | 2026-10-01 | 24PY38-009 | 83% | 256.9d |
| 24PY38-011 |  | KM: Dostawa na budowê – Turbina gazowa | 0d | 2026-10-02 | 2026-10-02 | 24PY38-010 |  | 262.9d |
|  | ZAMÓWIENIA | **Zamówienia** |  | 2025-07-02 | 2025-10-15 |  |  |  |
| 24PY38-005 |  | Zapytanie ofertowe | 24d | 2025-07-02 A | 2025-08-05 A | 24PY38-001 SS+20d | 100% |  |
| 24PY38-006 |  | Analiza i wybór ofert | 17d | 2025-08-04 A | 2025-08-28 A | 24PY38-005 | 100% |  |
| 24PY38-007 |  | Zawarcie umowy / zamówienie | 8d | 2025-10-06 A | 2025-10-15 A | 24PY38-006, 24PY38-004 SS | 100% |  |
|  | 29UF44 | **29UF44 – Pompy skroplin** |  | 2025-01-31 | 2026-10-15 |  |  |  |

| ID | WBS | Task | Duration | Start | Finish | Predecessors | Complete | Total float |
| --- | --- | --- | --- | --- | --- | --- | --- | --- |
|  | BUDO | **Budowa** |  | 2025-12-08 | 2026-10-07 |  |  |  |
|  | AKPIA | **AKPiA** |  | 2026-05-25 | 2026-07-10 |  |  |  |
| 29UF44-092 |  | Monta¿ uk³adów AKPiA | 32d | 2026-05-25 A | 2026-07-10 A | 29UF44-014 SS+5d | 100% |  |
|  | ELEKTRYKA | **Elektryka** |  | 2026-05-22 | 2026-10-02 |  |  |  |
| 29UF44-026 |  | Pod³¹czenia i pomiary – trasa 02 | 9d | 2026-05-22 A | 2026-09-30 | 29UF44-025 FF | 80% | 411.9d |
| 29UF44-073 |  | Uk³adanie kabli – trasa 10 | 9d | 2026-05-27 A | 2026-06-08 A | 29UF44-014 SS+10d | 100% |  |
| 29UF44-085 |  | Uk³adanie kabli – trasa 12 | 15d | 2026-05-27 A | 2026-06-17 A | 29UF44-014 SS+10d | 100% |  |
| 29UF44-037 |  | Uk³adanie kabli – trasa 04 | 6d | 2026-05-28 A | 2026-10-02 | 29UF44-014 SS+10d | 45% | 440.9d |
| 29UF44-061 |  | Uk³adanie kabli – trasa 08 | 15d | 2026-05-28 A | 2026-06-22 A | 29UF44-014 SS+10d | 100% |  |
| 29UF44-025 |  | Uk³adanie kabli – trasa 02 | 5d | 2026-06-01 A | 2026-06-09 A | 29UF44-014 SS+10d | 100% |  |
| 29UF44-049 |  | Uk³adanie kabli – trasa 06 | 5d | 2026-06-01 A | 2026-06-10 A | 29UF44-014 SS+10d | 100% |  |
| 29UF44-038 |  | Pod³¹czenia i pomiary – trasa 04 | 4d | 2026-06-02 A | 2026-06-09 A | 29UF44-037 FF | 100% |  |
| 29UF44-050 |  | Pod³¹czenia i pomiary – trasa 06 | 4d | 2026-06-02 A | 2026-06-05 A | 29UF44-049 FF | 100% |  |
| 29UF44-074 |  | Pod³¹czenia i pomiary – trasa 10 | 7d | 2026-06-03 A | 2026-06-15 A | 29UF44-073 FF | 100% |  |
| 29UF44-062 |  | Pod³¹czenia i pomiary – trasa 08 | 4d | 2026-06-11 A | 2026-06-19 A | 29UF44-061 FF | 100% |  |
| 29UF44-086 |  | Pod³¹czenia i pomiary – trasa 12 | 7d | 2026-06-11 A | 2026-06-23 A | 29UF44-085 FF | 100% |  |
|  | MONTA¯ | **Monta¿** |  | 2026-02-03 | 2026-08-04 |  |  |  |
| 29UF44-013 |  | Monta¿ konstrukcji stalowych | 29d | 2026-02-03 A | 2026-03-16 A | 29UF44-012 | 100% |  |
| 29UF44-014 |  | Monta¿ urz¹dzeñ g³ównych | 55d | 2026-05-18 A | 2026-08-04 A | 29UF44-013, 29UF44-011 | 100% |  |
| 29UF44-093 |  | KM: Zakoñczenie monta¿u – Pompy skroplin | 0d | 2026-07-30 A | 2026-07-30 | 29UF44-084, 29UF44-086, 29UF44-091, 29UF44-092, 29UF44-014 | 100% |  |
|  | ROBOTY BUD | **Roboty budowlane** |  | 2025-12-08 | 2026-02-05 |  |  |  |
| 29UF44-012 |  | Fundamenty i roboty ziemne | 41d | 2025-12-08 A | 2026-02-05 A | 29UF44-007 FS+18d | 100% |  |
|  | RUROCI¥GI | **Ruroci¹gi** |  | 2026-01-29 | 2026-10-07 |  |  |  |
|  | SEKCJA 01 | **Sekcja 01** |  | 2026-01-29 | 2026-10-02 |  |  |  |
| 29UF44-015 |  | Prefabrykacja ruroci¹gów – Sekcja 01 | 11d | 2026-01-29 A | 2026-02-17 A | 29UF44-012 | 100% |  |
| 29UF44-016 |  | Monta¿ ruroci¹gów – Sekcja 01 | 14.5d | 2026-05-19 A | 2026-06-10 A | 29UF44-015, 29UF44-014 SS+4d | 100% |  |
| 29UF44-017 |  | Próba ciœnieniowa – Sekcja 01 | 4d | 2026-06-12 A | 2026-10-02 | 29UF44-016 | 18% | 393.4d |
| 29UF44-019 |  | Malowanie i oznakowanie – Sekcja 01 | 8d | 2026-06-12 A | 2026-06-25 A | 29UF44-018 FF+2d | 100% |  |
| 29UF44-018 |  | Izolacje – Sekcja 01 | 6d | 2026-06-17 A | 2026-06-29 A | 29UF44-017 | 100% |  |
|  | SEKCJA 02 | **Sekcja 02** |  | 2026-02-09 | 2026-06-18 |  |  |  |
| 29UF44-020 |  | Prefabrykacja ruroci¹gów – Sekcja 02 | 7.3d | 2026-02-09 A | 2026-02-19 A | 29UF44-012, 29UF44-015 SS+5d | 100% |  |
| 29UF44-021 |  | Monta¿ ruroci¹gów – Sekcja 02 | 7.2d | 2026-05-22 A | 2026-06-04 A | 29UF44-020, 29UF44-014 SS+4d | 100% |  |
| 29UF44-022 |  | Próba ciœnieniowa – Sekcja 02 | 2d | 2026-06-02 A | 2026-06-03 A | 29UF44-021 | 100% |  |
| 29UF44-023 |  | Izolacje – Sekcja 02 | 9d | 2026-06-02 A | 2026-06-15 A | 29UF44-022 | 100% |  |
| 29UF44-024 |  | Malowanie i oznakowanie – Sekcja 02 | 5d | 2026-06-11 A | 2026-06-18 A | 29UF44-023 FF+2d | 100% |  |
|  | SEKCJA 03 | **Sekcja 03** |  | 2026-02-16 | 2026-09-30 |  |  |  |
|  | PODSEKCJA | **Podsekcja 03.A** |  | 2026-02-16 | 2026-09-30 |  |  |  |
| 29UF44-027 |  | Prefabrykacja ruroci¹gów – Sekcja 03 | 7.8d | 2026-02-16 A | 2026-02-26 A | 29UF44-012, 29UF44-020 SS+5d | 100% |  |
| 29UF44-028 |  | Monta¿ ruroci¹gów – Sekcja 03 | 16.8d | 2026-05-22 A | 2026-06-16 A | 29UF44-027, 29UF44-014 SS+6d | 100% |  |
| 29UF44-029 |  | Próba ciœnieniowa – Sekcja 03 | 2d | 2026-06-16 A | 2026-09-30 | 29UF44-028 | 50% | 422.1d |
| 29UF44-030 |  | Izolacje – Sekcja 03 | 7d | 2026-06-17 A | 2026-06-25 A | 29UF44-029 | 100% |  |
| 29UF44-031 |  | Malowanie i oznakowanie – Sekcja 03 | 3d | 2026-06-24 A | 2026-06-29 A | 29UF44-030 FF+2d | 100% |  |
|  | SEKCJA 04 | **Sekcja 04** |  | 2026-02-19 | 2026-06-19 |  |  |  |
| 29UF44-032 |  | Prefabrykacja ruroci¹gów – Sekcja 04 | 12.5d | 2026-02-19 A | 2026-03-11 A | 29UF44-012, 29UF44-027 SS+5d | 100% |  |
| 29UF44-033 |  | Monta¿ ruroci¹gów – Sekcja 04 | 12.7d | 2026-05-20 A | 2026-06-05 A | 29UF44-032, 29UF44-014 SS+2d | 100% |  |
| 29UF44-034 |  | Próba ciœnieniowa – Sekcja 04 | 2d | 2026-06-03 A | 2026-06-08 A | 29UF44-033 | 100% |  |
| 29UF44-035 |  | Izolacje – Sekcja 04 | 6d | 2026-06-04 A | 2026-06-12 A | 29UF44-034 | 100% |  |
| 29UF44-036 |  | Malowanie i oznakowanie – Sekcja 04 | 8d | 2026-06-05 A | 2026-06-19 A | 29UF44-035 FF+2d | 100% |  |
|  | SEKCJA 05 | **Sekcja 05** |  | 2026-03-03 | 2026-10-07 |  |  |  |
| 29UF44-039 |  | Prefabrykacja ruroci¹gów – Sekcja 05 | 10.3d | 2026-03-03 A | 2026-03-19 A | 29UF44-012, 29UF44-032 SS+5d | 100% |  |
| 29UF44-040 |  | Monta¿ ruroci¹gów – Sekcja 05 | 9.5d | 2026-05-21 A | 2026-10-07 | 29UF44-039, 29UF44-014 SS+6d | 34% | 431.4d |
| 29UF44-041 |  | Próba ciœnieniowa – Sekcja 05 | 2d | 2026-06-03 A | 2026-06-08 A | 29UF44-040 | 100% |  |
| 29UF44-042 |  | Izolacje – Sekcja 05 | 7d | 2026-06-05 A | 2026-06-15 A | 29UF44-041 | 100% |  |
| 29UF44-043 |  | Malowanie i oznakowanie – Sekcja 05 | 8d | 2026-06-10 A | 2026-06-23 A | 29UF44-042 FF+2d | 100% |  |
|  | SEKCJA 06 | **Sekcja 06** |  | 2026-03-05 | 2026-06-19 |  |  |  |
|  | PODSEKCJA | **Podsekcja 06.A** |  | 2026-03-05 | 2026-06-19 |  |  |  |
| 29UF44-044 |  | Prefabrykacja ruroci¹gów – Sekcja 06 | 4d | 2026-03-05 A | 2026-03-11 A | 29UF44-012, 29UF44-039 SS+5d | 100% |  |
| 29UF44-045 |  | Monta¿ ruroci¹gów – Sekcja 06 | 17.7d | 2026-05-15 A | 2026-06-11 A | 29UF44-044, 29UF44-014 SS+2d | 100% |  |
| 29UF44-047 |  | Izolacje – Sekcja 06 | 4d | 2026-06-10 A | 2026-06-17 A | 29UF44-046 | 100% |  |
| 29UF44-046 |  | Próba ciœnieniowa – Sekcja 06 | 2d | 2026-06-11 A | 2026-06-12 A | 29UF44-045 | 100% |  |
| 29UF44-048 |  | Malowanie i oznakowanie – Sekcja 06 | 5d | 2026-06-12 A | 2026-06-19 A | 29UF44-047 FF+2d | 100% |  |
|  | SEKCJA 07 | **Sekcja 07** |  | 2026-03-13 | 2026-06-22 |  |  |  |
| 29UF44-051 |  | Prefabrykacja ruroci¹gów – Sekcja 07 | 13.6d | 2026-03-13 A | 2026-04-02 A | 29UF44-012, 29UF44-044 SS+5d | 100% |  |
| 29UF44-052 |  | Monta¿ ruroci¹gów – Sekcja 07 | 11.9d | 2026-05-19 A | 2026-06-05 A | 29UF44-051, 29UF44-014 SS+5d | 100% |  |
| 29UF44-053 |  | Próba ciœnieniowa – Sekcja 07 | 3d | 2026-06-03 A | 2026-06-08 A | 29UF44-052 | 100% |  |
| 29UF44-054 |  | Izolacje – Sekcja 07 | 4d | 2026-06-08 A | 2026-06-16 A | 29UF44-053 | 100% |  |
| 29UF44-055 |  | Malowanie i oznakowanie – Sekcja 07 | 6d | 2026-06-12 A | 2026-06-22 A | 29UF44-054 FF+2d | 100% |  |
|  | SEKCJA 08 | **Sekcja 08** |  | 2026-03-18 | 2026-07-10 |  |  |  |
| 29UF44-056 |  | Prefabrykacja ruroci¹gów – Sekcja 08 | 10.6d | 2026-03-18 A | 2026-03-31 A | 29UF44-012, 29UF44-051 SS+5d | 100% |  |
| 29UF44-057 |  | Monta¿ ruroci¹gów – Sekcja 08 | 17.6d | 2026-05-25 A | 2026-06-16 A | 29UF44-056, 29UF44-014 SS+8d | 100% |  |

| ID | WBS | Task | Duration | Start | Finish | Predecessors | Complete | Total float |
| --- | --- | --- | --- | --- | --- | --- | --- | --- |
| 29UF44-058 |  | Próba ciœnieniowa – Sekcja 08 | 3d | 2026-06-19 A | 2026-06-25 A | 29UF44-057 | 100% |  |
| 29UF44-059 |  | Izolacje – Sekcja 08 | 11d | 2026-06-24 A | 2026-07-10 A | 29UF44-058 | 100% |  |
| 29UF44-060 |  | Malowanie i oznakowanie – Sekcja 08 | 8d | 2026-06-29 A | 2026-07-09 A | 29UF44-059 FF+2d | 100% |  |
|  | SEKCJA 09 | **Sekcja 09** |  | 2026-03-26 | 2026-07-14 |  |  |  |
|  | PODSEKCJA | **Podsekcja 09.A** |  | 2026-03-26 | 2026-07-14 |  |  |  |
| 29UF44-063 |  | Prefabrykacja ruroci¹gów – Sekcja 09 | 3.6d | 2026-03-26 A | 2026-04-01 A | 29UF44-012, 29UF44-056 SS+5d | 100% |  |
| 29UF44-064 |  | Monta¿ ruroci¹gów – Sekcja 09 | 22.7d | 2026-05-21 A | 2026-06-23 A | 29UF44-063, 29UF44-014 SS+5d | 100% |  |
| 29UF44-065 |  | Próba ciœnieniowa – Sekcja 09 | 5d | 2026-06-19 A | 2026-06-26 A | 29UF44-064 | 100% |  |
| 29UF44-066 |  | Izolacje – Sekcja 09 | 10d | 2026-06-26 A | 2026-07-10 A | 29UF44-065 | 100% |  |
| 29UF44-067 |  | Malowanie i oznakowanie – Sekcja 09 | 5d | 2026-07-07 A | 2026-07-14 A | 29UF44-066 FF+2d | 100% |  |
|  | SEKCJA 10 | **Sekcja 10** |  | 2026-04-01 | 2026-07-09 |  |  |  |
| 29UF44-068 |  | Prefabrykacja ruroci¹gów – Sekcja 10 | 5.3d | 2026-04-01 A | 2026-04-10 A | 29UF44-012, 29UF44-063 SS+5d | 100% |  |
| 29UF44-069 |  | Monta¿ ruroci¹gów – Sekcja 10 | 18d | 2026-05-18 A | 2026-06-11 A | 29UF44-068, 29UF44-014 SS+2d | 100% |  |
| 29UF44-070 |  | Próba ciœnieniowa – Sekcja 10 | 6d | 2026-06-11 A | 2026-06-18 A | 29UF44-069 | 100% |  |
| 29UF44-071 |  | Izolacje – Sekcja 10 | 12d | 2026-06-18 A | 2026-07-03 A | 29UF44-070 | 100% |  |
| 29UF44-072 |  | Malowanie i oznakowanie – Sekcja 10 | 7d | 2026-06-26 A | 2026-07-09 A | 29UF44-071 FF+2d | 100% |  |
|  | SEKCJA 11 | **Sekcja 11** |  | 2026-04-14 | 2026-09-30 |  |  |  |
| 29UF44-075 |  | Prefabrykacja ruroci¹gów – Sekcja 11 | 12.5d | 2026-04-14 A | 2026-04-29 A | 29UF44-012, 29UF44-068 SS+5d | 100% |  |
| 29UF44-076 |  | Monta¿ ruroci¹gów – Sekcja 11 | 15.2d | 2026-05-14 A | 2026-06-04 A | 29UF44-075, 29UF44-014 SS+1d | 100% |  |
| 29UF44-077 |  | Próba ciœnieniowa – Sekcja 11 | 4d | 2026-06-05 A | 2026-06-10 A | 29UF44-076 | 100% |  |
| 29UF44-079 |  | Malowanie i oznakowanie – Sekcja 11 | 5d | 2026-06-12 A | 2026-06-19 A | 29UF44-078 FF+2d | 100% |  |
| 29UF44-078 |  | Izolacje – Sekcja 11 | 3d | 2026-06-15 A | 2026-09-30 | 29UF44-077 | 67% | 429.7d |
|  | SEKCJA 12 | **Sekcja 12** |  | 2026-04-17 | 2026-07-10 |  |  |  |
|  | PODSEKCJA | **Podsekcja 12.A** |  | 2026-04-17 | 2026-07-10 |  |  |  |
| 29UF44-080 |  | Prefabrykacja ruroci¹gów – Sekcja 12 | 12d | 2026-04-17 A | 2026-05-04 A | 29UF44-012, 29UF44-075 SS+5d | 100% |  |
| 29UF44-081 |  | Monta¿ ruroci¹gów – Sekcja 12 | 20.1d | 2026-05-22 A | 2026-06-22 A | 29UF44-080, 29UF44-014 SS+7d | 100% |  |
| 29UF44-082 |  | Próba ciœnieniowa – Sekcja 12 | 2d | 2026-06-23 A | 2026-06-29 A | 29UF44-081 | 100% |  |
| 29UF44-083 |  | Izolacje – Sekcja 12 | 10d | 2026-06-24 A | 2026-07-10 A | 29UF44-082 | 100% |  |
| 29UF44-084 |  | Malowanie i oznakowanie – Sekcja 12 | 7d | 2026-06-29 A | 2026-07-08 A | 29UF44-083 FF+2d | 100% |  |
|  | SEKCJA 13 | **Sekcja 13** |  | 2026-04-28 | 2026-06-30 |  |  |  |
| 29UF44-087 |  | Prefabrykacja ruroci¹gów – Sekcja 13 | 9.4d | 2026-04-28 A | 2026-05-11 A | 29UF44-012, 29UF44-080 SS+5d | 100% |  |
| 29UF44-088 |  | Monta¿ ruroci¹gów – Sekcja 13 | 9.2d | 2026-05-18 A | 2026-05-28 A | 29UF44-087, 29UF44-014 SS+4d | 100% |  |
| 29UF44-089 |  | Próba ciœnieniowa – Sekcja 13 | 3d | 2026-06-02 A | 2026-06-09 A | 29UF44-088 | 100% |  |
| 29UF44-090 |  | Izolacje – Sekcja 13 | 12d | 2026-06-05 A | 2026-06-24 A | 29UF44-089 | 100% |  |
| 29UF44-091 |  | Malowanie i oznakowanie – Sekcja 13 | 2d | 2026-06-25 A | 2026-06-30 A | 29UF44-090 FF+2d | 100% |  |
|  | PROJ | **Projektowanie** |  | 2025-01-31 | 2026-10-15 |  |  |  |
|  | DOKUMENTAC | **Dokumentacja** |  | 2025-01-31 | 2026-10-15 |  |  |  |
| 29UF44-001 |  | Projekt wykonawczy – Pompy skroplin | 51d | 2025-01-31 A | 2025-04-14 A |  | 100% |  |
| 29UF44-002 |  | Uzgodnienie dokumentacji z Inwestorem | 27d | 2025-04-17 A | 2026-10-15 | 29UF44-001 | 56% | 304.2d |
| 29UF44-003 |  | Zatwierdzenie dokumentacji do realizacji | 6d | 2025-05-19 A | 2025-05-26 A | 29UF44-002 | 100% |  |
| 29UF44-004 |  | KM: Dokumentacja zatwierdzona – Pompy skroplin | 0d | 2025-05-29 A | 2025-05-29 | 29UF44-003 | 100% |  |
|  | ROZR | **Rozruch** |  | 2026-07-30 | 2026-08-27 |  |  |  |
|  | ROZRUCH | **Rozruch** |  | 2026-07-30 | 2026-08-27 |  |  |  |
| 29UF44-094 |  | Przegl¹d gotowoœci do rozruchu | 3d | 2026-07-30 A | 2026-08-03 A | 29UF44-093, 29UF44-019, 29UF44-024, 29UF44-026 | 100% |  |
| 29UF44-095 |  | Rozruch na zimno | 6d | 2026-07-31 A | 2026-08-07 A | 29UF44-094 | 100% |  |
| 29UF44-096 |  | Rozruch na gor¹co / próby ruchowe | 11d | 2026-08-11 A | 2026-08-27 A | 29UF44-095 | 100% |  |
| 29UF44-097 |  | KM: Odbiór koñcowy – Pompy skroplin | 0d | 2026-08-27 | 2026-08-27 A | 29UF44-096 | 100% |  |
|  | ZAKU | **Zakupy** |  | 2025-02-28 | 2026-05-15 |  |  |  |
|  | DOSTAWY | **Dostawy** |  | 2025-11-11 | 2026-05-15 |  |  |  |
| 29UF44-008 |  | Produkcja u dostawcy | 107d | 2025-11-11 A | 2026-04-08 A | 29UF44-007 | 100% |  |
| 29UF44-009 |  | Testy FAT | 4d | 2026-04-08 A | 2026-04-15 A | 29UF44-008 | 100% |  |
| 29UF44-010 |  | Transport i dostawa na plac budowy | 22d | 2026-04-16 A | 2026-05-15 A | 29UF44-009 | 100% |  |
| 29UF44-011 |  | KM: Dostawa na budowê – Pompy skroplin | 0d | 2026-05-15 A | 2026-05-15 | 29UF44-010 | 100% |  |
|  | ZAMÓWIENIA | **Zamówienia** |  | 2025-02-28 | 2025-11-11 |  |  |  |
| 29UF44-005 |  | Zapytanie ofertowe | 22d | 2025-02-28 A | 2025-03-31 A | 29UF44-001 SS+20d | 100% |  |
| 29UF44-006 |  | Analiza i wybór ofert | 13d | 2025-04-03 A | 2025-04-24 A | 29UF44-005 | 100% |  |
| 29UF44-007 |  | Zawarcie umowy / zamówienie | 10d | 2025-10-28 A | 2025-11-11 A | 29UF44-006, 29UF44-004 SS, 24PY38-004 FS+14d, 12PB41-004 FS+2d | 100% |  |

## Version 2 (data date 2026-10-07, saved 2026-10-07, file PL5001_SYNTH_schedule_Rev0H_DD07102026.xer)

Note of the change: M0: szkielet Vite+React+TS, guard, deploy, dane syntetyczne

Last finish 2028-02-11 → 2028-04-24 (+73d). Complete tasks 1203 → 1310.

Changed:

| ID | Task | Start | Finish | Complete | Total float |
| --- | --- | --- | --- | --- | --- |
| WYSPA_KOT£OW | **Wyspa kot³owa** |  | 2027-12-29 → 2028-01-24 (+26d) |  |  |
| 10YD43 | **10YD43 – Odgazowywacz** |  | 2027-01-28 → 2027-02-09 (+12d) |  |  |
| BUDO | **Budowa** |  | 2026-12-08 → 2026-12-18 (+10d) |  |  |
| AKPIA | **AKPiA** |  | 2026-11-09 → 2026-11-04 (-5d) |  |  |
| 10YD43-068 | Monta¿ uk³adów AKPiA | 2026-10-07 A | 2026-11-09 → 2026-11-04 (-5d) | 0% → 10% | 282.9d → 333.6d |
| ELEKTRYKA | **Elektryka** |  | 2026-11-10 → 2026-11-26 (+16d) |  |  |
| 10YD43-049 | Uk³adanie kabli – trasa 06 | 2026-10-14 → 2026-11-06 (+23d) | 2026-11-03 → 2026-11-26 (+23d) |  | 332.9d → 366.6d |
| 10YD43-050 | Pod³¹czenia i pomiary – trasa 06 | 2026-10-22 → 2026-11-16 (+25d) | 2026-11-03 → 2026-11-26 (+23d) |  | 332.9d → 366.6d |
| MONTA¯ | **Monta¿** |  | 2026-11-20 → 2026-12-08 (+18d) |  |  |
| 10YD43-014 | Monta¿ urz¹dzeñ g³ównych |  | 2026-10-20 → 2026-12-07 (+48d) | 72% → 22% | 254.9d → 305.6d |
| 10YD43-069 | KM: Zakoñczenie monta¿u – Odgazowywacz | 2026-11-20 → 2026-12-08 (+18d) | 2026-11-20 → 2026-12-08 (+18d) |  | 274.3d → 313.1d |
| RUROCI¥GI | **Ruroci¹gi** |  | 2026-12-08 → 2026-12-18 (+10d) |  |  |
| SEKCJA 01 | **Sekcja 01** |  | 2026-11-30 → 2026-12-18 (+18d) |  |  |
| 10YD43-018 | Izolacje – Sekcja 01 | 2026-11-18 → 2026-12-08 (+20d) | 2026-11-26 → 2026-12-16 (+20d) |  | 267.6d → 304.6d |
| 10YD43-019 | Malowanie i oznakowanie – Sekcja 01 | 2026-11-19 → 2026-12-09 (+20d) | 2026-11-30 → 2026-12-18 (+18d) |  | 267.6d → 304.6d |
| SEKCJA 03 | **Sekcja 03** |  | 2026-11-09 → 2026-10-26 (-14d) |  |  |
| PODSEKCJA | **Podsekcja 03.A** |  | 2026-11-09 → 2026-10-26 (-14d) |  |  |
| 10YD43-028 | Monta¿ ruroci¹gów – Sekcja 03 | 2026-10-05 → 2026-10-07 A (+2d) | 2026-10-27 → 2026-10-12 (-15d) | 0% → 76% | 328.7d → 377.4d |
| 10YD43-029 | Próba ciœnieniowa – Sekcja 03 | 2026-10-28 → 2026-10-13 (-15d) | 2026-10-30 → 2026-10-15 (-15d) |  | 328.7d → 390.5d |
| 10YD43-030 | Izolacje – Sekcja 03 | 2026-11-02 → 2026-10-16 (-17d) | 2026-11-05 → 2026-10-21 (-15d) |  | 328.7d → 390.5d |
| 10YD43-031 | Malowanie i oznakowanie – Sekcja 03 | 2026-11-06 → 2026-10-23 (-14d) | 2026-11-09 → 2026-10-26 (-14d) |  | 328.7d → 389.6d |
| 10YD43-033 | Monta¿ ruroci¹gów – Sekcja 04 | 2026-10-05 → 2026-10-02 A (-3d) |  | 0% → 18% | 332.2d → 383.9d |
| SEKCJA 07 | **Sekcja 07** | 2026-09-30 → 2026-02-23 (-219d) | 2026-11-05 → 2026-11-11 (+6d) |  |  |
| 10YD43-051 | Prefabrykacja ruroci¹gów – Sekcja 07 | 2026-09-30 → 2026-02-23 A (-219d) | 2026-10-13 → 2026-03-06 A (-221d) | 0% → 100% | 264.1d → none |
| 10YD43-052 | Monta¿ ruroci¹gów – Sekcja 07 | 2026-09-30 A → 2026-10-06 A (+6d) | 2026-10-14 → 2026-10-21 (+7d) | 49% → 50% | 320.3d → 367d |
| 10YD43-053 | Próba ciœnieniowa – Sekcja 07 | 2026-10-15 → 2026-10-22 (+7d) | 2026-10-16 → 2026-10-23 (+7d) |  | 331.4d → 377.3d |
| 10YD43-054 | Izolacje – Sekcja 07 | 2026-10-20 → 2026-10-26 (+6d) | 2026-11-03 → 2026-11-09 (+6d) |  | 330.9d → 377.3d |
| 10YD43-055 | Malowanie i oznakowanie – Sekcja 07 | 2026-11-04 → 2026-11-10 (+6d) | 2026-11-05 → 2026-11-11 (+6d) |  | 330.9d → 377.3d |
| SEKCJA 08 | **Sekcja 08** |  | 2026-10-29 → 2026-10-26 (-3d) |  |  |
| 10YD43-057 | Monta¿ ruroci¹gów – Sekcja 08 | 2026-10-05 → 2026-10-07 A (+2d) | 2026-10-12 → 2026-10-07 (-5d) | 0% → 77% | 289d → 337.7d |
| 10YD43-058 | Próba ciœnieniowa – Sekcja 08 | 2026-10-13 → 2026-10-08 (-5d) | 2026-10-16 → 2026-10-13 (-3d) |  | 289d → 343d |
| 10YD43-059 | Izolacje – Sekcja 08 | 2026-10-19 → 2026-10-14 (-5d) | 2026-10-27 → 2026-10-22 (-5d) |  | 289d → 343d |
| 10YD43-060 | Malowanie i oznakowanie – Sekcja 08 | 2026-10-21 → 2026-10-16 (-5d) | 2026-10-29 → 2026-10-26 (-3d) |  | 289d → 343d |
| ROZR | **Rozruch** | 2026-12-09 → 2026-12-21 (+12d) | 2027-01-28 → 2027-02-09 (+12d) |  |  |
| ROZRUCH | **Rozruch** | 2026-12-09 → 2026-12-21 (+12d) | 2027-01-28 → 2027-02-09 (+12d) |  |  |
| 10YD43-070 | Przegl¹d gotowoœci do rozruchu | 2026-12-09 → 2026-12-21 (+12d) | 2026-12-18 → 2026-12-30 (+12d) |  | 261.5d → 304.6d |
| 10YD43-071 | Rozruch na zimno | 2026-12-21 → 2026-12-31 (+10d) | 2026-12-31 → 2027-01-12 (+12d) |  | 261.5d → 304.6d |
| 10YD43-072 | Rozruch na gor¹co / próby ruchowe | 2027-01-01 → 2027-01-13 (+12d) | 2027-01-27 → 2027-02-08 (+12d) |  | 261.5d → 304.6d |
| 10YD43-073 | KM: Odbiór koñcowy – Odgazowywacz | 2027-01-28 → 2027-02-09 (+12d) | 2027-01-28 → 2027-02-09 (+12d) |  | 261.5d → 304.6d |
| 10YD43-011 | KM: Dostawa na budowê – Odgazowywacz | 2026-09-30 A |  | 0% → 100% | 254.9d → none |
| 11CP59 | **11CP59 – Pompy wody zasilaj¹cej** |  | 2027-07-22 → 2027-08-26 (+35d) |  |  |
| BUDO | **Budowa** |  | 2027-06-15 → 2027-07-16 (+31d) |  |  |
| AKPIA | **AKPiA** | 2027-04-19 → 2027-04-21 (+2d) | 2027-06-10 → 2027-06-14 (+4d) |  |  |
| 11CP59-140 | Monta¿ uk³adów AKPiA | 2027-04-19 → 2027-04-21 (+2d) | 2027-06-10 → 2027-06-14 (+4d) |  | 136.8d → 184.7d |
| ELEKTRYKA | **Elektryka** | 2027-04-22 → 2027-04-26 (+4d) | 2027-05-21 → 2027-07-02 (+42d) |  |  |
| 11CP59-038 | Pod³¹czenia i pomiary – trasa 04 | 2027-04-22 → 2027-04-26 (+4d) | 2027-05-05 → 2027-05-07 (+2d) |  | 201.8d → 249.7d |
| 11CP59-050 | Pod³¹czenia i pomiary – trasa 06 | 2027-04-23 → 2027-04-27 (+4d) | 2027-05-06 → 2027-05-10 (+4d) |  | 200.8d → 248.7d |
| 11CP59-025 | Uk³adanie kabli – trasa 02 | 2027-04-26 → 2027-04-28 (+2d) | 2027-05-19 → 2027-05-21 (+2d) |  | 152.8d → 200.7d |
| 11CP59-037 | Uk³adanie kabli – trasa 04 | 2027-04-26 → 2027-04-28 (+2d) | 2027-05-05 → 2027-05-07 (+2d) |  | 201.8d → 249.7d |
| 11CP59-049 | Uk³adanie kabli – trasa 06 | 2027-04-26 → 2027-04-28 (+2d) | 2027-05-06 → 2027-05-10 (+4d) |  | 200.8d → 248.7d |
| 11CP59-073 | Uk³adanie kabli – trasa 10 | 2027-04-26 → 2027-04-28 (+2d) | 2027-05-11 → 2027-05-13 (+2d) |  | 197.8d → 245.7d |
| 11CP59-085 | Uk³adanie kabli – trasa 12 | 2027-04-26 → 2027-04-28 (+2d) | 2027-04-29 → 2027-05-03 (+4d) |  | 205.8d → 253.7d |
| 11CP59-086 | Pod³¹czenia i pomiary – trasa 12 | 2027-04-26 → 2027-04-28 (+2d) | 2027-04-29 → 2027-05-03 (+4d) |  | 205.8d → 253.7d |
| 11CP59-097 | Uk³adanie kabli – trasa 14 | 2027-04-26 → 2027-04-28 (+2d) | 2027-05-20 → 2027-05-24 (+4d) |  | 190.8d → 238.7d |
| 11CP59-109 | Uk³adanie kabli – trasa 16 | 2027-04-26 → 2027-04-28 (+2d) | 2027-05-18 → 2027-05-20 (+2d) |  | 192.8d → 240.7d |
| 11CP59-121 | Uk³adanie kabli – trasa 18 | 2027-04-26 → 2027-04-28 (+2d) | 2027-05-17 → 2027-05-19 (+2d) |  | 193.8d → 241.7d |
| 11CP59-133 | Uk³adanie kabli – trasa 20 | 2027-04-26 → 2027-04-28 (+2d) | 2027-05-04 → 2027-05-06 (+2d) |  | 163.8d → 211.7d |
| 11CP59-134 | Pod³¹czenia i pomiary – trasa 20 | 2027-04-30 → 2027-05-04 (+4d) | 2027-05-04 → 2027-05-06 (+2d) |  | 163.8d → 211.7d |
| 11CP59-074 | Pod³¹czenia i pomiary – trasa 10 | 2027-05-04 → 2027-05-06 (+2d) | 2027-05-11 → 2027-05-13 (+2d) |  | 197.8d → 245.7d |
| 11CP59-122 | Pod³¹czenia i pomiary – trasa 18 | 2027-05-04 → 2027-05-06 (+2d) | 2027-05-17 → 2027-05-19 (+2d) |  | 193.8d → 241.7d |
| 11CP59-026 | Pod³¹czenia i pomiary – trasa 02 | 2027-05-06 → 2027-05-10 (+4d) | 2027-05-19 → 2027-05-21 (+2d) |  | 152.8d → 200.7d |
| 11CP59-098 | Pod³¹czenia i pomiary – trasa 14 | 2027-05-10 → 2027-05-12 (+2d) | 2027-05-20 → 2027-05-24 (+4d) |  | 190.8d → 238.7d |
| 11CP59-110 | Pod³¹czenia i pomiary – trasa 16 | 2027-05-11 → 2027-05-13 (+2d) | 2027-05-18 → 2027-05-20 (+2d) |  | 192.8d → 240.7d |
| 11CP59-061 | Uk³adanie kabli – trasa 08 | 2027-04-26 → 2027-06-07 (+42d) | 2027-05-21 → 2027-07-02 (+42d) |  | 189.8d → 210.6d |
| 11CP59-062 | Pod³¹czenia i pomiary – trasa 08 | 2027-05-12 → 2027-06-23 (+42d) | 2027-05-21 → 2027-07-02 (+42d) |  | 189.8d → 210.6d |
| MONTA¯ | **Monta¿** |  | 2027-06-11 → 2027-07-16 (+35d) |  |  |
| 11CP59-014 | Monta¿ urz¹dzeñ g³ównych | 2027-04-12 → 2027-04-14 (+2d) | 2027-05-12 → 2027-05-14 (+2d) |  | 136.8d → 184.7d |
| 11CP59-141 | KM: Zakoñczenie monta¿u – Pompy wody zasilaj¹cej | 2027-06-11 → 2027-07-16 (+35d) | 2027-06-11 → 2027-07-16 (+35d) |  | 136.8d → 162.6d |
| RUROCI¥GI | **Ruroci¹gi** |  | 2027-06-15 → 2027-07-15 (+30d) |  |  |
| SEKCJA 01 | **Sekcja 01** |  | 2027-05-24 → 2027-06-17 (+24d) |  |  |

| ID | Task | Start | Finish | Total float |
| --- | --- | --- | --- | --- |
| 11CP59-016 | Monta¿ ruroci¹gów – Sekcja 01 | 2027-04-20 → 2027-04-22 (+2d) | 2027-05-03 → 2027-05-06 (+3d) | 149d → 196.9d |
| 11CP59-017 | Próba ciœnieniowa – Sekcja 01 | 2027-05-04 → 2027-05-28 (+24d) | 2027-05-10 → 2027-06-03 (+24d) | 149d → 182.6d |
| 11CP59-018 | Izolacje – Sekcja 01 | 2027-05-11 → 2027-06-04 (+24d) | 2027-05-20 → 2027-06-15 (+26d) | 149d → 182.6d |
| 11CP59-019 | Malowanie i oznakowanie – Sekcja 01 | 2027-05-14 → 2027-06-09 (+26d) | 2027-05-24 → 2027-06-17 (+24d) | 149d → 182.6d |
| SEKCJA 02 | **Sekcja 02** |  | 2027-06-03 → 2027-06-08 (+5d) |  |
| 11CP59-021 | Monta¿ ruroci¹gów – Sekcja 02 | 2027-04-19 → 2027-04-21 (+2d) | 2027-05-20 → 2027-05-25 (+5d) | 141d → 188.9d |
| 11CP59-022 | Próba ciœnieniowa – Sekcja 02 | 2027-05-21 → 2027-05-26 (+5d) | 2027-05-27 → 2027-06-01 (+5d) | 141d → 188.9d |
| 11CP59-023 | Izolacje – Sekcja 02 | 2027-05-28 → 2027-06-02 (+5d) | 2027-06-01 → 2027-06-04 (+3d) | 141d → 188.9d |
| 11CP59-024 | Malowanie i oznakowanie – Sekcja 02 | 2027-06-01 → 2027-06-04 (+3d) | 2027-06-03 → 2027-06-08 (+5d) | 141d → 188.9d |
| SEKCJA 03 | **Sekcja 03** |  | 2027-05-18 → 2027-05-21 (+3d) |  |
| PODSEKCJA | **Podsekcja 03.A** |  | 2027-05-18 → 2027-05-21 (+3d) |  |
| 11CP59-028 | Monta¿ ruroci¹gów – Sekcja 03 | 2027-04-20 → 2027-04-22 (+2d) | 2027-05-03 → 2027-05-06 (+3d) | 192.7d → 240.6d |
| 11CP59-029 | Próba ciœnieniowa – Sekcja 03 | 2027-05-04 → 2027-05-07 (+3d) | 2027-05-05 → 2027-05-10 (+5d) | 192.7d → 240.6d |
| 11CP59-030 | Izolacje – Sekcja 03 | 2027-05-06 → 2027-05-11 (+5d) | 2027-05-14 → 2027-05-19 (+5d) | 192.7d → 240.6d |
| 11CP59-031 | Malowanie i oznakowanie – Sekcja 03 | 2027-05-13 → 2027-05-18 (+5d) | 2027-05-18 → 2027-05-21 (+3d) | 192.7d → 240.6d |
| SEKCJA 04 | **Sekcja 04** |  | 2027-06-08 → 2027-06-10 (+2d) |  |
| 11CP59-033 | Monta¿ ruroci¹gów – Sekcja 04 | 2027-04-15 → 2027-04-19 (+4d) | 2027-05-17 → 2027-05-19 (+2d) | 177.9d → 225.8d |
| 11CP59-034 | Próba ciœnieniowa – Sekcja 04 | 2027-05-18 → 2027-05-20 (+2d) | 2027-05-24 → 2027-05-26 (+2d) | 177.9d → 225.8d |
| 11CP59-035 | Izolacje – Sekcja 04 | 2027-05-25 → 2027-05-27 (+2d) | 2027-06-04 → 2027-06-08 (+4d) | 177.9d → 225.8d |
| 11CP59-036 | Malowanie i oznakowanie – Sekcja 04 | 2027-05-28 → 2027-06-01 (+4d) | 2027-06-08 → 2027-06-10 (+2d) | 177.9d → 225.8d |
| SEKCJA 05 | **Sekcja 05** |  | 2027-05-14 → 2027-05-19 (+5d) |  |
| 11CP59-040 | Monta¿ ruroci¹gów – Sekcja 05 | 2027-04-15 → 2027-04-19 (+4d) | 2027-04-29 → 2027-05-04 (+5d) | 194d → 241.9d |
| 11CP59-041 | Próba ciœnieniowa – Sekcja 05 | 2027-04-30 → 2027-05-05 (+5d) | 2027-05-05 → 2027-05-10 (+5d) | 194d → 241.9d |
| 11CP59-042 | Izolacje – Sekcja 05 | 2027-05-06 → 2027-05-11 (+5d) | 2027-05-12 → 2027-05-17 (+5d) | 194d → 241.9d |
| 11CP59-043 | Malowanie i oznakowanie – Sekcja 05 | 2027-05-11 → 2027-05-14 (+3d) | 2027-05-14 → 2027-05-19 (+5d) | 194d → 241.9d |
| SEKCJA 06 | **Sekcja 06** |  | 2027-05-18 → 2027-05-21 (+3d) |  |
| PODSEKCJA | **Podsekcja 06.A** |  | 2027-05-18 → 2027-05-21 (+3d) |  |
| 11CP59-045 | Monta¿ ruroci¹gów – Sekcja 06 | 2027-04-14 → 2027-04-16 (+2d) | 2027-04-26 → 2027-04-29 (+3d) | 192.4d → 240.3d |
| 11CP59-046 | Próba ciœnieniowa – Sekcja 06 | 2027-04-27 → 2027-04-30 (+3d) | 2027-05-04 → 2027-05-07 (+3d) | 192.4d → 240.3d |
| 11CP59-047 | Izolacje – Sekcja 06 | 2027-05-05 → 2027-05-10 (+5d) | 2027-05-14 → 2027-05-19 (+5d) | 192.4d → 240.3d |
| 11CP59-048 | Malowanie i oznakowanie – Sekcja 06 | 2027-05-12 → 2027-05-17 (+5d) | 2027-05-18 → 2027-05-21 (+3d) | 192.4d → 240.3d |
| SEKCJA 07 | **Sekcja 07** |  | 2027-05-25 → 2027-06-07 (+13d) |  |
| 11CP59-052 | Monta¿ ruroci¹gów – Sekcja 07 | 2027-04-16 → 2027-04-29 (+13d) | 2027-05-06 → 2027-05-19 (+13d) | 187.8d → 229.6d |
| 11CP59-053 | Próba ciœnieniowa – Sekcja 07 | 2027-05-07 → 2027-05-20 (+13d) | 2027-05-14 → 2027-05-27 (+13d) | 187.8d → 229.6d |
| 11CP59-054 | Izolacje – Sekcja 07 | 2027-05-17 → 2027-05-28 (+11d) | 2027-05-21 → 2027-06-03 (+13d) | 187.8d → 229.6d |
| 11CP59-055 | Malowanie i oznakowanie – Sekcja 07 | 2027-05-24 → 2027-06-04 (+11d) | 2027-05-25 → 2027-06-07 (+13d) | 187.8d → 229.6d |
| SEKCJA 08 | **Sekcja 08** |  | 2027-06-15 → 2027-06-28 (+13d) |  |
| 11CP59-057 | Monta¿ ruroci¹gów – Sekcja 08 | 2027-04-20 → 2027-04-22 (+2d) | 2027-05-20 → 2027-05-24 (+4d) | 172.9d → 220.8d |
| 11CP59-058 | Próba ciœnieniowa – Sekcja 08 | 2027-05-21 → 2027-05-25 (+4d) | 2027-05-27 → 2027-05-31 (+4d) | 172.9d → 220.8d |
| 11CP59-059 | Izolacje – Sekcja 08 | 2027-05-28 → 2027-06-10 (+13d) | 2027-06-11 → 2027-06-24 (+13d) | 172.9d → 214.6d |
| 11CP59-060 | Malowanie i oznakowanie – Sekcja 08 | 2027-06-10 → 2027-06-23 (+13d) | 2027-06-15 → 2027-06-28 (+13d) | 172.9d → 214.6d |
| SEKCJA 09 | **Sekcja 09** |  | 2027-05-21 → 2027-05-26 (+5d) |  |
| PODSEKCJA | **Podsekcja 09.A** |  | 2027-05-21 → 2027-05-26 (+5d) |  |
| 11CP59-064 | Monta¿ ruroci¹gów – Sekcja 09 | 2027-04-21 → 2027-04-23 (+2d) | 2027-05-05 → 2027-05-10 (+5d) | 189.3d → 237.2d |
| 11CP59-065 | Próba ciœnieniowa – Sekcja 09 | 2027-05-06 → 2027-05-11 (+5d) | 2027-05-07 → 2027-05-12 (+5d) | 189.3d → 237.2d |
| 11CP59-066 | Izolacje – Sekcja 09 | 2027-05-10 → 2027-05-13 (+3d) | 2027-05-19 → 2027-05-24 (+5d) | 189.3d → 237.2d |
| 11CP59-067 | Malowanie i oznakowanie – Sekcja 09 | 2027-05-18 → 2027-05-21 (+3d) | 2027-05-21 → 2027-05-26 (+5d) | 189.3d → 237.2d |
| SEKCJA 10 | **Sekcja 10** |  | 2027-05-20 → 2027-05-24 (+4d) |  |
| 11CP59-069 | Monta¿ ruroci¹gów – Sekcja 10 | 2027-04-13 → 2027-04-15 (+2d) | 2027-04-30 → 2027-05-04 (+4d) | 190.8d → 238.7d |
| 11CP59-070 | Próba ciœnieniowa – Sekcja 10 | 2027-05-03 → 2027-05-05 (+2d) | 2027-05-10 → 2027-05-12 (+2d) | 190.8d → 238.7d |
| 11CP59-071 | Izolacje – Sekcja 10 | 2027-05-11 → 2027-05-13 (+2d) | 2027-05-18 → 2027-05-20 (+2d) | 190.8d → 238.7d |
| 11CP59-072 | Malowanie i oznakowanie – Sekcja 10 | 2027-05-13 → 2027-05-17 (+4d) | 2027-05-20 → 2027-05-24 (+4d) | 190.8d → 238.7d |
| SEKCJA 11 | **Sekcja 11** |  | 2027-06-04 → 2027-06-09 (+5d) |  |
| 11CP59-076 | Monta¿ ruroci¹gów – Sekcja 11 | 2027-04-26 → 2027-04-28 (+2d) | 2027-05-10 → 2027-05-13 (+3d) | 179d → 226.9d |
| 11CP59-077 | Próba ciœnieniowa – Sekcja 11 | 2027-05-11 → 2027-05-14 (+3d) | 2027-05-18 → 2027-05-21 (+3d) | 179d → 226.9d |
| 11CP59-078 | Izolacje – Sekcja 11 | 2027-05-19 → 2027-05-24 (+5d) | 2027-06-02 → 2027-06-07 (+5d) | 179d → 226.9d |
| 11CP59-079 | Malowanie i oznakowanie – Sekcja 11 | 2027-06-01 → 2027-06-04 (+3d) | 2027-06-04 → 2027-06-09 (+5d) | 179d → 226.9d |
| SEKCJA 12 | **Sekcja 12** |  | 2027-05-24 → 2027-05-27 (+3d) |  |
| PODSEKCJA | **Podsekcja 12.A** |  | 2027-05-24 → 2027-05-27 (+3d) |  |
| 11CP59-081 | Monta¿ ruroci¹gów – Sekcja 12 | 2027-04-19 → 2027-04-21 (+2d) | 2027-04-30 → 2027-05-05 (+5d) | 188.1d → 236d |
| 11CP59-082 | Próba ciœnieniowa – Sekcja 12 | 2027-05-03 → 2027-05-06 (+3d) | 2027-05-04 → 2027-05-07 (+3d) | 188.1d → 236d |
| 11CP59-083 | Izolacje – Sekcja 12 | 2027-05-05 → 2027-05-10 (+5d) | 2027-05-20 → 2027-05-25 (+5d) | 188.1d → 236d |
| 11CP59-084 | Malowanie i oznakowanie – Sekcja 12 | 2027-05-19 → 2027-05-24 (+5d) | 2027-05-24 → 2027-05-27 (+3d) | 188.1d → 236d |
| SEKCJA 13 | **Sekcja 13** |  | 2027-06-08 → 2027-06-11 (+3d) |  |
| 11CP59-088 | Monta¿ ruroci¹gów – Sekcja 13 | 2027-04-22 → 2027-04-26 (+4d) | 2027-05-20 → 2027-05-25 (+5d) | 177.4d → 225.3d |
| 11CP59-089 | Próba ciœnieniowa – Sekcja 13 | 2027-05-21 → 2027-05-26 (+5d) | 2027-05-28 → 2027-06-02 (+5d) | 177.4d → 225.3d |
| 11CP59-090 | Izolacje – Sekcja 13 | 2027-05-31 → 2027-06-03 (+3d) | 2027-06-04 → 2027-06-09 (+5d) | 177.4d → 225.3d |
| 11CP59-091 | Malowanie i oznakowanie – Sekcja 13 | 2027-06-02 → 2027-06-07 (+5d) | 2027-06-08 → 2027-06-11 (+3d) | 177.4d → 225.3d |
| SEKCJA 14 | **Sekcja 14** |  | 2027-05-24 → 2027-05-27 (+3d) |  |
| 11CP59-093 | Monta¿ ruroci¹gów – Sekcja 14 | 2027-04-22 → 2027-04-26 (+4d) | 2027-05-04 → 2027-05-07 (+3d) | 188.2d → 236.1d |

| ID | Task | Start | Finish | Complete | Total float |
| --- | --- | --- | --- | --- | --- |
| 11CP59-094 | Próba ciœnieniowa – Sekcja 14 | 2027-05-05 → 2027-05-10 (+5d) | 2027-05-11 → 2027-05-14 (+3d) |  | 188.2d → 236.1d |
| 11CP59-095 | Izolacje – Sekcja 14 | 2027-05-12 → 2027-05-17 (+5d) | 2027-05-20 → 2027-05-25 (+5d) |  | 188.2d → 236.1d |
| 11CP59-096 | Malowanie i oznakowanie – Sekcja 14 | 2027-05-19 → 2027-05-24 (+5d) | 2027-05-24 → 2027-05-27 (+3d) |  | 188.2d → 236.1d |
| SEKCJA 15 | **Sekcja 15** |  | 2027-05-21 → 2027-05-26 (+5d) |  |  |
| PODSEKCJA | **Podsekcja 15.A** |  | 2027-05-21 → 2027-05-26 (+5d) |  |  |
| 11CP59-100 | Monta¿ ruroci¹gów – Sekcja 15 | 2027-04-23 → 2027-04-27 (+4d) | 2027-04-30 → 2027-05-05 (+5d) |  | 189.4d → 237.3d |
| 11CP59-101 | Próba ciœnieniowa – Sekcja 15 | 2027-05-03 → 2027-05-06 (+3d) | 2027-05-06 → 2027-05-11 (+5d) |  | 189.4d → 237.3d |
| 11CP59-102 | Izolacje – Sekcja 15 | 2027-05-07 → 2027-05-12 (+5d) | 2027-05-19 → 2027-05-24 (+5d) |  | 189.4d → 237.3d |
| 11CP59-103 | Malowanie i oznakowanie – Sekcja 15 | 2027-05-17 → 2027-05-20 (+3d) | 2027-05-21 → 2027-05-26 (+5d) |  | 189.4d → 237.3d |
| SEKCJA 16 | **Sekcja 16** |  | 2027-05-24 → 2027-05-26 (+2d) |  |  |
| 11CP59-105 | Monta¿ ruroci¹gów – Sekcja 16 | 2027-04-13 → 2027-04-15 (+2d) | 2027-05-06 → 2027-05-10 (+4d) |  | 188.9d → 236.8d |
| 11CP59-106 | Próba ciœnieniowa – Sekcja 16 | 2027-05-07 → 2027-05-11 (+4d) | 2027-05-10 → 2027-05-12 (+2d) |  | 188.9d → 236.8d |
| 11CP59-107 | Izolacje – Sekcja 16 | 2027-05-11 → 2027-05-13 (+2d) | 2027-05-20 → 2027-05-24 (+4d) |  | 188.9d → 236.8d |
| 11CP59-108 | Malowanie i oznakowanie – Sekcja 16 | 2027-05-18 → 2027-05-20 (+2d) | 2027-05-24 → 2027-05-26 (+2d) |  | 188.9d → 236.8d |
| SEKCJA 17 | **Sekcja 17** |  | 2027-06-07 → 2027-06-09 (+2d) |  |  |
| 11CP59-112 | Monta¿ ruroci¹gów – Sekcja 17 | 2027-04-23 → 2027-04-27 (+4d) | 2027-05-17 → 2027-05-19 (+2d) |  | 178.9d → 226.8d |
| 11CP59-113 | Próba ciœnieniowa – Sekcja 17 | 2027-05-18 → 2027-05-20 (+2d) | 2027-05-21 → 2027-05-25 (+4d) |  | 178.9d → 226.8d |
| 11CP59-114 | Izolacje – Sekcja 17 | 2027-05-24 → 2027-05-26 (+2d) | 2027-06-03 → 2027-06-07 (+4d) |  | 178.9d → 226.8d |
| 11CP59-115 | Malowanie i oznakowanie – Sekcja 17 | 2027-06-01 → 2027-06-03 (+2d) | 2027-06-07 → 2027-06-09 (+2d) |  | 178.9d → 226.8d |
| SEKCJA 18 | **Sekcja 18** |  | 2027-06-01 → 2027-06-04 (+3d) |  |  |
| PODSEKCJA | **Podsekcja 18.A** |  | 2027-06-01 → 2027-06-04 (+3d) |  |  |
| 11CP59-117 | Monta¿ ruroci¹gów – Sekcja 18 | 2027-04-26 → 2027-04-28 (+2d) | 2027-05-14 → 2027-05-19 (+5d) |  | 182.3d → 230.2d |
| 11CP59-118 | Próba ciœnieniowa – Sekcja 18 | 2027-05-17 → 2027-05-20 (+3d) | 2027-05-18 → 2027-05-21 (+3d) |  | 182.3d → 230.2d |
| 11CP59-119 | Izolacje – Sekcja 18 | 2027-05-19 → 2027-05-24 (+5d) | 2027-05-28 → 2027-06-02 (+5d) |  | 182.3d → 230.2d |
| 11CP59-120 | Malowanie i oznakowanie – Sekcja 18 | 2027-05-28 → 2027-06-02 (+5d) | 2027-06-01 → 2027-06-04 (+3d) |  | 182.3d → 230.2d |
| SEKCJA 19 | **Sekcja 19** |  | 2027-05-18 → 2027-06-18 (+31d) |  |  |
| 11CP59-124 | Monta¿ ruroci¹gów – Sekcja 19 | 2027-04-16 → 2027-04-20 (+4d) | 2027-04-27 → 2027-04-30 (+3d) |  | 192d → 239.9d |
| 11CP59-125 | Próba ciœnieniowa – Sekcja 19 | 2027-04-28 → 2027-05-31 (+33d) | 2027-04-29 → 2027-06-01 (+33d) |  | 192d → 220.6d |
| 11CP59-126 | Izolacje – Sekcja 19 | 2027-04-30 → 2027-06-02 (+33d) | 2027-05-14 → 2027-06-16 (+33d) |  | 192d → 220.6d |
| 11CP59-127 | Malowanie i oznakowanie – Sekcja 19 | 2027-05-07 → 2027-06-09 (+33d) | 2027-05-18 → 2027-06-18 (+31d) |  | 192d → 220.6d |
| SEKCJA 20 | **Sekcja 20** |  | 2027-05-26 → 2027-05-31 (+5d) |  |  |
| 11CP59-129 | Monta¿ ruroci¹gów – Sekcja 20 | 2027-04-12 → 2027-04-14 (+2d) | 2027-05-06 → 2027-05-11 (+5d) |  | 147.7d → 195.6d |
| 11CP59-130 | Próba ciœnieniowa – Sekcja 20 | 2027-05-07 → 2027-05-12 (+5d) | 2027-05-11 → 2027-05-14 (+3d) |  | 147.7d → 195.6d |
| 11CP59-131 | Izolacje – Sekcja 20 | 2027-05-12 → 2027-05-17 (+5d) | 2027-05-24 → 2027-05-27 (+3d) |  | 147.7d → 195.6d |
| 11CP59-132 | Malowanie i oznakowanie – Sekcja 20 | 2027-05-17 → 2027-05-20 (+3d) | 2027-05-26 → 2027-05-31 (+5d) |  | 147.7d → 195.6d |
| SEKCJA 21 | **Sekcja 21** |  | 2027-05-20 → 2027-07-15 (+56d) |  |  |
| PODSEKCJA | **Podsekcja 21.A** |  | 2027-05-20 → 2027-07-15 (+56d) |  |  |
| 11CP59-136 | Monta¿ ruroci¹gów – Sekcja 21 | 2027-04-13 → 2027-04-15 (+2d) | 2027-04-28 → 2027-05-03 (+5d) |  | 151d → 198.9d |
| 11CP59-137 | Próba ciœnieniowa – Sekcja 21 | 2027-04-29 → 2027-06-24 (+56d) | 2027-05-03 → 2027-06-28 (+56d) |  | 151d → 162.6d |
| 11CP59-138 | Izolacje – Sekcja 21 | 2027-05-04 → 2027-06-29 (+56d) | 2027-05-18 → 2027-07-13 (+56d) |  | 151d → 162.6d |
| 11CP59-139 | Malowanie i oznakowanie – Sekcja 21 | 2027-05-17 → 2027-07-12 (+56d) | 2027-05-20 → 2027-07-15 (+56d) |  | 151d → 162.6d |
| ROZR | **Rozruch** | 2027-06-11 → 2027-07-16 (+35d) | 2027-07-22 → 2027-08-26 (+35d) |  |  |
| ROZRUCH | **Rozruch** | 2027-06-11 → 2027-07-16 (+35d) | 2027-07-22 → 2027-08-26 (+35d) |  |  |
| 11CP59-142 | Przegl¹d gotowoœci do rozruchu | 2027-06-11 → 2027-07-16 (+35d) | 2027-06-17 → 2027-07-22 (+35d) |  | 136.8d → 162.6d |
| 11CP59-143 | Rozruch na zimno | 2027-06-18 → 2027-07-23 (+35d) | 2027-06-30 → 2027-08-04 (+35d) |  | 136.8d → 162.6d |
| 11CP59-144 | Rozruch na gor¹co / próby ruchowe | 2027-07-01 → 2027-08-05 (+35d) | 2027-07-21 → 2027-08-25 (+35d) |  | 136.8d → 162.6d |
| 11CP59-145 | KM: Odbiór koñcowy – Pompy wody zasilaj¹cej | 2027-07-22 → 2027-08-26 (+35d) | 2027-07-22 → 2027-08-26 (+35d) |  | 136.8d → 162.6d |
| ZAKU | **Zakupy** |  | 2027-04-12 → 2027-04-14 (+2d) |  |  |
| DOSTAWY | **Dostawy** | 2025-10-22 → 2025-10-24 (+2d) | 2027-04-12 → 2027-04-14 (+2d) |  |  |
| 11CP59-008 | Produkcja u dostawcy | 2025-10-22 A → 2025-10-24 A (+2d) | 2027-02-02 → 2027-02-04 (+2d) |  | 217.9d → 266.6d |
| 11CP59-009 | Testy FAT | 2027-02-03 → 2027-02-05 (+2d) | 2027-02-12 → 2027-02-16 (+4d) |  | 136.8d → 184.7d |
| 11CP59-010 | Transport i dostawa na plac budowy | 2027-02-15 → 2027-02-17 (+2d) | 2027-04-09 → 2027-04-13 (+4d) |  | 136.8d → 184.7d |
| 11CP59-011 | KM: Dostawa na budowê – Pompy wody zasilaj¹cej | 2027-04-12 → 2027-04-14 (+2d) | 2027-04-12 → 2027-04-14 (+2d) |  | 136.8d → 184.7d |
| 18CX52 | **18CX52 – Bêben wysokiego ciœnienia** |  | 2026-10-19 → 2026-10-05 (-14d) |  |  |
| BUDO | **Budowa** |  | 2026-10-19 → 2026-08-19 (-61d) |  |  |
| ELEKTRYKA | **Elektryka** |  | 2026-10-12 → 2026-07-27 (-77d) |  |  |
| 18CX52-097 | Uk³adanie kabli – trasa 14 | 2026-09-30 → 2026-06-26 A (-96d) | 2026-10-12 → 2026-07-13 A (-91d) | 0% → 100% | 348.9d → none |
| 18CX52-025 | Uk³adanie kabli – trasa 02 | 2026-06-26 A → 2026-06-30 A (+4d) | 2026-10-09 → 2026-07-24 A (-77d) | 51% → 100% | 362.9d → none |
| RUROCI¥GI | **Ruroci¹gi** |  | 2026-10-19 → 2026-08-19 (-61d) |  |  |
| SEKCJA 06 | **Sekcja 06** |  | 2026-10-01 → 2026-08-07 (-55d) |  |  |
| PODSEKCJA | **Podsekcja 06.A** |  | 2026-10-01 → 2026-08-07 (-55d) |  |  |
| 18CX52-046 | Próba ciœnieniowa – Sekcja 06 |  | 2026-10-01 → 2026-07-28 A (-65d) | 56% → 100% | 393.3d → none |
| SEKCJA 08 | **Sekcja 08** |  | 2026-09-30 → 2026-07-17 (-75d) |  |  |
| 18CX52-059 | Izolacje – Sekcja 08 |  | 2026-09-30 → 2026-07-13 A (-79d) | 52% → 100% | 411.5d → none |
| SEKCJA 09 | **Sekcja 09** | 2026-01-26 → 2026-01-27 (+1d) | 2026-09-30 → 2026-08-05 (-56d) |  |  |
| PODSEKCJA | **Podsekcja 09.A** | 2026-01-26 → 2026-01-27 (+1d) | 2026-09-30 → 2026-08-05 (-56d) |  |  |
| 18CX52-063 | Prefabrykacja ruroci¹gów – Sekcja 09 | 2026-01-26 A → 2026-01-27 A (+1d) | 2026-09-30 → 2026-02-04 A (-238d) | 85% → 100% | 406.2d → none |
| SEKCJA 12 | **Sekcja 12** |  | 2026-10-05 → 2026-07-31 (-66d) |  |  |
| PODSEKCJA | **Podsekcja 12.A** |  | 2026-10-05 → 2026-07-31 (-66d) |  |  |
| 18CX52-083 | Izolacje – Sekcja 12 | 2026-07-21 A → 2026-07-15 A (-6d) | 2026-10-05 → 2026-07-29 A (-68d) | 50% → 100% | 398.8d → none |

| ID | Task | Start | Finish | Complete | Total float |
| --- | --- | --- | --- | --- | --- |
| SEKCJA 16 | **Sekcja 16** | 2026-06-17 → 2026-03-16 (-93d) | 2026-10-19 → 2026-08-17 (-63d) |  |  |
| 18CX52-104 | Prefabrykacja ruroci¹gów – Sekcja 16 | 2026-09-30 → 2026-03-16 A (-198d) | 2026-10-19 → 2026-04-06 A (-196d) | 0% → 100% | 264.2d → none |
| SEKCJA 18 | **Sekcja 18** |  | 2026-09-30 → 2026-08-12 (-49d) |  |  |
| PODSEKCJA | **Podsekcja 18.A** |  | 2026-09-30 → 2026-08-12 (-49d) |  |  |
| 18CX52-120 | Malowanie i oznakowanie – Sekcja 18 | 2026-08-06 A → 2026-08-05 A (-1d) | 2026-09-30 → 2026-08-12 A (-49d) | 67% → 100% | 347.5d → none |
| SEKCJA 19 | **Sekcja 19** |  | 2026-10-12 → 2026-07-16 (-88d) |  |  |
| 18CX52-124 | Monta¿ ruroci¹gów – Sekcja 19 |  | 2026-10-12 → 2026-06-30 A (-104d) | 21% → 100% | 367.2d → none |
| PROJ | **Projektowanie** |  | 2026-10-06 → 2025-08-20 (-412d) |  |  |
| DOKUMENTAC | **Dokumentacja** |  | 2026-10-06 → 2025-08-20 (-412d) |  |  |
| 18CX52-003 | Zatwierdzenie dokumentacji do realizacji | 2025-08-12 A → 2025-08-07 A (-5d) | 2026-10-06 → 2025-08-20 A (-412d) | 44% → 100% | 223.9d → none |
| ROZR | **Rozruch** |  | 2026-10-09 → 2026-10-05 (-4d) |  |  |
| ROZRUCH | **Rozruch** |  | 2026-10-09 → 2026-10-05 (-4d) |  |  |
| 18CX52-132 | Rozruch na gor¹co / próby ruchowe | 2026-09-14 A → 2026-09-11 A (-3d) | 2026-10-08 → 2026-10-05 A (-3d) | 56% → 100% | 343.4d → none |
| 18CX52-133 | KM: Odbiór koñcowy – Bêben wysokiego ciœnienia | 2026-10-09 → 2026-09-30 (-9d) | 2026-10-09 → 2026-09-30 A (-9d) | 0% → 100% | 340.8d → none |
| 19FK60 | **19FK60 – Komin g³ówny** | 2025-05-29 → 2025-06-02 (+4d) | 2027-02-02 → 2026-12-11 (-53d) |  |  |
| BUDO | **Budowa** |  | 2026-10-13 → 2026-09-25 (-18d) |  |  |
| AKPIA | **AKPiA** | 2026-08-03 → 2026-07-30 (-4d) | 2026-10-13 → 2026-09-22 (-21d) |  |  |
| 19FK60-116 | Monta¿ uk³adów AKPiA | 2026-08-03 A → 2026-07-30 A (-4d) | 2026-10-13 → 2026-09-22 A (-21d) | 70% → 100% | 311.9d → none |
| ELEKTRYKA | **Elektryka** |  | 2026-10-06 → 2026-09-02 (-34d) |  |  |
| 19FK60-086 | Pod³¹czenia i pomiary – trasa 12 | 2026-08-11 A → 2026-08-06 A (-5d) | 2026-10-06 → 2026-08-19 A (-48d) | 42% → 100% | 384.9d → none |
| RUROCI¥GI | **Ruroci¹gi** |  | 2026-10-07 → 2026-09-25 (-12d) |  |  |
| SEKCJA 03 | **Sekcja 03** |  | 2026-10-02 → 2026-09-10 (-22d) |  |  |
| PODSEKCJA | **Podsekcja 03.A** |  | 2026-10-02 → 2026-09-10 (-22d) |  |  |
| 19FK60-029 | Próba ciœnieniowa – Sekcja 03 | 2026-09-30 → 2026-08-19 A (-42d) | 2026-10-02 → 2026-08-21 A (-42d) | 0% → 100% | 342.9d → none |
| SEKCJA 04 | **Sekcja 04** |  | 2026-09-30 → 2026-09-22 (-8d) |  |  |
| 19FK60-035 | Izolacje – Sekcja 04 | 2026-09-10 A → 2026-09-07 A (-3d) | 2026-09-30 → 2026-09-15 A (-15d) | 82% → 100% | 363.6d → none |
| SEKCJA 05 | **Sekcja 05** |  | 2026-10-02 → 2026-09-01 (-31d) |  |  |
| 19FK60-041 | Próba ciœnieniowa – Sekcja 05 | 2026-08-14 A → 2026-08-17 A (+3d) | 2026-10-02 → 2026-08-25 A (-38d) | 18% → 100% | 379d → none |
| SEKCJA 06 | **Sekcja 06** |  | 2026-09-30 → 2026-09-25 (-5d) |  |  |
| PODSEKCJA | **Podsekcja 06.A** |  | 2026-09-30 → 2026-09-25 (-5d) |  |  |
| 19FK60-046 | Próba ciœnieniowa – Sekcja 06 |  | 2026-09-30 → 2026-09-03 A (-27d) | 30% → 100% | 361.3d → none |
| SEKCJA 08 | **Sekcja 08** |  | 2026-10-07 → 2026-09-16 (-21d) |  |  |
| 19FK60-057 | Monta¿ ruroci¹gów – Sekcja 08 | 2026-08-06 A → 2026-08-07 A (+1d) | 2026-10-07 → 2026-08-17 A (-51d) | 16% → 100% | 370.4d → none |
| 19FK60-058 | Próba ciœnieniowa – Sekcja 08 | 2026-08-18 A → 2026-08-14 A (-4d) | 2026-10-05 → 2026-08-24 A (-42d) | 33% → 100% | 369.4d → none |
| SEKCJA 09 | **Sekcja 09** | 2026-04-30 → 2026-04-29 (-1d) | 2026-10-02 → 2026-09-15 (-17d) |  |  |
| PODSEKCJA | **Podsekcja 09.A** | 2026-04-30 → 2026-04-29 (-1d) | 2026-10-02 → 2026-09-15 (-17d) |  |  |
| 19FK60-063 | Prefabrykacja ruroci¹gów – Sekcja 09 | 2026-04-30 A → 2026-04-29 A (-1d) | 2026-10-02 → 2026-05-15 A (-140d) | 63% → 100% | 326.7d → none |
| SEKCJA 12 | **Sekcja 12** |  | 2026-10-01 → 2026-09-14 (-17d) |  |  |
| PODSEKCJA | **Podsekcja 12.A** |  | 2026-10-01 → 2026-09-14 (-17d) |  |  |
| 19FK60-082 | Próba ciœnieniowa – Sekcja 12 | 2026-08-24 A → 2026-08-21 A (-3d) | 2026-10-01 → 2026-08-25 A (-37d) | 30% → 100% | 368.4d → none |
| SEKCJA 16 | **Sekcja 16** |  | 2026-09-30 → 2026-08-21 (-40d) |  |  |
| 19FK60-108 | Malowanie i oznakowanie – Sekcja 16 | 2026-08-19 A → 2026-08-17 A (-2d) | 2026-09-30 → 2026-08-20 A (-41d) | 72% → 100% | 331d → none |
| PROJ | **Projektowanie** | 2025-05-29 → 2025-06-02 (+4d) | 2027-02-02 → 2025-12-30 (-399d) |  |  |
| DOKUMENTAC | **Dokumentacja** | 2025-05-29 → 2025-06-02 (+4d) | 2027-02-02 → 2025-12-30 (-399d) |  |  |
| 19FK60-001 | Projekt wykonawczy – Komin g³ówny | 2025-05-29 A → 2025-06-02 A (+4d) | 2027-02-02 → 2025-11-06 A (-453d) | 20% → 100% | 313.9d → none |
| ROZR | **Rozruch** |  | 2026-11-06 → 2026-12-11 (+35d) |  |  |
| ROZRUCH | **Rozruch** |  | 2026-11-06 → 2026-12-11 (+35d) |  |  |
| 19FK60-119 | Rozruch na zimno | 2026-09-30 A → 2026-10-02 A (+2d) | 2026-10-01 → 2026-10-14 (+13d) | 68% → 29% | 313.9d → 362.6d |
| 19FK60-120 | Rozruch na gor¹co / próby ruchowe | 2026-10-02 → 2026-11-06 (+35d) | 2026-11-05 → 2026-12-10 (+35d) |  | 320d → 346.6d |
| 19FK60-121 | KM: Odbiór koñcowy – Komin g³ówny | 2026-11-06 → 2026-12-11 (+35d) | 2026-11-06 → 2026-12-11 (+35d) |  | 320d → 346.6d |
| 27XT34 | **27XT34 – Zbiornik wody zasilaj¹cej** |  | 2027-02-12 → 2027-01-07 (-36d) |  |  |
| BUDO | **Budowa** |  | 2026-12-02 → 2027-01-07 (+36d) |  |  |
| AKPIA | **AKPiA** | 2026-09-30 → 2026-09-29 (-1d) | 2026-10-07 → 2026-10-09 (+2d) |  |  |
| 27XT34-140 | Monta¿ uk³adów AKPiA | 2026-09-30 A → 2026-09-29 A (-1d) | 2026-10-07 → 2026-10-09 (+2d) | 34% → 69% | 308.9d → 360.6d |
| ELEKTRYKA | **Elektryka** | 2026-10-06 → 2026-10-05 (-1d) | 2026-11-12 → 2026-10-20 (-23d) |  |  |
| 27XT34-086 | Pod³¹czenia i pomiary – trasa 12 | 2026-10-06 → 2026-10-05 A (-1d) | 2026-10-16 → 2026-10-07 (-9d) | 0% → 86% | 344.9d → 396.6d |
| 27XT34-025 | Uk³adanie kabli – trasa 02 | 2026-10-08 → 2026-10-07 A (-1d) | 2026-10-16 → 2026-10-12 (-4d) | 0% → 36% | 305.9d → 357.6d |
| 27XT34-026 | Pod³¹czenia i pomiary – trasa 02 | 2026-10-13 → 2026-10-07 (-6d) | 2026-10-16 → 2026-10-12 (-4d) |  | 305.9d → 360.1d |
| 27XT34-037 | Uk³adanie kabli – trasa 04 | 2026-10-08 → 2026-10-07 A (-1d) | 2026-10-22 → 2026-10-12 (-10d) | 0% → 59% | 340.9d → 392.6d |
| 27XT34-049 | Uk³adanie kabli – trasa 06 | 2026-10-08 → 2026-10-07 A (-1d) | 2026-11-04 → 2026-10-09 (-26d) | 0% → 82% | 331.9d → 383.6d |
| 27XT34-050 | Pod³¹czenia i pomiary – trasa 06 | 2026-10-23 → 2026-10-07 (-16d) | 2026-11-04 → 2026-10-19 (-16d) |  | 331.9d → 394.6d |
| 27XT34-061 | Uk³adanie kabli – trasa 08 | 2026-10-16 → 2026-10-07 A (-9d) | 2026-11-12 → 2026-10-16 (-27d) | 0% → 58% | 325.9d → 383.6d |
| 27XT34-073 | Uk³adanie kabli – trasa 10 | 2026-10-08 → 2026-10-07 A (-1d) | 2026-11-03 → 2026-10-15 (-19d) | 0% → 62% | 332.9d → 384.6d |
| 27XT34-074 | Pod³¹czenia i pomiary – trasa 10 | 2026-10-21 → 2026-10-07 (-14d) | 2026-11-03 → 2026-10-20 (-14d) |  | 332.9d → 393.6d |
| 27XT34-097 | Uk³adanie kabli – trasa 14 | 2026-10-08 → 2026-10-07 A (-1d) | 2026-10-29 → 2026-10-08 (-21d) | 0% → 87% | 335.9d → 387.6d |
| 27XT34-098 | Pod³¹czenia i pomiary – trasa 14 | 2026-10-21 → 2026-10-07 (-14d) | 2026-10-29 → 2026-10-15 (-14d) |  | 335.9d → 396.6d |
| 27XT34-109 | Uk³adanie kabli – trasa 16 | 2026-10-08 → 2026-10-07 A (-1d) | 2026-10-27 → 2026-10-19 (-8d) | 0% → 35% | 337.9d → 389.6d |
| 27XT34-121 | Uk³adanie kabli – trasa 18 | 2026-10-08 → 2026-10-07 A (-1d) | 2026-10-30 → 2026-10-20 (-10d) | 0% → 36% | 334.9d → 386.6d |
| 27XT34-133 | Uk³adanie kabli – trasa 20 | 2026-10-08 → 2026-10-07 A (-1d) | 2026-10-22 → 2026-10-13 (-9d) | 0% → 53% | 301.9d → 353.6d |
| 27XT34-038 | Pod³¹czenia i pomiary – trasa 04 | 2026-10-20 → 2026-10-08 (-12d) | 2026-10-22 → 2026-10-12 (-10d) |  | 340.9d → 399.1d |

| ID | Task | Start | Finish | Complete | Total float |
| --- | --- | --- | --- | --- | --- |
| 27XT34-062 | Pod³¹czenia i pomiary – trasa 08 | 2026-11-04 → 2026-10-08 (-27d) | 2026-11-12 → 2026-10-16 (-27d) |  | 325.9d → 395.3d |
| 27XT34-134 | Pod³¹czenia i pomiary – trasa 20 | 2026-10-20 → 2026-10-09 (-11d) | 2026-10-22 → 2026-10-13 (-9d) |  | 301.9d → 359.4d |
| 27XT34-110 | Pod³¹czenia i pomiary – trasa 16 | 2026-10-22 → 2026-10-14 (-8d) | 2026-10-27 → 2026-10-19 (-8d) |  | 337.9d → 394.5d |
| 27XT34-122 | Pod³¹czenia i pomiary – trasa 18 | 2026-10-27 → 2026-10-15 (-12d) | 2026-10-30 → 2026-10-20 (-10d) |  | 334.9d → 392.7d |
| MONTA¯ | **Monta¿** |  | 2026-11-17 → 2026-11-24 (+7d) |  |  |
| 27XT34-014 | Monta¿ urz¹dzeñ g³ównych |  | 2026-11-09 → 2026-10-20 (-20d) | 13% → 69% | 272.5d → 323.2d |
| 27XT34-141 | KM: Zakoñczenie monta¿u – Zbiornik wody zasilaj¹cej | 2026-11-17 → 2026-11-24 (+7d) | 2026-11-17 → 2026-11-24 (+7d) |  | 284.9d → 330.6d |
| RUROCI¥GI | **Ruroci¹gi** |  | 2026-12-02 → 2027-01-07 (+36d) |  |  |
| SEKCJA 01 | **Sekcja 01** |  | 2026-12-02 → 2026-11-23 (-9d) |  |  |
| 27XT34-016 | Monta¿ ruroci¹gów – Sekcja 01 | 2026-10-06 → 2026-10-05 A (-1d) | 2026-11-06 → 2026-10-28 (-9d) | 0% → 32% | 272.5d → 324.2d |
| 27XT34-017 | Próba ciœnieniowa – Sekcja 01 | 2026-11-09 → 2026-10-29 (-11d) | 2026-11-12 → 2026-11-03 (-9d) |  | 272.5d → 330.1d |
| 27XT34-018 | Izolacje – Sekcja 01 | 2026-11-13 → 2026-11-04 (-9d) | 2026-11-30 → 2026-11-19 (-11d) |  | 272.5d → 330.1d |
| 27XT34-019 | Malowanie i oznakowanie – Sekcja 01 | 2026-11-25 → 2026-11-16 (-9d) | 2026-12-02 → 2026-11-23 (-9d) |  | 272.5d → 330.1d |
| SEKCJA 02 | **Sekcja 02** |  | 2026-11-17 → 2026-11-03 (-14d) |  |  |
| 27XT34-021 | Monta¿ ruroci¹gów – Sekcja 02 | 2026-10-07 A | 2026-11-02 → 2026-10-19 (-14d) | 0% → 48% | 283.9d → 334.6d |
| 27XT34-022 | Próba ciœnieniowa – Sekcja 02 | 2026-11-03 → 2026-10-20 (-14d) | 2026-11-05 → 2026-10-22 (-14d) |  | 283.9d → 343.7d |
| 27XT34-023 | Izolacje – Sekcja 02 | 2026-11-06 → 2026-10-23 (-14d) | 2026-11-13 → 2026-10-30 (-14d) |  | 283.9d → 343.7d |
| 27XT34-024 | Malowanie i oznakowanie – Sekcja 02 | 2026-11-13 → 2026-10-30 (-14d) | 2026-11-17 → 2026-11-03 (-14d) |  | 283.9d → 343.7d |
| SEKCJA 03 | **Sekcja 03** | 2026-03-23 → 2026-03-24 (+1d) |  |  |  |
| PODSEKCJA | **Podsekcja 03.A** | 2026-03-23 → 2026-03-24 (+1d) |  |  |  |
| 27XT34-027 | Prefabrykacja ruroci¹gów – Sekcja 03 | 2026-03-23 A → 2026-03-24 A (+1d) | 2026-10-02 → 2026-04-08 A (-177d) | 65% → 100% | 313.5d → none |
| 27XT34-028 | Monta¿ ruroci¹gów – Sekcja 03 | 2026-10-05 → 2026-09-30 A (-5d) | 2026-10-13 → 2026-10-06 A (-7d) | 0% → 100% | 334.2d → none |
| SEKCJA 04 | **Sekcja 04** |  | 2026-10-30 → 2026-10-27 (-3d) |  |  |
| 27XT34-033 | Monta¿ ruroci¹gów – Sekcja 04 | 2026-10-02 A | 2026-10-16 → 2026-10-13 (-3d) | 0% → 48% | 334.6d → 385.3d |
| 27XT34-034 | Próba ciœnieniowa – Sekcja 04 | 2026-10-19 → 2026-10-14 (-5d) | 2026-10-21 → 2026-10-16 (-5d) |  | 334.6d → 387.7d |
| 27XT34-035 | Izolacje – Sekcja 04 | 2026-10-22 → 2026-10-19 (-3d) | 2026-10-28 → 2026-10-23 (-5d) |  | 334.6d → 387.7d |
| 27XT34-036 | Malowanie i oznakowanie – Sekcja 04 | 2026-10-22 → 2026-10-19 (-3d) | 2026-10-30 → 2026-10-27 (-3d) |  | 334.6d → 387.7d |
| SEKCJA 05 | **Sekcja 05** |  | 2026-11-11 → 2026-11-09 (-2d) |  |  |
| 27XT34-040 | Monta¿ ruroci¹gów – Sekcja 05 | 2026-10-07 → 2026-10-05 A (-2d) | 2026-10-26 → 2026-10-22 (-4d) | 0% → 13% | 326.8d → 379.5d |
| 27XT34-041 | Próba ciœnieniowa – Sekcja 05 | 2026-10-27 → 2026-10-23 (-4d) | 2026-10-30 → 2026-10-28 (-2d) |  | 326.8d → 379.3d |
| 27XT34-042 | Izolacje – Sekcja 05 | 2026-11-02 → 2026-10-29 (-4d) | 2026-11-09 → 2026-11-05 (-4d) |  | 326.8d → 379.3d |
| 27XT34-043 | Malowanie i oznakowanie – Sekcja 05 | 2026-11-10 → 2026-11-06 (-4d) | 2026-11-11 → 2026-11-09 (-2d) |  | 326.8d → 379.3d |
| SEKCJA 06 | **Sekcja 06** |  | 2026-11-12 → 2026-12-18 (+36d) |  |  |
| PODSEKCJA | **Podsekcja 06.A** |  | 2026-11-12 → 2026-12-18 (+36d) |  |  |
| 27XT34-045 | Monta¿ ruroci¹gów – Sekcja 06 | 2026-09-24 A → 2026-09-28 A (+4d) | 2026-10-19 → 2026-10-22 (+3d) | 17% → 31% | 326.1d → 374.8d |
| 27XT34-046 | Próba ciœnieniowa – Sekcja 06 | 2026-10-20 → 2026-10-23 (+3d) | 2026-10-26 → 2026-10-29 (+3d) |  | 325.1d → 373.4d |
| 27XT34-047 | Izolacje – Sekcja 06 | 2026-10-27 → 2026-12-02 (+36d) | 2026-11-10 → 2026-12-16 (+36d) |  | 325.1d → 350.6d |
| 27XT34-048 | Malowanie i oznakowanie – Sekcja 06 | 2026-11-04 → 2026-12-10 (+36d) | 2026-11-12 → 2026-12-18 (+36d) |  | 325.1d → 350.6d |
| SEKCJA 07 | **Sekcja 07** | 2026-04-22 → 2026-04-21 (-1d) |  |  |  |
| 27XT34-051 | Prefabrykacja ruroci¹gów – Sekcja 07 | 2026-04-22 A → 2026-04-21 A (-1d) | 2026-10-01 → 2026-04-28 A (-156d) | 69% → 100% | 311.5d → none |
| 27XT34-057 | Monta¿ ruroci¹gów – Sekcja 08 | 2026-09-30 A → 2026-09-29 A (-1d) |  | 62% → 89% | 330d → 381.7d |
| SEKCJA 09 | **Sekcja 09** |  | 2026-10-28 → 2026-11-17 (+20d) |  |  |
| PODSEKCJA | **Podsekcja 09.A** |  | 2026-10-28 → 2026-11-17 (+20d) |  |  |
| 27XT34-064 | Monta¿ ruroci¹gów – Sekcja 09 | 2026-09-24 A → 2026-09-28 A (+4d) | 2026-10-08 → 2026-10-28 (+20d) | 60% → 12% | 329.6d → 378.3d |
| 27XT34-065 | Próba ciœnieniowa – Sekcja 09 | 2026-10-09 → 2026-10-29 (+20d) | 2026-10-15 → 2026-11-04 (+20d) |  | 336.5d → 373.5d |
| 27XT34-066 | Izolacje – Sekcja 09 | 2026-10-16 → 2026-11-05 (+20d) | 2026-10-26 → 2026-11-13 (+18d) |  | 336.5d → 373.5d |
| 27XT34-067 | Malowanie i oznakowanie – Sekcja 09 | 2026-10-27 → 2026-11-16 (+20d) | 2026-10-28 → 2026-11-17 (+20d) |  | 336.5d → 373.5d |
| 27XT34-069 | Monta¿ ruroci¹gów – Sekcja 10 | 2026-09-30 → 2026-09-24 A (-6d) |  | 0% → 57% | 338.4d → 393.1d |
| SEKCJA 11 | **Sekcja 11** |  | 2026-10-27 → 2026-11-10 (+14d) |  |  |
| 27XT34-076 | Monta¿ ruroci¹gów – Sekcja 11 | 2026-09-29 A → 2026-09-28 A (-1d) | 2026-10-02 → 2026-10-16 (+14d) | 83% → 56% | 322.6d → 374.3d |
| 27XT34-077 | Próba ciœnieniowa – Sekcja 11 | 2026-10-05 → 2026-10-19 (+14d) | 2026-10-09 → 2026-10-23 (+14d) |  | 337.7d → 378.2d |
| 27XT34-078 | Izolacje – Sekcja 11 | 2026-10-12 → 2026-10-26 (+14d) | 2026-10-23 → 2026-11-06 (+14d) |  | 337.7d → 378.2d |
| 27XT34-079 | Malowanie i oznakowanie – Sekcja 11 | 2026-10-21 → 2026-11-04 (+14d) | 2026-10-27 → 2026-11-10 (+14d) |  | 337.7d → 378.2d |
| SEKCJA 12 | **Sekcja 12** |  | 2026-10-27 → 2026-11-03 (+7d) |  |  |
| PODSEKCJA | **Podsekcja 12.A** |  | 2026-10-27 → 2026-11-03 (+7d) |  |  |
| 27XT34-081 | Monta¿ ruroci¹gów – Sekcja 12 | 2026-09-29 A → 2026-09-23 A (-6d) | 2026-10-08 → 2026-10-15 (+7d) | 67% → 64% | 324.7d → 379.4d |
| 27XT34-082 | Próba ciœnieniowa – Sekcja 12 | 2026-10-09 → 2026-10-16 (+7d) | 2026-10-14 → 2026-10-21 (+7d) |  | 337.8d → 383d |
| 27XT34-083 | Izolacje – Sekcja 12 | 2026-10-15 → 2026-10-22 (+7d) | 2026-10-23 → 2026-10-30 (+7d) |  | 337.8d → 383d |
| 27XT34-084 | Malowanie i oznakowanie – Sekcja 12 | 2026-10-23 → 2026-10-30 (+7d) | 2026-10-27 → 2026-11-03 (+7d) |  | 337.8d → 383d |
| SEKCJA 13 | **Sekcja 13** |  | 2026-10-27 → 2026-11-04 (+8d) |  |  |
| 27XT34-088 | Monta¿ ruroci¹gów – Sekcja 13 |  | 2026-10-14 → 2026-10-22 (+8d) | 49% → 42% | 327.9d → 378.6d |
| 27XT34-089 | Próba ciœnieniowa – Sekcja 13 | 2026-10-15 → 2026-10-23 (+8d) | 2026-10-19 → 2026-10-27 (+8d) |  | 337.6d → 381.8d |
| 27XT34-091 | Malowanie i oznakowanie – Sekcja 13 | 2026-10-19 → 2026-10-27 (+8d) | 2026-10-27 → 2026-11-04 (+8d) |  | 337.6d → 381.8d |
| 27XT34-090 | Izolacje – Sekcja 13 | 2026-10-20 → 2026-10-28 (+8d) | 2026-10-23 → 2026-11-02 (+10d) |  | 337.6d → 381.8d |
| SEKCJA 14 | **Sekcja 14** | 2026-06-11 → 2026-06-08 (-3d) | 2026-11-16 → 2026-11-19 (+3d) |  |  |
| 27XT34-092 | Prefabrykacja ruroci¹gów – Sekcja 14 | 2026-06-11 A → 2026-06-08 A (-3d) | 2026-09-30 → 2026-06-16 A (-106d) | 63% → 100% | 310.5d → none |
| 27XT34-093 | Monta¿ ruroci¹gów – Sekcja 14 | 2026-09-25 A → 2026-09-28 A (+3d) | 2026-10-21 → 2026-10-26 (+5d) | 35% → 42% | 318.1d → 367.8d |
| 27XT34-094 | Próba ciœnieniowa – Sekcja 14 | 2026-10-22 → 2026-10-27 (+5d) | 2026-10-29 → 2026-11-03 (+5d) |  | 323.7d → 371.2d |
| 27XT34-095 | Izolacje – Sekcja 14 | 2026-10-30 → 2026-11-04 (+5d) | 2026-11-12 → 2026-11-17 (+5d) |  | 323.7d → 371.2d |
| 27XT34-096 | Malowanie i oznakowanie – Sekcja 14 | 2026-11-05 → 2026-11-10 (+5d) | 2026-11-16 → 2026-11-19 (+3d) |  | 323.7d → 371.2d |

| ID | Task | Start | Finish | Complete | Total float |
| --- | --- | --- | --- | --- | --- |
| SEKCJA 15 | **Sekcja 15** |  | 2026-10-23 → 2026-11-02 (+10d) |  |  |
| PODSEKCJA | **Podsekcja 15.A** |  | 2026-10-23 → 2026-11-02 (+10d) |  |  |
| 27XT34-100 | Monta¿ ruroci¹gów – Sekcja 15 |  | 2026-10-02 → 2026-10-12 (+10d) | 45% → 37% | 336.2d → 386.9d |
| 27XT34-101 | Próba ciœnieniowa – Sekcja 15 | 2026-10-05 → 2026-10-13 (+8d) | 2026-10-12 → 2026-10-20 (+8d) |  | 339.2d → 384.4d |
| 27XT34-102 | Izolacje – Sekcja 15 | 2026-10-13 → 2026-10-21 (+8d) | 2026-10-21 → 2026-10-29 (+8d) |  | 339.2d → 384.4d |
| 27XT34-103 | Malowanie i oznakowanie – Sekcja 15 | 2026-10-15 → 2026-10-23 (+8d) | 2026-10-23 → 2026-11-02 (+10d) |  | 339.2d → 384.4d |
| SEKCJA 16 | **Sekcja 16** |  | 2026-10-15 → 2026-11-04 (+20d) |  |  |
| 27XT34-105 | Monta¿ ruroci¹gów – Sekcja 16 | 2026-09-28 A → 2026-09-24 A (-4d) | 2026-09-30 → 2026-10-20 (+20d) | 89% → 13% | 337.3d → 390d |
| 27XT34-106 | Próba ciœnieniowa – Sekcja 16 | 2026-10-01 → 2026-10-21 (+20d) | 2026-10-07 → 2026-10-27 (+20d) |  | 345.6d → 382.5d |
| 27XT34-108 | Malowanie i oznakowanie – Sekcja 16 | 2026-10-06 → 2026-10-26 (+20d) | 2026-10-15 → 2026-11-04 (+20d) |  | 345.6d → 382.5d |
| 27XT34-107 | Izolacje – Sekcja 16 | 2026-10-08 → 2026-10-28 (+20d) | 2026-10-13 → 2026-11-02 (+20d) |  | 345.6d → 382.5d |
| SEKCJA 17 | **Sekcja 17** |  | 2026-11-23 → 2027-01-07 (+45d) |  |  |
| 27XT34-112 | Monta¿ ruroci¹gów – Sekcja 17 | 2026-10-06 A | 2026-11-06 → 2026-10-19 (-18d) | 0% → 60% | 318.9d → 369.6d |
| 27XT34-113 | Próba ciœnieniowa – Sekcja 17 | 2026-11-09 → 2026-12-24 (+45d) | 2026-11-12 → 2026-12-29 (+47d) |  | 318.9d → 336.6d |
| 27XT34-115 | Malowanie i oznakowanie – Sekcja 17 | 2026-11-12 → 2026-12-29 (+47d) | 2026-11-23 → 2027-01-07 (+45d) |  | 318.9d → 336.6d |
| 27XT34-114 | Izolacje – Sekcja 17 | 2026-11-13 → 2026-12-30 (+47d) | 2026-11-19 → 2027-01-05 (+47d) |  | 318.9d → 336.6d |
| SEKCJA 18 | **Sekcja 18** |  | 2026-10-13 → 2026-10-28 (+15d) |  |  |
| PODSEKCJA | **Podsekcja 18.A** |  | 2026-10-13 → 2026-10-28 (+15d) |  |  |
| 27XT34-117 | Monta¿ ruroci¹gów – Sekcja 18 | 2026-09-30 A → 2026-09-29 A (-1d) | 2026-10-02 → 2026-10-19 (+17d) | 83% → 56% | 329.7d → 381.4d |
| 27XT34-118 | Próba ciœnieniowa – Sekcja 18 | 2026-10-05 → 2026-10-20 (+15d) | 2026-10-06 → 2026-10-21 (+15d) |  | 347.2d → 387.3d |
| 27XT34-119 | Izolacje – Sekcja 18 | 2026-10-07 → 2026-10-22 (+15d) | 2026-10-09 → 2026-10-26 (+17d) |  | 347.2d → 387.3d |
| 27XT34-120 | Malowanie i oznakowanie – Sekcja 18 | 2026-10-08 → 2026-10-23 (+15d) | 2026-10-13 → 2026-10-28 (+15d) |  | 347.2d → 387.3d |
| SEKCJA 19 | **Sekcja 19** |  | 2026-11-26 → 2026-11-25 (-1d) |  |  |
| 27XT34-124 | Monta¿ ruroci¹gów – Sekcja 19 | 2026-09-30 → 2026-10-01 A (+1d) | 2026-11-02 → 2026-10-30 (-3d) | 0% → 27% | 315d → 364.7d |
| 27XT34-125 | Próba ciœnieniowa – Sekcja 19 | 2026-11-03 → 2026-11-02 (-1d) | 2026-11-09 → 2026-11-06 (-3d) |  | 315d → 367.3d |
| 27XT34-126 | Izolacje – Sekcja 19 | 2026-11-10 → 2026-11-09 (-1d) | 2026-11-24 → 2026-11-23 (-1d) |  | 315d → 367.3d |
| 27XT34-127 | Malowanie i oznakowanie – Sekcja 19 | 2026-11-24 → 2026-11-23 (-1d) | 2026-11-26 → 2026-11-25 (-1d) |  | 315d → 367.3d |
| SEKCJA 20 | **Sekcja 20** |  | 2026-10-16 → 2026-10-20 (+4d) |  |  |
| 27XT34-129 | Monta¿ ruroci¹gów – Sekcja 20 | 2026-09-25 A → 2026-10-07 (+12d) | 2026-10-02 → 2026-10-20 (+18d) | 70% → 0% | 301.7d → 344.4d |
| 27XT34-130 | Próba ciœnieniowa – Sekcja 20 | 2026-10-05 → 2026-10-07 A (+2d) | 2026-10-08 → 2026-10-09 (+1d) | 0% → 12% | 305.8d → 354.6d |
| 27XT34-131 | Izolacje – Sekcja 20 | 2026-10-09 → 2026-10-12 (+3d) | 2026-10-14 → 2026-10-15 (+1d) |  | 305.8d → 355.1d |
| 27XT34-132 | Malowanie i oznakowanie – Sekcja 20 | 2026-10-13 → 2026-10-14 (+1d) | 2026-10-16 → 2026-10-19 (+3d) |  | 305.8d → 355.1d |
| SEKCJA 21 | **Sekcja 21** |  | 2026-11-16 → 2026-11-23 (+7d) |  |  |
| PODSEKCJA | **Podsekcja 21.A** |  | 2026-11-16 → 2026-11-23 (+7d) |  |  |
| 27XT34-136 | Monta¿ ruroci¹gów – Sekcja 21 | 2026-09-28 A → 2026-09-24 A (-4d) | 2026-10-23 → 2026-10-30 (+7d) |  | 280.5d → 333.2d |
| 27XT34-137 | Próba ciœnieniowa – Sekcja 21 | 2026-10-26 → 2026-11-02 (+7d) | 2026-10-30 → 2026-11-06 (+7d) |  | 284.9d → 330.6d |
| 27XT34-138 | Izolacje – Sekcja 21 | 2026-11-02 → 2026-11-09 (+7d) | 2026-11-12 → 2026-11-19 (+7d) |  | 284.9d → 330.6d |
| 27XT34-139 | Malowanie i oznakowanie – Sekcja 21 | 2026-11-09 → 2026-11-16 (+7d) | 2026-11-16 → 2026-11-23 (+7d) |  | 284.9d → 330.6d |
| ROZR | **Rozruch** | 2026-12-03 → 2026-11-24 (-9d) | 2027-01-13 → 2027-01-04 (-9d) |  |  |
| ROZRUCH | **Rozruch** | 2026-12-03 → 2026-11-24 (-9d) | 2027-01-13 → 2027-01-04 (-9d) |  |  |
| 27XT34-142 | Przegl¹d gotowoœci do rozruchu | 2026-12-03 → 2026-11-24 (-9d) | 2026-12-09 → 2026-11-30 (-9d) |  | 272.5d → 330.1d |
| 27XT34-143 | Rozruch na zimno | 2026-12-10 → 2026-12-01 (-9d) | 2026-12-23 → 2026-12-14 (-9d) |  | 272.5d → 330.1d |
| 27XT34-144 | Rozruch na gor¹co / próby ruchowe | 2026-12-24 → 2026-12-15 (-9d) | 2027-01-12 → 2027-01-01 (-11d) |  | 272.5d → 330.1d |
| 27XT34-145 | KM: Odbiór koñcowy – Zbiornik wody zasilaj¹cej | 2027-01-13 → 2027-01-04 (-9d) | 2027-01-13 → 2027-01-04 (-9d) |  | 272.5d → 330.1d |
| ZAKU | **Zakupy** | 2025-07-21 → 2025-07-16 (-5d) | 2027-02-12 → 2026-09-25 (-140d) |  |  |
| DOSTAWY | **Dostawy** | 2025-12-22 → 2025-12-18 (-4d) | 2027-02-12 → 2026-09-25 (-140d) |  |  |
| 27XT34-008 | Produkcja u dostawcy | 2025-12-22 A → 2025-12-18 A (-4d) | 2027-02-12 → 2026-07-29 A (-198d) | 38% → 100% | 270.5d → none |
| ZAMÓWIENIA | **Zamówienia** | 2025-07-21 → 2025-07-16 (-5d) | 2026-10-15 → 2025-12-15 (-304d) |  |  |
| 27XT34-005 | Zapytanie ofertowe | 2025-07-21 A → 2025-07-16 A (-5d) | 2026-10-15 → 2025-08-06 A (-435d) | 18% → 100% | 341.5d → none |
| 28BW90 | **28BW90 – Uk³ad by-pass pary** |  | 2027-12-29 → 2028-01-24 (+26d) |  |  |
| BUDO | **Budowa** |  | 2027-11-26 → 2027-12-30 (+34d) |  |  |
| AKPIA | **AKPiA** | 2027-09-28 → 2027-04-19 (-162d) | 2027-11-01 → 2027-05-21 (-164d) |  |  |
| 28BW90-104 | Monta¿ uk³adów AKPiA | 2027-09-28 → 2027-04-19 (-162d) | 2027-11-01 → 2027-05-21 (-164d) |  | 40.5d → 207.3d |
| ELEKTRYKA | **Elektryka** | 2027-10-05 → 2027-04-26 (-162d) | 2027-10-29 → 2027-05-20 (-162d) |  |  |
| 28BW90-025 | Uk³adanie kabli – trasa 02 | 2027-10-05 → 2027-04-26 (-162d) | 2027-10-18 → 2027-05-07 (-164d) |  | 50.5d → 217.3d |
| 28BW90-037 | Uk³adanie kabli – trasa 04 | 2027-10-05 → 2027-04-26 (-162d) | 2027-10-26 → 2027-05-17 (-162d) |  | 77.5d → 244.3d |
| 28BW90-049 | Uk³adanie kabli – trasa 06 | 2027-10-05 → 2027-04-26 (-162d) | 2027-10-14 → 2027-05-05 (-162d) |  | 85.5d → 252.3d |
| 28BW90-061 | Uk³adanie kabli – trasa 08 | 2027-10-05 → 2027-04-26 (-162d) | 2027-10-19 → 2027-05-10 (-162d) |  | 82.5d → 249.3d |
| 28BW90-073 | Uk³adanie kabli – trasa 10 | 2027-10-05 → 2027-04-26 (-162d) | 2027-10-29 → 2027-05-20 (-162d) |  | 74.5d → 241.3d |
| 28BW90-085 | Uk³adanie kabli – trasa 12 | 2027-10-05 → 2027-04-26 (-162d) | 2027-10-08 → 2027-04-29 (-162d) |  | 89.5d → 256.3d |
| 28BW90-097 | Uk³adanie kabli – trasa 14 | 2027-10-05 → 2027-04-26 (-162d) | 2027-10-14 → 2027-05-05 (-162d) |  | 52.5d → 219.3d |
| 28BW90-062 | Pod³¹czenia i pomiary – trasa 08 | 2027-10-06 → 2027-04-27 (-162d) | 2027-10-19 → 2027-05-10 (-162d) |  | 82.5d → 249.3d |
| 28BW90-086 | Pod³¹czenia i pomiary – trasa 12 | 2027-10-06 → 2027-04-27 (-162d) | 2027-10-08 → 2027-04-29 (-162d) |  | 89.5d → 256.3d |
| 28BW90-098 | Pod³¹czenia i pomiary – trasa 14 | 2027-10-06 → 2027-04-27 (-162d) | 2027-10-14 → 2027-05-05 (-162d) |  | 52.5d → 219.3d |
| 28BW90-026 | Pod³¹czenia i pomiary – trasa 02 | 2027-10-07 → 2027-04-28 (-162d) | 2027-10-18 → 2027-05-07 (-164d) |  | 50.5d → 217.3d |
| 28BW90-050 | Pod³¹czenia i pomiary – trasa 06 | 2027-10-12 → 2027-05-03 (-162d) | 2027-10-14 → 2027-05-05 (-162d) |  | 85.5d → 252.3d |
| 28BW90-038 | Pod³¹czenia i pomiary – trasa 04 | 2027-10-19 → 2027-05-10 (-162d) | 2027-10-26 → 2027-05-17 (-162d) |  | 77.5d → 244.3d |
| 28BW90-074 | Pod³¹czenia i pomiary – trasa 10 | 2027-10-26 → 2027-05-17 (-162d) | 2027-10-29 → 2027-05-20 (-162d) |  | 74.5d → 241.3d |
| MONTA¯ | **Monta¿** |  | 2027-11-26 → 2027-12-22 (+26d) |  |  |
| 28BW90-014 | Monta¿ urz¹dzeñ g³ównych | 2027-09-21 → 2027-04-12 (-162d) | 2027-11-25 → 2027-06-16 (-162d) |  | 22.5d → 189.3d |

| ID | Task | Start | Finish | Total float |
| --- | --- | --- | --- | --- |
| 28BW90-105 | KM: Zakoñczenie monta¿u – Uk³ad by-pass pary | 2027-11-26 → 2027-12-22 (+26d) | 2027-11-26 → 2027-12-22 (+26d) | 22.5d → 55.6d |
| RUROCI¥GI | **Ruroci¹gi** |  | 2027-11-19 → 2027-12-30 (+41d) |  |
| SEKCJA 01 | **Sekcja 01** |  | 2027-11-12 → 2027-06-03 (-162d) |  |
| 28BW90-016 | Monta¿ ruroci¹gów – Sekcja 01 | 2027-09-24 → 2027-04-15 (-162d) | 2027-10-18 → 2027-05-07 (-164d) | 31.3d → 198.1d |
| 28BW90-017 | Próba ciœnieniowa – Sekcja 01 | 2027-10-19 → 2027-05-10 (-162d) | 2027-10-25 → 2027-05-14 (-164d) | 31.3d → 198.1d |
| 28BW90-018 | Izolacje – Sekcja 01 | 2027-10-26 → 2027-05-17 (-162d) | 2027-11-10 → 2027-06-01 (-162d) | 31.3d → 198.1d |
| 28BW90-019 | Malowanie i oznakowanie – Sekcja 01 | 2027-11-09 → 2027-05-31 (-162d) | 2027-11-12 → 2027-06-03 (-162d) | 31.3d → 198.1d |
| SEKCJA 02 | **Sekcja 02** |  | 2027-10-29 → 2027-05-20 (-162d) |  |
| 28BW90-021 | Monta¿ ruroci¹gów – Sekcja 02 | 2027-09-29 → 2027-04-20 (-162d) | 2027-10-15 → 2027-05-06 (-162d) | 41.5d → 208.3d |
| 28BW90-022 | Próba ciœnieniowa – Sekcja 02 | 2027-10-18 → 2027-05-07 (-164d) | 2027-10-19 → 2027-05-10 (-162d) | 41.5d → 208.3d |
| 28BW90-023 | Izolacje – Sekcja 02 | 2027-10-20 → 2027-05-11 (-162d) | 2027-10-27 → 2027-05-18 (-162d) | 41.5d → 208.3d |
| 28BW90-024 | Malowanie i oznakowanie – Sekcja 02 | 2027-10-26 → 2027-05-17 (-162d) | 2027-10-29 → 2027-05-20 (-162d) | 41.5d → 208.3d |
| SEKCJA 03 | **Sekcja 03** |  | 2027-11-15 → 2027-06-04 (-164d) |  |
| PODSEKCJA | **Podsekcja 03.A** |  | 2027-11-15 → 2027-06-04 (-164d) |  |
| 28BW90-028 | Monta¿ ruroci¹gów – Sekcja 03 | 2027-09-28 → 2027-04-19 (-162d) | 2027-10-28 → 2027-05-19 (-162d) | 63.1d → 229.9d |
| 28BW90-029 | Próba ciœnieniowa – Sekcja 03 | 2027-10-29 → 2027-05-20 (-162d) | 2027-11-02 → 2027-05-24 (-162d) | 63.1d → 229.9d |
| 28BW90-030 | Izolacje – Sekcja 03 | 2027-11-03 → 2027-05-25 (-162d) | 2027-11-11 → 2027-06-02 (-162d) | 63.1d → 229.9d |
| 28BW90-031 | Malowanie i oznakowanie – Sekcja 03 | 2027-11-12 → 2027-06-03 (-162d) | 2027-11-15 → 2027-06-04 (-164d) | 63.1d → 229.9d |
| SEKCJA 04 | **Sekcja 04** |  | 2027-10-28 → 2027-05-18 (-163d) |  |
| 28BW90-033 | Monta¿ ruroci¹gów – Sekcja 04 | 2027-09-21 → 2027-04-12 (-162d) | 2027-10-14 → 2027-05-04 (-163d) | 75.9d → 242.7d |
| 28BW90-034 | Próba ciœnieniowa – Sekcja 04 | 2027-10-15 → 2027-05-05 (-163d) | 2027-10-21 → 2027-05-11 (-163d) | 75.9d → 242.7d |
| 28BW90-036 | Malowanie i oznakowanie – Sekcja 04 | 2027-10-19 → 2027-05-07 (-165d) | 2027-10-28 → 2027-05-18 (-163d) | 75.9d → 242.7d |
| 28BW90-035 | Izolacje – Sekcja 04 | 2027-10-22 → 2027-05-12 (-163d) | 2027-10-26 → 2027-05-14 (-165d) | 75.9d → 242.7d |
| SEKCJA 05 | **Sekcja 05** |  | 2027-11-09 → 2027-05-28 (-165d) |  |
| 28BW90-040 | Monta¿ ruroci¹gów – Sekcja 05 | 2027-09-30 → 2027-04-21 (-162d) | 2027-10-25 → 2027-05-13 (-165d) | 67.9d → 234.7d |
| 28BW90-041 | Próba ciœnieniowa – Sekcja 05 | 2027-10-26 → 2027-05-14 (-165d) | 2027-11-02 → 2027-05-21 (-165d) | 67.9d → 234.7d |
| 28BW90-043 | Malowanie i oznakowanie – Sekcja 05 | 2027-11-01 → 2027-05-20 (-165d) | 2027-11-09 → 2027-05-28 (-165d) | 67.9d → 234.7d |
| 28BW90-042 | Izolacje – Sekcja 05 | 2027-11-03 → 2027-05-24 (-163d) | 2027-11-05 → 2027-05-26 (-163d) | 67.9d → 234.7d |
| SEKCJA 06 | **Sekcja 06** |  | 2027-11-19 → 2027-06-10 (-162d) |  |
| PODSEKCJA | **Podsekcja 06.A** |  | 2027-11-19 → 2027-06-10 (-162d) |  |
| 28BW90-045 | Monta¿ ruroci¹gów – Sekcja 06 | 2027-10-01 → 2027-04-22 (-162d) | 2027-10-29 → 2027-05-20 (-162d) | 59.2d → 226d |
| 28BW90-046 | Próba ciœnieniowa – Sekcja 06 | 2027-11-01 → 2027-05-21 (-164d) | 2027-11-02 → 2027-05-24 (-162d) | 59.2d → 226d |
| 28BW90-047 | Izolacje – Sekcja 06 | 2027-11-03 → 2027-05-25 (-162d) | 2027-11-17 → 2027-06-08 (-162d) | 59.2d → 226d |
| 28BW90-048 | Malowanie i oznakowanie – Sekcja 06 | 2027-11-16 → 2027-06-07 (-162d) | 2027-11-19 → 2027-06-10 (-162d) | 59.2d → 226d |
| SEKCJA 07 | **Sekcja 07** |  | 2027-10-22 → 2027-05-13 (-162d) |  |
| 28BW90-052 | Monta¿ ruroci¹gów – Sekcja 07 | 2027-09-21 → 2027-04-12 (-162d) | 2027-10-06 → 2027-04-27 (-162d) | 79.4d → 246.2d |
| 28BW90-053 | Próba ciœnieniowa – Sekcja 07 | 2027-10-07 → 2027-04-28 (-162d) | 2027-10-11 → 2027-04-30 (-164d) | 79.4d → 246.2d |
| 28BW90-054 | Izolacje – Sekcja 07 | 2027-10-12 → 2027-05-03 (-162d) | 2027-10-20 → 2027-05-11 (-162d) | 79.4d → 246.2d |
| 28BW90-055 | Malowanie i oznakowanie – Sekcja 07 | 2027-10-18 → 2027-05-07 (-164d) | 2027-10-22 → 2027-05-13 (-162d) | 79.4d → 246.2d |
| SEKCJA 08 | **Sekcja 08** |  | 2027-10-25 → 2027-05-14 (-164d) |  |
| 28BW90-057 | Monta¿ ruroci¹gów – Sekcja 08 | 2027-09-30 → 2027-04-21 (-162d) | 2027-10-13 → 2027-05-04 (-162d) | 78d → 244.8d |
| 28BW90-058 | Próba ciœnieniowa – Sekcja 08 | 2027-10-14 → 2027-05-05 (-162d) | 2027-10-18 → 2027-05-07 (-164d) | 78d → 244.8d |
| 28BW90-060 | Malowanie i oznakowanie – Sekcja 08 | 2027-10-18 → 2027-05-07 (-164d) | 2027-10-25 → 2027-05-14 (-164d) | 78d → 244.8d |
| 28BW90-059 | Izolacje – Sekcja 08 | 2027-10-19 → 2027-05-10 (-162d) | 2027-10-21 → 2027-05-12 (-162d) | 78d → 244.8d |
| SEKCJA 09 | **Sekcja 09** |  | 2027-11-05 → 2027-05-26 (-163d) |  |
| PODSEKCJA | **Podsekcja 09.A** |  | 2027-11-05 → 2027-05-26 (-163d) |  |
| 28BW90-064 | Monta¿ ruroci¹gów – Sekcja 09 | 2027-09-29 → 2027-04-20 (-162d) | 2027-10-18 → 2027-05-06 (-165d) | 69.9d → 236.7d |
| 28BW90-065 | Próba ciœnieniowa – Sekcja 09 | 2027-10-19 → 2027-05-07 (-165d) | 2027-10-21 → 2027-05-11 (-163d) | 69.9d → 236.7d |
| 28BW90-066 | Izolacje – Sekcja 09 | 2027-10-22 → 2027-05-12 (-163d) | 2027-11-03 → 2027-05-24 (-163d) | 69.9d → 236.7d |
| 28BW90-067 | Malowanie i oznakowanie – Sekcja 09 | 2027-11-04 → 2027-05-25 (-163d) | 2027-11-05 → 2027-05-26 (-163d) | 69.9d → 236.7d |
| SEKCJA 10 | **Sekcja 10** |  | 2027-11-08 → 2027-12-30 (+52d) |  |
| 28BW90-069 | Monta¿ ruroci¹gów – Sekcja 10 | 2027-09-22 → 2027-04-13 (-162d) | 2027-10-20 → 2027-05-10 (-163d) | 68.9d → 235.7d |
| 28BW90-070 | Próba ciœnieniowa – Sekcja 10 | 2027-10-21 → 2027-05-11 (-163d) | 2027-10-26 → 2027-05-14 (-165d) | 68.9d → 235.7d |
| 28BW90-071 | Izolacje – Sekcja 10 | 2027-10-27 → 2027-05-17 (-163d) | 2027-11-04 → 2027-05-25 (-163d) | 68.9d → 235.7d |
| 28BW90-072 | Malowanie i oznakowanie – Sekcja 10 | 2027-10-29 → 2027-12-22 (+54d) | 2027-11-08 → 2027-12-30 (+52d) | 68.9d → 81.6d |
| SEKCJA 11 | **Sekcja 11** |  | 2027-11-03 → 2027-05-25 (-162d) |  |
| 28BW90-076 | Monta¿ ruroci¹gów – Sekcja 11 | 2027-09-22 → 2027-04-13 (-162d) | 2027-10-18 → 2027-05-07 (-164d) | 71d → 237.8d |
| 28BW90-077 | Próba ciœnieniowa – Sekcja 11 | 2027-10-19 → 2027-05-10 (-162d) | 2027-10-25 → 2027-05-14 (-164d) | 71d → 237.8d |
| 28BW90-078 | Izolacje – Sekcja 11 | 2027-10-26 → 2027-05-17 (-162d) | 2027-11-01 → 2027-05-21 (-164d) | 71d → 237.8d |
| 28BW90-079 | Malowanie i oznakowanie – Sekcja 11 | 2027-10-29 → 2027-05-20 (-162d) | 2027-11-03 → 2027-05-25 (-162d) | 71d → 237.8d |
| SEKCJA 12 | **Sekcja 12** |  | 2027-11-01 → 2027-11-30 (+29d) |  |
| PODSEKCJA | **Podsekcja 12.A** |  | 2027-11-01 → 2027-11-30 (+29d) |  |
| 28BW90-081 | Monta¿ ruroci¹gów – Sekcja 12 | 2027-10-01 → 2027-04-22 (-162d) | 2027-10-11 → 2027-04-30 (-164d) | 73.5d → 240.3d |
| 28BW90-082 | Próba ciœnieniowa – Sekcja 12 | 2027-10-12 → 2027-05-03 (-162d) | 2027-10-15 → 2027-05-06 (-162d) | 73.5d → 240.3d |
| 28BW90-083 | Izolacje – Sekcja 12 | 2027-10-18 → 2027-11-16 (+29d) | 2027-10-28 → 2027-11-26 (+29d) | 73.5d → 103.6d |
| 28BW90-084 | Malowanie i oznakowanie – Sekcja 12 | 2027-10-26 → 2027-11-24 (+29d) | 2027-11-01 → 2027-11-30 (+29d) | 73.5d → 103.6d |
| SEKCJA 13 | **Sekcja 13** |  | 2027-10-28 → 2027-05-19 (-162d) |  |
| 28BW90-088 | Monta¿ ruroci¹gów – Sekcja 13 | 2027-09-27 → 2027-04-16 (-164d) | 2027-10-12 → 2027-05-03 (-162d) | 75.8d → 242.6d |
| 28BW90-089 | Próba ciœnieniowa – Sekcja 13 | 2027-10-13 → 2027-05-04 (-162d) | 2027-10-19 → 2027-05-10 (-162d) | 75.8d → 242.6d |
| 28BW90-090 | Izolacje – Sekcja 13 | 2027-10-20 → 2027-05-11 (-162d) | 2027-10-26 → 2027-05-17 (-162d) | 75.8d → 242.6d |

| ID | Task | Start | Finish | Complete | Total float |
| --- | --- | --- | --- | --- | --- |
| 28BW90-091 | Malowanie i oznakowanie – Sekcja 13 | 2027-10-20 → 2027-05-11 (-162d) | 2027-10-28 → 2027-05-19 (-162d) |  | 75.8d → 242.6d |
| SEKCJA 14 | **Sekcja 14** |  | 2027-11-11 → 2027-06-02 (-162d) |  |  |
| 28BW90-093 | Monta¿ ruroci¹gów – Sekcja 14 | 2027-10-05 → 2027-04-26 (-162d) | 2027-10-27 → 2027-05-18 (-162d) |  | 32.7d → 199.5d |
| 28BW90-094 | Próba ciœnieniowa – Sekcja 14 | 2027-10-28 → 2027-05-19 (-162d) | 2027-11-01 → 2027-05-21 (-164d) |  | 32.7d → 199.5d |
| 28BW90-095 | Izolacje – Sekcja 14 | 2027-11-02 → 2027-05-24 (-162d) | 2027-11-09 → 2027-05-31 (-162d) |  | 32.7d → 199.5d |
| 28BW90-096 | Malowanie i oznakowanie – Sekcja 14 | 2027-11-04 → 2027-05-26 (-162d) | 2027-11-11 → 2027-06-02 (-162d) |  | 32.7d → 199.5d |
| SEKCJA 15 | **Sekcja 15** | 2026-03-12 → 2026-03-10 (-2d) | 2027-11-12 → 2027-12-21 (+39d) |  |  |
| PODSEKCJA | **Podsekcja 15.A** | 2026-03-12 → 2026-03-10 (-2d) | 2027-11-12 → 2027-12-21 (+39d) |  |  |
| 28BW90-099 | Prefabrykacja ruroci¹gów – Sekcja 15 | 2026-03-12 A → 2026-03-10 A (-2d) | 2026-10-07 → 2026-03-23 A (-198d) | 44% → 100% | 426.1d → none |
| 28BW90-100 | Monta¿ ruroci¹gów – Sekcja 15 | 2027-09-30 → 2027-04-21 (-162d) | 2027-10-20 → 2027-05-11 (-162d) |  | 31.5d → 198.3d |
| 28BW90-101 | Próba ciœnieniowa – Sekcja 15 | 2027-10-21 → 2027-05-12 (-162d) | 2027-10-25 → 2027-05-14 (-164d) |  | 31.5d → 198.3d |
| 28BW90-102 | Izolacje – Sekcja 15 | 2027-10-26 → 2027-12-02 (+37d) | 2027-11-10 → 2027-12-17 (+37d) |  | 31.5d → 55.6d |
| 28BW90-103 | Malowanie i oznakowanie – Sekcja 15 | 2027-11-03 → 2027-12-10 (+37d) | 2027-11-12 → 2027-12-21 (+39d) |  | 31.5d → 55.6d |
| ROZR | **Rozruch** | 2027-11-26 → 2027-12-22 (+26d) | 2027-12-29 → 2028-01-24 (+26d) |  |  |
| ROZRUCH | **Rozruch** | 2027-11-26 → 2027-12-22 (+26d) | 2027-12-29 → 2028-01-24 (+26d) |  |  |
| 28BW90-106 | Przegl¹d gotowoœci do rozruchu | 2027-11-26 → 2027-12-22 (+26d) | 2027-12-07 → 2027-12-31 (+24d) |  | 22.5d → 55.6d |
| 28BW90-107 | Rozruch na zimno | 2027-12-08 → 2028-01-03 (+26d) | 2027-12-14 → 2028-01-07 (+24d) |  | 22.5d → 55.6d |
| 28BW90-108 | Rozruch na gor¹co / próby ruchowe | 2027-12-15 → 2028-01-10 (+26d) | 2027-12-28 → 2028-01-21 (+24d) |  | 22.5d → 55.6d |
| 28BW90-109 | KM: Odbiór koñcowy – Uk³ad by-pass pary | 2027-12-29 → 2028-01-24 (+26d) | 2027-12-29 → 2028-01-24 (+26d) |  | 22.5d → 55.6d |
| ZAKU | **Zakupy** |  | 2027-09-21 → 2027-04-12 (-162d) |  |  |
| DOSTAWY | **Dostawy** | 2025-10-29 → 2025-10-28 (-1d) | 2027-09-21 → 2027-04-12 (-162d) |  |  |
| 28BW90-008 | Produkcja u dostawcy | 2025-10-29 A → 2025-10-28 A (-1d) | 2027-08-02 → 2027-02-19 (-164d) | 24% → 66% | 194.9d → 246.6d |
| 28BW90-009 | Testy FAT | 2027-08-03 → 2027-02-22 (-162d) | 2027-08-09 → 2027-02-26 (-164d) |  | 22.5d → 189.3d |
| 28BW90-010 | Transport i dostawa na plac budowy | 2027-08-10 → 2027-03-01 (-162d) | 2027-09-20 → 2027-04-09 (-164d) |  | 22.5d → 189.3d |
| 28BW90-011 | KM: Dostawa na budowê – Uk³ad by-pass pary | 2027-09-21 → 2027-04-12 (-162d) | 2027-09-21 → 2027-04-12 (-162d) |  | 22.5d → 189.3d |
| 30BU48 | **30BU48 – Kocio³ odzyskowy HRSG** |  | 2027-02-16 → 2026-10-21 (-118d) |  |  |
| BUDO | **Budowa** |  | 2026-10-14 → 2026-09-21 (-23d) |  |  |
| ELEKTRYKA | **Elektryka** |  | 2026-10-01 → 2026-08-27 (-35d) |  |  |
| 30BU48-146 | Pod³¹czenia i pomiary – trasa 22 | 2026-08-20 A → 2026-08-19 A (-1d) | 2026-10-01 → 2026-08-27 A (-35d) | 30% → 100% | 340.9d → none |
| RUROCI¥GI | **Ruroci¹gi** |  | 2026-10-14 → 2026-09-21 (-23d) |  |  |
| SEKCJA 01 | **Sekcja 01** |  | 2026-09-30 → 2026-09-04 (-26d) |  |  |
| 30BU48-019 | Malowanie i oznakowanie – Sekcja 01 | 2026-08-31 A → 2026-09-01 A (+1d) | 2026-09-30 → 2026-09-04 A (-26d) | 50% → 100% | 335d → none |
| SEKCJA 02 | **Sekcja 02** |  | 2026-10-02 → 2026-09-21 (-11d) |  |  |
| 30BU48-022 | Próba ciœnieniowa – Sekcja 02 |  | 2026-10-02 → 2026-09-01 A (-31d) | 34% → 100% | 324d → none |
| SEKCJA 03 | **Sekcja 03** |  | 2026-10-13 → 2026-09-17 (-26d) |  |  |
| PODSEKCJA | **Podsekcja 03.A** |  | 2026-10-13 → 2026-09-17 (-26d) |  |  |
| 30BU48-028 | Monta¿ ruroci¹gów – Sekcja 03 | 2026-07-29 A → 2026-07-27 A (-2d) | 2026-10-02 → 2026-08-21 A (-42d) | 82% → 100% | 365.7d → none |
| 30BU48-030 | Izolacje – Sekcja 03 | 2026-08-28 A → 2026-08-26 A (-2d) | 2026-10-13 → 2026-09-11 A (-32d) | 16% → 100% | 366.7d → none |
| SEKCJA 12 | **Sekcja 12** |  | 2026-10-13 → 2026-08-28 (-46d) |  |  |
| PODSEKCJA | **Podsekcja 12.A** |  | 2026-10-13 → 2026-08-28 (-46d) |  |  |
| 30BU48-080 | Prefabrykacja ruroci¹gów – Sekcja 12 |  | 2026-10-13 → 2025-12-23 A (-294d) | 20% → 100% | 446.1d → none |
| SEKCJA 16 | **Sekcja 16** |  | 2026-09-30 → 2026-09-17 (-13d) |  |  |
| 30BU48-108 | Malowanie i oznakowanie – Sekcja 16 |  | 2026-09-30 → 2026-09-17 A (-13d) | 15% → 100% | 365.2d → none |
| SEKCJA 19 | **Sekcja 19** |  | 2026-10-14 → 2026-09-07 (-37d) |  |  |
| 30BU48-124 | Monta¿ ruroci¹gów – Sekcja 19 | 2026-07-24 A → 2026-07-21 A (-3d) | 2026-10-14 → 2026-08-10 A (-65d) | 28% → 100% | 376.1d → none |
| SEKCJA 22 | **Sekcja 22** |  | 2026-10-06 → 2026-09-03 (-33d) |  |  |
| 30BU48-144 | Malowanie i oznakowanie – Sekcja 22 |  | 2026-10-06 → 2026-09-03 A (-33d) | 16% → 100% | 333.9d → none |
| ROZR | **Rozruch** |  | 2026-11-02 → 2026-10-21 (-12d) |  |  |
| ROZRUCH | **Rozruch** |  | 2026-11-02 → 2026-10-21 (-12d) |  |  |
| 30BU48-150 | Rozruch na zimno | 2026-09-22 A → 2026-09-24 A (+2d) | 2026-10-06 A | 40% → 100% | 326d → none |
| 30BU48-151 | Rozruch na gor¹co / próby ruchowe | 2026-10-07 A | 2026-10-30 → 2026-10-20 (-10d) | 0% → 42% | 324.5d → 375.6d |
| 30BU48-152 | KM: Odbiór koñcowy – Kocio³ odzyskowy HRSG | 2026-11-02 → 2026-10-21 (-12d) | 2026-11-02 → 2026-10-21 (-12d) |  | 324.5d → 383.2d |
| ZAKU | **Zakupy** |  | 2027-02-16 → 2026-07-13 (-218d) |  |  |
| DOSTAWY | **Dostawy** | 2025-07-14 → 2025-07-07 (-7d) | 2027-02-16 → 2026-07-13 (-218d) |  |  |
| 30BU48-008 | Produkcja u dostawcy | 2025-07-14 A → 2025-07-07 A (-7d) | 2027-02-16 → 2026-06-10 A (-251d) | 58% → 100% | 322d → none |
| WYSPA_TURBIN | **Wyspa turbinowa** |  | 2028-02-11 → 2028-04-24 (+73d) |  |  |
| 10BW45 | **10BW45 – Generator** |  | 2026-10-16 → 2026-09-15 (-31d) |  |  |
| BUDO | **Budowa** |  | 2026-10-07 → 2026-07-28 (-71d) |  |  |
| RUROCI¥GI | **Ruroci¹gi** |  | 2026-10-07 → 2026-07-01 (-98d) |  |  |
| SEKCJA 04 | **Sekcja 04** | 2026-02-09 → 2026-02-06 (-3d) | 2026-10-07 → 2026-06-26 (-103d) |  |  |
| 10BW45-032 | Prefabrykacja ruroci¹gów – Sekcja 04 | 2026-02-09 A → 2026-02-06 A (-3d) | 2026-10-07 → 2026-02-20 A (-229d) | 42% → 100% | 387.2d → none |
| SEKCJA 05 | **Sekcja 05** |  | 2026-10-01 → 2026-06-05 (-118d) |  |  |
| 10BW45-040 | Monta¿ ruroci¹gów – Sekcja 05 | 2026-05-11 A → 2026-05-08 A (-3d) | 2026-10-01 → 2026-05-22 A (-132d) | 72% → 100% | 439d → none |
| SEKCJA 09 | **Sekcja 09** |  | 2026-10-05 → 2026-07-01 (-96d) |  |  |
| PODSEKCJA | **Podsekcja 09.A** |  | 2026-10-05 → 2026-07-01 (-96d) |  |  |
| 10BW45-066 | Izolacje – Sekcja 09 | 2026-06-10 A → 2026-06-09 A (-1d) | 2026-10-05 → 2026-06-24 A (-103d) | 57% → 100% | 424.3d → none |
| PROJ | **Projektowanie** |  | 2026-09-30 → 2025-09-25 (-370d) |  |  |
| DOKUMENTAC | **Dokumentacja** |  | 2026-09-30 → 2025-09-25 (-370d) |  |  |
| 10BW45-004 | KM: Dokumentacja zatwierdzona – Generator | 2026-09-30 → 2025-09-23 A (-372d) | 2026-09-30 → 2025-09-23 (-372d) | 0% → 100% | -47.1d → none |
| ZAKU | **Zakupy** |  | 2026-10-16 → 2026-04-30 (-169d) |  |  |

| ID | Task | Start | Finish | Complete | Total float |
| --- | --- | --- | --- | --- | --- |
| ZAMÓWIENIA | **Zamówienia** |  | 2026-10-16 → 2025-11-10 (-340d) |  |  |
| 10BW45-006 | Analiza i wybór ofert | 2026-09-30 → 2025-06-03 A (-484d) | 2026-10-16 → 2025-06-20 A (-483d) | 0% → 100% | 98.9d → none |
| 10TM34 | **10TM34 – Hala maszyn** |  | 2026-12-11 → 2026-12-24 (+13d) |  |  |
| BUDO | **Budowa** |  | 2026-11-18 → 2026-11-25 (+7d) |  |  |
| AKPIA | **AKPiA** | 2026-09-30 → 2026-09-22 (-8d) | 2026-11-11 → 2026-10-15 (-27d) |  |  |
| 10TM34-075 | Monta¿ uk³adów AKPiA | 2026-09-30 → 2026-09-22 A (-8d) | 2026-11-11 → 2026-10-15 (-27d) | 0% → 76% | 295.9d → 352.6d |
| ELEKTRYKA | **Elektryka** |  | 2026-10-09 → 2026-10-29 (+20d) |  |  |
| 10TM34-062 | Pod³¹czenia i pomiary – trasa 08 |  | 2026-10-07 → 2026-10-15 (+8d) | 31% → 21% | 350.9d → 401.6d |
| 10TM34-050 | Pod³¹czenia i pomiary – trasa 06 |  | 2026-10-01 → 2026-10-08 (+7d) | 76% → 73% | 347.9d → 398.6d |
| 10TM34-025 | Uk³adanie kabli – trasa 02 | 2026-09-30 A → 2026-10-02 A (+2d) | 2026-10-07 → 2026-10-29 (+22d) | 67% → 11% | 307.9d → 356.6d |
| 10TM34-049 | Uk³adanie kabli – trasa 06 | 2026-09-30 A → 2026-10-02 A (+2d) | 2026-10-09 → 2026-10-19 (+10d) | 23% → 16% | 346.9d → 395.6d |
| 10TM34-061 | Uk³adanie kabli – trasa 08 | 2026-09-29 A → 2026-10-05 A (+6d) | 2026-10-01 → 2026-10-07 (+6d) | 63% → 74% | 351.9d → 398.6d |
| 10TM34-073 | Uk³adanie kabli – trasa 10 | 2026-09-30 A → 2026-10-05 A (+5d) | 2026-10-08 → 2026-10-07 (-1d) | 25% → 81% | 316.9d → 364.6d |
| 10TM34-074 | Pod³¹czenia i pomiary – trasa 10 | 2026-09-30 → 2026-10-05 A (+5d) | 2026-10-09 → 2026-10-08 (-1d) | 0% → 72% | 318.9d → 366.6d |
| 10TM34-037 | Uk³adanie kabli – trasa 04 | 2026-09-30 A → 2026-10-07 (+7d) | 2026-10-09 → 2026-10-21 (+12d) | 21% → 0% | 346.9d → 392.6d |
| 10TM34-038 | Pod³¹czenia i pomiary – trasa 04 | 2026-09-30 → 2026-10-07 A (+7d) | 2026-10-09 → 2026-10-08 (-1d) | 0% → 75% | 349.2d → 395.6d |
| 10TM34-026 | Pod³¹czenia i pomiary – trasa 02 | 2026-10-05 → 2026-10-27 (+22d) | 2026-10-07 → 2026-10-29 (+22d) |  | 320.6d → 355.6d |
| MONTA¯ | **Monta¿** |  | 2026-11-12 → 2026-11-25 (+13d) |  |  |
| 10TM34-014 | Monta¿ urz¹dzeñ g³ównych | 2026-09-16 A → 2026-09-21 A (+5d) | 2026-11-10 → 2026-10-22 (-19d) | 42% → 76% | 284.9d → 332.6d |
| 10TM34-076 | KM: Zakoñczenie monta¿u – Hala maszyn | 2026-11-12 → 2026-11-25 (+13d) | 2026-11-12 → 2026-11-25 (+13d) |  | 295.9d → 337.6d |
| RUROCI¥GI | **Ruroci¹gi** |  | 2026-11-18 → 2026-11-24 (+6d) |  |  |
| SEKCJA 01 | **Sekcja 01** |  | 2026-10-22 → 2026-10-14 (-8d) |  |  |
| 10TM34-017 | Próba ciœnieniowa – Sekcja 01 | 2026-09-30 → 2026-10-05 A (+5d) | 2026-10-02 → 2026-10-06 A (+4d) | 0% → 100% | 309.9d → none |
| 10TM34-018 | Izolacje – Sekcja 01 | 2026-10-05 → 2026-10-07 A (+2d) | 2026-10-20 → 2026-10-12 (-8d) | 0% → 61% | 309.9d → 358.6d |
| 10TM34-019 | Malowanie i oznakowanie – Sekcja 01 | 2026-10-21 → 2026-10-13 (-8d) | 2026-10-22 → 2026-10-14 (-8d) |  | 309.9d → 365.9d |
| SEKCJA 02 | **Sekcja 02** |  | 2026-11-03 → 2026-10-26 (-8d) |  |  |
| 10TM34-021 | Monta¿ ruroci¹gów – Sekcja 02 | 2026-09-17 A → 2026-09-16 A (-1d) | 2026-10-16 → 2026-10-08 (-8d) | 36% → 89% | 303.5d → 355.2d |
| 10TM34-022 | Próba ciœnieniowa – Sekcja 02 | 2026-10-19 → 2026-10-09 (-10d) | 2026-10-21 → 2026-10-13 (-8d) |  | 301.8d → 358.3d |
| 10TM34-023 | Izolacje – Sekcja 02 | 2026-10-22 → 2026-10-14 (-8d) | 2026-10-30 → 2026-10-22 (-8d) |  | 301.8d → 358.3d |
| 10TM34-024 | Malowanie i oznakowanie – Sekcja 02 | 2026-11-02 → 2026-10-23 (-10d) | 2026-11-03 → 2026-10-26 (-8d) |  | 301.8d → 358.3d |
| 10TM34-028 | Monta¿ ruroci¹gów – Sekcja 03 | 2026-09-18 A → 2026-09-21 A (+3d) | 2026-10-27 → 2026-10-26 (-1d) | 17% → 41% | 325.8d → 375.5d |
| 10TM34-029 | Próba ciœnieniowa – Sekcja 03 | 2026-10-28 → 2026-10-27 (-1d) | 2026-11-03 → 2026-11-02 (-1d) |  | 321.8d → 373.3d |
| SEKCJA 04 | **Sekcja 04** |  | 2026-11-02 → 2026-10-23 (-10d) |  |  |
| 10TM34-033 | Monta¿ ruroci¹gów – Sekcja 04 | 2026-09-23 A → 2026-09-17 A (-6d) | 2026-10-06 → 2026-10-02 A (-4d) | 37% → 100% | 334.6d → none |
| 10TM34-034 | Próba ciœnieniowa – Sekcja 04 | 2026-10-07 → 2026-10-05 A (-2d) | 2026-10-14 → 2026-10-06 A (-8d) | 0% → 100% | 333d → none |
| 10TM34-035 | Izolacje – Sekcja 04 | 2026-10-15 → 2026-10-07 (-8d) | 2026-10-29 → 2026-10-21 (-8d) |  | 333d → 390.6d |
| 10TM34-036 | Malowanie i oznakowanie – Sekcja 04 | 2026-10-30 → 2026-10-22 (-8d) | 2026-11-02 → 2026-10-23 (-10d) |  | 333d → 390.6d |
| SEKCJA 05 | **Sekcja 05** |  | 2026-11-05 → 2026-11-13 (+8d) |  |  |
| 10TM34-040 | Monta¿ ruroci¹gów – Sekcja 05 | 2026-09-30 A → 2026-10-05 A (+5d) | 2026-10-16 → 2026-10-26 (+10d) | 21% → 17% | 326.9d → 374.6d |
| 10TM34-041 | Próba ciœnieniowa – Sekcja 05 | 2026-10-19 → 2026-10-27 (+8d) | 2026-10-22 → 2026-10-30 (+8d) |  | 330.4d → 375.5d |
| 10TM34-042 | Izolacje – Sekcja 05 | 2026-10-23 → 2026-11-02 (+10d) | 2026-11-03 → 2026-11-11 (+8d) |  | 330.4d → 375.5d |
| 10TM34-043 | Malowanie i oznakowanie – Sekcja 05 | 2026-11-02 → 2026-11-10 (+8d) | 2026-11-05 → 2026-11-13 (+8d) |  | 330.4d → 375.5d |
| SEKCJA 06 | **Sekcja 06** |  | 2026-11-03 → 2026-11-16 (+13d) |  |  |
| PODSEKCJA | **Podsekcja 06.A** |  | 2026-11-03 → 2026-11-16 (+13d) |  |  |
| 10TM34-045 | Monta¿ ruroci¹gów – Sekcja 06 | 2026-09-30 A → 2026-10-05 A (+5d) | 2026-10-16 → 2026-10-29 (+13d) | 39% → 17% | 324.7d → 372.4d |
| 10TM34-046 | Próba ciœnieniowa – Sekcja 06 | 2026-10-19 → 2026-10-30 (+11d) | 2026-10-21 → 2026-11-03 (+13d) |  | 332.9d → 374.1d |
| 10TM34-047 | Izolacje – Sekcja 06 | 2026-10-22 → 2026-11-04 (+13d) | 2026-10-30 → 2026-11-12 (+13d) |  | 332.9d → 374.1d |
| 10TM34-048 | Malowanie i oznakowanie – Sekcja 06 | 2026-10-23 → 2026-11-05 (+13d) | 2026-11-03 → 2026-11-16 (+13d) |  | 332.9d → 374.1d |
| SEKCJA 07 | **Sekcja 07** |  | 2026-10-28 → 2026-10-23 (-5d) |  |  |
| 10TM34-052 | Monta¿ ruroci¹gów – Sekcja 07 | 2026-09-25 A → 2026-09-23 A (-2d) | 2026-10-09 → 2026-10-06 A (-3d) | 36% → 100% | 334.2d → none |
| 10TM34-053 | Próba ciœnieniowa – Sekcja 07 | 2026-10-12 → 2026-10-07 (-5d) | 2026-10-15 → 2026-10-12 (-3d) |  | 336.2d → 390.6d |
| 10TM34-054 | Izolacje – Sekcja 07 | 2026-10-16 → 2026-10-13 (-3d) | 2026-10-26 → 2026-10-21 (-5d) |  | 336.2d → 390.6d |
| 10TM34-055 | Malowanie i oznakowanie – Sekcja 07 | 2026-10-26 → 2026-10-21 (-5d) | 2026-10-28 → 2026-10-23 (-5d) |  | 336.2d → 390.6d |
| SEKCJA 08 | **Sekcja 08** |  | 2026-10-21 → 2026-10-23 (+2d) |  |  |
| 10TM34-057 | Monta¿ ruroci¹gów – Sekcja 08 | 2026-09-22 A → 2026-09-23 A (+1d) | 2026-09-30 → 2026-10-06 A (+6d) | 89% → 100% | 339.6d → none |
| 10TM34-058 | Próba ciœnieniowa – Sekcja 08 | 2026-10-01 → 2026-09-30 A (-1d) | 2026-10-02 → 2026-10-06 A (+4d) | 0% → 100% | 341.9d → none |
| 10TM34-059 | Izolacje – Sekcja 08 | 2026-10-05 → 2026-10-07 (+2d) | 2026-10-19 → 2026-10-21 (+2d) |  | 341.9d → 390.6d |
| 10TM34-060 | Malowanie i oznakowanie – Sekcja 08 | 2026-10-13 → 2026-10-15 (+2d) | 2026-10-21 → 2026-10-23 (+2d) |  | 341.9d → 390.6d |
| 10TM34-064 | Monta¿ ruroci¹gów – Sekcja 09 | 2026-09-16 A → 2026-09-17 A (+1d) |  | 44% → 67% | 300.8d → 350.5d |
| SEKCJA 10 | **Sekcja 10** |  | 2026-11-10 → 2026-11-24 (+14d) |  |  |
| 10TM34-069 | Monta¿ ruroci¹gów – Sekcja 10 | 2026-09-30 → 2026-09-25 A (-5d) | 2026-10-19 → 2026-10-08 (-11d) | 0% → 80% | 296.1d → 349.8d |
| 10TM34-070 | Próba ciœnieniowa – Sekcja 10 | 2026-10-20 → 2026-10-09 (-11d) | 2026-10-23 → 2026-10-14 (-9d) |  | 296.1d → 353.7d |
| 10TM34-071 | Izolacje – Sekcja 10 | 2026-10-26 → 2026-10-15 (-11d) | 2026-11-06 → 2026-10-28 (-9d) |  | 296.1d → 353.7d |
| 10TM34-072 | Malowanie i oznakowanie – Sekcja 10 | 2026-10-30 → 2026-11-13 (+14d) | 2026-11-10 → 2026-11-24 (+14d) |  | 296.1d → 337.6d |
| ROZR | **Rozruch** | 2026-11-12 → 2026-11-25 (+13d) | 2026-12-11 → 2026-12-24 (+13d) |  |  |
| ROZRUCH | **Rozruch** | 2026-11-12 → 2026-11-25 (+13d) | 2026-12-11 → 2026-12-24 (+13d) |  |  |
| 10TM34-077 | Przegl¹d gotowoœci do rozruchu | 2026-11-12 → 2026-11-25 (+13d) | 2026-11-19 → 2026-12-02 (+13d) |  | 295.9d → 337.6d |
| 10TM34-078 | Rozruch na zimno | 2026-11-20 → 2026-12-03 (+13d) | 2026-11-26 → 2026-12-09 (+13d) |  | 295.9d → 337.6d |
| 10TM34-079 | Rozruch na gor¹co / próby ruchowe | 2026-11-27 → 2026-12-10 (+13d) | 2026-12-10 → 2026-12-23 (+13d) |  | 295.9d → 337.6d |
| 10TM34-080 | KM: Odbiór koñcowy – Hala maszyn | 2026-12-11 → 2026-12-24 (+13d) | 2026-12-11 → 2026-12-24 (+13d) |  | 295.9d → 337.6d |

| ID | Task | Start | Finish | Complete | Total float |
| --- | --- | --- | --- | --- | --- |
| ZAKU | **Zakupy** | 2025-02-13 → 2025-02-18 (+5d) | 2026-10-07 → 2026-09-15 (-22d) |  |  |
| ZAMÓWIENIA | **Zamówienia** | 2025-02-13 → 2025-02-18 (+5d) | 2026-10-07 → 2025-09-22 (-380d) |  |  |
| 10TM34-005 | Zapytanie ofertowe | 2025-02-13 A → 2025-02-18 A (+5d) | 2026-10-07 → 2025-04-01 A (-554d) | 79% → 100% | 393.9d → none |
| 10TM34-007 | Zawarcie umowy / zamówienie | 2025-09-22 A → 2025-09-15 A (-7d) | 2026-10-02 → 2025-09-22 A (-375d) | 43% → 100% | 281.9d → none |
| 12FX78 | **12FX78 – Turbina parowa** |  | 2026-12-10 → 2026-10-09 (-62d) |  |  |
| BUDO | **Budowa** | 2025-12-31 → 2025-10-22 (-70d) | 2026-12-10 → 2026-09-15 (-86d) |  |  |
| ROBOTY BUD | **Roboty budowlane** | 2026-09-30 → 2025-10-22 (-343d) | 2026-12-10 → 2026-01-06 (-338d) |  |  |
| 12FX78-012 | Fundamenty i roboty ziemne | 2026-09-30 → 2025-10-22 A (-343d) | 2026-12-10 → 2026-01-06 A (-338d) | 0% → 100% | 167.4d → none |
| RUROCI¥GI | **Ruroci¹gi** |  | 2026-10-14 → 2026-09-15 (-29d) |  |  |
| SEKCJA 02 | **Sekcja 02** |  | 2026-09-30 → 2026-09-07 (-23d) |  |  |
| 12FX78-023 | Izolacje – Sekcja 02 | 2026-08-19 A → 2026-08-14 A (-5d) | 2026-09-30 → 2026-08-28 A (-33d) | 85% → 100% | 335.3d → none |
| SEKCJA 04 | **Sekcja 04** |  | 2026-10-14 → 2026-08-12 (-63d) |  |  |
| 12FX78-033 | Monta¿ ruroci¹gów – Sekcja 04 | 2026-09-30 → 2026-07-08 A (-84d) | 2026-10-14 → 2026-07-22 A (-84d) | 0% → 100% | 337.4d → none |
| SEKCJA 09 | **Sekcja 09** |  | 2026-10-01 → 2026-09-15 (-16d) |  |  |
| PODSEKCJA | **Podsekcja 09.A** |  | 2026-10-01 → 2026-09-15 (-16d) |  |  |
| 12FX78-066 | Izolacje – Sekcja 09 | 2026-08-24 A → 2026-08-21 A (-3d) | 2026-10-01 → 2026-09-08 A (-23d) | 82% → 100% | 370.3d → none |
| ROZR | **Rozruch** |  | 2026-10-20 → 2026-10-09 (-11d) |  |  |
| ROZRUCH | **Rozruch** |  | 2026-10-20 → 2026-10-09 (-11d) |  |  |
| 12FX78-103 | Rozruch na gor¹co / próby ruchowe |  | 2026-10-19 → 2026-10-08 (-11d) | 21% → 85% | 333.9d → 384.6d |
| 12FX78-104 | KM: Odbiór koñcowy – Turbina parowa | 2026-10-20 → 2026-10-09 (-11d) | 2026-10-20 → 2026-10-09 (-11d) |  | 333.7d → 390.9d |
| ZAKU | **Zakupy** | 2025-06-27 → 2025-06-23 (-4d) | 2026-10-21 → 2026-07-13 (-100d) |  |  |
| ZAMÓWIENIA | **Zamówienia** | 2025-06-27 → 2025-06-23 (-4d) | 2026-10-21 → 2025-10-22 (-364d) |  |  |
| 12FX78-005 | Zapytanie ofertowe | 2025-06-27 A → 2025-06-23 A (-4d) | 2026-10-21 → 2025-08-05 A (-442d) | 42% → 100% | 360.9d → none |
| BUDO | **Budowa** |  | 2026-10-28 → 2026-08-25 (-64d) |  |  |
| ELEKTRYKA | **Elektryka** |  | 2026-10-01 → 2026-05-06 (-148d) |  |  |
| 12PB41-025 | Uk³adanie kabli – trasa 02 | 2026-04-08 A → 2026-04-09 A (+1d) | 2026-10-01 → 2026-04-29 A (-155d) | 82% → 100% | 422.9d → none |
| 12PB41-182 | Pod³¹czenia i pomiary – trasa 28 | 2026-04-20 A → 2026-04-22 A (+2d) | 2026-10-01 → 2026-05-06 A (-148d) | 79% → 100% | 417.9d → none |
| RUROCI¥GI | **Ruroci¹gi** |  | 2026-10-28 → 2026-08-25 (-64d) |  |  |
| SEKCJA 02 | **Sekcja 02** |  | 2026-10-01 → 2026-05-11 (-143d) |  |  |
| 12PB41-023 | Izolacje – Sekcja 02 |  | 2026-10-01 → 2026-05-07 A (-147d) | 76% → 100% | 412.7d → none |
| SEKCJA 04 | **Sekcja 04** |  | 2026-10-28 → 2026-05-21 (-160d) |  |  |
| 12PB41-033 | Monta¿ ruroci¹gów – Sekcja 04 | 2026-09-30 → 2026-03-25 A (-189d) | 2026-10-28 → 2026-04-22 A (-189d) | 0% → 100% | 317.9d → none |
| SEKCJA 12 | **Sekcja 12** | 2026-03-05 → 2026-03-06 (+1d) | 2026-10-12 → 2026-05-15 (-150d) |  |  |
| PODSEKCJA | **Podsekcja 12.A** | 2026-03-05 → 2026-03-06 (+1d) | 2026-10-12 → 2026-05-15 (-150d) |  |  |
| 12PB41-080 | Prefabrykacja ruroci¹gów – Sekcja 12 | 2026-03-05 A → 2026-03-06 A (+1d) | 2026-10-01 → 2026-03-12 A (-203d) | 24% → 100% | 338.6d → none |
| 12PB41-083 | Izolacje – Sekcja 12 | 2026-04-29 A → 2026-04-27 A (-2d) | 2026-10-12 → 2026-05-11 A (-154d) | 10% → 100% | 454.2d → none |
| SEKCJA 15 | **Sekcja 15** | 2026-03-31 → 2026-03-26 (-5d) | 2026-09-30 → 2026-05-25 (-128d) |  |  |
| PODSEKCJA | **Podsekcja 15.A** | 2026-03-31 → 2026-03-26 (-5d) | 2026-09-30 → 2026-05-25 (-128d) |  |  |
| 12PB41-099 | Prefabrykacja ruroci¹gów – Sekcja 15 | 2026-03-31 A → 2026-03-26 A (-5d) | 2026-09-30 → 2026-04-10 A (-173d) | 85% → 100% | 335.6d → none |
| SEKCJA 16 | **Sekcja 16** | 2026-04-02 → 2026-04-01 (-1d) | 2026-09-30 → 2026-05-22 (-131d) |  |  |
| 12PB41-104 | Prefabrykacja ruroci¹gów – Sekcja 16 | 2026-04-02 A → 2026-04-01 A (-1d) | 2026-09-30 → 2026-04-08 A (-175d) | 66% → 100% | 338.6d → none |
| SEKCJA 17 | **Sekcja 17** |  | 2026-09-30 → 2026-06-01 (-121d) |  |  |
| 12PB41-113 | Próba ciœnieniowa – Sekcja 17 | 2026-05-13 A → 2026-05-11 A (-2d) | 2026-09-30 → 2026-05-13 A (-140d) | 53% → 100% | 444.9d → none |
| ROZR | **Rozruch** |  | 2026-10-13 → 2026-10-28 (+15d) |  |  |
| ROZRUCH | **Rozruch** |  | 2026-10-13 → 2026-10-28 (+15d) |  |  |
| 12PB41-187 | Rozruch na gor¹co / próby ruchowe | 2026-09-08 A → 2026-09-07 A (-1d) | 2026-10-12 → 2026-10-27 (+15d) | 63% → 37% | 338.6d → 390.3d |
| 12PB41-188 | KM: Odbiór koñcowy – Skraplacz | 2026-10-13 → 2026-10-28 (+15d) | 2026-10-13 → 2026-10-28 (+15d) |  | 338.6d → 377.8d |
| 14NX42 | **14NX42 – Uk³ad paliwa gazowego** |  | 2026-10-14 → 2026-09-09 (-35d) |  |  |
| BUDO | **Budowa** |  | 2026-10-12 → 2026-07-27 (-77d) |  |  |
| RUROCI¥GI | **Ruroci¹gi** |  | 2026-10-12 → 2026-07-27 (-77d) |  |  |
| SEKCJA 01 | **Sekcja 01** |  | 2026-10-01 → 2026-05-08 (-146d) |  |  |
| 14NX42-017 | Próba ciœnieniowa – Sekcja 01 | 2026-04-20 A → 2026-04-22 A (+2d) | 2026-10-01 → 2026-05-01 A (-153d) | 60% → 100% | 420.6d → none |
| SEKCJA 04 | **Sekcja 04** |  | 2026-09-30 → 2026-06-02 (-120d) |  |  |
| 14NX42-034 | Próba ciœnieniowa – Sekcja 04 | 2026-05-15 A → 2026-05-19 A (+4d) | 2026-09-30 → 2026-05-25 A (-128d) | 80% → 100% | 445.4d → none |
| SEKCJA 07 | **Sekcja 07** |  | 2026-10-05 → 2026-06-01 (-126d) |  |  |
| 14NX42-053 | Próba ciœnieniowa – Sekcja 07 | 2026-05-05 A → 2026-05-04 A (-1d) | 2026-10-05 → 2026-05-13 A (-145d) | 28% → 100% | 444.6d → none |
| SEKCJA 09 | **Sekcja 09** |  | 2026-10-09 → 2026-06-01 (-130d) |  |  |
| PODSEKCJA | **Podsekcja 09.A** |  | 2026-10-09 → 2026-06-01 (-130d) |  |  |
| 14NX42-064 | Monta¿ ruroci¹gów – Sekcja 09 | 2026-04-20 A → 2026-04-17 A (-3d) | 2026-10-09 → 2026-05-11 A (-151d) | 46% → 100% | 442.6d → none |
| SEKCJA 11 | **Sekcja 11** |  | 2026-10-12 → 2026-06-04 (-130d) |  |  |
| 14NX42-076 | Monta¿ ruroci¹gów – Sekcja 11 |  | 2026-10-05 → 2026-05-05 A (-153d) | 76% → 100% | 445.1d → none |
| 14NX42-078 | Izolacje – Sekcja 11 | 2026-05-15 A → 2026-05-11 A (-4d) | 2026-10-12 → 2026-05-28 A (-137d) | 25% → 100% | 441.1d → none |
| SEKCJA 12 | **Sekcja 12** |  | 2026-09-30 → 2026-05-15 (-138d) |  |  |
| PODSEKCJA | **Podsekcja 12.A** |  | 2026-09-30 → 2026-05-15 (-138d) |  |  |
| 14NX42-082 | Próba ciœnieniowa – Sekcja 12 | 2026-04-27 A → 2026-04-24 A (-3d) | 2026-09-30 → 2026-05-05 A (-148d) | 80% → 100% | 456d → none |
| SEKCJA 14 | **Sekcja 14** |  | 2026-09-30 → 2026-05-08 (-145d) |  |  |
| 14NX42-094 | Próba ciœnieniowa – Sekcja 14 | 2026-05-01 A → 2026-04-30 A (-1d) | 2026-09-30 → 2026-05-06 A (-147d) | 67% → 100% | 457.2d → none |
| SEKCJA 17 | **Sekcja 17** |  | 2026-10-12 → 2026-05-22 (-143d) |  |  |
| 14NX42-114 | Izolacje – Sekcja 17 | 2026-05-08 A → 2026-05-04 A (-4d) | 2026-10-12 → 2026-05-19 A (-146d) | 15% → 100% | 447.2d → none |
| SEKCJA 18 | **Sekcja 18** | 2026-03-26 → 2026-03-31 (+5d) | 2026-10-06 → 2026-05-28 (-131d) |  |  |

| ID | Task | Start | Finish | Complete | Total float |
| --- | --- | --- | --- | --- | --- |
| PODSEKCJA | **Podsekcja 18.A** | 2026-03-26 → 2026-03-31 (+5d) | 2026-10-06 → 2026-05-28 (-131d) |  |  |
| 14NX42-116 | Prefabrykacja ruroci¹gów – Sekcja 18 | 2026-03-26 A → 2026-03-31 A (+5d) | 2026-10-06 → 2026-04-10 A (-179d) | 43% → 100% | 364.8d → none |
| SEKCJA 20 | **Sekcja 20** |  | 2026-10-01 → 2026-06-19 (-104d) |  |  |
| 14NX42-130 | Próba ciœnieniowa – Sekcja 20 | 2026-09-30 → 2026-05-28 A (-125d) | 2026-10-01 → 2026-06-03 A (-120d) | 0% → 100% | 343.9d → none |
| SEKCJA 23 | **Sekcja 23** |  | 2026-10-01 → 2026-06-24 (-99d) |  |  |
| 14NX42-149 | Próba ciœnieniowa – Sekcja 23 | 2026-06-05 A → 2026-06-03 A (-2d) | 2026-10-01 → 2026-06-12 A (-111d) | 60% → 100% | 427.7d → none |
| SEKCJA 24 | **Sekcja 24** | 2026-05-13 → 2026-05-06 (-7d) | 2026-10-07 → 2026-07-10 (-89d) |  |  |
| PODSEKCJA | **Podsekcja 24.A** | 2026-05-13 → 2026-05-06 (-7d) | 2026-10-07 → 2026-07-10 (-89d) |  |  |
| 14NX42-152 | Prefabrykacja ruroci¹gów – Sekcja 24 | 2026-05-13 A → 2026-05-06 A (-7d) | 2026-10-07 → 2026-05-20 A (-140d) | 31% → 100% | 360.8d → none |
| ROZR | **Rozruch** |  | 2026-09-30 → 2026-09-09 (-21d) |  |  |
| ROZRUCH | **Rozruch** |  | 2026-09-30 → 2026-09-09 (-21d) |  |  |
| 14NX42-181 | KM: Odbiór koñcowy – Uk³ad paliwa gazowego | 2026-09-30 → 2026-09-04 (-26d) | 2026-09-30 → 2026-09-04 A (-26d) | 0% → 100% | 347.9d → none |
| ZAKU | **Zakupy** |  | 2026-10-14 → 2026-04-07 (-190d) |  |  |
| ZAMÓWIENIA | **Zamówienia** |  | 2026-10-14 → 2025-09-02 (-407d) |  |  |
| 14NX42-006 | Analiza i wybór ofert | 2026-09-30 → 2025-06-09 A (-478d) | 2026-10-14 → 2025-06-24 A (-477d) | 0% → 100% | 62.8d → none |
| 15BP15 | **15BP15 – Uk³ad oleju smarnego** |  | 2026-11-25 → 2026-11-27 (+2d) |  |  |
| BUDO | **Budowa** |  | 2026-10-14 → 2026-10-07 (-7d) |  |  |
| ELEKTRYKA | **Elektryka** |  | 2026-10-08 → 2026-09-24 (-14d) |  |  |
| 15BP15-062 | Pod³¹czenia i pomiary – trasa 08 | 2026-09-08 A → 2026-09-10 A (+2d) | 2026-10-08 → 2026-09-24 A (-14d) | 14% → 100% | 318.9d → none |
| RUROCI¥GI | **Ruroci¹gi** |  | 2026-10-14 → 2026-10-07 (-7d) |  |  |
| SEKCJA 01 | **Sekcja 01** |  | 2026-10-05 → 2026-10-07 (+2d) |  |  |
| 15BP15-018 | Izolacje – Sekcja 01 | 2026-09-23 A → 2026-09-24 A (+1d) | 2026-09-30 → 2026-10-06 A (+6d) | 89% → 100% | 305.5d → none |
| 15BP15-019 | Malowanie i oznakowanie – Sekcja 01 | 2026-09-30 → 2026-10-06 A (+6d) | 2026-10-05 → 2026-10-07 (+2d) | 0% → 65% | 307.9d → 354.2d |
| SEKCJA 02 | **Sekcja 02** |  | 2026-10-14 → 2026-10-06 (-8d) |  |  |
| 15BP15-021 | Monta¿ ruroci¹gów – Sekcja 02 | 2026-08-26 A → 2026-08-25 A (-1d) | 2026-10-14 → 2026-09-15 A (-29d) | 20% → 100% | 307.1d → none |
| 15BP15-023 | Izolacje – Sekcja 02 | 2026-09-24 A → 2026-09-22 A (-2d) | 2026-10-08 → 2026-10-06 A (-2d) | 17% → 100% | 304.1d → none |
| 15BP15-024 | Malowanie i oznakowanie – Sekcja 02 | 2026-09-30 A → 2026-09-29 A (-1d) | 2026-10-01 → 2026-10-06 A (+5d) | 50% → 100% | 306.9d → none |
| SEKCJA 05 | **Sekcja 05** | 2026-01-05 → 2026-01-06 (+1d) | 2026-10-08 → 2026-09-21 (-17d) |  |  |
| 15BP15-039 | Prefabrykacja ruroci¹gów – Sekcja 05 | 2026-01-05 A → 2026-01-06 A (+1d) | 2026-10-08 → 2026-01-27 A (-254d) | 47% → 100% | 459.9d → none |
| SEKCJA 06 | **Sekcja 06** |  | 2026-10-01 → 2026-09-09 (-22d) |  |  |
| PODSEKCJA | **Podsekcja 06.A** |  | 2026-10-01 → 2026-09-09 (-22d) |  |  |
| 15BP15-047 | Izolacje – Sekcja 06 |  | 2026-10-01 → 2026-09-07 A (-24d) | 35% → 100% | 372.9d → none |
| SEKCJA 08 | **Sekcja 08** |  | 2026-10-05 → 2026-09-17 (-18d) |  |  |
| 15BP15-057 | Monta¿ ruroci¹gów – Sekcja 08 | 2026-08-14 A → 2026-08-17 A (+3d) | 2026-10-05 → 2026-08-27 A (-39d) | 56% → 100% | 322.8d → none |
| 15BP15-060 | Malowanie i oznakowanie – Sekcja 08 | 2026-09-30 → 2026-09-10 A (-20d) | 2026-10-05 → 2026-09-17 A (-18d) | 0% → 100% | 307.9d → none |
| ROZR | **Rozruch** | 2026-10-06 → 2026-10-08 (+2d) | 2026-11-25 → 2026-11-27 (+2d) |  |  |
| ROZRUCH | **Rozruch** | 2026-10-06 → 2026-10-08 (+2d) | 2026-11-25 → 2026-11-27 (+2d) |  |  |
| 15BP15-070 | Przegl¹d gotowoœci do rozruchu | 2026-10-06 → 2026-10-08 (+2d) | 2026-10-14 → 2026-10-16 (+2d) |  | 307.9d → 356.2d |
| 15BP15-071 | Rozruch na zimno | 2026-10-15 → 2026-10-19 (+4d) | 2026-10-21 → 2026-10-23 (+2d) |  | 307.9d → 356.2d |
| 15BP15-072 | Rozruch na gor¹co / próby ruchowe | 2026-10-22 → 2026-10-26 (+4d) | 2026-11-24 → 2026-11-26 (+2d) |  | 307.9d → 356.2d |
| 15BP15-073 | KM: Odbiór koñcowy – Uk³ad oleju smarnego | 2026-11-25 → 2026-11-27 (+2d) | 2026-11-25 → 2026-11-27 (+2d) |  | 307.9d → 356.2d |
| ZAKU | **Zakupy** | 2025-03-26 → 2025-03-20 (-6d) | 2026-10-16 → 2026-08-12 (-65d) |  |  |
| ZAMÓWIENIA | **Zamówienia** | 2025-03-26 → 2025-03-20 (-6d) | 2026-10-16 → 2025-10-13 (-368d) |  |  |
| 15BP15-005 | Zapytanie ofertowe | 2025-03-26 A → 2025-03-20 A (-6d) | 2026-10-16 → 2025-04-11 A (-553d) | 19% → 100% | 407.5d → none |
| 24PY38 | **24PY38 – Turbina gazowa** |  | 2028-02-11 → 2028-04-24 (+73d) |  |  |
| BUDO | **Budowa** | 2025-10-23 → 2025-10-28 (+5d) | 2026-12-22 → 2027-01-25 (+34d) |  |  |
| AKPIA | **AKPiA** | 2026-10-09 → 2026-10-14 (+5d) | 2026-10-23 → 2026-10-28 (+5d) |  |  |
| 24PY38-171 | Monta¿ uk³adów AKPiA | 2026-10-09 → 2026-10-14 (+5d) | 2026-10-23 → 2026-10-28 (+5d) |  | 303.9d → 351.6d |
| ELEKTRYKA | **Elektryka** | 2026-10-13 → 2026-10-16 (+3d) | 2026-11-10 → 2026-11-13 (+3d) |  |  |
| 24PY38-062 | Pod³¹czenia i pomiary – trasa 08 | 2026-10-13 → 2026-10-16 (+3d) | 2026-10-23 → 2026-10-28 (+5d) |  | 339.9d → 387.6d |
| 24PY38-146 | Pod³¹czenia i pomiary – trasa 22 | 2026-10-15 → 2026-10-20 (+5d) | 2026-10-26 → 2026-10-29 (+3d) |  | 338.9d → 386.6d |
| 24PY38-025 | Uk³adanie kabli – trasa 02 | 2026-10-16 → 2026-10-21 (+5d) | 2026-10-22 → 2026-10-27 (+5d) |  | 304.9d → 352.6d |
| 24PY38-037 | Uk³adanie kabli – trasa 04 | 2026-10-16 → 2026-10-21 (+5d) | 2026-11-10 → 2026-11-13 (+3d) |  | 327.9d → 375.6d |
| 24PY38-049 | Uk³adanie kabli – trasa 06 | 2026-10-16 → 2026-10-21 (+5d) | 2026-10-26 → 2026-10-29 (+3d) |  | 338.9d → 386.6d |
| 24PY38-061 | Uk³adanie kabli – trasa 08 | 2026-10-16 → 2026-10-21 (+5d) | 2026-10-23 → 2026-10-28 (+5d) |  | 339.9d → 387.6d |
| 24PY38-073 | Uk³adanie kabli – trasa 10 | 2026-10-16 → 2026-10-21 (+5d) | 2026-11-09 → 2026-11-12 (+3d) |  | 328.9d → 376.6d |
| 24PY38-085 | Uk³adanie kabli – trasa 12 | 2026-10-16 → 2026-10-21 (+5d) | 2026-10-27 → 2026-10-30 (+3d) |  | 337.9d → 385.6d |
| 24PY38-097 | Uk³adanie kabli – trasa 14 | 2026-10-16 → 2026-10-21 (+5d) | 2026-10-27 → 2026-10-30 (+3d) |  | 337.9d → 385.6d |
| 24PY38-109 | Uk³adanie kabli – trasa 16 | 2026-10-16 → 2026-10-21 (+5d) | 2026-11-02 → 2026-11-05 (+3d) |  | 333.9d → 381.6d |
| 24PY38-121 | Uk³adanie kabli – trasa 18 | 2026-10-16 → 2026-10-21 (+5d) | 2026-10-26 → 2026-10-29 (+3d) |  | 338.9d → 386.6d |
| 24PY38-122 | Pod³¹czenia i pomiary – trasa 18 | 2026-10-16 → 2026-10-21 (+5d) | 2026-10-26 → 2026-10-29 (+3d) |  | 338.9d → 386.6d |
| 24PY38-133 | Uk³adanie kabli – trasa 20 | 2026-10-16 → 2026-10-21 (+5d) | 2026-11-09 → 2026-11-12 (+3d) |  | 328.9d → 376.6d |
| 24PY38-145 | Uk³adanie kabli – trasa 22 | 2026-10-16 → 2026-10-21 (+5d) | 2026-10-26 → 2026-10-29 (+3d) |  | 338.9d → 386.6d |
| 24PY38-157 | Uk³adanie kabli – trasa 24 | 2026-10-16 → 2026-10-21 (+5d) | 2026-11-09 → 2026-11-12 (+3d) |  | 328.9d → 376.6d |
| 24PY38-169 | Uk³adanie kabli – trasa 26 | 2026-10-16 → 2026-10-21 (+5d) | 2026-10-29 → 2026-11-03 (+5d) |  | 299.9d → 347.6d |
| 24PY38-026 | Pod³¹czenia i pomiary – trasa 02 | 2026-10-19 → 2026-10-22 (+3d) | 2026-10-22 → 2026-10-27 (+5d) |  | 304.9d → 352.6d |
| 24PY38-050 | Pod³¹czenia i pomiary – trasa 06 | 2026-10-21 → 2026-10-26 (+5d) | 2026-10-26 → 2026-10-29 (+3d) |  | 338.9d → 386.6d |
| 24PY38-098 | Pod³¹czenia i pomiary – trasa 14 | 2026-10-21 → 2026-10-26 (+5d) | 2026-10-27 → 2026-10-30 (+3d) |  | 337.9d → 385.6d |
| 24PY38-110 | Pod³¹czenia i pomiary – trasa 16 | 2026-10-21 → 2026-10-26 (+5d) | 2026-11-02 → 2026-11-05 (+3d) |  | 333.9d → 381.6d |
| 24PY38-170 | Pod³¹czenia i pomiary – trasa 26 | 2026-10-21 → 2026-10-26 (+5d) | 2026-10-29 → 2026-11-03 (+5d) |  | 299.9d → 347.6d |

| ID | Task | Start | Finish | Complete | Total float |
| --- | --- | --- | --- | --- | --- |
| 24PY38-086 | Pod³¹czenia i pomiary – trasa 12 | 2026-10-23 → 2026-10-28 (+5d) | 2026-10-27 → 2026-10-30 (+3d) |  | 337.9d → 385.6d |
| 24PY38-074 | Pod³¹czenia i pomiary – trasa 10 | 2026-10-27 → 2026-10-30 (+3d) | 2026-11-09 → 2026-11-12 (+3d) |  | 328.9d → 376.6d |
| 24PY38-134 | Pod³¹czenia i pomiary – trasa 20 | 2026-10-28 → 2026-11-02 (+5d) | 2026-11-09 → 2026-11-12 (+3d) |  | 328.9d → 376.6d |
| 24PY38-158 | Pod³¹czenia i pomiary – trasa 24 | 2026-11-02 → 2026-11-05 (+3d) | 2026-11-09 → 2026-11-12 (+3d) |  | 328.9d → 376.6d |
| 24PY38-038 | Pod³¹czenia i pomiary – trasa 04 | 2026-11-04 → 2026-11-09 (+5d) | 2026-11-10 → 2026-11-13 (+3d) |  | 327.9d → 375.6d |
| MONTA¯ | **Monta¿** |  | 2026-12-22 → 2026-12-09 (-13d) |  |  |
| 24PY38-014 | Monta¿ urz¹dzeñ g³ównych | 2026-10-02 → 2026-10-07 A (+5d) | 2026-12-21 → 2026-10-30 (-52d) | 0% → 68% | 262.9d → 310.6d |
| 24PY38-172 | KM: Zakoñczenie monta¿u – Turbina gazowa | 2026-12-22 → 2026-12-09 (-13d) | 2026-12-22 → 2026-12-09 (-13d) |  | 262.9d → 322.6d |
| ROBOTY BUD | **Roboty budowlane** | 2025-10-23 → 2025-10-28 (+5d) | 2026-11-06 → 2026-01-15 (-295d) |  |  |
| 24PY38-012 | Fundamenty i roboty ziemne | 2025-10-23 A → 2025-10-28 A (+5d) | 2026-11-06 → 2026-01-15 A (-295d) | 48% → 100% | 333.3d → none |
| RUROCI¥GI | **Ruroci¹gi** |  | 2026-12-14 → 2027-01-25 (+42d) |  |  |
| SEKCJA 01 | **Sekcja 01** |  | 2026-11-25 → 2026-11-30 (+5d) |  |  |
| 24PY38-016 | Monta¿ ruroci¹gów – Sekcja 01 | 2026-10-16 → 2026-10-21 (+5d) | 2026-11-11 → 2026-11-16 (+5d) |  | 280.1d → 327.8d |
| 24PY38-017 | Próba ciœnieniowa – Sekcja 01 | 2026-11-12 → 2026-11-17 (+5d) | 2026-11-18 → 2026-11-23 (+5d) |  | 280.1d → 327.8d |
| 24PY38-018 | Izolacje – Sekcja 01 | 2026-11-19 → 2026-11-24 (+5d) | 2026-11-23 → 2026-11-26 (+3d) |  | 280.1d → 327.8d |
| 24PY38-019 | Malowanie i oznakowanie – Sekcja 01 | 2026-11-23 → 2026-11-26 (+3d) | 2026-11-25 → 2026-11-30 (+5d) |  | 280.1d → 327.8d |
| SEKCJA 02 | **Sekcja 02** |  | 2026-11-25 → 2026-11-30 (+5d) |  |  |
| 24PY38-021 | Monta¿ ruroci¹gów – Sekcja 02 | 2026-10-13 → 2026-10-16 (+3d) | 2026-11-03 → 2026-11-06 (+3d) |  | 280.2d → 327.9d |
| 24PY38-022 | Próba ciœnieniowa – Sekcja 02 | 2026-11-04 → 2026-11-09 (+5d) | 2026-11-05 → 2026-11-10 (+5d) |  | 280.2d → 327.9d |
| 24PY38-023 | Izolacje – Sekcja 02 | 2026-11-06 → 2026-11-11 (+5d) | 2026-11-23 → 2026-11-26 (+3d) |  | 280.2d → 327.9d |
| 24PY38-024 | Malowanie i oznakowanie – Sekcja 02 | 2026-11-16 → 2026-11-19 (+3d) | 2026-11-25 → 2026-11-30 (+5d) |  | 280.2d → 327.9d |
| SEKCJA 03 | **Sekcja 03** | 2026-01-23 → 2026-01-22 (-1d) | 2026-12-01 → 2026-12-04 (+3d) |  |  |
| PODSEKCJA | **Podsekcja 03.A** | 2026-01-23 → 2026-01-22 (-1d) | 2026-12-01 → 2026-12-04 (+3d) |  |  |
| 24PY38-027 | Prefabrykacja ruroci¹gów – Sekcja 03 | 2026-01-23 A → 2026-01-22 A (-1d) | 2026-10-02 → 2026-02-02 A (-242d) | 37% → 100% | 333.3d → none |
| 24PY38-028 | Monta¿ ruroci¹gów – Sekcja 03 | 2026-10-16 → 2026-10-21 (+5d) | 2026-11-09 → 2026-11-12 (+3d) |  | 312.7d → 360.4d |
| 24PY38-029 | Próba ciœnieniowa – Sekcja 03 | 2026-11-10 → 2026-11-13 (+3d) | 2026-11-17 → 2026-11-20 (+3d) |  | 312.7d → 360.4d |
| 24PY38-030 | Izolacje – Sekcja 03 | 2026-11-18 → 2026-11-23 (+5d) | 2026-11-27 → 2026-12-02 (+5d) |  | 312.7d → 360.4d |
| 24PY38-031 | Malowanie i oznakowanie – Sekcja 03 | 2026-11-23 → 2026-11-26 (+3d) | 2026-12-01 → 2026-12-04 (+3d) |  | 312.7d → 360.4d |
| SEKCJA 04 | **Sekcja 04** |  | 2026-10-29 → 2026-11-03 (+5d) |  |  |
| 24PY38-033 | Monta¿ ruroci¹gów – Sekcja 04 | 2026-10-13 → 2026-10-16 (+3d) | 2026-10-20 → 2026-10-23 (+3d) |  | 335.4d → 383.1d |
| 24PY38-034 | Próba ciœnieniowa – Sekcja 04 | 2026-10-21 → 2026-10-26 (+5d) | 2026-10-22 → 2026-10-27 (+5d) |  | 335.4d → 383.1d |
| 24PY38-036 | Malowanie i oznakowanie – Sekcja 04 | 2026-10-21 → 2026-10-26 (+5d) | 2026-10-29 → 2026-11-03 (+5d) |  | 335.4d → 383.1d |
| 24PY38-035 | Izolacje – Sekcja 04 | 2026-10-23 → 2026-10-28 (+5d) | 2026-10-27 → 2026-10-30 (+3d) |  | 335.4d → 383.1d |
| SEKCJA 05 | **Sekcja 05** |  | 2026-11-03 → 2026-11-06 (+3d) |  |  |
| 24PY38-040 | Monta¿ ruroci¹gów – Sekcja 05 | 2026-10-07 → 2026-10-12 (+5d) | 2026-10-20 → 2026-10-23 (+3d) |  | 332.8d → 380.5d |
| 24PY38-041 | Próba ciœnieniowa – Sekcja 05 | 2026-10-21 → 2026-10-26 (+5d) | 2026-10-22 → 2026-10-27 (+5d) |  | 332.8d → 380.5d |
| 24PY38-042 | Izolacje – Sekcja 05 | 2026-10-23 → 2026-10-28 (+5d) | 2026-10-30 → 2026-11-04 (+5d) |  | 332.8d → 380.5d |
| 24PY38-043 | Malowanie i oznakowanie – Sekcja 05 | 2026-11-02 → 2026-11-05 (+3d) | 2026-11-03 → 2026-11-06 (+3d) |  | 332.8d → 380.5d |
| SEKCJA 06 | **Sekcja 06** |  | 2026-11-19 → 2026-11-20 (+1d) |  |  |
| PODSEKCJA | **Podsekcja 06.A** |  | 2026-11-19 → 2026-11-20 (+1d) |  |  |
| 24PY38-045 | Monta¿ ruroci¹gów – Sekcja 06 | 2026-10-09 → 2026-10-14 (+5d) | 2026-10-23 → 2026-10-28 (+5d) |  | 322.4d → 370.1d |
| 24PY38-046 | Próba ciœnieniowa – Sekcja 06 | 2026-10-28 → 2026-10-29 (+1d) | 2026-11-04 → 2026-11-05 (+1d) |  | 320.9d → 370.1d |
| 24PY38-047 | Izolacje – Sekcja 06 | 2026-11-05 → 2026-11-06 (+1d) | 2026-11-17 → 2026-11-18 (+1d) |  | 320.9d → 370.1d |
| 24PY38-048 | Malowanie i oznakowanie – Sekcja 06 | 2026-11-16 → 2026-11-17 (+1d) | 2026-11-19 → 2026-11-20 (+1d) |  | 320.9d → 370.1d |
| SEKCJA 07 | **Sekcja 07** |  | 2026-11-26 → 2026-12-01 (+5d) |  |  |
| 24PY38-052 | Monta¿ ruroci¹gów – Sekcja 07 | 2026-10-16 → 2026-10-21 (+5d) | 2026-11-12 → 2026-11-17 (+5d) |  | 315.1d → 362.8d |
| 24PY38-053 | Próba ciœnieniowa – Sekcja 07 | 2026-11-13 → 2026-11-18 (+5d) | 2026-11-19 → 2026-11-24 (+5d) |  | 315.1d → 362.8d |
| 24PY38-054 | Izolacje – Sekcja 07 | 2026-11-20 → 2026-11-25 (+5d) | 2026-11-24 → 2026-11-27 (+3d) |  | 315.1d → 362.8d |
| 24PY38-055 | Malowanie i oznakowanie – Sekcja 07 | 2026-11-24 → 2026-11-27 (+3d) | 2026-11-26 → 2026-12-01 (+5d) |  | 315.1d → 362.8d |
| SEKCJA 08 | **Sekcja 08** |  | 2026-11-30 → 2026-12-03 (+3d) |  |  |
| 24PY38-057 | Monta¿ ruroci¹gów – Sekcja 08 | 2026-10-15 → 2026-10-20 (+5d) | 2026-11-06 → 2026-11-11 (+5d) |  | 313.4d → 361.1d |
| 24PY38-058 | Próba ciœnieniowa – Sekcja 08 | 2026-11-09 → 2026-11-12 (+3d) | 2026-11-11 → 2026-11-16 (+5d) |  | 313.4d → 361.1d |
| 24PY38-059 | Izolacje – Sekcja 08 | 2026-11-12 → 2026-11-17 (+5d) | 2026-11-26 → 2026-12-01 (+5d) |  | 313.4d → 361.1d |
| 24PY38-060 | Malowanie i oznakowanie – Sekcja 08 | 2026-11-23 → 2026-11-26 (+3d) | 2026-11-30 → 2026-12-03 (+3d) |  | 313.4d → 361.1d |
| SEKCJA 10 | **Sekcja 10** |  | 2026-11-16 → 2026-11-19 (+3d) |  |  |
| 24PY38-069 | Monta¿ ruroci¹gów – Sekcja 10 | 2026-10-15 → 2026-10-20 (+5d) | 2026-10-28 → 2026-11-02 (+5d) |  | 323.8d → 371.5d |
| 24PY38-070 | Próba ciœnieniowa – Sekcja 10 | 2026-10-29 → 2026-11-03 (+5d) | 2026-11-02 → 2026-11-05 (+3d) |  | 323.8d → 371.5d |
| 24PY38-071 | Izolacje – Sekcja 10 | 2026-11-03 → 2026-11-06 (+3d) | 2026-11-12 → 2026-11-17 (+5d) |  | 323.8d → 371.5d |
| 24PY38-072 | Malowanie i oznakowanie – Sekcja 10 | 2026-11-13 → 2026-11-18 (+5d) | 2026-11-16 → 2026-11-19 (+3d) |  | 323.8d → 371.5d |
| SEKCJA 11 | **Sekcja 11** |  | 2026-11-10 → 2026-11-13 (+3d) |  |  |
| 24PY38-076 | Monta¿ ruroci¹gów – Sekcja 11 | 2026-10-15 → 2026-10-20 (+5d) | 2026-10-23 → 2026-10-28 (+5d) |  | 327.8d → 375.5d |
| 24PY38-077 | Próba ciœnieniowa – Sekcja 11 | 2026-10-26 → 2026-10-29 (+3d) | 2026-11-02 → 2026-11-05 (+3d) |  | 327.8d → 375.5d |
| 24PY38-078 | Izolacje – Sekcja 11 | 2026-11-03 → 2026-11-06 (+3d) | 2026-11-06 → 2026-11-11 (+5d) |  | 327.8d → 375.5d |
| 24PY38-079 | Malowanie i oznakowanie – Sekcja 11 | 2026-11-04 → 2026-11-09 (+5d) | 2026-11-10 → 2026-11-13 (+3d) |  | 327.8d → 375.5d |
| SEKCJA 12 | **Sekcja 12** |  | 2026-11-04 → 2026-11-09 (+5d) |  |  |
| PODSEKCJA | **Podsekcja 12.A** |  | 2026-11-04 → 2026-11-09 (+5d) |  |  |
| 24PY38-081 | Monta¿ ruroci¹gów – Sekcja 12 | 2026-10-09 → 2026-10-14 (+5d) | 2026-10-16 → 2026-10-21 (+5d) |  | 331.5d → 379.2d |
| 24PY38-082 | Próba ciœnieniowa – Sekcja 12 | 2026-10-19 → 2026-10-22 (+3d) | 2026-10-22 → 2026-10-27 (+5d) |  | 331.5d → 379.2d |
| 24PY38-083 | Izolacje – Sekcja 12 | 2026-10-23 → 2026-10-28 (+5d) | 2026-11-02 → 2026-11-05 (+3d) |  | 331.5d → 379.2d |
| 24PY38-084 | Malowanie i oznakowanie – Sekcja 12 | 2026-11-02 → 2026-11-05 (+3d) | 2026-11-04 → 2026-11-09 (+5d) |  | 331.5d → 379.2d |

| ID | Task | Start | Finish | Complete | Total float |
| --- | --- | --- | --- | --- | --- |
| SEKCJA 13 | **Sekcja 13** |  | 2026-11-23 → 2026-11-26 (+3d) |  |  |
| 24PY38-088 | Monta¿ ruroci¹gów – Sekcja 13 | 2026-10-15 → 2026-10-20 (+5d) | 2026-10-28 → 2026-11-02 (+5d) |  | 318.4d → 366.1d |
| 24PY38-089 | Próba ciœnieniowa – Sekcja 13 | 2026-10-29 → 2026-11-03 (+5d) | 2026-11-03 → 2026-11-06 (+3d) |  | 318.4d → 366.1d |
| 24PY38-090 | Izolacje – Sekcja 13 | 2026-11-04 → 2026-11-09 (+5d) | 2026-11-19 → 2026-11-24 (+5d) |  | 318.4d → 366.1d |
| 24PY38-091 | Malowanie i oznakowanie – Sekcja 13 | 2026-11-12 → 2026-11-17 (+5d) | 2026-11-23 → 2026-11-26 (+3d) |  | 318.4d → 366.1d |
| SEKCJA 14 | **Sekcja 14** |  | 2026-11-18 → 2026-12-01 (+13d) |  |  |
| 24PY38-093 | Monta¿ ruroci¹gów – Sekcja 14 | 2026-10-13 → 2026-10-16 (+3d) | 2026-11-03 → 2026-11-06 (+3d) |  | 321.5d → 369.2d |
| 24PY38-094 | Próba ciœnieniowa – Sekcja 14 | 2026-11-04 → 2026-11-09 (+5d) | 2026-11-06 → 2026-11-11 (+5d) |  | 321.5d → 369.2d |
| 24PY38-095 | Izolacje – Sekcja 14 | 2026-11-09 → 2026-11-12 (+3d) | 2026-11-16 → 2026-11-19 (+3d) |  | 321.5d → 369.2d |
| 24PY38-096 | Malowanie i oznakowanie – Sekcja 14 | 2026-11-12 → 2026-11-25 (+13d) | 2026-11-18 → 2026-12-01 (+13d) |  | 321.5d → 363.6d |
| SEKCJA 15 | **Sekcja 15** |  | 2026-12-07 → 2027-01-25 (+49d) |  |  |
| PODSEKCJA | **Podsekcja 15.A** |  | 2026-12-07 → 2027-01-25 (+49d) |  |  |
| 24PY38-100 | Monta¿ ruroci¹gów – Sekcja 15 | 2026-10-16 → 2026-10-21 (+5d) | 2026-11-12 → 2026-11-17 (+5d) |  | 308.5d → 356.2d |
| 24PY38-101 | Próba ciœnieniowa – Sekcja 15 | 2026-11-13 → 2026-11-18 (+5d) | 2026-11-18 → 2026-11-23 (+5d) |  | 308.5d → 356.2d |
| 24PY38-102 | Izolacje – Sekcja 15 | 2026-11-19 → 2026-11-24 (+5d) | 2026-12-03 → 2026-12-08 (+5d) |  | 308.5d → 356.2d |
| 24PY38-103 | Malowanie i oznakowanie – Sekcja 15 | 2026-12-04 → 2027-01-22 (+49d) | 2026-12-07 → 2027-01-25 (+49d) |  | 308.5d → 324.6d |
| SEKCJA 16 | **Sekcja 16** |  | 2026-11-20 → 2026-11-25 (+5d) |  |  |
| 24PY38-105 | Monta¿ ruroci¹gów – Sekcja 16 | 2026-10-12 → 2026-10-15 (+3d) | 2026-10-26 → 2026-10-29 (+3d) |  | 319.6d → 367.3d |
| 24PY38-106 | Próba ciœnieniowa – Sekcja 16 | 2026-10-27 → 2026-10-30 (+3d) | 2026-11-03 → 2026-11-06 (+3d) |  | 319.6d → 367.3d |
| 24PY38-107 | Izolacje – Sekcja 16 | 2026-11-04 → 2026-11-09 (+5d) | 2026-11-18 → 2026-11-23 (+5d) |  | 319.6d → 367.3d |
| 24PY38-108 | Malowanie i oznakowanie – Sekcja 16 | 2026-11-16 → 2026-11-19 (+3d) | 2026-11-20 → 2026-11-25 (+5d) |  | 319.6d → 367.3d |
| SEKCJA 17 | **Sekcja 17** |  | 2026-11-18 → 2026-11-30 (+12d) |  |  |
| 24PY38-112 | Monta¿ ruroci¹gów – Sekcja 17 | 2026-10-14 → 2026-10-19 (+5d) | 2026-10-30 → 2026-11-04 (+5d) |  | 321d → 368.7d |
| 24PY38-113 | Próba ciœnieniowa – Sekcja 17 | 2026-11-02 → 2026-11-12 (+10d) | 2026-11-06 → 2026-11-18 (+12d) |  | 321d → 364.6d |
| 24PY38-114 | Izolacje – Sekcja 17 | 2026-11-09 → 2026-11-19 (+10d) | 2026-11-16 → 2026-11-26 (+10d) |  | 321d → 364.6d |
| 24PY38-115 | Malowanie i oznakowanie – Sekcja 17 | 2026-11-09 → 2026-11-19 (+10d) | 2026-11-18 → 2026-11-30 (+12d) |  | 321d → 364.6d |
| SEKCJA 18 | **Sekcja 18** |  | 2026-11-20 → 2026-11-25 (+5d) |  |  |
| PODSEKCJA | **Podsekcja 18.A** |  | 2026-11-20 → 2026-11-25 (+5d) |  |  |
| 24PY38-117 | Monta¿ ruroci¹gów – Sekcja 18 | 2026-10-13 → 2026-10-16 (+3d) | 2026-11-06 → 2026-11-11 (+5d) |  | 319.2d → 366.9d |
| 24PY38-118 | Próba ciœnieniowa – Sekcja 18 | 2026-11-09 → 2026-11-12 (+3d) | 2026-11-10 → 2026-11-13 (+3d) |  | 319.2d → 366.9d |
| 24PY38-119 | Izolacje – Sekcja 18 | 2026-11-11 → 2026-11-16 (+5d) | 2026-11-18 → 2026-11-23 (+5d) |  | 319.2d → 366.9d |
| 24PY38-120 | Malowanie i oznakowanie – Sekcja 18 | 2026-11-17 → 2026-11-20 (+3d) | 2026-11-20 → 2026-11-25 (+5d) |  | 319.2d → 366.9d |
| SEKCJA 20 | **Sekcja 20** |  | 2026-11-23 → 2026-11-26 (+3d) |  |  |
| 24PY38-129 | Monta¿ ruroci¹gów – Sekcja 20 | 2026-10-16 → 2026-10-21 (+5d) | 2026-10-30 → 2026-11-04 (+5d) |  | 318.9d → 366.6d |
| 24PY38-130 | Próba ciœnieniowa – Sekcja 20 | 2026-11-02 → 2026-11-05 (+3d) | 2026-11-09 → 2026-11-12 (+3d) |  | 318.9d → 366.6d |
| 24PY38-131 | Izolacje – Sekcja 20 | 2026-11-10 → 2026-11-13 (+3d) | 2026-11-19 → 2026-11-24 (+5d) |  | 318.9d → 366.6d |
| 24PY38-132 | Malowanie i oznakowanie – Sekcja 20 | 2026-11-19 → 2026-11-24 (+5d) | 2026-11-23 → 2026-11-26 (+3d) |  | 318.9d → 366.6d |
| SEKCJA 21 | **Sekcja 21** | 2026-06-03 → 2026-05-29 (-5d) | 2026-11-26 → 2026-12-01 (+5d) |  |  |
| PODSEKCJA | **Podsekcja 21.A** | 2026-06-03 → 2026-05-29 (-5d) | 2026-11-26 → 2026-12-01 (+5d) |  |  |
| 24PY38-135 | Prefabrykacja ruroci¹gów – Sekcja 21 | 2026-06-03 A → 2026-05-29 A (-5d) | 2026-10-01 → 2026-06-08 A (-115d) | 68% → 100% | 330.3d → none |
| 24PY38-136 | Monta¿ ruroci¹gów – Sekcja 21 | 2026-10-15 → 2026-10-20 (+5d) | 2026-11-06 → 2026-11-11 (+5d) |  | 315.4d → 363.1d |
| 24PY38-137 | Próba ciœnieniowa – Sekcja 21 | 2026-11-09 → 2026-11-12 (+3d) | 2026-11-13 → 2026-11-18 (+5d) |  | 315.4d → 363.1d |
| 24PY38-138 | Izolacje – Sekcja 21 | 2026-11-16 → 2026-11-19 (+3d) | 2026-11-24 → 2026-11-27 (+3d) |  | 315.4d → 363.1d |
| 24PY38-139 | Malowanie i oznakowanie – Sekcja 21 | 2026-11-24 → 2026-11-27 (+3d) | 2026-11-26 → 2026-12-01 (+5d) |  | 315.4d → 363.1d |
| 24PY38-141 | Monta¿ ruroci¹gów – Sekcja 22 | 2026-10-02 → 2026-10-07 A (+5d) |  | 0% → 41% | 338.5d → 386.2d |
| SEKCJA 23 | **Sekcja 23** |  | 2026-11-23 → 2026-12-04 (+11d) |  |  |
| 24PY38-148 | Monta¿ ruroci¹gów – Sekcja 23 | 2026-10-15 → 2026-10-20 (+5d) | 2026-10-28 → 2026-11-02 (+5d) |  | 318.5d → 366.2d |
| 24PY38-149 | Próba ciœnieniowa – Sekcja 23 | 2026-10-29 → 2026-11-03 (+5d) | 2026-11-03 → 2026-11-06 (+3d) |  | 318.5d → 366.2d |
| 24PY38-150 | Izolacje – Sekcja 23 | 2026-11-04 → 2026-11-17 (+13d) | 2026-11-19 → 2026-12-02 (+13d) |  | 318.5d → 360.6d |
| 24PY38-151 | Malowanie i oznakowanie – Sekcja 23 | 2026-11-13 → 2026-11-26 (+13d) | 2026-11-23 → 2026-12-04 (+11d) |  | 318.5d → 360.6d |
| SEKCJA 24 | **Sekcja 24** |  | 2026-11-11 → 2026-11-16 (+5d) |  |  |
| PODSEKCJA | **Podsekcja 24.A** |  | 2026-11-11 → 2026-11-16 (+5d) |  |  |
| 24PY38-153 | Monta¿ ruroci¹gów – Sekcja 24 | 2026-10-13 → 2026-10-16 (+3d) | 2026-10-22 → 2026-10-27 (+5d) |  | 326.9d → 374.6d |
| 24PY38-154 | Próba ciœnieniowa – Sekcja 24 | 2026-10-23 → 2026-10-28 (+5d) | 2026-10-29 → 2026-11-03 (+5d) |  | 326.9d → 374.6d |
| 24PY38-155 | Izolacje – Sekcja 24 | 2026-10-30 → 2026-11-04 (+5d) | 2026-11-09 → 2026-11-12 (+3d) |  | 326.9d → 374.6d |
| 24PY38-156 | Malowanie i oznakowanie – Sekcja 24 | 2026-11-10 → 2026-11-13 (+3d) | 2026-11-11 → 2026-11-16 (+5d) |  | 326.9d → 374.6d |
| SEKCJA 25 | **Sekcja 25** | 2026-07-02 → 2026-06-26 (-6d) | 2026-11-19 → 2026-11-24 (+5d) |  |  |
| 24PY38-159 | Prefabrykacja ruroci¹gów – Sekcja 25 | 2026-07-02 A → 2026-06-26 A (-6d) | 2026-10-05 → 2026-07-07 A (-90d) | 38% → 100% | 329.3d → none |
| 24PY38-160 | Monta¿ ruroci¹gów – Sekcja 25 | 2026-10-07 → 2026-10-12 (+5d) | 2026-11-05 → 2026-11-10 (+5d) |  | 284.3d → 332d |
| 24PY38-161 | Próba ciœnieniowa – Sekcja 25 | 2026-11-06 → 2026-11-11 (+5d) | 2026-11-09 → 2026-11-12 (+3d) |  | 284.3d → 332d |
| 24PY38-162 | Izolacje – Sekcja 25 | 2026-11-10 → 2026-11-13 (+3d) | 2026-11-17 → 2026-11-20 (+3d) |  | 284.3d → 332d |
| 24PY38-163 | Malowanie i oznakowanie – Sekcja 25 | 2026-11-13 → 2026-11-18 (+5d) | 2026-11-19 → 2026-11-24 (+5d) |  | 284.3d → 332d |
| SEKCJA 26 | **Sekcja 26** |  | 2026-12-03 → 2026-12-08 (+5d) |  |  |
| 24PY38-165 | Monta¿ ruroci¹gów – Sekcja 26 | 2026-10-09 → 2026-10-14 (+5d) | 2026-11-11 → 2026-11-16 (+5d) |  | 274.9d → 322.6d |
| 24PY38-166 | Próba ciœnieniowa – Sekcja 26 | 2026-11-12 → 2026-11-17 (+5d) | 2026-11-13 → 2026-11-18 (+5d) |  | 274.9d → 322.6d |
| 24PY38-167 | Izolacje – Sekcja 26 | 2026-11-16 → 2026-11-19 (+3d) | 2026-12-01 → 2026-12-04 (+3d) |  | 274.9d → 322.6d |
| 24PY38-168 | Malowanie i oznakowanie – Sekcja 26 | 2026-11-27 → 2026-12-02 (+5d) | 2026-12-03 → 2026-12-08 (+5d) |  | 274.9d → 322.6d |
| ROZR | **Rozruch** | 2026-12-22 → 2026-12-09 (-13d) | 2028-02-11 → 2028-04-24 (+73d) |  |  |
| KAMIENIE M | **Kamienie milowe** | 2027-12-29 → 2028-01-24 (+26d) | 2028-02-11 → 2028-04-24 (+73d) |  |  |
| 24PY38-177 | KM: Zakoñczenie rozruchu – PL5001-SE-01 | 2027-12-29 → 2028-01-24 (+26d) | 2027-12-29 → 2028-01-24 (+26d) |  | 22.5d → 55.6d |

| ID | Task | Start | Finish | Complete | Total float |
| --- | --- | --- | --- | --- | --- |
| 24PY38-178 | KM: Synchronizacja bloku z sieci¹ | 2028-02-11 → 2028-04-24 (+73d) | 2028-02-11 → 2028-04-24 (+73d) |  |  |
| ROZRUCH | **Rozruch** | 2026-12-22 → 2026-12-09 (-13d) | 2027-01-27 → 2027-01-14 (-13d) |  |  |
| 24PY38-173 | Przegl¹d gotowoœci do rozruchu | 2026-12-22 → 2026-12-09 (-13d) | 2026-12-24 → 2026-12-11 (-13d) |  | 262.9d → 322.6d |
| 24PY38-174 | Rozruch na zimno | 2026-12-25 → 2026-12-14 (-11d) | 2027-01-05 → 2026-12-23 (-13d) |  | 262.9d → 322.6d |
| 24PY38-175 | Rozruch na gor¹co / próby ruchowe | 2027-01-06 → 2026-12-24 (-13d) | 2027-01-26 → 2027-01-13 (-13d) |  | 262.9d → 322.6d |
| 24PY38-176 | KM: Odbiór koñcowy – Turbina gazowa | 2027-01-27 → 2027-01-14 (-13d) | 2027-01-27 → 2027-01-14 (-13d) |  | 262.9d → 322.6d |
| ZAKU | **Zakupy** |  | 2026-10-02 → 2026-10-14 (+12d) |  |  |
| DOSTAWY | **Dostawy** |  | 2026-10-02 → 2026-10-14 (+12d) |  |  |
| 24PY38-010 | Transport i dostawa na plac budowy | 2026-09-24 A → 2026-09-23 A (-1d) | 2026-10-01 → 2026-10-13 (+12d) | 83% → 58% | 256.9d → 308.6d |
| 24PY38-011 | KM: Dostawa na budowê – Turbina gazowa | 2026-10-02 → 2026-10-14 (+12d) | 2026-10-02 → 2026-10-14 (+12d) |  | 262.9d → 305.6d |
| 29UF44 | **29UF44 – Pompy skroplin** |  | 2026-10-15 → 2026-08-27 (-49d) |  |  |
| BUDO | **Budowa** |  | 2026-10-07 → 2026-08-04 (-64d) |  |  |
| ELEKTRYKA | **Elektryka** | 2026-05-22 → 2026-05-25 (+3d) | 2026-10-02 → 2026-06-23 (-101d) |  |  |
| 29UF44-026 | Pod³¹czenia i pomiary – trasa 02 | 2026-05-22 A → 2026-05-25 A (+3d) | 2026-09-30 → 2026-06-09 A (-113d) | 80% → 100% | 411.9d → none |
| 29UF44-037 | Uk³adanie kabli – trasa 04 | 2026-05-28 A → 2026-05-29 A (+1d) | 2026-10-02 → 2026-06-10 A (-114d) | 45% → 100% | 440.9d → none |
| RUROCI¥GI | **Ruroci¹gi** |  | 2026-10-07 → 2026-07-14 (-85d) |  |  |
| SEKCJA 01 | **Sekcja 01** |  | 2026-10-02 → 2026-06-29 (-95d) |  |  |
| 29UF44-017 | Próba ciœnieniowa – Sekcja 01 | 2026-06-12 A → 2026-06-11 A (-1d) | 2026-10-02 → 2026-06-17 A (-107d) | 18% → 100% | 393.4d → none |
| SEKCJA 03 | **Sekcja 03** |  | 2026-09-30 → 2026-06-29 (-93d) |  |  |
| PODSEKCJA | **Podsekcja 03.A** |  | 2026-09-30 → 2026-06-29 (-93d) |  |  |
| 29UF44-029 | Próba ciœnieniowa – Sekcja 03 | 2026-06-16 A → 2026-06-15 A (-1d) | 2026-09-30 → 2026-06-18 A (-104d) | 50% → 100% | 422.1d → none |
| SEKCJA 05 | **Sekcja 05** |  | 2026-10-07 → 2026-06-23 (-106d) |  |  |
| 29UF44-040 | Monta¿ ruroci¹gów – Sekcja 05 | 2026-05-21 A → 2026-05-20 A (-1d) | 2026-10-07 → 2026-06-03 A (-126d) | 34% → 100% | 431.4d → none |
| SEKCJA 11 | **Sekcja 11** |  | 2026-09-30 → 2026-06-19 (-103d) |  |  |
| 29UF44-078 | Izolacje – Sekcja 11 | 2026-06-15 A → 2026-06-11 A (-4d) | 2026-09-30 → 2026-06-16 A (-106d) | 67% → 100% | 429.7d → none |
| PROJ | **Projektowanie** |  | 2026-10-15 → 2025-05-29 (-504d) |  |  |
| DOKUMENTAC | **Dokumentacja** |  | 2026-10-15 → 2025-05-29 (-504d) |  |  |
| 29UF44-002 | Uzgodnienie dokumentacji z Inwestorem | 2025-04-17 A → 2025-04-14 A (-3d) | 2026-10-15 → 2025-05-21 A (-512d) | 56% → 100% | 304.2d → none |
