# PL5001 – AKPiA i infrastruktura (SE-03)

How a schedule from Primavera P6 changed from version to version. A marks actual dates.

## Version 1 (data date 2026-09-30, saved 2026-09-30, file PL5001_SYNTH_schedule_Rev0G_DD30092026.xer)

Note of the change: M0: szkielet Vite+React+TS, guard, deploy, dane syntetyczne

| ID | WBS | Task | Duration | Start | Finish | Predecessors | Complete | Total float |
| --- | --- | --- | --- | --- | --- | --- | --- | --- |
|  | AUTOMATYKA_I | **Automatyka i AKPiA** |  | 2025-01-13 | 2028-01-28 |  |  |  |
|  | 10PQ22 | **10PQ22 – System DCS** |  | 2025-06-18 | 2028-01-28 |  |  |  |
|  | BUDO | **Budowa** |  | 2026-01-22 | 2026-10-09 |  |  |  |
|  | AKPIA | **AKPiA** |  | 2026-07-10 | 2026-08-27 |  |  |  |
| 10PQ22-116 |  | Monta¿ uk³adów AKPiA | 34d | 2026-07-10 A | 2026-08-27 A | 10PQ22-014 SS+5d | 100% |  |
|  | ELEKTRYKA | **Elektryka** |  | 2026-07-13 | 2026-08-19 |  |  |  |
| 10PQ22-110 |  | Pod³¹czenia i pomiary – trasa 16 | 10d | 2026-07-13 A | 2026-07-29 A | 10PQ22-109 FF | 100% |  |
| 10PQ22-025 |  | Uk³adanie kabli – trasa 02 | 13d | 2026-07-17 A | 2026-08-06 A | 10PQ22-014 SS+10d | 100% |  |
| 10PQ22-097 |  | Uk³adanie kabli – trasa 14 | 20d | 2026-07-17 A | 2026-08-17 A | 10PQ22-014 SS+10d | 100% |  |
| 10PQ22-073 |  | Uk³adanie kabli – trasa 10 | 20d | 2026-07-20 A | 2026-08-18 A | 10PQ22-014 SS+10d | 100% |  |
| 10PQ22-049 |  | Uk³adanie kabli – trasa 06 | 15d | 2026-07-21 A | 2026-08-12 A | 10PQ22-014 SS+10d | 100% |  |
| 10PQ22-037 |  | Uk³adanie kabli – trasa 04 | 5d | 2026-07-22 A | 2026-07-29 A | 10PQ22-014 SS+10d | 100% |  |
| 10PQ22-109 |  | Uk³adanie kabli – trasa 16 | 4d | 2026-07-22 A | 2026-07-29 A | 10PQ22-014 SS+10d | 100% |  |
| 10PQ22-038 |  | Pod³¹czenia i pomiary – trasa 04 | 4d | 2026-07-23 A | 2026-07-30 A | 10PQ22-037 FF | 100% |  |
| 10PQ22-061 |  | Uk³adanie kabli – trasa 08 | 4d | 2026-07-23 A | 2026-07-30 A | 10PQ22-014 SS+10d | 100% |  |
| 10PQ22-085 |  | Uk³adanie kabli – trasa 12 | 10d | 2026-07-23 A | 2026-08-10 A | 10PQ22-014 SS+10d | 100% |  |
| 10PQ22-062 |  | Pod³¹czenia i pomiary – trasa 08 | 3d | 2026-07-24 A | 2026-07-29 A | 10PQ22-061 FF | 100% |  |
| 10PQ22-086 |  | Pod³¹czenia i pomiary – trasa 12 | 7d | 2026-07-27 A | 2026-08-07 A | 10PQ22-085 FF | 100% |  |
| 10PQ22-026 |  | Pod³¹czenia i pomiary – trasa 02 | 3d | 2026-08-04 A | 2026-08-10 A | 10PQ22-025 FF | 100% |  |
| 10PQ22-098 |  | Pod³¹czenia i pomiary – trasa 14 | 7d | 2026-08-06 A | 2026-08-17 A | 10PQ22-097 FF | 100% |  |
| 10PQ22-050 |  | Pod³¹czenia i pomiary – trasa 06 | 3d | 2026-08-07 A | 2026-08-14 A | 10PQ22-049 FF | 100% |  |
| 10PQ22-074 |  | Pod³¹czenia i pomiary – trasa 10 | 5d | 2026-08-13 A | 2026-08-19 A | 10PQ22-073 FF | 100% |  |
|  | MONTA¯ | **Monta¿** |  | 2026-03-05 | 2026-09-15 |  |  |  |
| 10PQ22-013 |  | Monta¿ konstrukcji stalowych | 19d | 2026-03-05 A | 2026-04-01 A | 10PQ22-012 | 100% |  |
| 10PQ22-014 |  | Monta¿ urz¹dzeñ g³ównych | 48d | 2026-07-03 A | 2026-09-08 A | 10PQ22-013, 10PQ22-011 | 100% |  |
| 10PQ22-117 |  | KM: Zakoñczenie monta¿u – System DCS | 0d | 2026-09-15 A | 2026-09-15 | 10PQ22-108, 10PQ22-110, 10PQ22-115, 10PQ22-116, 10PQ22-014 | 100% |  |
|  | ROBOTY BUD | **Roboty budowlane** |  | 2026-01-22 | 2026-03-06 |  |  |  |
| 10PQ22-012 |  | Fundamenty i roboty ziemne | 31d | 2026-01-22 A | 2026-03-06 A | 10PQ22-007 FS+8d | 100% |  |
|  | RUROCI¥GI | **Ruroci¹gi** |  | 2026-03-10 | 2026-10-09 |  |  |  |
|  | SEKCJA 01 | **Sekcja 01** |  | 2026-03-10 | 2026-08-12 |  |  |  |
| 10PQ22-015 |  | Prefabrykacja ruroci¹gów – Sekcja 01 | 3.2d | 2026-03-10 A | 2026-03-12 A | 10PQ22-012 | 100% |  |
| 10PQ22-016 |  | Monta¿ ruroci¹gów – Sekcja 01 | 11.5d | 2026-07-08 A | 2026-07-27 A | 10PQ22-015, 10PQ22-014 SS | 100% |  |
| 10PQ22-017 |  | Próba ciœnieniowa – Sekcja 01 | 2d | 2026-07-20 A | 2026-07-22 A | 10PQ22-016 | 100% |  |
| 10PQ22-018 |  | Izolacje – Sekcja 01 | 11d | 2026-07-28 A | 2026-08-12 A | 10PQ22-017 | 100% |  |
| 10PQ22-019 |  | Malowanie i oznakowanie – Sekcja 01 | 6d | 2026-08-04 A | 2026-08-11 A | 10PQ22-018 FF+2d | 100% |  |
|  | SEKCJA 02 | **Sekcja 02** |  | 2026-03-12 | 2026-10-02 |  |  |  |
| 10PQ22-020 |  | Prefabrykacja ruroci¹gów – Sekcja 02 | 5.8d | 2026-03-12 A | 2026-03-19 A | 10PQ22-012, 10PQ22-015 SS+5d | 100% |  |
| 10PQ22-021 |  | Monta¿ ruroci¹gów – Sekcja 02 | 6.1d | 2026-07-20 A | 2026-10-02 | 10PQ22-020, 10PQ22-014 SS+6d | 41% | 348.8d |
| 10PQ22-022 |  | Próba ciœnieniowa – Sekcja 02 | 3d | 2026-07-27 A | 2026-08-03 A | 10PQ22-021 | 100% |  |
| 10PQ22-023 |  | Izolacje – Sekcja 02 | 6d | 2026-07-28 A | 2026-08-05 A | 10PQ22-022 | 100% |  |
| 10PQ22-024 |  | Malowanie i oznakowanie – Sekcja 02 | 3d | 2026-08-06 A | 2026-08-10 A | 10PQ22-023 FF+2d | 100% |  |
|  | SEKCJA 03 | **Sekcja 03** |  | 2026-03-19 | 2026-08-20 |  |  |  |
|  | PODSEKCJA | **Podsekcja 03.A** |  | 2026-03-19 | 2026-08-20 |  |  |  |
| 10PQ22-027 |  | Prefabrykacja ruroci¹gów – Sekcja 03 | 5.1d | 2026-03-19 A | 2026-03-25 A | 10PQ22-012, 10PQ22-020 SS+5d | 100% |  |
| 10PQ22-028 |  | Monta¿ ruroci¹gów – Sekcja 03 | 9.8d | 2026-07-20 A | 2026-08-03 A | 10PQ22-027, 10PQ22-014 SS+9d | 100% |  |
| 10PQ22-029 |  | Próba ciœnieniowa – Sekcja 03 | 5d | 2026-07-29 A | 2026-08-04 A | 10PQ22-028 | 100% |  |
| 10PQ22-030 |  | Izolacje – Sekcja 03 | 7d | 2026-08-11 A | 2026-08-20 A | 10PQ22-029 | 100% |  |
| 10PQ22-031 |  | Malowanie i oznakowanie – Sekcja 03 | 5d | 2026-08-14 A | 2026-08-20 A | 10PQ22-030 FF+2d | 100% |  |
|  | SEKCJA 04 | **Sekcja 04** |  | 2026-03-27 | 2026-09-01 |  |  |  |
| 10PQ22-032 |  | Prefabrykacja ruroci¹gów – Sekcja 04 | 9.8d | 2026-03-27 A | 2026-04-13 A | 10PQ22-012, 10PQ22-027 SS+5d | 100% |  |
| 10PQ22-033 |  | Monta¿ ruroci¹gów – Sekcja 04 | 16d | 2026-07-14 A | 2026-08-07 A | 10PQ22-032, 10PQ22-014 SS+6d | 100% |  |
| 10PQ22-034 |  | Próba ciœnieniowa – Sekcja 04 | 6d | 2026-08-06 A | 2026-08-13 A | 10PQ22-033 | 100% |  |
| 10PQ22-035 |  | Izolacje – Sekcja 04 | 8d | 2026-08-18 A | 2026-08-31 A | 10PQ22-034 | 100% |  |
| 10PQ22-036 |  | Malowanie i oznakowanie – Sekcja 04 | 3d | 2026-08-26 A | 2026-09-01 A | 10PQ22-035 FF+2d | 100% |  |
|  | SEKCJA 05 | **Sekcja 05** |  | 2026-04-08 | 2026-08-05 |  |  |  |
| 10PQ22-039 |  | Prefabrykacja ruroci¹gów – Sekcja 05 | 14.3d | 2026-04-08 A | 2026-04-28 A | 10PQ22-012, 10PQ22-032 SS+5d | 100% |  |
| 10PQ22-040 |  | Monta¿ ruroci¹gów – Sekcja 05 | 9.3d | 2026-07-17 A | 2026-07-31 A | 10PQ22-039, 10PQ22-014 SS+6d | 100% |  |
| 10PQ22-041 |  | Próba ciœnieniowa – Sekcja 05 | 2d | 2026-07-24 A | 2026-07-29 A | 10PQ22-040 | 100% |  |
| 10PQ22-043 |  | Malowanie i oznakowanie – Sekcja 05 | 7d | 2026-07-24 A | 2026-08-05 A | 10PQ22-042 FF+2d | 100% |  |
| 10PQ22-042 |  | Izolacje – Sekcja 05 | 3d | 2026-07-30 A | 2026-08-04 A | 10PQ22-041 | 100% |  |
|  | SEKCJA 06 | **Sekcja 06** |  | 2026-04-09 | 2026-09-11 |  |  |  |
|  | PODSEKCJA | **Podsekcja 06.A** |  | 2026-04-09 | 2026-09-11 |  |  |  |
| 10PQ22-044 |  | Prefabrykacja ruroci¹gów – Sekcja 06 | 8d | 2026-04-09 A | 2026-04-21 A | 10PQ22-012, 10PQ22-039 SS+5d | 100% |  |
| 10PQ22-045 |  | Monta¿ ruroci¹gów – Sekcja 06 | 23.6d | 2026-07-14 A | 2026-08-18 A | 10PQ22-044, 10PQ22-014 SS+6d | 100% |  |
| 10PQ22-046 |  | Próba ciœnieniowa – Sekcja 06 | 5d | 2026-08-18 A | 2026-08-24 A | 10PQ22-045 | 100% |  |
| 10PQ22-047 |  | Izolacje – Sekcja 06 | 9d | 2026-08-26 A | 2026-09-08 A | 10PQ22-046 | 100% |  |
| 10PQ22-048 |  | Malowanie i oznakowanie – Sekcja 06 | 3d | 2026-09-04 A | 2026-09-11 A | 10PQ22-047 FF+2d | 100% |  |
|  | SEKCJA 07 | **Sekcja 07** |  | 2026-04-20 | 2026-08-21 |  |  |  |
| 10PQ22-051 |  | Prefabrykacja ruroci¹gów – Sekcja 07 | 12.3d | 2026-04-20 A | 2026-05-05 A | 10PQ22-012, 10PQ22-044 SS+5d | 100% |  |
| 10PQ22-052 |  | Monta¿ ruroci¹gów – Sekcja 07 | 14.6d | 2026-07-15 A | 2026-08-06 A | 10PQ22-051, 10PQ22-014 SS+5d | 100% |  |

| ID | WBS | Task | Duration | Start | Finish | Predecessors | Complete | Total float |
| --- | --- | --- | --- | --- | --- | --- | --- | --- |
| 10PQ22-053 |  | Próba ciœnieniowa – Sekcja 07 | 3d | 2026-07-31 A | 2026-08-04 A | 10PQ22-052 | 100% |  |
| 10PQ22-054 |  | Izolacje – Sekcja 07 | 7d | 2026-08-10 A | 2026-08-21 A | 10PQ22-053 | 100% |  |
| 10PQ22-055 |  | Malowanie i oznakowanie – Sekcja 07 | 4d | 2026-08-13 A | 2026-08-20 A | 10PQ22-054 FF+2d | 100% |  |
|  | SEKCJA 08 | **Sekcja 08** |  | 2026-04-27 | 2026-08-20 |  |  |  |
| 10PQ22-056 |  | Prefabrykacja ruroci¹gów – Sekcja 08 | 14.7d | 2026-04-27 A | 2026-05-18 A | 10PQ22-012, 10PQ22-051 SS+5d | 100% |  |
| 10PQ22-057 |  | Monta¿ ruroci¹gów – Sekcja 08 | 14.9d | 2026-07-13 A | 2026-07-30 A | 10PQ22-056, 10PQ22-014 SS+5d | 100% |  |
| 10PQ22-058 |  | Próba ciœnieniowa – Sekcja 08 | 3d | 2026-08-04 A | 2026-08-11 A | 10PQ22-057 | 100% |  |
| 10PQ22-059 |  | Izolacje – Sekcja 08 | 5d | 2026-08-04 A | 2026-08-13 A | 10PQ22-058 | 100% |  |
| 10PQ22-060 |  | Malowanie i oznakowanie – Sekcja 08 | 5d | 2026-08-11 A | 2026-08-20 A | 10PQ22-059 FF+2d | 100% |  |
|  | SEKCJA 09 | **Sekcja 09** |  | 2026-05-06 | 2026-10-08 |  |  |  |
|  | PODSEKCJA | **Podsekcja 09.A** |  | 2026-05-06 | 2026-10-08 |  |  |  |
| 10PQ22-063 |  | Prefabrykacja ruroci¹gów – Sekcja 09 | 10.3d | 2026-05-06 A | 2026-10-08 | 10PQ22-012, 10PQ22-056 SS+5d | 31% | 335.5d |
| 10PQ22-064 |  | Monta¿ ruroci¹gów – Sekcja 09 | 11d | 2026-07-20 A | 2026-08-06 A | 10PQ22-063, 10PQ22-014 SS+8d | 100% |  |
| 10PQ22-065 |  | Próba ciœnieniowa – Sekcja 09 | 5d | 2026-08-05 A | 2026-08-14 A | 10PQ22-064 | 100% |  |
| 10PQ22-066 |  | Izolacje – Sekcja 09 | 12d | 2026-08-11 A | 2026-08-28 A | 10PQ22-065 | 100% |  |
| 10PQ22-067 |  | Malowanie i oznakowanie – Sekcja 09 | 7d | 2026-08-18 A | 2026-08-28 A | 10PQ22-066 FF+2d | 100% |  |
|  | SEKCJA 10 | **Sekcja 10** |  | 2026-05-07 | 2026-08-13 |  |  |  |
| 10PQ22-068 |  | Prefabrykacja ruroci¹gów – Sekcja 10 | 12d | 2026-05-07 A | 2026-05-26 A | 10PQ22-012, 10PQ22-063 SS+5d | 100% |  |
| 10PQ22-069 |  | Monta¿ ruroci¹gów – Sekcja 10 | 11.9d | 2026-07-09 A | 2026-07-28 A | 10PQ22-068, 10PQ22-014 SS+4d | 100% |  |
| 10PQ22-070 |  | Próba ciœnieniowa – Sekcja 10 | 2d | 2026-07-28 A | 2026-07-30 A | 10PQ22-069 | 100% |  |
| 10PQ22-071 |  | Izolacje – Sekcja 10 | 6d | 2026-07-31 A | 2026-08-12 A | 10PQ22-070 | 100% |  |
| 10PQ22-072 |  | Malowanie i oznakowanie – Sekcja 10 | 2d | 2026-08-07 A | 2026-08-13 A | 10PQ22-071 FF+2d | 100% |  |
|  | SEKCJA 11 | **Sekcja 11** |  | 2026-05-18 | 2026-08-21 |  |  |  |
| 10PQ22-075 |  | Prefabrykacja ruroci¹gów – Sekcja 11 | 10.3d | 2026-05-18 A | 2026-05-29 A | 10PQ22-012, 10PQ22-068 SS+5d | 100% |  |
| 10PQ22-076 |  | Monta¿ ruroci¹gów – Sekcja 11 | 16.8d | 2026-07-10 A | 2026-08-04 A | 10PQ22-075, 10PQ22-014 SS+1d | 100% |  |
| 10PQ22-077 |  | Próba ciœnieniowa – Sekcja 11 | 4d | 2026-07-29 A | 2026-08-03 A | 10PQ22-076 | 100% |  |
| 10PQ22-078 |  | Izolacje – Sekcja 11 | 11d | 2026-08-06 A | 2026-08-20 A | 10PQ22-077 | 100% |  |
| 10PQ22-079 |  | Malowanie i oznakowanie – Sekcja 11 | 5d | 2026-08-13 A | 2026-08-21 A | 10PQ22-078 FF+2d | 100% |  |
|  | SEKCJA 12 | **Sekcja 12** |  | 2026-05-25 | 2026-10-09 |  |  |  |
|  | PODSEKCJA | **Podsekcja 12.A** |  | 2026-05-25 | 2026-10-09 |  |  |  |
| 10PQ22-080 |  | Prefabrykacja ruroci¹gów – Sekcja 12 | 11.7d | 2026-05-25 A | 2026-10-09 | 10PQ22-012, 10PQ22-075 SS+5d | 27% | 337.5d |
| 10PQ22-081 |  | Monta¿ ruroci¹gów – Sekcja 12 | 10.1d | 2026-07-09 A | 2026-07-22 A | 10PQ22-080, 10PQ22-014 SS+4d | 100% |  |
| 10PQ22-082 |  | Próba ciœnieniowa – Sekcja 12 | 4d | 2026-07-24 A | 2026-08-03 A | 10PQ22-081 | 100% |  |
| 10PQ22-083 |  | Izolacje – Sekcja 12 | 11d | 2026-07-29 A | 2026-08-14 A | 10PQ22-082 | 100% |  |
| 10PQ22-084 |  | Malowanie i oznakowanie – Sekcja 12 | 4d | 2026-08-12 A | 2026-08-19 A | 10PQ22-083 FF+2d | 100% |  |
|  | SEKCJA 13 | **Sekcja 13** |  | 2026-06-03 | 2026-08-25 |  |  |  |
| 10PQ22-087 |  | Prefabrykacja ruroci¹gów – Sekcja 13 | 5.1d | 2026-06-03 A | 2026-06-09 A | 10PQ22-012, 10PQ22-080 SS+5d | 100% |  |
| 10PQ22-088 |  | Monta¿ ruroci¹gów – Sekcja 13 | 19.1d | 2026-07-14 A | 2026-08-11 A | 10PQ22-087, 10PQ22-014 SS+3d | 100% |  |
| 10PQ22-089 |  | Próba ciœnieniowa – Sekcja 13 | 2d | 2026-08-10 A | 2026-08-14 A | 10PQ22-088 | 100% |  |
| 10PQ22-090 |  | Izolacje – Sekcja 13 | 7d | 2026-08-12 A | 2026-08-25 A | 10PQ22-089 | 100% |  |
| 10PQ22-091 |  | Malowanie i oznakowanie – Sekcja 13 | 3d | 2026-08-14 A | 2026-08-21 A | 10PQ22-090 FF+2d | 100% |  |
|  | SEKCJA 14 | **Sekcja 14** |  | 2026-06-10 | 2026-08-25 |  |  |  |
| 10PQ22-092 |  | Prefabrykacja ruroci¹gów – Sekcja 14 | 4.3d | 2026-06-10 A | 2026-06-16 A | 10PQ22-012, 10PQ22-087 SS+5d | 100% |  |
| 10PQ22-093 |  | Monta¿ ruroci¹gów – Sekcja 14 | 7.5d | 2026-07-21 A | 2026-07-30 A | 10PQ22-092, 10PQ22-014 SS+9d | 100% |  |
| 10PQ22-094 |  | Próba ciœnieniowa – Sekcja 14 | 6d | 2026-07-30 A | 2026-08-06 A | 10PQ22-093 | 100% |  |
| 10PQ22-095 |  | Izolacje – Sekcja 14 | 10d | 2026-08-04 A | 2026-08-19 A | 10PQ22-094 | 100% |  |
| 10PQ22-096 |  | Malowanie i oznakowanie – Sekcja 14 | 7d | 2026-08-12 A | 2026-08-25 A | 10PQ22-095 FF+2d | 100% |  |
|  | SEKCJA 15 | **Sekcja 15** |  | 2026-06-17 | 2026-08-27 |  |  |  |
|  | PODSEKCJA | **Podsekcja 15.A** |  | 2026-06-17 | 2026-08-27 |  |  |  |
| 10PQ22-099 |  | Prefabrykacja ruroci¹gów – Sekcja 15 | 12.1d | 2026-06-17 A | 2026-07-07 A | 10PQ22-012, 10PQ22-092 SS+5d | 100% |  |
| 10PQ22-100 |  | Monta¿ ruroci¹gów – Sekcja 15 | 17.2d | 2026-07-15 A | 2026-08-06 A | 10PQ22-099, 10PQ22-014 SS+4d | 100% |  |
| 10PQ22-101 |  | Próba ciœnieniowa – Sekcja 15 | 3d | 2026-08-03 A | 2026-08-06 A | 10PQ22-100 | 100% |  |
| 10PQ22-102 |  | Izolacje – Sekcja 15 | 8d | 2026-08-12 A | 2026-08-24 A | 10PQ22-101 | 100% |  |
| 10PQ22-103 |  | Malowanie i oznakowanie – Sekcja 15 | 8d | 2026-08-13 A | 2026-08-27 A | 10PQ22-102 FF+2d | 100% |  |
|  | SEKCJA 16 | **Sekcja 16** |  | 2026-06-23 | 2026-09-30 |  |  |  |
| 10PQ22-104 |  | Prefabrykacja ruroci¹gów – Sekcja 16 | 14.3d | 2026-06-23 A | 2026-07-15 A | 10PQ22-012, 10PQ22-099 SS+5d | 100% |  |
| 10PQ22-105 |  | Monta¿ ruroci¹gów – Sekcja 16 | 7.9d | 2026-07-17 A | 2026-07-28 A | 10PQ22-104, 10PQ22-014 SS+8d | 100% |  |
| 10PQ22-106 |  | Próba ciœnieniowa – Sekcja 16 | 5d | 2026-07-29 A | 2026-09-30 | 10PQ22-105 | 80% | 344d |
| 10PQ22-107 |  | Izolacje – Sekcja 16 | 7d | 2026-08-05 A | 2026-08-17 A | 10PQ22-106 | 100% |  |
| 10PQ22-108 |  | Malowanie i oznakowanie – Sekcja 16 | 2d | 2026-08-11 A | 2026-08-12 A | 10PQ22-107 FF+2d | 100% |  |
|  | SEKCJA 17 | **Sekcja 17** |  | 2026-06-30 | 2026-10-01 |  |  |  |
| 10PQ22-111 |  | Prefabrykacja ruroci¹gów – Sekcja 17 | 8.4d | 2026-06-30 A | 2026-07-09 A | 10PQ22-012, 10PQ22-104 SS+5d | 100% |  |
| 10PQ22-112 |  | Monta¿ ruroci¹gów – Sekcja 17 | 16d | 2026-07-21 A | 2026-08-12 A | 10PQ22-111, 10PQ22-014 SS+10d | 100% |  |
| 10PQ22-113 |  | Próba ciœnieniowa – Sekcja 17 | 5d | 2026-08-13 A | 2026-10-01 | 10PQ22-112 | 58% | 328.9d |
| 10PQ22-114 |  | Izolacje – Sekcja 17 | 12d | 2026-08-21 A | 2026-10-01 | 10PQ22-113 | 81% | 327.9d |
| 10PQ22-115 |  | Malowanie i oznakowanie – Sekcja 17 | 6d | 2026-09-01 A | 2026-09-08 A | 10PQ22-114 FF+2d | 100% |  |
|  | PROJ | **Projektowanie** |  | 2025-06-18 | 2027-01-18 |  |  |  |
|  | DOKUMENTAC | **Dokumentacja** |  | 2025-06-18 | 2027-01-18 |  |  |  |
| 10PQ22-001 |  | Projekt wykonawczy – System DCS | 109d | 2025-06-18 A | 2027-01-18 |  | 27% | 324.9d |
| 10PQ22-002 |  | Uzgodnienie dokumentacji z Inwestorem | 22d | 2025-11-18 A | 2025-12-19 A | 10PQ22-001 | 100% |  |

| ID | WBS | Task | Duration | Start | Finish | Predecessors | Complete | Total float |
| --- | --- | --- | --- | --- | --- | --- | --- | --- |
| 10PQ22-003 |  | Zatwierdzenie dokumentacji do realizacji | 15d | 2025-12-18 A | 2026-01-07 A | 10PQ22-002 | 100% |  |
| 10PQ22-004 |  | KM: Dokumentacja zatwierdzona – System DCS | 0d | 2026-01-08 A | 2026-01-08 | 10PQ22-003 | 100% |  |
|  | ROZR | **Rozruch** |  | 2026-09-15 | 2028-01-28 |  |  |  |
|  | KAMIENIE M | **Kamienie milowe** |  | 2028-01-28 | 2028-01-28 |  |  |  |
| 10PQ22-122 |  | KM: Zakoñczenie rozruchu – PL5001-SE-03 | 0d | 2028-01-28 | 2028-01-28 | 10PQ22-121, 16KE73-145, 29DM24-181, 21MY97-085, 26DX82-133, 12DQ22-169, 29YB32-097, 19WP38-068, 28AM31-109, 25ND89-104, 29XB26-092, 28YY90-116, 26CG51-121, 15XQ71-073, 25DF82-104 |  | 0d |
|  | ROZRUCH | **Rozruch** |  | 2026-09-15 | 2026-10-23 |  |  |  |
| 10PQ22-118 |  | Przegl¹d gotowoœci do rozruchu | 5d | 2026-09-15 A | 2026-09-21 A | 10PQ22-117, 10PQ22-019, 10PQ22-024, 10PQ22-026 | 100% |  |
| 10PQ22-119 |  | Rozruch na zimno | 13d | 2026-09-21 A | 2026-09-30 | 10PQ22-118 | 88% | 325.9d |
| 10PQ22-120 |  | Rozruch na gor¹co / próby ruchowe | 16d | 2026-10-01 | 2026-10-22 | 10PQ22-119 |  | 330.4d |
| 10PQ22-121 |  | KM: Odbiór koñcowy – System DCS | 0d | 2026-10-23 | 2026-10-23 | 10PQ22-120 |  | 330.4d |
|  | ZAKU | **Zakupy** |  | 2025-07-15 | 2026-12-31 |  |  |  |
|  | DOSTAWY | **Dostawy** |  | 2026-01-15 | 2026-12-31 |  |  |  |
| 10PQ22-008 |  | Produkcja u dostawcy | 81d | 2026-01-15 A | 2026-12-31 | 10PQ22-007 | 17% | 324.9d |
| 10PQ22-009 |  | Testy FAT | 4d | 2026-05-04 A | 2026-05-11 A | 10PQ22-008 | 100% |  |
| 10PQ22-010 |  | Transport i dostawa na plac budowy | 40d | 2026-05-08 A | 2026-07-02 A | 10PQ22-009 | 100% |  |
| 10PQ22-011 |  | KM: Dostawa na budowê – System DCS | 0d | 2026-07-09 A | 2026-07-09 | 10PQ22-010 | 100% |  |
|  | ZAMÓWIENIA | **Zamówienia** |  | 2025-07-15 | 2026-01-15 |  |  |  |
| 10PQ22-005 |  | Zapytanie ofertowe | 16d | 2025-07-15 A | 2025-08-07 A | 10PQ22-001 SS+20d | 100% |  |
| 10PQ22-006 |  | Analiza i wybór ofert | 16d | 2025-08-04 A | 2025-08-25 A | 10PQ22-005 | 100% |  |
| 10PQ22-007 |  | Zawarcie umowy / zamówienie | 5d | 2026-01-06 A | 2026-01-15 A | 10PQ22-006, 10PQ22-004 SS, 28BW90-004 FS+2d | 100% |  |
|  | 12DQ22 | **12DQ22 – System SCADA** |  | 2025-02-06 | 2027-09-07 |  |  |  |
|  | BUDO | **Budowa** |  | 2025-12-31 | 2027-08-06 |  |  |  |
|  | AKPIA | **AKPiA** |  | 2027-05-11 | 2027-06-03 |  |  |  |
| 12DQ22-164 |  | Monta¿ uk³adów AKPiA | 18d | 2027-05-11 | 2027-06-03 | 12DQ22-014 SS+5d |  | 148.9d |
|  | ELEKTRYKA | **Elektryka** |  | 2027-05-12 | 2027-06-11 |  |  |  |
| 12DQ22-074 |  | Pod³¹czenia i pomiary – trasa 10 | 8d | 2027-05-12 | 2027-05-21 | 12DQ22-073 FF |  | 189.9d |
| 12DQ22-134 |  | Pod³¹czenia i pomiary – trasa 20 | 8d | 2027-05-12 | 2027-05-21 | 12DQ22-133 FF |  | 189.9d |
| 12DQ22-025 |  | Uk³adanie kabli – trasa 02 | 13d | 2027-05-18 | 2027-06-03 | 12DQ22-014 SS+10d |  | 148.9d |
| 12DQ22-037 |  | Uk³adanie kabli – trasa 04 | 8d | 2027-05-18 | 2027-05-27 | 12DQ22-014 SS+10d |  | 185.9d |
| 12DQ22-049 |  | Uk³adanie kabli – trasa 06 | 17d | 2027-05-18 | 2027-06-09 | 12DQ22-014 SS+10d |  | 176.9d |
| 12DQ22-061 |  | Uk³adanie kabli – trasa 08 | 9d | 2027-05-18 | 2027-05-28 | 12DQ22-014 SS+10d |  | 184.9d |
| 12DQ22-073 |  | Uk³adanie kabli – trasa 10 | 4d | 2027-05-18 | 2027-05-21 | 12DQ22-014 SS+10d |  | 189.9d |
| 12DQ22-085 |  | Uk³adanie kabli – trasa 12 | 19d | 2027-05-18 | 2027-06-11 | 12DQ22-014 SS+10d |  | 174.9d |
| 12DQ22-097 |  | Uk³adanie kabli – trasa 14 | 6d | 2027-05-18 | 2027-05-25 | 12DQ22-014 SS+10d |  | 187.9d |
| 12DQ22-109 |  | Uk³adanie kabli – trasa 16 | 9d | 2027-05-18 | 2027-05-28 | 12DQ22-014 SS+10d |  | 184.9d |
| 12DQ22-121 |  | Uk³adanie kabli – trasa 18 | 19d | 2027-05-18 | 2027-06-11 | 12DQ22-014 SS+10d |  | 174.9d |
| 12DQ22-133 |  | Uk³adanie kabli – trasa 20 | 4d | 2027-05-18 | 2027-05-21 | 12DQ22-014 SS+10d |  | 189.9d |
| 12DQ22-145 |  | Uk³adanie kabli – trasa 22 | 13d | 2027-05-18 | 2027-06-03 | 12DQ22-014 SS+10d |  | 180.9d |
| 12DQ22-157 |  | Uk³adanie kabli – trasa 24 | 10d | 2027-05-18 | 2027-05-31 | 12DQ22-014 SS+10d |  | 151.9d |
| 12DQ22-110 |  | Pod³¹czenia i pomiary – trasa 16 | 8d | 2027-05-19 | 2027-05-28 | 12DQ22-109 FF |  | 184.9d |
| 12DQ22-062 |  | Pod³¹czenia i pomiary – trasa 08 | 7d | 2027-05-20 | 2027-05-28 | 12DQ22-061 FF |  | 184.9d |
| 12DQ22-038 |  | Pod³¹czenia i pomiary – trasa 04 | 5d | 2027-05-21 | 2027-05-27 | 12DQ22-037 FF |  | 185.9d |
| 12DQ22-098 |  | Pod³¹czenia i pomiary – trasa 14 | 3d | 2027-05-21 | 2027-05-25 | 12DQ22-097 FF |  | 187.9d |
| 12DQ22-158 |  | Pod³¹czenia i pomiary – trasa 24 | 5d | 2027-05-25 | 2027-05-31 | 12DQ22-157 FF |  | 151.9d |
| 12DQ22-146 |  | Pod³¹czenia i pomiary – trasa 22 | 6d | 2027-05-27 | 2027-06-03 | 12DQ22-145 FF |  | 180.9d |
| 12DQ22-026 |  | Pod³¹czenia i pomiary – trasa 02 | 3d | 2027-06-01 | 2027-06-03 | 12DQ22-025 FF |  | 148.9d |
| 12DQ22-086 |  | Pod³¹czenia i pomiary – trasa 12 | 9d | 2027-06-01 | 2027-06-11 | 12DQ22-085 FF |  | 174.9d |
| 12DQ22-050 |  | Pod³¹czenia i pomiary – trasa 06 | 4d | 2027-06-04 | 2027-06-09 | 12DQ22-049 FF |  | 176.9d |
| 12DQ22-122 |  | Pod³¹czenia i pomiary – trasa 18 | 3d | 2027-06-09 | 2027-06-11 | 12DQ22-121 FF |  | 174.9d |
|  | MONTA¯ | **Monta¿** |  | 2026-02-03 | 2027-08-06 |  |  |  |
| 12DQ22-013 |  | Monta¿ konstrukcji stalowych | 23d | 2026-02-03 A | 2026-03-10 A | 12DQ22-012 | 100% |  |
| 12DQ22-014 |  | Monta¿ urz¹dzeñ g³ównych | 68d | 2027-05-04 | 2027-08-05 | 12DQ22-013, 12DQ22-011 |  | 103.9d |
| 12DQ22-165 |  | KM: Zakoñczenie monta¿u – System SCADA | 0d | 2027-08-06 | 2027-08-06 | 12DQ22-156, 12DQ22-158, 12DQ22-163, 12DQ22-164, 12DQ22-014 |  | 103.9d |
|  | ROBOTY BUD | **Roboty budowlane** |  | 2025-12-31 | 2026-02-03 |  |  |  |
| 12DQ22-012 |  | Fundamenty i roboty ziemne | 25d | 2025-12-31 A | 2026-02-03 A | 12DQ22-007 FS+2d | 100% |  |
|  | RUROCI¥GI | **Ruroci¹gi** |  | 2026-02-03 | 2027-07-02 |  |  |  |
|  | SEKCJA 01 | **Sekcja 01** |  | 2026-02-03 | 2027-06-18 |  |  |  |
| 12DQ22-015 |  | Prefabrykacja ruroci¹gów – Sekcja 01 | 11.5d | 2026-02-03 A | 2026-02-19 A | 12DQ22-012 | 100% |  |
| 12DQ22-016 |  | Monta¿ ruroci¹gów – Sekcja 01 | 17.4d | 2027-05-04 | 2027-05-26 | 12DQ22-015, 12DQ22-014 SS |  | 137.5d |
| 12DQ22-017 |  | Próba ciœnieniowa – Sekcja 01 | 4d | 2027-05-27 | 2027-06-01 | 12DQ22-016 |  | 137.5d |
| 12DQ22-018 |  | Izolacje – Sekcja 01 | 11d | 2027-06-02 | 2027-06-16 | 12DQ22-017 |  | 137.5d |
| 12DQ22-019 |  | Malowanie i oznakowanie – Sekcja 01 | 6d | 2027-06-11 | 2027-06-18 | 12DQ22-018 FF+2d |  | 137.5d |
|  | SEKCJA 02 | **Sekcja 02** |  | 2026-02-09 | 2027-06-28 |  |  |  |
| 12DQ22-020 |  | Prefabrykacja ruroci¹gów – Sekcja 02 | 7.4d | 2026-02-09 A | 2026-02-20 A | 12DQ22-012, 12DQ22-015 SS+5d | 100% |  |
| 12DQ22-021 |  | Monta¿ ruroci¹gów – Sekcja 02 | 20.1d | 2027-05-18 | 2027-06-14 | 12DQ22-020, 12DQ22-014 SS+10d |  | 131.8d |
| 12DQ22-022 |  | Próba ciœnieniowa – Sekcja 02 | 2d | 2027-06-15 | 2027-06-16 | 12DQ22-021 |  | 131.8d |
| 12DQ22-023 |  | Izolacje – Sekcja 02 | 6d | 2027-06-17 | 2027-06-24 | 12DQ22-022 |  | 131.8d |
| 12DQ22-024 |  | Malowanie i oznakowanie – Sekcja 02 | 2d | 2027-06-25 | 2027-06-28 | 12DQ22-023 FF+2d |  | 131.8d |
|  | SEKCJA 03 | **Sekcja 03** |  | 2026-02-20 | 2027-06-17 |  |  |  |
|  | PODSEKCJA | **Podsekcja 03.A** |  | 2026-02-20 | 2027-06-17 |  |  |  |

| ID | WBS | Task | Duration | Start | Finish | Predecessors | Complete | Total float |
| --- | --- | --- | --- | --- | --- | --- | --- | --- |
| 12DQ22-027 |  | Prefabrykacja ruroci¹gów – Sekcja 03 | 9.8d | 2026-02-20 A | 2026-03-05 A | 12DQ22-012, 12DQ22-020 SS+5d | 100% |  |
| 12DQ22-028 |  | Monta¿ ruroci¹gów – Sekcja 03 | 14.2d | 2027-05-06 | 2027-05-25 | 12DQ22-027, 12DQ22-014 SS+2d |  | 170.7d |
| 12DQ22-029 |  | Próba ciœnieniowa – Sekcja 03 | 5d | 2027-05-26 | 2027-06-01 | 12DQ22-028 |  | 170.7d |
| 12DQ22-030 |  | Izolacje – Sekcja 03 | 10d | 2027-06-02 | 2027-06-15 | 12DQ22-029 |  | 170.7d |
| 12DQ22-031 |  | Malowanie i oznakowanie – Sekcja 03 | 7d | 2027-06-09 | 2027-06-17 | 12DQ22-030 FF+2d |  | 170.7d |
|  | SEKCJA 04 | **Sekcja 04** |  | 2026-02-24 | 2027-06-15 |  |  |  |
| 12DQ22-032 |  | Prefabrykacja ruroci¹gów – Sekcja 04 | 4.3d | 2026-02-24 A | 2026-03-04 A | 12DQ22-012, 12DQ22-027 SS+5d | 100% |  |
| 12DQ22-033 |  | Monta¿ ruroci¹gów – Sekcja 04 | 12.8d | 2027-05-11 | 2027-05-26 | 12DQ22-032, 12DQ22-014 SS+5d |  | 172.1d |
| 12DQ22-034 |  | Próba ciœnieniowa – Sekcja 04 | 6d | 2027-05-27 | 2027-06-03 | 12DQ22-033 |  | 172.1d |
| 12DQ22-035 |  | Izolacje – Sekcja 04 | 6d | 2027-06-04 | 2027-06-11 | 12DQ22-034 |  | 172.1d |
| 12DQ22-036 |  | Malowanie i oznakowanie – Sekcja 04 | 4d | 2027-06-10 | 2027-06-15 | 12DQ22-035 FF+2d |  | 172.1d |
|  | SEKCJA 05 | **Sekcja 05** |  | 2026-03-02 | 2027-06-22 |  |  |  |
| 12DQ22-039 |  | Prefabrykacja ruroci¹gów – Sekcja 05 | 9.1d | 2026-03-02 A | 2026-03-12 A | 12DQ22-012, 12DQ22-032 SS+5d | 100% |  |
| 12DQ22-040 |  | Monta¿ ruroci¹gów – Sekcja 05 | 14d | 2027-05-14 | 2027-06-02 | 12DQ22-039, 12DQ22-014 SS+8d |  | 167.9d |
| 12DQ22-041 |  | Próba ciœnieniowa – Sekcja 05 | 5d | 2027-06-03 | 2027-06-09 | 12DQ22-040 |  | 167.9d |
| 12DQ22-042 |  | Izolacje – Sekcja 05 | 7d | 2027-06-10 | 2027-06-18 | 12DQ22-041 |  | 167.9d |
| 12DQ22-043 |  | Malowanie i oznakowanie – Sekcja 05 | 5d | 2027-06-16 | 2027-06-22 | 12DQ22-042 FF+2d |  | 167.9d |
|  | SEKCJA 06 | **Sekcja 06** |  | 2026-03-10 | 2027-06-01 |  |  |  |
|  | PODSEKCJA | **Podsekcja 06.A** |  | 2026-03-10 | 2027-06-01 |  |  |  |
| 12DQ22-044 |  | Prefabrykacja ruroci¹gów – Sekcja 06 | 4d | 2026-03-10 A | 2026-03-18 A | 12DQ22-012, 12DQ22-039 SS+5d | 100% |  |
| 12DQ22-045 |  | Monta¿ ruroci¹gów – Sekcja 06 | 8.1d | 2027-05-04 | 2027-05-13 | 12DQ22-044, 12DQ22-014 SS |  | 182.8d |
| 12DQ22-046 |  | Próba ciœnieniowa – Sekcja 06 | 2d | 2027-05-14 | 2027-05-17 | 12DQ22-045 |  | 182.8d |
| 12DQ22-047 |  | Izolacje – Sekcja 06 | 9d | 2027-05-18 | 2027-05-28 | 12DQ22-046 |  | 182.8d |
| 12DQ22-048 |  | Malowanie i oznakowanie – Sekcja 06 | 8d | 2027-05-21 | 2027-06-01 | 12DQ22-047 FF+2d |  | 182.8d |
|  | SEKCJA 07 | **Sekcja 07** |  | 2026-03-19 | 2027-06-24 |  |  |  |
| 12DQ22-051 |  | Prefabrykacja ruroci¹gów – Sekcja 07 | 8.9d | 2026-03-19 A | 2026-03-31 A | 12DQ22-012, 12DQ22-044 SS+5d | 100% |  |
| 12DQ22-052 |  | Monta¿ ruroci¹gów – Sekcja 07 | 18.7d | 2027-05-07 | 2027-06-01 | 12DQ22-051, 12DQ22-014 SS+3d |  | 165.2d |
| 12DQ22-053 |  | Próba ciœnieniowa – Sekcja 07 | 5d | 2027-06-02 | 2027-06-08 | 12DQ22-052 |  | 165.2d |
| 12DQ22-054 |  | Izolacje – Sekcja 07 | 10d | 2027-06-09 | 2027-06-22 | 12DQ22-053 |  | 165.2d |
| 12DQ22-055 |  | Malowanie i oznakowanie – Sekcja 07 | 5d | 2027-06-18 | 2027-06-24 | 12DQ22-054 FF+2d |  | 165.2d |
|  | SEKCJA 08 | **Sekcja 08** |  | 2026-03-25 | 2027-06-25 |  |  |  |
| 12DQ22-056 |  | Prefabrykacja ruroci¹gów – Sekcja 08 | 14.4d | 2026-03-25 A | 2026-04-13 A | 12DQ22-012, 12DQ22-051 SS+5d | 100% |  |
| 12DQ22-057 |  | Monta¿ ruroci¹gów – Sekcja 08 | 22.4d | 2027-05-06 | 2027-06-04 | 12DQ22-056, 12DQ22-014 SS+2d |  | 164.5d |
| 12DQ22-058 |  | Próba ciœnieniowa – Sekcja 08 | 4d | 2027-06-07 | 2027-06-10 | 12DQ22-057 |  | 164.5d |
| 12DQ22-059 |  | Izolacje – Sekcja 08 | 9d | 2027-06-11 | 2027-06-23 | 12DQ22-058 |  | 164.5d |
| 12DQ22-060 |  | Malowanie i oznakowanie – Sekcja 08 | 4d | 2027-06-22 | 2027-06-25 | 12DQ22-059 FF+2d |  | 164.5d |
|  | SEKCJA 09 | **Sekcja 09** |  | 2026-04-03 | 2027-06-28 |  |  |  |
|  | PODSEKCJA | **Podsekcja 09.A** |  | 2026-04-03 | 2027-06-28 |  |  |  |
| 12DQ22-063 |  | Prefabrykacja ruroci¹gów – Sekcja 09 | 14.8d | 2026-04-03 A | 2026-04-23 A | 12DQ22-012, 12DQ22-056 SS+5d | 100% |  |
| 12DQ22-064 |  | Monta¿ ruroci¹gów – Sekcja 09 | 14.9d | 2027-05-18 | 2027-06-04 | 12DQ22-063, 12DQ22-014 SS+10d |  | 163d |
| 12DQ22-065 |  | Próba ciœnieniowa – Sekcja 09 | 3d | 2027-06-07 | 2027-06-09 | 12DQ22-064 |  | 163d |
| 12DQ22-066 |  | Izolacje – Sekcja 09 | 11d | 2027-06-10 | 2027-06-24 | 12DQ22-065 |  | 163d |
| 12DQ22-067 |  | Malowanie i oznakowanie – Sekcja 09 | 7d | 2027-06-18 | 2027-06-28 | 12DQ22-066 FF+2d |  | 163d |
|  | SEKCJA 10 | **Sekcja 10** |  | 2026-04-07 | 2027-07-01 |  |  |  |
| 12DQ22-068 |  | Prefabrykacja ruroci¹gów – Sekcja 10 | 12.6d | 2026-04-07 A | 2026-04-27 A | 12DQ22-012, 12DQ22-063 SS+5d | 100% |  |
| 12DQ22-069 |  | Monta¿ ruroci¹gów – Sekcja 10 | 20.9d | 2027-05-18 | 2027-06-14 | 12DQ22-068, 12DQ22-014 SS+10d |  | 160d |
| 12DQ22-070 |  | Próba ciœnieniowa – Sekcja 10 | 3d | 2027-06-15 | 2027-06-17 | 12DQ22-069 |  | 160d |
| 12DQ22-071 |  | Izolacje – Sekcja 10 | 8d | 2027-06-18 | 2027-06-29 | 12DQ22-070 |  | 160d |
| 12DQ22-072 |  | Malowanie i oznakowanie – Sekcja 10 | 7d | 2027-06-23 | 2027-07-01 | 12DQ22-071 FF+2d |  | 160d |
|  | SEKCJA 11 | **Sekcja 11** |  | 2026-04-13 | 2027-07-02 |  |  |  |
| 12DQ22-075 |  | Prefabrykacja ruroci¹gów – Sekcja 11 | 11.6d | 2026-04-13 A | 2026-04-30 A | 12DQ22-012, 12DQ22-068 SS+5d | 100% |  |
| 12DQ22-076 |  | Monta¿ ruroci¹gów – Sekcja 11 | 24.2d | 2027-05-10 | 2027-06-10 | 12DQ22-075, 12DQ22-014 SS+4d |  | 159.7d |
| 12DQ22-077 |  | Próba ciœnieniowa – Sekcja 11 | 4d | 2027-06-11 | 2027-06-16 | 12DQ22-076 |  | 159.7d |
| 12DQ22-078 |  | Izolacje – Sekcja 11 | 10d | 2027-06-17 | 2027-06-30 | 12DQ22-077 |  | 159.7d |
| 12DQ22-079 |  | Malowanie i oznakowanie – Sekcja 11 | 8d | 2027-06-23 | 2027-07-02 | 12DQ22-078 FF+2d |  | 159.7d |
|  | SEKCJA 12 | **Sekcja 12** |  | 2026-04-24 | 2027-06-25 |  |  |  |
|  | PODSEKCJA | **Podsekcja 12.A** |  | 2026-04-24 | 2027-06-25 |  |  |  |
| 12DQ22-080 |  | Prefabrykacja ruroci¹gów – Sekcja 12 | 8.1d | 2026-04-24 A | 2026-05-08 A | 12DQ22-012, 12DQ22-075 SS+5d | 100% |  |
| 12DQ22-081 |  | Monta¿ ruroci¹gów – Sekcja 12 | 13.5d | 2027-05-14 | 2027-06-01 | 12DQ22-080, 12DQ22-014 SS+8d |  | 164.4d |
| 12DQ22-082 |  | Próba ciœnieniowa – Sekcja 12 | 6d | 2027-06-02 | 2027-06-09 | 12DQ22-081 |  | 164.4d |
| 12DQ22-083 |  | Izolacje – Sekcja 12 | 10d | 2027-06-10 | 2027-06-23 | 12DQ22-082 |  | 164.4d |
| 12DQ22-084 |  | Malowanie i oznakowanie – Sekcja 12 | 4d | 2027-06-22 | 2027-06-25 | 12DQ22-083 FF+2d |  | 164.4d |
|  | SEKCJA 13 | **Sekcja 13** |  | 2026-05-01 | 2027-06-22 |  |  |  |
| 12DQ22-087 |  | Prefabrykacja ruroci¹gów – Sekcja 13 | 6d | 2026-05-01 A | 2026-05-08 A | 12DQ22-012, 12DQ22-080 SS+5d | 100% |  |
| 12DQ22-088 |  | Monta¿ ruroci¹gów – Sekcja 13 | 19.9d | 2027-05-07 | 2027-06-02 | 12DQ22-087, 12DQ22-014 SS+3d |  | 167d |
| 12DQ22-089 |  | Próba ciœnieniowa – Sekcja 13 | 5d | 2027-06-03 | 2027-06-09 | 12DQ22-088 |  | 167d |
| 12DQ22-090 |  | Izolacje – Sekcja 13 | 7d | 2027-06-10 | 2027-06-18 | 12DQ22-089 |  | 167d |
| 12DQ22-091 |  | Malowanie i oznakowanie – Sekcja 13 | 6d | 2027-06-15 | 2027-06-22 | 12DQ22-090 FF+2d |  | 167d |
|  | SEKCJA 14 | **Sekcja 14** |  | 2026-05-05 | 2027-06-04 |  |  |  |
| 12DQ22-092 |  | Prefabrykacja ruroci¹gów – Sekcja 14 | 5.9d | 2026-05-05 A | 2026-05-11 A | 12DQ22-012, 12DQ22-087 SS+5d | 100% |  |

| ID | WBS | Task | Duration | Start | Finish | Predecessors | Complete | Total float |
| --- | --- | --- | --- | --- | --- | --- | --- | --- |
| 12DQ22-093 |  | Monta¿ ruroci¹gów – Sekcja 14 | 7.4d | 2027-05-13 | 2027-05-21 | 12DQ22-092, 12DQ22-014 SS+7d |  | 179.5d |
| 12DQ22-094 |  | Próba ciœnieniowa – Sekcja 14 | 4d | 2027-05-24 | 2027-05-27 | 12DQ22-093 |  | 179.5d |
| 12DQ22-095 |  | Izolacje – Sekcja 14 | 4d | 2027-05-28 | 2027-06-02 | 12DQ22-094 |  | 179.5d |
| 12DQ22-096 |  | Malowanie i oznakowanie – Sekcja 14 | 4d | 2027-06-01 | 2027-06-04 | 12DQ22-095 FF+2d |  | 179.5d |
|  | SEKCJA 15 | **Sekcja 15** |  | 2026-05-14 | 2027-05-28 |  |  |  |
|  | PODSEKCJA | **Podsekcja 15.A** |  | 2026-05-14 | 2027-05-28 |  |  |  |
| 12DQ22-099 |  | Prefabrykacja ruroci¹gów – Sekcja 15 | 14.4d | 2026-05-14 A | 2026-06-05 A | 12DQ22-012, 12DQ22-092 SS+5d | 100% |  |
| 12DQ22-100 |  | Monta¿ ruroci¹gów – Sekcja 15 | 7.5d | 2027-05-04 | 2027-05-12 | 12DQ22-099, 12DQ22-014 SS |  | 184.4d |
| 12DQ22-101 |  | Próba ciœnieniowa – Sekcja 15 | 2d | 2027-05-13 | 2027-05-14 | 12DQ22-100 |  | 184.4d |
| 12DQ22-102 |  | Izolacje – Sekcja 15 | 8d | 2027-05-17 | 2027-05-26 | 12DQ22-101 |  | 184.4d |
| 12DQ22-103 |  | Malowanie i oznakowanie – Sekcja 15 | 2d | 2027-05-27 | 2027-05-28 | 12DQ22-102 FF+2d |  | 184.4d |
|  | SEKCJA 16 | **Sekcja 16** |  | 2026-05-20 | 2027-06-02 |  |  |  |
| 12DQ22-104 |  | Prefabrykacja ruroci¹gów – Sekcja 16 | 5.1d | 2026-05-20 A | 2026-05-29 A | 12DQ22-012, 12DQ22-099 SS+5d | 100% |  |
| 12DQ22-105 |  | Monta¿ ruroci¹gów – Sekcja 16 | 5.9d | 2027-05-07 | 2027-05-13 | 12DQ22-104, 12DQ22-014 SS+3d |  | 181d |
| 12DQ22-106 |  | Próba ciœnieniowa – Sekcja 16 | 3d | 2027-05-14 | 2027-05-18 | 12DQ22-105 |  | 181d |
| 12DQ22-107 |  | Izolacje – Sekcja 16 | 9d | 2027-05-19 | 2027-05-31 | 12DQ22-106 |  | 181d |
| 12DQ22-108 |  | Malowanie i oznakowanie – Sekcja 16 | 3d | 2027-05-31 | 2027-06-02 | 12DQ22-107 FF+2d |  | 181d |
|  | SEKCJA 17 | **Sekcja 17** |  | 2026-05-26 | 2027-06-24 |  |  |  |
| 12DQ22-111 |  | Prefabrykacja ruroci¹gów – Sekcja 17 | 7.5d | 2026-05-26 A | 2026-06-04 A | 12DQ22-012, 12DQ22-104 SS+5d | 100% |  |
| 12DQ22-112 |  | Monta¿ ruroci¹gów – Sekcja 17 | 14.1d | 2027-05-14 | 2027-06-02 | 12DQ22-111, 12DQ22-014 SS+8d |  | 165.8d |
| 12DQ22-113 |  | Próba ciœnieniowa – Sekcja 17 | 4d | 2027-06-03 | 2027-06-08 | 12DQ22-112 |  | 165.8d |
| 12DQ22-114 |  | Izolacje – Sekcja 17 | 10d | 2027-06-09 | 2027-06-22 | 12DQ22-113 |  | 165.8d |
| 12DQ22-115 |  | Malowanie i oznakowanie – Sekcja 17 | 5d | 2027-06-18 | 2027-06-24 | 12DQ22-114 FF+2d |  | 165.8d |
|  | SEKCJA 18 | **Sekcja 18** |  | 2026-06-03 | 2027-06-17 |  |  |  |
|  | PODSEKCJA | **Podsekcja 18.A** |  | 2026-06-03 | 2027-06-17 |  |  |  |
| 12DQ22-116 |  | Prefabrykacja ruroci¹gów – Sekcja 18 | 7.5d | 2026-06-03 A | 2026-06-15 A | 12DQ22-012, 12DQ22-111 SS+5d | 100% |  |
| 12DQ22-117 |  | Monta¿ ruroci¹gów – Sekcja 18 | 9.5d | 2027-05-13 | 2027-05-25 | 12DQ22-116, 12DQ22-014 SS+7d |  | 170.4d |
| 12DQ22-118 |  | Próba ciœnieniowa – Sekcja 18 | 6d | 2027-05-26 | 2027-06-02 | 12DQ22-117 |  | 170.4d |
| 12DQ22-119 |  | Izolacje – Sekcja 18 | 9d | 2027-06-03 | 2027-06-15 | 12DQ22-118 |  | 170.4d |
| 12DQ22-120 |  | Malowanie i oznakowanie – Sekcja 18 | 4d | 2027-06-14 | 2027-06-17 | 12DQ22-119 FF+2d |  | 170.4d |
|  | SEKCJA 19 | **Sekcja 19** |  | 2026-06-09 | 2027-06-09 |  |  |  |
| 12DQ22-123 |  | Prefabrykacja ruroci¹gów – Sekcja 19 | 12.3d | 2026-06-09 A | 2026-06-26 A | 12DQ22-012, 12DQ22-116 SS+5d | 100% |  |
| 12DQ22-124 |  | Monta¿ ruroci¹gów – Sekcja 19 | 8.2d | 2027-05-17 | 2027-05-26 | 12DQ22-123, 12DQ22-014 SS+9d |  | 176.7d |
| 12DQ22-125 |  | Próba ciœnieniowa – Sekcja 19 | 2d | 2027-05-27 | 2027-05-28 | 12DQ22-124 |  | 176.7d |
| 12DQ22-126 |  | Izolacje – Sekcja 19 | 6d | 2027-05-31 | 2027-06-07 | 12DQ22-125 |  | 176.7d |
| 12DQ22-127 |  | Malowanie i oznakowanie – Sekcja 19 | 6d | 2027-06-02 | 2027-06-09 | 12DQ22-126 FF+2d |  | 176.7d |
|  | SEKCJA 20 | **Sekcja 20** |  | 2026-06-15 | 2027-05-31 |  |  |  |
| 12DQ22-128 |  | Prefabrykacja ruroci¹gów – Sekcja 20 | 3d | 2026-06-15 A | 2026-06-17 A | 12DQ22-012, 12DQ22-123 SS+5d | 100% |  |
| 12DQ22-129 |  | Monta¿ ruroci¹gów – Sekcja 20 | 6d | 2027-05-04 | 2027-05-11 | 12DQ22-128, 12DQ22-014 SS |  | 183.9d |
| 12DQ22-130 |  | Próba ciœnieniowa – Sekcja 20 | 3d | 2027-05-12 | 2027-05-14 | 12DQ22-129 |  | 183.9d |
| 12DQ22-131 |  | Izolacje – Sekcja 20 | 9d | 2027-05-17 | 2027-05-27 | 12DQ22-130 |  | 183.9d |
| 12DQ22-132 |  | Malowanie i oznakowanie – Sekcja 20 | 6d | 2027-05-24 | 2027-05-31 | 12DQ22-131 FF+2d |  | 183.9d |
|  | SEKCJA 21 | **Sekcja 21** |  | 2026-06-22 | 2027-06-09 |  |  |  |
|  | PODSEKCJA | **Podsekcja 21.A** |  | 2026-06-22 | 2027-06-09 |  |  |  |
| 12DQ22-135 |  | Prefabrykacja ruroci¹gów – Sekcja 21 | 10.1d | 2026-06-22 A | 2026-07-06 A | 12DQ22-012, 12DQ22-128 SS+5d | 100% |  |
| 12DQ22-136 |  | Monta¿ ruroci¹gów – Sekcja 21 | 6.4d | 2027-05-14 | 2027-05-21 | 12DQ22-135, 12DQ22-014 SS+8d |  | 176.5d |
| 12DQ22-137 |  | Próba ciœnieniowa – Sekcja 21 | 5d | 2027-05-24 | 2027-05-28 | 12DQ22-136 |  | 176.5d |
| 12DQ22-138 |  | Izolacje – Sekcja 21 | 6d | 2027-05-31 | 2027-06-07 | 12DQ22-137 |  | 176.5d |
| 12DQ22-139 |  | Malowanie i oznakowanie – Sekcja 21 | 8d | 2027-05-31 | 2027-06-09 | 12DQ22-138 FF+2d |  | 176.5d |
|  | SEKCJA 22 | **Sekcja 22** |  | 2026-06-29 | 2027-06-18 |  |  |  |
| 12DQ22-140 |  | Prefabrykacja ruroci¹gów – Sekcja 22 | 9d | 2026-06-29 A | 2026-07-13 A | 12DQ22-012, 12DQ22-135 SS+5d | 100% |  |
| 12DQ22-141 |  | Monta¿ ruroci¹gów – Sekcja 22 | 11.9d | 2027-05-17 | 2027-05-31 | 12DQ22-140, 12DQ22-014 SS+9d |  | 169d |
| 12DQ22-142 |  | Próba ciœnieniowa – Sekcja 22 | 4d | 2027-06-01 | 2027-06-04 | 12DQ22-141 |  | 169d |
| 12DQ22-143 |  | Izolacje – Sekcja 22 | 8d | 2027-06-07 | 2027-06-16 | 12DQ22-142 |  | 169d |
| 12DQ22-144 |  | Malowanie i oznakowanie – Sekcja 22 | 6d | 2027-06-11 | 2027-06-18 | 12DQ22-143 FF+2d |  | 169d |
|  | SEKCJA 23 | **Sekcja 23** |  | 2026-07-06 | 2027-06-18 |  |  |  |
| 12DQ22-147 |  | Prefabrykacja ruroci¹gów – Sekcja 23 | 6.2d | 2026-07-06 A | 2026-07-14 A | 12DQ22-012, 12DQ22-140 SS+5d | 100% |  |
| 12DQ22-148 |  | Monta¿ ruroci¹gów – Sekcja 23 | 9.4d | 2027-05-12 | 2027-05-24 | 12DQ22-147, 12DQ22-014 SS+6d |  | 169.5d |
| 12DQ22-149 |  | Próba ciœnieniowa – Sekcja 23 | 6d | 2027-05-25 | 2027-06-01 | 12DQ22-148 |  | 169.5d |
| 12DQ22-150 |  | Izolacje – Sekcja 23 | 11d | 2027-06-02 | 2027-06-16 | 12DQ22-149 |  | 169.5d |
| 12DQ22-151 |  | Malowanie i oznakowanie – Sekcja 23 | 3d | 2027-06-16 | 2027-06-18 | 12DQ22-150 FF+2d |  | 169.5d |
|  | SEKCJA 24 | **Sekcja 24** |  | 2026-07-17 | 2027-06-14 |  |  |  |
|  | PODSEKCJA | **Podsekcja 24.A** |  | 2026-07-17 | 2027-06-14 |  |  |  |
| 12DQ22-152 |  | Prefabrykacja ruroci¹gów – Sekcja 24 | 5d | 2026-07-17 A | 2026-07-23 A | 12DQ22-012, 12DQ22-147 SS+5d | 100% |  |
| 12DQ22-153 |  | Monta¿ ruroci¹gów – Sekcja 24 | 12.2d | 2027-05-10 | 2027-05-25 | 12DQ22-152, 12DQ22-014 SS+4d |  | 141.7d |
| 12DQ22-154 |  | Próba ciœnieniowa – Sekcja 24 | 5d | 2027-05-26 | 2027-06-01 | 12DQ22-153 |  | 141.7d |
| 12DQ22-155 |  | Izolacje – Sekcja 24 | 7d | 2027-06-02 | 2027-06-10 | 12DQ22-154 |  | 141.7d |
| 12DQ22-156 |  | Malowanie i oznakowanie – Sekcja 24 | 8d | 2027-06-03 | 2027-06-14 | 12DQ22-155 FF+2d |  | 141.7d |
|  | SEKCJA 25 | **Sekcja 25** |  | 2026-07-20 | 2027-06-10 |  |  |  |
| 12DQ22-159 |  | Prefabrykacja ruroci¹gów – Sekcja 25 | 5d | 2026-07-20 A | 2026-07-24 A | 12DQ22-012, 12DQ22-152 SS+5d | 100% |  |

| ID | WBS | Task | Duration | Start | Finish | Predecessors | Complete | Total float |
| --- | --- | --- | --- | --- | --- | --- | --- | --- |
| 12DQ22-160 |  | Monta¿ ruroci¹gów – Sekcja 25 | 14.3d | 2027-05-04 | 2027-05-21 | 12DQ22-159, 12DQ22-014 SS |  | 143.6d |
| 12DQ22-161 |  | Próba ciœnieniowa – Sekcja 25 | 2d | 2027-05-24 | 2027-05-25 | 12DQ22-160 |  | 143.6d |
| 12DQ22-162 |  | Izolacje – Sekcja 25 | 10d | 2027-05-26 | 2027-06-08 | 12DQ22-161 |  | 143.6d |
| 12DQ22-163 |  | Malowanie i oznakowanie – Sekcja 25 | 7d | 2027-06-02 | 2027-06-10 | 12DQ22-162 FF+2d |  | 143.6d |
|  | PROJ | **Projektowanie** |  | 2025-02-06 | 2025-07-25 |  |  |  |
|  | DOKUMENTAC | **Dokumentacja** |  | 2025-02-06 | 2025-07-25 |  |  |  |
| 12DQ22-001 |  | Projekt wykonawczy – System SCADA | 90d | 2025-02-06 A | 2025-06-11 A |  | 100% |  |
| 12DQ22-002 |  | Uzgodnienie dokumentacji z Inwestorem | 10d | 2025-06-17 A | 2025-07-02 A | 12DQ22-001 | 100% |  |
| 12DQ22-003 |  | Zatwierdzenie dokumentacji do realizacji | 15d | 2025-07-02 A | 2025-07-25 A | 12DQ22-002 | 100% |  |
| 12DQ22-004 |  | KM: Dokumentacja zatwierdzona – System SCADA | 0d | 2025-07-21 A | 2025-07-21 | 12DQ22-003 | 100% |  |
|  | ROZR | **Rozruch** |  | 2027-08-06 | 2027-09-07 |  |  |  |
|  | ROZRUCH | **Rozruch** |  | 2027-08-06 | 2027-09-07 |  |  |  |
| 12DQ22-166 |  | Przegl¹d gotowoœci do rozruchu | 5d | 2027-08-06 | 2027-08-12 | 12DQ22-165, 12DQ22-019, 12DQ22-024, 12DQ22-026 |  | 103.9d |
| 12DQ22-167 |  | Rozruch na zimno | 7d | 2027-08-13 | 2027-08-23 | 12DQ22-166 |  | 103.9d |
| 12DQ22-168 |  | Rozruch na gor¹co / próby ruchowe | 10d | 2027-08-24 | 2027-09-06 | 12DQ22-167 |  | 103.9d |
| 12DQ22-169 |  | KM: Odbiór koñcowy – System SCADA | 0d | 2027-09-07 | 2027-09-07 | 12DQ22-168 |  | 103.9d |
|  | ZAKU | **Zakupy** |  | 2025-03-11 | 2027-05-04 |  |  |  |
|  | DOSTAWY | **Dostawy** |  | 2025-12-29 | 2027-05-04 |  |  |  |
| 12DQ22-008 |  | Produkcja u dostawcy | 288d | 2025-12-29 A | 2027-03-31 | 12DQ22-007 | 55% | 143.9d |
| 12DQ22-009 |  | Testy FAT | 4d | 2027-04-01 | 2027-04-06 | 12DQ22-008 |  | 103.9d |
| 12DQ22-010 |  | Transport i dostawa na plac budowy | 19d | 2027-04-07 | 2027-05-03 | 12DQ22-009 |  | 103.9d |
| 12DQ22-011 |  | KM: Dostawa na budowê – System SCADA | 0d | 2027-05-04 | 2027-05-04 | 12DQ22-010 |  | 103.9d |
|  | ZAMÓWIENIA | **Zamówienia** |  | 2025-03-11 | 2025-12-31 |  |  |  |
| 12DQ22-005 |  | Zapytanie ofertowe | 23d | 2025-03-11 A | 2025-04-11 A | 12DQ22-001 SS+20d | 100% |  |
| 12DQ22-006 |  | Analiza i wybór ofert | 17d | 2025-04-14 A | 2025-05-08 A | 12DQ22-005 | 100% |  |
| 12DQ22-007 |  | Zawarcie umowy / zamówienie | 5d | 2025-12-24 A | 2025-12-31 A | 12DQ22-006, 12DQ22-004 SS, 10TM34-004 SS+7d, 27XT34-004 SF+15d | 100% |  |
|  | 16KE73 | **16KE73 – System zabezpieczeñ** |  | 2025-04-09 | 2027-01-04 |  |  |  |
|  | BUDO | **Budowa** |  | 2025-12-04 | 2026-11-30 |  |  |  |
|  | AKPIA | **AKPiA** |  | 2026-09-09 | 2026-09-29 |  |  |  |
| 16KE73-140 |  | Monta¿ uk³adów AKPiA | 16d | 2026-09-09 A | 2026-09-29 A | 16KE73-014 SS+5d | 100% |  |
|  | ELEKTRYKA | **Elektryka** |  | 2026-09-16 | 2026-10-23 |  |  |  |
| 16KE73-038 |  | Pod³¹czenia i pomiary – trasa 04 | 7d | 2026-09-16 A | 2026-09-29 A | 16KE73-037 FF | 100% |  |
| 16KE73-026 |  | Pod³¹czenia i pomiary – trasa 02 | 10d | 2026-09-18 A | 2026-10-02 | 16KE73-025 FF | 67% | 313.9d |
| 16KE73-037 |  | Uk³adanie kabli – trasa 04 | 6d | 2026-09-18 A | 2026-09-25 A | 16KE73-014 SS+10d | 100% |  |
| 16KE73-097 |  | Uk³adanie kabli – trasa 14 | 9d | 2026-09-18 A | 2026-09-29 A | 16KE73-014 SS+10d | 100% |  |
| 16KE73-025 |  | Uk³adanie kabli – trasa 02 | 10d | 2026-09-21 A | 2026-10-06 | 16KE73-014 SS+10d | 44% | 312.9d |
| 16KE73-085 |  | Uk³adanie kabli – trasa 12 | 17d | 2026-09-21 A | 2026-10-19 | 16KE73-014 SS+10d | 14% | 347.9d |
| 16KE73-109 |  | Uk³adanie kabli – trasa 16 | 13d | 2026-09-21 A | 2026-10-08 | 16KE73-014 SS+10d | 42% | 351.9d |
| 16KE73-133 |  | Uk³adanie kabli – trasa 20 | 9d | 2026-09-21 A | 2026-09-29 A | 16KE73-014 SS+10d | 100% |  |
| 16KE73-134 |  | Pod³¹czenia i pomiary – trasa 20 | 6d | 2026-09-22 A | 2026-10-05 | 16KE73-133 FF | 25% | 315.9d |
| 16KE73-062 |  | Pod³¹czenia i pomiary – trasa 08 | 9d | 2026-09-24 A | 2026-10-01 | 16KE73-061 FF | 77% | 352.9d |
| 16KE73-098 |  | Pod³¹czenia i pomiary – trasa 14 | 6d | 2026-09-28 A | 2026-10-06 | 16KE73-097 FF | 12% | 353.9d |
| 16KE73-049 |  | Uk³adanie kabli – trasa 06 | 18d | 2026-09-30 | 2026-10-23 | 16KE73-014 SS+10d |  | 339.9d |
| 16KE73-061 |  | Uk³adanie kabli – trasa 08 | 14d | 2026-09-30 | 2026-10-19 | 16KE73-014 SS+10d |  | 343.9d |
| 16KE73-073 |  | Uk³adanie kabli – trasa 10 | 17d | 2026-09-30 | 2026-10-22 | 16KE73-014 SS+10d |  | 340.9d |
| 16KE73-110 |  | Pod³¹czenia i pomiary – trasa 16 | 4d | 2026-09-30 A | 2026-09-30 | 16KE73-109 FF | 55% | 353.9d |
| 16KE73-121 |  | Uk³adanie kabli – trasa 18 | 13d | 2026-09-30 | 2026-10-16 | 16KE73-014 SS+10d |  | 344.9d |
| 16KE73-086 |  | Pod³¹czenia i pomiary – trasa 12 | 7d | 2026-10-09 | 2026-10-19 | 16KE73-085 FF |  | 343.3d |
| 16KE73-122 |  | Pod³¹czenia i pomiary – trasa 18 | 3d | 2026-10-14 | 2026-10-16 | 16KE73-121 FF |  | 344.9d |
| 16KE73-074 |  | Pod³¹czenia i pomiary – trasa 10 | 5d | 2026-10-16 | 2026-10-22 | 16KE73-073 FF |  | 340.9d |
| 16KE73-050 |  | Pod³¹czenia i pomiary – trasa 06 | 3d | 2026-10-21 | 2026-10-23 | 16KE73-049 FF |  | 339.9d |
|  | MONTA¯ | **Monta¿** |  | 2026-01-05 | 2026-11-19 |  |  |  |
| 16KE73-013 |  | Monta¿ konstrukcji stalowych | 23d | 2026-01-05 A | 2026-02-05 A | 16KE73-012 | 100% |  |
| 16KE73-014 |  | Monta¿ urz¹dzeñ g³ównych | 51d | 2026-09-03 A | 2026-11-18 | 16KE73-013, 16KE73-011 | 28% | 283.9d |
| 16KE73-141 |  | KM: Zakoñczenie monta¿u – System zabezpieczeñ | 0d | 2026-11-19 | 2026-11-19 | 16KE73-132, 16KE73-134, 16KE73-139, 16KE73-140, 16KE73-014 |  | 279.1d |
|  | ROBOTY BUD | **Roboty budowlane** |  | 2025-12-04 | 2026-01-06 |  |  |  |
| 16KE73-012 |  | Fundamenty i roboty ziemne | 23d | 2025-12-04 A | 2026-01-06 A | 16KE73-007 FS+3d | 100% |  |
|  | RUROCI¥GI | **Ruroci¹gi** |  | 2026-01-09 | 2026-11-30 |  |  |  |
|  | SEKCJA 01 | **Sekcja 01** |  | 2026-01-09 | 2026-11-17 |  |  |  |
| 16KE73-015 |  | Prefabrykacja ruroci¹gów – Sekcja 01 | 6.6d | 2026-01-09 A | 2026-01-19 A | 16KE73-012 | 100% |  |
| 16KE73-016 |  | Monta¿ ruroci¹gów – Sekcja 01 | 11.8d | 2026-09-17 A | 2026-10-12 | 16KE73-015, 16KE73-014 SS+9d | 19% | 300.1d |
| 16KE73-017 |  | Próba ciœnieniowa – Sekcja 01 | 2d | 2026-10-13 | 2026-10-14 | 16KE73-016 |  | 293.3d |
| 16KE73-018 |  | Izolacje – Sekcja 01 | 9d | 2026-11-03 | 2026-11-13 | 16KE73-017 |  | 280.9d |
| 16KE73-019 |  | Malowanie i oznakowanie – Sekcja 01 | 3d | 2026-11-13 | 2026-11-17 | 16KE73-018 FF+2d |  | 280.9d |
|  | SEKCJA 02 | **Sekcja 02** |  | 2026-01-16 | 2026-11-09 |  |  |  |
| 16KE73-020 |  | Prefabrykacja ruroci¹gów – Sekcja 02 | 6.9d | 2026-01-16 A | 2026-01-26 A | 16KE73-012, 16KE73-015 SS+5d | 100% |  |
| 16KE73-021 |  | Monta¿ ruroci¹gów – Sekcja 02 | 21.7d | 2026-09-16 A | 2026-10-21 | 16KE73-020, 16KE73-014 SS+6d | 23% | 291.2d |
| 16KE73-022 |  | Próba ciœnieniowa – Sekcja 02 | 2d | 2026-10-22 | 2026-10-23 | 16KE73-021 |  | 286.1d |
| 16KE73-023 |  | Izolacje – Sekcja 02 | 9d | 2026-10-26 | 2026-11-05 | 16KE73-022 |  | 286.1d |
| 16KE73-024 |  | Malowanie i oznakowanie – Sekcja 02 | 8d | 2026-10-29 | 2026-11-09 | 16KE73-023 FF+2d |  | 286.1d |

| ID | WBS | Task | Duration | Start | Finish | Predecessors | Complete | Total float |
| --- | --- | --- | --- | --- | --- | --- | --- | --- |
|  | SEKCJA 03 | **Sekcja 03** |  | 2026-01-20 | 2026-11-30 |  |  |  |
|  | PODSEKCJA | **Podsekcja 03.A** |  | 2026-01-20 | 2026-11-30 |  |  |  |
| 16KE73-027 |  | Prefabrykacja ruroci¹gów – Sekcja 03 | 3.7d | 2026-01-20 A | 2026-01-22 A | 16KE73-012, 16KE73-020 SS+5d | 100% |  |
| 16KE73-028 |  | Monta¿ ruroci¹gów – Sekcja 03 | 21.8d | 2026-10-16 | 2026-11-13 | 16KE73-027, 16KE73-014 SS+6d |  | 313.1d |
| 16KE73-029 |  | Próba ciœnieniowa – Sekcja 03 | 5d | 2026-11-16 | 2026-11-20 | 16KE73-028 |  | 313.1d |
| 16KE73-030 |  | Izolacje – Sekcja 03 | 4d | 2026-11-23 | 2026-11-26 | 16KE73-029 |  | 313.1d |
| 16KE73-031 |  | Malowanie i oznakowanie – Sekcja 03 | 6d | 2026-11-23 | 2026-11-30 | 16KE73-030 FF+2d |  | 313.1d |
|  | SEKCJA 04 | **Sekcja 04** |  | 2026-01-27 | 2026-10-02 |  |  |  |
| 16KE73-032 |  | Prefabrykacja ruroci¹gów – Sekcja 04 | 11.4d | 2026-01-27 A | 2026-02-12 A | 16KE73-012, 16KE73-027 SS+5d | 100% |  |
| 16KE73-033 |  | Monta¿ ruroci¹gów – Sekcja 04 | 6.1d | 2026-09-21 A | 2026-09-28 A | 16KE73-032, 16KE73-014 SS+10d | 100% |  |
| 16KE73-034 |  | Próba ciœnieniowa – Sekcja 04 | 2d | 2026-09-25 A | 2026-09-30 | 16KE73-033 | 40% | 346.8d |
| 16KE73-035 |  | Izolacje – Sekcja 04 | 10d | 2026-09-30 A | 2026-09-30 | 16KE73-034 | 88% | 345.9d |
| 16KE73-036 |  | Malowanie i oznakowanie – Sekcja 04 | 3d | 2026-09-30 | 2026-10-02 | 16KE73-035 FF+2d |  | 354.7d |
|  | SEKCJA 05 | **Sekcja 05** |  | 2026-02-04 | 2026-11-09 |  |  |  |
| 16KE73-039 |  | Prefabrykacja ruroci¹gów – Sekcja 05 | 8d | 2026-02-04 A | 2026-02-17 A | 16KE73-012, 16KE73-032 SS+5d | 100% |  |
| 16KE73-040 |  | Monta¿ ruroci¹gów – Sekcja 05 | 20.1d | 2026-09-09 A | 2026-10-21 | 16KE73-039, 16KE73-014 SS+2d | 17% | 339.8d |
| 16KE73-041 |  | Próba ciœnieniowa – Sekcja 05 | 4d | 2026-10-22 | 2026-10-27 | 16KE73-040 |  | 328.3d |
| 16KE73-042 |  | Izolacje – Sekcja 05 | 7d | 2026-10-28 | 2026-11-05 | 16KE73-041 |  | 328.3d |
| 16KE73-043 |  | Malowanie i oznakowanie – Sekcja 05 | 2d | 2026-11-06 | 2026-11-09 | 16KE73-042 FF+2d |  | 328.3d |
|  | SEKCJA 06 | **Sekcja 06** |  | 2026-02-12 | 2026-10-09 |  |  |  |
|  | PODSEKCJA | **Podsekcja 06.A** |  | 2026-02-12 | 2026-10-09 |  |  |  |
| 16KE73-044 |  | Prefabrykacja ruroci¹gów – Sekcja 06 | 13.1d | 2026-02-12 A | 2026-03-02 A | 16KE73-012, 16KE73-039 SS+5d | 100% |  |
| 16KE73-045 |  | Monta¿ ruroci¹gów – Sekcja 06 | 10d | 2026-09-07 A | 2026-09-23 A | 16KE73-044, 16KE73-014 SS+3d | 100% |  |
| 16KE73-046 |  | Próba ciœnieniowa – Sekcja 06 | 3d | 2026-09-24 A | 2026-09-28 A | 16KE73-045 | 100% |  |
| 16KE73-047 |  | Izolacje – Sekcja 06 | 4d | 2026-09-30 | 2026-10-05 | 16KE73-046 |  | 351.9d |
| 16KE73-048 |  | Malowanie i oznakowanie – Sekcja 06 | 8d | 2026-09-30 | 2026-10-09 | 16KE73-047 FF+2d |  | 349.9d |
|  | SEKCJA 07 | **Sekcja 07** |  | 2026-02-19 | 2026-10-05 |  |  |  |
| 16KE73-051 |  | Prefabrykacja ruroci¹gów – Sekcja 07 | 10.6d | 2026-02-19 A | 2026-03-09 A | 16KE73-012, 16KE73-044 SS+5d | 100% |  |
| 16KE73-052 |  | Monta¿ ruroci¹gów – Sekcja 07 | 6.4d | 2026-09-09 A | 2026-09-18 A | 16KE73-051, 16KE73-014 SS+5d | 100% |  |
| 16KE73-053 |  | Próba ciœnieniowa – Sekcja 07 | 4d | 2026-09-23 A | 2026-09-29 A | 16KE73-052 | 100% |  |
| 16KE73-054 |  | Izolacje – Sekcja 07 | 10d | 2026-09-24 A | 2026-10-01 | 16KE73-053 | 78% | 349.5d |
| 16KE73-055 |  | Malowanie i oznakowanie – Sekcja 07 | 3d | 2026-10-01 | 2026-10-05 | 16KE73-054 FF+2d |  | 353.7d |
|  | SEKCJA 08 | **Sekcja 08** |  | 2026-02-27 | 2026-10-22 |  |  |  |
| 16KE73-056 |  | Prefabrykacja ruroci¹gów – Sekcja 08 | 5.3d | 2026-02-27 A | 2026-03-10 A | 16KE73-012, 16KE73-051 SS+5d | 100% |  |
| 16KE73-057 |  | Monta¿ ruroci¹gów – Sekcja 08 | 23.4d | 2026-09-07 A | 2026-10-07 | 16KE73-056, 16KE73-014 SS | 71% | 340.5d |
| 16KE73-058 |  | Próba ciœnieniowa – Sekcja 08 | 6d | 2026-10-08 | 2026-10-15 | 16KE73-057 |  | 340d |
| 16KE73-060 |  | Malowanie i oznakowanie – Sekcja 08 | 7d | 2026-10-14 | 2026-10-22 | 16KE73-059 FF+2d |  | 340d |
| 16KE73-059 |  | Izolacje – Sekcja 08 | 3d | 2026-10-16 | 2026-10-20 | 16KE73-058 |  | 340d |
|  | SEKCJA 09 | **Sekcja 09** |  | 2026-03-04 | 2026-11-13 |  |  |  |
|  | PODSEKCJA | **Podsekcja 09.A** |  | 2026-03-04 | 2026-11-13 |  |  |  |
| 16KE73-063 |  | Prefabrykacja ruroci¹gów – Sekcja 09 | 13.7d | 2026-03-04 A | 2026-10-15 | 16KE73-012, 16KE73-056 SS+5d | 12% | 367.1d |
| 16KE73-064 |  | Monta¿ ruroci¹gów – Sekcja 09 | 19.6d | 2026-09-17 A | 2026-10-22 | 16KE73-063, 16KE73-014 SS+10d | 13% | 331.3d |
| 16KE73-065 |  | Próba ciœnieniowa – Sekcja 09 | 3d | 2026-10-23 | 2026-10-27 | 16KE73-064 |  | 324.8d |
| 16KE73-066 |  | Izolacje – Sekcja 09 | 11d | 2026-10-28 | 2026-11-11 | 16KE73-065 |  | 324.8d |
| 16KE73-067 |  | Malowanie i oznakowanie – Sekcja 09 | 8d | 2026-11-04 | 2026-11-13 | 16KE73-066 FF+2d |  | 324.8d |
|  | SEKCJA 10 | **Sekcja 10** |  | 2026-03-12 | 2026-10-22 |  |  |  |
| 16KE73-068 |  | Prefabrykacja ruroci¹gów – Sekcja 10 | 10.2d | 2026-03-12 A | 2026-03-25 A | 16KE73-012, 16KE73-063 SS+5d | 100% |  |
| 16KE73-069 |  | Monta¿ ruroci¹gów – Sekcja 10 | 17d | 2026-09-04 A | 2026-09-29 A | 16KE73-068, 16KE73-014 SS+1d | 100% |  |
| 16KE73-070 |  | Próba ciœnieniowa – Sekcja 10 | 5d | 2026-09-30 A | 2026-10-05 | 16KE73-069 | 18% | 339.9d |
| 16KE73-071 |  | Izolacje – Sekcja 10 | 11d | 2026-10-06 | 2026-10-20 | 16KE73-070 |  | 340.8d |
| 16KE73-072 |  | Malowanie i oznakowanie – Sekcja 10 | 3d | 2026-10-20 | 2026-10-22 | 16KE73-071 FF+2d |  | 340.8d |
|  | SEKCJA 11 | **Sekcja 11** |  | 2026-03-17 | 2026-10-02 |  |  |  |
| 16KE73-075 |  | Prefabrykacja ruroci¹gów – Sekcja 11 | 14.6d | 2026-03-17 A | 2026-04-06 A | 16KE73-012, 16KE73-068 SS+5d | 100% |  |
| 16KE73-076 |  | Monta¿ ruroci¹gów – Sekcja 11 | 6.7d | 2026-09-11 A | 2026-09-18 A | 16KE73-075, 16KE73-014 SS+4d | 100% |  |
| 16KE73-077 |  | Próba ciœnieniowa – Sekcja 11 | 4d | 2026-09-18 A | 2026-09-25 A | 16KE73-076 | 100% |  |
| 16KE73-079 |  | Malowanie i oznakowanie – Sekcja 11 | 8d | 2026-09-24 A | 2026-10-02 | 16KE73-078 FF+2d | 61% | 353.2d |
| 16KE73-078 |  | Izolacje – Sekcja 11 | 7d | 2026-09-28 A | 2026-09-30 | 16KE73-077 | 83% | 350.2d |
|  | SEKCJA 12 | **Sekcja 12** |  | 2026-03-27 | 2026-10-02 |  |  |  |
|  | PODSEKCJA | **Podsekcja 12.A** |  | 2026-03-27 | 2026-10-02 |  |  |  |
| 16KE73-080 |  | Prefabrykacja ruroci¹gów – Sekcja 12 | 7.5d | 2026-03-27 A | 2026-04-09 A | 16KE73-012, 16KE73-075 SS+5d | 100% |  |
| 16KE73-081 |  | Monta¿ ruroci¹gów – Sekcja 12 | 9.6d | 2026-09-09 A | 2026-09-22 A | 16KE73-080, 16KE73-014 SS+2d | 100% |  |
| 16KE73-082 |  | Próba ciœnieniowa – Sekcja 12 | 4d | 2026-09-23 A | 2026-09-29 A | 16KE73-081 | 100% |  |
| 16KE73-083 |  | Izolacje – Sekcja 12 | 7d | 2026-09-25 A | 2026-09-30 | 16KE73-082 | 73% | 351.3d |
| 16KE73-084 |  | Malowanie i oznakowanie – Sekcja 12 | 6d | 2026-09-30 A | 2026-10-02 | 16KE73-083 FF+2d | 43% | 351.9d |
|  | SEKCJA 13 | **Sekcja 13** |  | 2026-03-30 | 2026-10-20 |  |  |  |
| 16KE73-087 |  | Prefabrykacja ruroci¹gów – Sekcja 13 | 14.8d | 2026-03-30 A | 2026-04-20 A | 16KE73-012, 16KE73-080 SS+5d | 100% |  |
| 16KE73-088 |  | Monta¿ ruroci¹gów – Sekcja 13 | 10.9d | 2026-09-15 A | 2026-09-29 A | 16KE73-087, 16KE73-014 SS+8d | 100% |  |
| 16KE73-089 |  | Próba ciœnieniowa – Sekcja 13 | 5d | 2026-09-30 A | 2026-09-30 | 16KE73-088 | 64% | 338.9d |
| 16KE73-090 |  | Izolacje – Sekcja 13 | 12d | 2026-10-01 | 2026-10-16 | 16KE73-089 |  | 342.1d |
| 16KE73-091 |  | Malowanie i oznakowanie – Sekcja 13 | 7d | 2026-10-12 | 2026-10-20 | 16KE73-090 FF+2d |  | 342.1d |

| ID | WBS | Task | Duration | Start | Finish | Predecessors | Complete | Total float |
| --- | --- | --- | --- | --- | --- | --- | --- | --- |
|  | SEKCJA 14 | **Sekcja 14** |  | 2026-04-07 | 2026-10-20 |  |  |  |
| 16KE73-092 |  | Prefabrykacja ruroci¹gów – Sekcja 14 | 10.4d | 2026-04-07 A | 2026-10-05 | 16KE73-012, 16KE73-087 SS+5d | 54% | 368.1d |
| 16KE73-093 |  | Monta¿ ruroci¹gów – Sekcja 14 | 15.9d | 2026-09-04 A | 2026-09-29 A | 16KE73-092, 16KE73-014 SS+1d | 100% |  |
| 16KE73-094 |  | Próba ciœnieniowa – Sekcja 14 | 3d | 2026-09-28 A | 2026-09-30 | 16KE73-093 | 67% | 342d |
| 16KE73-095 |  | Izolacje – Sekcja 14 | 12d | 2026-10-01 | 2026-10-16 | 16KE73-094 |  | 342.9d |
| 16KE73-096 |  | Malowanie i oznakowanie – Sekcja 14 | 7d | 2026-10-12 | 2026-10-20 | 16KE73-095 FF+2d |  | 342.9d |
|  | SEKCJA 15 | **Sekcja 15** |  | 2026-04-16 | 2026-11-03 |  |  |  |
|  | PODSEKCJA | **Podsekcja 15.A** |  | 2026-04-16 | 2026-11-03 |  |  |  |
| 16KE73-099 |  | Prefabrykacja ruroci¹gów – Sekcja 15 | 12.7d | 2026-04-16 A | 2026-05-06 A | 16KE73-012, 16KE73-092 SS+5d | 100% |  |
| 16KE73-100 |  | Monta¿ ruroci¹gów – Sekcja 15 | 19.8d | 2026-09-07 A | 2026-10-15 | 16KE73-099, 16KE73-014 SS+2d | 39% | 342.1d |
| 16KE73-101 |  | Próba ciœnieniowa – Sekcja 15 | 3d | 2026-10-16 | 2026-10-20 | 16KE73-100 |  | 332.8d |
| 16KE73-102 |  | Izolacje – Sekcja 15 | 8d | 2026-10-21 | 2026-10-30 | 16KE73-101 |  | 332.8d |
| 16KE73-103 |  | Malowanie i oznakowanie – Sekcja 15 | 8d | 2026-10-23 | 2026-11-03 | 16KE73-102 FF+2d |  | 332.8d |
|  | SEKCJA 16 | **Sekcja 16** |  | 2026-04-23 | 2026-10-16 |  |  |  |
| 16KE73-104 |  | Prefabrykacja ruroci¹gów – Sekcja 16 | 5.8d | 2026-04-23 A | 2026-10-06 | 16KE73-012, 16KE73-099 SS+5d | 14% | 366.1d |
| 16KE73-105 |  | Monta¿ ruroci¹gów – Sekcja 16 | 12.5d | 2026-09-09 A | 2026-10-02 | 16KE73-104, 16KE73-014 SS+4d | 74% | 343.4d |
| 16KE73-106 |  | Próba ciœnieniowa – Sekcja 16 | 4d | 2026-09-28 A | 2026-09-29 A | 16KE73-105 | 100% |  |
| 16KE73-107 |  | Izolacje – Sekcja 16 | 11d | 2026-09-30 | 2026-10-14 | 16KE73-106 |  | 344.9d |
| 16KE73-108 |  | Malowanie i oznakowanie – Sekcja 16 | 5d | 2026-10-12 | 2026-10-16 | 16KE73-107 FF+2d |  | 344.9d |
|  | SEKCJA 17 | **Sekcja 17** |  | 2026-04-29 | 2026-10-06 |  |  |  |
| 16KE73-111 |  | Prefabrykacja ruroci¹gów – Sekcja 17 | 12.9d | 2026-04-29 A | 2026-05-15 A | 16KE73-012, 16KE73-104 SS+5d | 100% |  |
| 16KE73-112 |  | Monta¿ ruroci¹gów – Sekcja 17 | 7.5d | 2026-09-10 A | 2026-09-21 A | 16KE73-111, 16KE73-014 SS+5d | 100% |  |
| 16KE73-113 |  | Próba ciœnieniowa – Sekcja 17 | 6d | 2026-09-18 A | 2026-09-28 A | 16KE73-112 | 100% |  |
| 16KE73-114 |  | Izolacje – Sekcja 17 | 10d | 2026-09-29 A | 2026-09-30 | 16KE73-113 | 87% | 346.4d |
| 16KE73-115 |  | Malowanie i oznakowanie – Sekcja 17 | 5d | 2026-09-30 | 2026-10-06 | 16KE73-114 FF+2d |  | 352.9d |
|  | SEKCJA 18 | **Sekcja 18** |  | 2026-05-06 | 2026-10-23 |  |  |  |
|  | PODSEKCJA | **Podsekcja 18.A** |  | 2026-05-06 | 2026-10-23 |  |  |  |
| 16KE73-116 |  | Prefabrykacja ruroci¹gów – Sekcja 18 | 4.3d | 2026-05-06 A | 2026-05-12 A | 16KE73-012, 16KE73-111 SS+5d | 100% |  |
| 16KE73-117 |  | Monta¿ ruroci¹gów – Sekcja 18 | 13.8d | 2026-09-18 A | 2026-10-12 | 16KE73-116, 16KE73-014 SS+7d | 33% | 343.1d |
| 16KE73-118 |  | Próba ciœnieniowa – Sekcja 18 | 3d | 2026-10-13 | 2026-10-15 | 16KE73-117 |  | 339.7d |
| 16KE73-119 |  | Izolacje – Sekcja 18 | 4d | 2026-10-16 | 2026-10-21 | 16KE73-118 |  | 339.7d |
| 16KE73-120 |  | Malowanie i oznakowanie – Sekcja 18 | 6d | 2026-10-16 | 2026-10-23 | 16KE73-119 FF+2d |  | 339.7d |
|  | SEKCJA 19 | **Sekcja 19** |  | 2026-05-15 | 2026-10-16 |  |  |  |
| 16KE73-123 |  | Prefabrykacja ruroci¹gów – Sekcja 19 | 8.1d | 2026-05-15 A | 2026-05-27 A | 16KE73-012, 16KE73-116 SS+5d | 100% |  |
| 16KE73-124 |  | Monta¿ ruroci¹gów – Sekcja 19 | 17.3d | 2026-09-09 A | 2026-10-01 | 16KE73-123, 16KE73-014 SS+2d | 87% | 344.6d |
| 16KE73-125 |  | Próba ciœnieniowa – Sekcja 19 | 6d | 2026-10-02 | 2026-10-09 | 16KE73-124 |  | 344.7d |
| 16KE73-127 |  | Malowanie i oznakowanie – Sekcja 19 | 7d | 2026-10-08 | 2026-10-16 | 16KE73-126 FF+2d |  | 344.7d |
| 16KE73-126 |  | Izolacje – Sekcja 19 | 3d | 2026-10-12 | 2026-10-14 | 16KE73-125 |  | 344.7d |
|  | SEKCJA 20 | **Sekcja 20** |  | 2026-05-19 | 2026-11-02 |  |  |  |
| 16KE73-128 |  | Prefabrykacja ruroci¹gów – Sekcja 20 | 11.6d | 2026-05-19 A | 2026-06-02 A | 16KE73-012, 16KE73-123 SS+5d | 100% |  |
| 16KE73-129 |  | Monta¿ ruroci¹gów – Sekcja 20 | 15.9d | 2026-09-16 A | 2026-10-15 | 16KE73-128, 16KE73-014 SS+8d | 21% | 298d |
| 16KE73-130 |  | Próba ciœnieniowa – Sekcja 20 | 4d | 2026-10-16 | 2026-10-21 | 16KE73-129 |  | 291.4d |
| 16KE73-131 |  | Izolacje – Sekcja 20 | 6d | 2026-10-22 | 2026-10-29 | 16KE73-130 |  | 291.4d |
| 16KE73-132 |  | Malowanie i oznakowanie – Sekcja 20 | 3d | 2026-10-29 | 2026-11-02 | 16KE73-131 FF+2d |  | 291.4d |
|  | SEKCJA 21 | **Sekcja 21** |  | 2026-05-25 | 2026-10-02 |  |  |  |
|  | PODSEKCJA | **Podsekcja 21.A** |  | 2026-05-25 | 2026-10-02 |  |  |  |
| 16KE73-135 |  | Prefabrykacja ruroci¹gów – Sekcja 21 | 12.8d | 2026-05-25 A | 2026-06-12 A | 16KE73-012, 16KE73-128 SS+5d | 100% |  |
| 16KE73-136 |  | Monta¿ ruroci¹gów – Sekcja 21 | 15d | 2026-09-04 A | 2026-09-25 A | 16KE73-135, 16KE73-014 SS+1d | 100% |  |
| 16KE73-137 |  | Próba ciœnieniowa – Sekcja 21 | 3d | 2026-09-29 A | 2026-09-29 A | 16KE73-136 | 100% |  |
| 16KE73-138 |  | Izolacje – Sekcja 21 | 6d | 2026-09-30 A | 2026-09-30 | 16KE73-137 | 68% | 307.9d |
| 16KE73-139 |  | Malowanie i oznakowanie – Sekcja 21 | 2d | 2026-10-01 | 2026-10-02 | 16KE73-138 FF+2d |  | 312d |
|  | PROJ | **Projektowanie** |  | 2025-04-09 | 2025-10-02 |  |  |  |
|  | DOKUMENTAC | **Dokumentacja** |  | 2025-04-09 | 2025-10-02 |  |  |  |
| 16KE73-001 |  | Projekt wykonawczy – System zabezpieczeñ | 105d | 2025-04-09 A | 2025-09-03 A |  | 100% |  |
| 16KE73-002 |  | Uzgodnienie dokumentacji z Inwestorem | 11d | 2025-09-05 A | 2025-09-19 A | 16KE73-001 | 100% |  |
| 16KE73-003 |  | Zatwierdzenie dokumentacji do realizacji | 7d | 2025-09-17 A | 2025-09-30 A | 16KE73-002 | 100% |  |
| 16KE73-004 |  | KM: Dokumentacja zatwierdzona – System zabezpieczeñ | 0d | 2025-10-02 A | 2025-10-02 | 16KE73-003 | 100% |  |
|  | ROZR | **Rozruch** |  | 2026-11-19 | 2027-01-04 |  |  |  |
|  | ROZRUCH | **Rozruch** |  | 2026-11-19 | 2027-01-04 |  |  |  |
| 16KE73-142 |  | Przegl¹d gotowoœci do rozruchu | 6d | 2026-11-19 | 2026-11-26 | 16KE73-141, 16KE73-019, 16KE73-024, 16KE73-026 |  | 279.1d |
| 16KE73-143 |  | Rozruch na zimno | 15d | 2026-11-27 | 2026-12-17 | 16KE73-142 |  | 279.1d |
| 16KE73-144 |  | Rozruch na gor¹co / próby ruchowe | 11d | 2026-12-18 | 2027-01-01 | 16KE73-143 |  | 279.1d |
| 16KE73-145 |  | KM: Odbiór koñcowy – System zabezpieczeñ | 0d | 2027-01-04 | 2027-01-04 | 16KE73-144 |  | 279.1d |
|  | ZAKU | **Zakupy** |  | 2025-05-08 | 2026-09-07 |  |  |  |
|  | DOSTAWY | **Dostawy** |  | 2025-12-03 | 2026-09-07 |  |  |  |
| 16KE73-008 |  | Produkcja u dostawcy | 177d | 2025-12-03 A | 2026-08-07 A | 16KE73-007 | 100% |  |
| 16KE73-009 |  | Testy FAT | 3d | 2026-08-06 A | 2026-08-11 A | 16KE73-008 | 100% |  |
| 16KE73-010 |  | Transport i dostawa na plac budowy | 18d | 2026-08-12 A | 2026-09-04 A | 16KE73-009 | 100% |  |
| 16KE73-011 |  | KM: Dostawa na budowê – System zabezpieczeñ | 0d | 2026-09-07 A | 2026-09-07 | 16KE73-010 | 100% |  |
|  | ZAMÓWIENIA | **Zamówienia** |  | 2025-05-08 | 2025-12-02 |  |  |  |

| ID | WBS | Task | Duration | Start | Finish | Predecessors | Complete | Total float |
| --- | --- | --- | --- | --- | --- | --- | --- | --- |
| 16KE73-005 |  | Zapytanie ofertowe | 18d | 2025-05-08 A | 2025-06-04 A | 16KE73-001 SS+20d | 100% |  |
| 16KE73-006 |  | Analiza i wybór ofert | 13d | 2025-05-30 A | 2025-06-20 A | 16KE73-005 | 100% |  |
| 16KE73-007 |  | Zawarcie umowy / zamówienie | 8d | 2025-11-19 A | 2025-12-02 A | 16KE73-006, 16KE73-004 SS, 14NX42-004 FS+14d, 11XQ69-004 SS+14d | 100% |  |
|  | 21MY97 | **21MY97 – Analizatory spalin (CEMS)** |  | 2025-06-25 | 2027-08-11 |  |  |  |
|  | BUDO | **Budowa** |  | 2026-01-07 | 2027-07-14 |  |  |  |
|  | AKPIA | **AKPiA** |  | 2027-05-21 | 2027-06-04 |  |  |  |
| 21MY97-080 |  | Monta¿ uk³adów AKPiA | 11d | 2027-05-21 | 2027-06-04 | 21MY97-014 SS+5d |  | 141.3d |
|  | ELEKTRYKA | **Elektryka** |  | 2027-05-28 | 2027-06-23 |  |  |  |
| 21MY97-025 |  | Uk³adanie kabli – trasa 02 | 15d | 2027-05-28 | 2027-06-17 | 21MY97-014 SS+10d |  | 132.3d |
| 21MY97-037 |  | Uk³adanie kabli – trasa 04 | 19d | 2027-05-28 | 2027-06-23 | 21MY97-014 SS+10d |  | 166.3d |
| 21MY97-049 |  | Uk³adanie kabli – trasa 06 | 18d | 2027-05-28 | 2027-06-22 | 21MY97-014 SS+10d |  | 167.3d |
| 21MY97-061 |  | Uk³adanie kabli – trasa 08 | 7d | 2027-05-28 | 2027-06-07 | 21MY97-014 SS+10d |  | 178.3d |
| 21MY97-073 |  | Uk³adanie kabli – trasa 10 | 7d | 2027-05-28 | 2027-06-07 | 21MY97-014 SS+10d |  | 140.3d |
| 21MY97-074 |  | Pod³¹czenia i pomiary – trasa 10 | 6d | 2027-05-31 | 2027-06-07 | 21MY97-073 FF |  | 140.3d |
| 21MY97-062 |  | Pod³¹czenia i pomiary – trasa 08 | 4d | 2027-06-02 | 2027-06-07 | 21MY97-061 FF |  | 178.3d |
| 21MY97-026 |  | Pod³¹czenia i pomiary – trasa 02 | 6d | 2027-06-10 | 2027-06-17 | 21MY97-025 FF |  | 132.3d |
| 21MY97-038 |  | Pod³¹czenia i pomiary – trasa 04 | 7d | 2027-06-15 | 2027-06-23 | 21MY97-037 FF |  | 166.3d |
| 21MY97-050 |  | Pod³¹czenia i pomiary – trasa 06 | 6d | 2027-06-15 | 2027-06-22 | 21MY97-049 FF |  | 167.3d |
|  | MONTA¯ | **Monta¿** |  | 2026-02-27 | 2027-07-02 |  |  |  |
| 21MY97-013 |  | Monta¿ konstrukcji stalowych | 34d | 2026-02-27 A | 2026-04-17 A | 21MY97-012 | 100% |  |
| 21MY97-014 |  | Monta¿ urz¹dzeñ g³ównych | 23d | 2027-05-14 | 2027-06-15 | 21MY97-013, 21MY97-011 |  | 122.6d |
| 21MY97-081 |  | KM: Zakoñczenie monta¿u – Analizatory spalin (CEMS) | 0d | 2027-07-02 | 2027-07-02 | 21MY97-072, 21MY97-074, 21MY97-079, 21MY97-080, 21MY97-014 |  | 122.6d |
|  | ROBOTY BUD | **Roboty budowlane** |  | 2026-01-07 | 2026-02-27 |  |  |  |
| 21MY97-012 |  | Fundamenty i roboty ziemne | 36d | 2026-01-07 A | 2026-02-27 A | 21MY97-007 FS+1d | 100% |  |
|  | RUROCI¥GI | **Ruroci¹gi** |  | 2026-02-27 | 2027-07-14 |  |  |  |
|  | SEKCJA 01 | **Sekcja 01** |  | 2026-02-27 | 2027-06-21 |  |  |  |
| 21MY97-015 |  | Prefabrykacja ruroci¹gów – Sekcja 01 | 8.5d | 2026-02-27 A | 2026-09-30 | 21MY97-012 | 80% | 386.4d |
| 21MY97-016 |  | Monta¿ ruroci¹gów – Sekcja 01 | 8.4d | 2027-05-20 | 2027-06-01 | 21MY97-015, 21MY97-014 SS+4d |  | 130.9d |
| 21MY97-017 |  | Próba ciœnieniowa – Sekcja 01 | 4d | 2027-06-02 | 2027-06-07 | 21MY97-016 |  | 130.9d |
| 21MY97-018 |  | Izolacje – Sekcja 01 | 8d | 2027-06-08 | 2027-06-17 | 21MY97-017 |  | 130.9d |
| 21MY97-019 |  | Malowanie i oznakowanie – Sekcja 01 | 4d | 2027-06-16 | 2027-06-21 | 21MY97-018 FF+2d |  | 130.9d |
|  | SEKCJA 02 | **Sekcja 02** |  | 2026-03-04 | 2027-06-29 |  |  |  |
| 21MY97-020 |  | Prefabrykacja ruroci¹gów – Sekcja 02 | 3.6d | 2026-03-04 A | 2026-03-09 A | 21MY97-012, 21MY97-015 SS+5d | 100% |  |
| 21MY97-021 |  | Monta¿ ruroci¹gów – Sekcja 02 | 6.8d | 2027-05-28 | 2027-06-07 | 21MY97-020, 21MY97-014 SS+10d |  | 124.5d |
| 21MY97-022 |  | Próba ciœnieniowa – Sekcja 02 | 2d | 2027-06-08 | 2027-06-09 | 21MY97-021 |  | 124.5d |
| 21MY97-023 |  | Izolacje – Sekcja 02 | 12d | 2027-06-10 | 2027-06-25 | 21MY97-022 |  | 124.5d |
| 21MY97-024 |  | Malowanie i oznakowanie – Sekcja 02 | 4d | 2027-06-24 | 2027-06-29 | 21MY97-023 FF+2d |  | 124.5d |
|  | SEKCJA 03 | **Sekcja 03** |  | 2026-03-11 | 2027-07-07 |  |  |  |
|  | PODSEKCJA | **Podsekcja 03.A** |  | 2026-03-11 | 2027-07-07 |  |  |  |
| 21MY97-027 |  | Prefabrykacja ruroci¹gów – Sekcja 03 | 13.4d | 2026-03-11 A | 2026-04-01 A | 21MY97-012, 21MY97-020 SS+5d | 100% |  |
| 21MY97-028 |  | Monta¿ ruroci¹gów – Sekcja 03 | 23.8d | 2027-05-21 | 2027-06-23 | 21MY97-027, 21MY97-014 SS+5d |  | 156.5d |
| 21MY97-029 |  | Próba ciœnieniowa – Sekcja 03 | 2d | 2027-06-24 | 2027-06-25 | 21MY97-028 |  | 156.5d |
| 21MY97-030 |  | Izolacje – Sekcja 03 | 6d | 2027-06-28 | 2027-07-05 | 21MY97-029 |  | 156.5d |
| 21MY97-031 |  | Malowanie i oznakowanie – Sekcja 03 | 8d | 2027-06-28 | 2027-07-07 | 21MY97-030 FF+2d |  | 156.5d |
|  | SEKCJA 04 | **Sekcja 04** |  | 2026-03-16 | 2027-06-28 |  |  |  |
| 21MY97-032 |  | Prefabrykacja ruroci¹gów – Sekcja 04 | 5.4d | 2026-03-16 A | 2026-03-23 A | 21MY97-012, 21MY97-027 SS+5d | 100% |  |
| 21MY97-033 |  | Monta¿ ruroci¹gów – Sekcja 04 | 11.2d | 2027-05-25 | 2027-06-08 | 21MY97-032, 21MY97-014 SS+7d |  | 163.1d |
| 21MY97-034 |  | Próba ciœnieniowa – Sekcja 04 | 6d | 2027-06-09 | 2027-06-16 | 21MY97-033 |  | 163.1d |
| 21MY97-035 |  | Izolacje – Sekcja 04 | 6d | 2027-06-17 | 2027-06-24 | 21MY97-034 |  | 163.1d |
| 21MY97-036 |  | Malowanie i oznakowanie – Sekcja 04 | 3d | 2027-06-24 | 2027-06-28 | 21MY97-035 FF+2d |  | 163.1d |
|  | SEKCJA 05 | **Sekcja 05** |  | 2026-03-23 | 2027-07-05 |  |  |  |
| 21MY97-039 |  | Prefabrykacja ruroci¹gów – Sekcja 05 | 10d | 2026-03-23 A | 2026-04-03 A | 21MY97-012, 21MY97-032 SS+5d | 100% |  |
| 21MY97-040 |  | Monta¿ ruroci¹gów – Sekcja 05 | 19.6d | 2027-05-18 | 2027-06-14 | 21MY97-039, 21MY97-014 SS+2d |  | 158.7d |
| 21MY97-041 |  | Próba ciœnieniowa – Sekcja 05 | 2d | 2027-06-15 | 2027-06-16 | 21MY97-040 |  | 158.7d |
| 21MY97-042 |  | Izolacje – Sekcja 05 | 11d | 2027-06-17 | 2027-07-01 | 21MY97-041 |  | 158.7d |
| 21MY97-043 |  | Malowanie i oznakowanie – Sekcja 05 | 6d | 2027-06-28 | 2027-07-05 | 21MY97-042 FF+2d |  | 158.7d |
|  | SEKCJA 06 | **Sekcja 06** |  | 2026-03-30 | 2027-06-11 |  |  |  |
|  | PODSEKCJA | **Podsekcja 06.A** |  | 2026-03-30 | 2027-06-11 |  |  |  |
| 21MY97-044 |  | Prefabrykacja ruroci¹gów – Sekcja 06 | 9.3d | 2026-03-30 A | 2026-04-10 A | 21MY97-012, 21MY97-039 SS+5d | 100% |  |
| 21MY97-045 |  | Monta¿ ruroci¹gów – Sekcja 06 | 5.2d | 2027-05-21 | 2027-05-27 | 21MY97-044, 21MY97-014 SS+5d |  | 174.1d |
| 21MY97-046 |  | Próba ciœnieniowa – Sekcja 06 | 4d | 2027-05-28 | 2027-06-02 | 21MY97-045 |  | 174.1d |
| 21MY97-048 |  | Malowanie i oznakowanie – Sekcja 06 | 8d | 2027-06-02 | 2027-06-11 | 21MY97-047 FF+2d |  | 174.1d |
| 21MY97-047 |  | Izolacje – Sekcja 06 | 5d | 2027-06-03 | 2027-06-09 | 21MY97-046 |  | 174.1d |
|  | SEKCJA 07 | **Sekcja 07** |  | 2026-04-10 | 2027-07-14 |  |  |  |
| 21MY97-051 |  | Prefabrykacja ruroci¹gów – Sekcja 07 | 9.6d | 2026-04-10 A | 2026-04-24 A | 21MY97-012, 21MY97-044 SS+5d | 100% |  |
| 21MY97-052 |  | Monta¿ ruroci¹gów – Sekcja 07 | 22.4d | 2027-05-21 | 2027-06-22 | 21MY97-051, 21MY97-014 SS+5d |  | 151.9d |
| 21MY97-053 |  | Próba ciœnieniowa – Sekcja 07 | 2d | 2027-06-23 | 2027-06-24 | 21MY97-052 |  | 151.9d |
| 21MY97-054 |  | Izolacje – Sekcja 07 | 12d | 2027-06-25 | 2027-07-12 | 21MY97-053 |  | 151.9d |
| 21MY97-055 |  | Malowanie i oznakowanie – Sekcja 07 | 8d | 2027-07-05 | 2027-07-14 | 21MY97-054 FF+2d |  | 151.9d |
|  | SEKCJA 08 | **Sekcja 08** |  | 2026-04-15 | 2027-06-23 |  |  |  |

| ID | WBS | Task | Duration | Start | Finish | Predecessors | Complete | Total float |
| --- | --- | --- | --- | --- | --- | --- | --- | --- |
| 21MY97-056 |  | Prefabrykacja ruroci¹gów – Sekcja 08 | 11.6d | 2026-04-15 A | 2026-04-30 A | 21MY97-012, 21MY97-051 SS+5d | 100% |  |
| 21MY97-057 |  | Monta¿ ruroci¹gów – Sekcja 08 | 10.3d | 2027-05-25 | 2027-06-07 | 21MY97-056, 21MY97-014 SS+7d |  | 166d |
| 21MY97-058 |  | Próba ciœnieniowa – Sekcja 08 | 3d | 2027-06-08 | 2027-06-10 | 21MY97-057 |  | 166d |
| 21MY97-059 |  | Izolacje – Sekcja 08 | 7d | 2027-06-11 | 2027-06-21 | 21MY97-058 |  | 166d |
| 21MY97-060 |  | Malowanie i oznakowanie – Sekcja 08 | 7d | 2027-06-15 | 2027-06-23 | 21MY97-059 FF+2d |  | 166d |
|  | SEKCJA 09 | **Sekcja 09** |  | 2026-04-20 | 2027-06-30 |  |  |  |
|  | PODSEKCJA | **Podsekcja 09.A** |  | 2026-04-20 | 2027-06-30 |  |  |  |
| 21MY97-063 |  | Prefabrykacja ruroci¹gów – Sekcja 09 | 14.5d | 2026-04-20 A | 2026-05-08 A | 21MY97-012, 21MY97-056 SS+5d | 100% |  |
| 21MY97-064 |  | Monta¿ ruroci¹gów – Sekcja 09 | 14.7d | 2027-05-26 | 2027-06-15 | 21MY97-063, 21MY97-014 SS+8d |  | 161.6d |
| 21MY97-065 |  | Próba ciœnieniowa – Sekcja 09 | 4d | 2027-06-16 | 2027-06-21 | 21MY97-064 |  | 161.6d |
| 21MY97-066 |  | Izolacje – Sekcja 09 | 5d | 2027-06-22 | 2027-06-28 | 21MY97-065 |  | 161.6d |
| 21MY97-067 |  | Malowanie i oznakowanie – Sekcja 09 | 7d | 2027-06-22 | 2027-06-30 | 21MY97-066 FF+2d |  | 161.6d |
|  | SEKCJA 10 | **Sekcja 10** |  | 2026-04-28 | 2027-07-01 |  |  |  |
| 21MY97-068 |  | Prefabrykacja ruroci¹gów – Sekcja 10 | 7.9d | 2026-04-28 A | 2026-05-07 A | 21MY97-012, 21MY97-063 SS+5d | 100% |  |
| 21MY97-069 |  | Monta¿ ruroci¹gów – Sekcja 10 | 14.7d | 2027-05-28 | 2027-06-17 | 21MY97-068, 21MY97-014 SS+10d |  | 122.6d |
| 21MY97-070 |  | Próba ciœnieniowa – Sekcja 10 | 2d | 2027-06-18 | 2027-06-21 | 21MY97-069 |  | 122.6d |
| 21MY97-071 |  | Izolacje – Sekcja 10 | 6d | 2027-06-22 | 2027-06-29 | 21MY97-070 |  | 122.6d |
| 21MY97-072 |  | Malowanie i oznakowanie – Sekcja 10 | 4d | 2027-06-28 | 2027-07-01 | 21MY97-071 FF+2d |  | 122.6d |
|  | SEKCJA 11 | **Sekcja 11** |  | 2026-05-06 | 2027-06-28 |  |  |  |
| 21MY97-075 |  | Prefabrykacja ruroci¹gów – Sekcja 11 | 12.5d | 2026-05-06 A | 2026-05-26 A | 21MY97-012, 21MY97-068 SS+5d | 100% |  |
| 21MY97-076 |  | Monta¿ ruroci¹gów – Sekcja 11 | 12d | 2027-05-26 | 2027-06-10 | 21MY97-075, 21MY97-014 SS+8d |  | 125.3d |
| 21MY97-077 |  | Próba ciœnieniowa – Sekcja 11 | 5d | 2027-06-11 | 2027-06-17 | 21MY97-076 |  | 125.3d |
| 21MY97-078 |  | Izolacje – Sekcja 11 | 5d | 2027-06-18 | 2027-06-24 | 21MY97-077 |  | 125.3d |
| 21MY97-079 |  | Malowanie i oznakowanie – Sekcja 11 | 4d | 2027-06-23 | 2027-06-28 | 21MY97-078 FF+2d |  | 125.3d |
|  | PROJ | **Projektowanie** |  | 2025-06-25 | 2025-12-30 |  |  |  |
|  | DOKUMENTAC | **Dokumentacja** |  | 2025-06-25 | 2025-12-30 |  |  |  |
| 21MY97-001 |  | Projekt wykonawczy – Analizatory spalin (CEMS) | 119d | 2025-06-25 A | 2025-12-09 A |  | 100% |  |
| 21MY97-002 |  | Uzgodnienie dokumentacji z Inwestorem | 11d | 2025-12-09 A | 2025-12-24 A | 21MY97-001 | 100% |  |
| 21MY97-003 |  | Zatwierdzenie dokumentacji do realizacji | 5d | 2025-12-18 A | 2025-12-25 A | 21MY97-002 | 100% |  |
| 21MY97-004 |  | KM: Dokumentacja zatwierdzona – Analizatory spalin (CEMS) | 0d | 2025-12-30 A | 2025-12-30 | 21MY97-003 | 100% |  |
|  | ROZR | **Rozruch** |  | 2027-07-02 | 2027-08-11 |  |  |  |
|  | ROZRUCH | **Rozruch** |  | 2027-07-02 | 2027-08-11 |  |  |  |
| 21MY97-082 |  | Przegl¹d gotowoœci do rozruchu | 6d | 2027-07-02 | 2027-07-09 | 21MY97-081, 21MY97-019, 21MY97-024, 21MY97-026 |  | 122.6d |
| 21MY97-083 |  | Rozruch na zimno | 6d | 2027-07-12 | 2027-07-19 | 21MY97-082 |  | 122.6d |
| 21MY97-084 |  | Rozruch na gor¹co / próby ruchowe | 16d | 2027-07-20 | 2027-08-10 | 21MY97-083 |  | 122.6d |
| 21MY97-085 |  | KM: Odbiór koñcowy – Analizatory spalin (CEMS) | 0d | 2027-08-11 | 2027-08-11 | 21MY97-084 |  | 122.6d |
|  | ZAKU | **Zakupy** |  | 2025-07-22 | 2027-05-14 |  |  |  |
|  | DOSTAWY | **Dostawy** |  | 2026-01-06 | 2027-05-14 |  |  |  |
| 21MY97-008 |  | Produkcja u dostawcy | 286d | 2026-01-06 A | 2027-04-02 | 21MY97-007 | 53% | 161.2d |
| 21MY97-009 |  | Testy FAT | 9d | 2027-04-05 | 2027-04-15 | 21MY97-008 |  | 122.6d |
| 21MY97-010 |  | Transport i dostawa na plac budowy | 20d | 2027-04-16 | 2027-05-13 | 21MY97-009 |  | 122.6d |
| 21MY97-011 |  | KM: Dostawa na budowê – Analizatory spalin (CEMS) | 0d | 2027-05-14 | 2027-05-14 | 21MY97-010 |  | 122.6d |
|  | ZAMÓWIENIA | **Zamówienia** |  | 2025-07-22 | 2026-01-05 |  |  |  |
| 21MY97-005 |  | Zapytanie ofertowe | 28d | 2025-07-22 A | 2025-08-28 A | 21MY97-001 SS+20d | 100% |  |
| 21MY97-006 |  | Analiza i wybór ofert | 19d | 2025-08-27 A | 2025-09-22 A | 21MY97-005 | 100% |  |
| 21MY97-007 |  | Zawarcie umowy / zamówienie | 5d | 2025-12-26 A | 2026-01-05 A | 21MY97-006, 21MY97-004 SS, 29UF44-004 SF+12d | 100% |  |
|  | 26DX82 | **26DX82 – Sieæ œwiat³owodowa** |  | 2025-01-29 | 2026-10-08 |  |  |  |
|  | BUDO | **Budowa** |  | 2025-10-01 | 2026-10-08 |  |  |  |
|  | AKPIA | **AKPiA** |  | 2026-03-27 | 2026-04-30 |  |  |  |
| 26DX82-128 |  | Monta¿ uk³adów AKPiA | 24d | 2026-03-27 A | 2026-04-30 A | 26DX82-014 SS+5d | 100% |  |
|  | ELEKTRYKA | **Elektryka** |  | 2026-03-30 | 2026-10-06 |  |  |  |
| 26DX82-110 |  | Pod³¹czenia i pomiary – trasa 16 | 10d | 2026-03-30 A | 2026-04-13 A | 26DX82-109 FF | 100% |  |
| 26DX82-073 |  | Uk³adanie kabli – trasa 10 | 15d | 2026-04-02 A | 2026-04-23 A | 26DX82-014 SS+10d | 100% |  |
| 26DX82-121 |  | Uk³adanie kabli – trasa 18 | 6d | 2026-04-02 A | 2026-04-10 A | 26DX82-014 SS+10d | 100% |  |
| 26DX82-037 |  | Uk³adanie kabli – trasa 04 | 11d | 2026-04-03 A | 2026-04-17 A | 26DX82-014 SS+10d | 100% |  |
| 26DX82-038 |  | Pod³¹czenia i pomiary – trasa 04 | 9d | 2026-04-06 A | 2026-04-16 A | 26DX82-037 FF | 100% |  |
| 26DX82-049 |  | Uk³adanie kabli – trasa 06 | 8d | 2026-04-06 A | 2026-04-17 A | 26DX82-014 SS+10d | 100% |  |
| 26DX82-061 |  | Uk³adanie kabli – trasa 08 | 17d | 2026-04-06 A | 2026-04-30 A | 26DX82-014 SS+10d | 100% |  |
| 26DX82-122 |  | Pod³¹czenia i pomiary – trasa 18 | 7d | 2026-04-06 A | 2026-10-06 | 26DX82-121 FF | 24% | 436.9d |
| 26DX82-086 |  | Pod³¹czenia i pomiary – trasa 12 | 6d | 2026-04-07 A | 2026-04-15 A | 26DX82-085 FF | 100% |  |
| 26DX82-025 |  | Uk³adanie kabli – trasa 02 | 16d | 2026-04-08 A | 2026-04-30 A | 26DX82-014 SS+10d | 100% |  |
| 26DX82-050 |  | Pod³¹czenia i pomiary – trasa 06 | 8d | 2026-04-08 A | 2026-04-22 A | 26DX82-049 FF | 100% |  |
| 26DX82-085 |  | Uk³adanie kabli – trasa 12 | 9d | 2026-04-08 A | 2026-04-22 A | 26DX82-014 SS+10d | 100% |  |
| 26DX82-097 |  | Uk³adanie kabli – trasa 14 | 11d | 2026-04-08 A | 2026-04-23 A | 26DX82-014 SS+10d | 100% |  |
| 26DX82-098 |  | Pod³¹czenia i pomiary – trasa 14 | 9d | 2026-04-08 A | 2026-04-22 A | 26DX82-097 FF | 100% |  |
| 26DX82-109 |  | Uk³adanie kabli – trasa 16 | 5d | 2026-04-08 A | 2026-04-16 A | 26DX82-014 SS+10d | 100% |  |
| 26DX82-074 |  | Pod³¹czenia i pomiary – trasa 10 | 9d | 2026-04-15 A | 2026-04-28 A | 26DX82-073 FF | 100% |  |
| 26DX82-026 |  | Pod³¹czenia i pomiary – trasa 02 | 7d | 2026-04-16 A | 2026-04-24 A | 26DX82-025 FF | 100% |  |
| 26DX82-062 |  | Pod³¹czenia i pomiary – trasa 08 | 6d | 2026-04-17 A | 2026-04-28 A | 26DX82-061 FF | 100% |  |
|  | MONTA¯ | **Monta¿** |  | 2025-11-17 | 2026-06-26 |  |  |  |

| ID | WBS | Task | Duration | Start | Finish | Predecessors | Complete | Total float |
| --- | --- | --- | --- | --- | --- | --- | --- | --- |
| 26DX82-013 |  | Monta¿ konstrukcji stalowych | 26d | 2025-11-17 A | 2025-12-23 A | 26DX82-012 | 100% |  |
| 26DX82-014 |  | Monta¿ urz¹dzeñ g³ównych | 66d | 2026-03-24 A | 2026-06-26 A | 26DX82-013, 26DX82-011 | 100% |  |
| 26DX82-129 |  | KM: Zakoñczenie monta¿u – Sieæ œwiat³owodowa | 0d | 2026-06-23 A | 2026-06-23 | 26DX82-120, 26DX82-122, 26DX82-127, 26DX82-128, 26DX82-014 | 100% |  |
|  | ROBOTY BUD | **Roboty budowlane** |  | 2025-10-01 | 2025-11-13 |  |  |  |
| 26DX82-012 |  | Fundamenty i roboty ziemne | 29d | 2025-10-01 A | 2025-11-13 A | 26DX82-007 FS+13d | 100% |  |
|  | RUROCI¥GI | **Ruroci¹gi** |  | 2025-11-13 | 2026-10-08 |  |  |  |
|  | SEKCJA 01 | **Sekcja 01** |  | 2025-11-13 | 2026-09-30 |  |  |  |
| 26DX82-015 |  | Prefabrykacja ruroci¹gów – Sekcja 01 | 5.7d | 2025-11-13 A | 2025-11-21 A | 26DX82-012 | 100% |  |
| 26DX82-016 |  | Monta¿ ruroci¹gów – Sekcja 01 | 20.7d | 2026-03-25 A | 2026-04-22 A | 26DX82-015, 26DX82-014 SS+4d | 100% |  |
| 26DX82-017 |  | Próba ciœnieniowa – Sekcja 01 | 3d | 2026-04-29 A | 2026-09-30 | 26DX82-016 | 50% | 415.2d |
| 26DX82-018 |  | Izolacje – Sekcja 01 | 6d | 2026-04-30 A | 2026-05-07 A | 26DX82-017 | 100% |  |
| 26DX82-019 |  | Malowanie i oznakowanie – Sekcja 01 | 6d | 2026-05-01 A | 2026-05-13 A | 26DX82-018 FF+2d | 100% |  |
|  | SEKCJA 02 | **Sekcja 02** |  | 2025-11-21 | 2026-05-14 |  |  |  |
| 26DX82-020 |  | Prefabrykacja ruroci¹gów – Sekcja 02 | 3.3d | 2025-11-21 A | 2025-11-25 A | 26DX82-012, 26DX82-015 SS+5d | 100% |  |
| 26DX82-021 |  | Monta¿ ruroci¹gów – Sekcja 02 | 18.9d | 2026-03-30 A | 2026-04-23 A | 26DX82-020, 26DX82-014 SS+4d | 100% |  |
| 26DX82-022 |  | Próba ciœnieniowa – Sekcja 02 | 3d | 2026-04-21 A | 2026-04-27 A | 26DX82-021 | 100% |  |
| 26DX82-023 |  | Izolacje – Sekcja 02 | 11d | 2026-04-28 A | 2026-05-14 A | 26DX82-022 | 100% |  |
| 26DX82-024 |  | Malowanie i oznakowanie – Sekcja 02 | 5d | 2026-05-06 A | 2026-05-12 A | 26DX82-023 FF+2d | 100% |  |
|  | SEKCJA 03 | **Sekcja 03** |  | 2025-12-01 | 2026-09-30 |  |  |  |
|  | PODSEKCJA | **Podsekcja 03.A** |  | 2025-12-01 | 2026-09-30 |  |  |  |
| 26DX82-027 |  | Prefabrykacja ruroci¹gów – Sekcja 03 | 5d | 2025-12-01 A | 2026-09-30 | 26DX82-012, 26DX82-020 SS+5d | 66% | 417.1d |
| 26DX82-028 |  | Monta¿ ruroci¹gów – Sekcja 03 | 11.9d | 2026-04-03 A | 2026-04-20 A | 26DX82-027, 26DX82-014 SS+8d | 100% |  |
| 26DX82-029 |  | Próba ciœnieniowa – Sekcja 03 | 2d | 2026-04-17 A | 2026-04-22 A | 26DX82-028 | 100% |  |
| 26DX82-030 |  | Izolacje – Sekcja 03 | 7d | 2026-04-22 A | 2026-05-04 A | 26DX82-029 | 100% |  |
| 26DX82-031 |  | Malowanie i oznakowanie – Sekcja 03 | 5d | 2026-04-28 A | 2026-05-04 A | 26DX82-030 FF+2d | 100% |  |
|  | SEKCJA 04 | **Sekcja 04** |  | 2025-12-05 | 2026-10-02 |  |  |  |
| 26DX82-032 |  | Prefabrykacja ruroci¹gów – Sekcja 04 | 4.4d | 2025-12-05 A | 2026-10-02 | 26DX82-012, 26DX82-027 SS+5d | 32% | 418.1d |
| 26DX82-033 |  | Monta¿ ruroci¹gów – Sekcja 04 | 8.4d | 2026-03-27 A | 2026-04-09 A | 26DX82-032, 26DX82-014 SS+4d | 100% |  |
| 26DX82-034 |  | Próba ciœnieniowa – Sekcja 04 | 6d | 2026-04-09 A | 2026-04-21 A | 26DX82-033 | 100% |  |
| 26DX82-035 |  | Izolacje – Sekcja 04 | 9d | 2026-04-16 A | 2026-04-28 A | 26DX82-034 | 100% |  |
| 26DX82-036 |  | Malowanie i oznakowanie – Sekcja 04 | 7d | 2026-04-22 A | 2026-05-04 A | 26DX82-035 FF+2d | 100% |  |
|  | SEKCJA 05 | **Sekcja 05** |  | 2025-12-10 | 2026-10-01 |  |  |  |
| 26DX82-039 |  | Prefabrykacja ruroci¹gów – Sekcja 05 | 4.1d | 2025-12-10 A | 2025-12-15 A | 26DX82-012, 26DX82-032 SS+5d | 100% |  |
| 26DX82-040 |  | Monta¿ ruroci¹gów – Sekcja 05 | 15.2d | 2026-03-31 A | 2026-04-21 A | 26DX82-039, 26DX82-014 SS+7d | 100% |  |
| 26DX82-041 |  | Próba ciœnieniowa – Sekcja 05 | 5d | 2026-04-20 A | 2026-04-29 A | 26DX82-040 | 100% |  |
| 26DX82-042 |  | Izolacje – Sekcja 05 | 7d | 2026-05-04 A | 2026-10-01 | 26DX82-041 | 67% | 455.7d |
| 26DX82-043 |  | Malowanie i oznakowanie – Sekcja 05 | 7d | 2026-05-05 A | 2026-05-18 A | 26DX82-042 FF+2d | 100% |  |
|  | SEKCJA 06 | **Sekcja 06** |  | 2025-12-17 | 2026-10-01 |  |  |  |
|  | PODSEKCJA | **Podsekcja 06.A** |  | 2025-12-17 | 2026-10-01 |  |  |  |
| 26DX82-044 |  | Prefabrykacja ruroci¹gów – Sekcja 06 | 8.8d | 2025-12-17 A | 2025-12-31 A | 26DX82-012, 26DX82-039 SS+5d | 100% |  |
| 26DX82-045 |  | Monta¿ ruroci¹gów – Sekcja 06 | 6.4d | 2026-03-23 A | 2026-04-02 A | 26DX82-044, 26DX82-014 SS | 100% |  |
| 26DX82-046 |  | Próba ciœnieniowa – Sekcja 06 | 3d | 2026-03-31 A | 2026-04-02 A | 26DX82-045 | 100% |  |
| 26DX82-047 |  | Izolacje – Sekcja 06 | 9d | 2026-04-06 A | 2026-10-01 | 26DX82-046 | 74% | 473.5d |
| 26DX82-048 |  | Malowanie i oznakowanie – Sekcja 06 | 6d | 2026-04-08 A | 2026-04-15 A | 26DX82-047 FF+2d | 100% |  |
|  | SEKCJA 07 | **Sekcja 07** |  | 2025-12-24 | 2026-04-24 |  |  |  |
| 26DX82-051 |  | Prefabrykacja ruroci¹gów – Sekcja 07 | 13.2d | 2025-12-24 A | 2026-01-13 A | 26DX82-012, 26DX82-044 SS+5d | 100% |  |
| 26DX82-052 |  | Monta¿ ruroci¹gów – Sekcja 07 | 5.6d | 2026-04-06 A | 2026-04-15 A | 26DX82-051, 26DX82-014 SS+9d | 100% |  |
| 26DX82-053 |  | Próba ciœnieniowa – Sekcja 07 | 2d | 2026-04-08 A | 2026-04-09 A | 26DX82-052 | 100% |  |
| 26DX82-054 |  | Izolacje – Sekcja 07 | 5d | 2026-04-10 A | 2026-04-20 A | 26DX82-053 | 100% |  |
| 26DX82-055 |  | Malowanie i oznakowanie – Sekcja 07 | 6d | 2026-04-16 A | 2026-04-24 A | 26DX82-054 FF+2d | 100% |  |
|  | SEKCJA 08 | **Sekcja 08** |  | 2026-01-01 | 2026-05-15 |  |  |  |
| 26DX82-056 |  | Prefabrykacja ruroci¹gów – Sekcja 08 | 7d | 2026-01-01 A | 2026-01-13 A | 26DX82-012, 26DX82-051 SS+5d | 100% |  |
| 26DX82-057 |  | Monta¿ ruroci¹gów – Sekcja 08 | 23.8d | 2026-04-01 A | 2026-05-06 A | 26DX82-056, 26DX82-014 SS+5d | 100% |  |
| 26DX82-058 |  | Próba ciœnieniowa – Sekcja 08 | 5d | 2026-04-28 A | 2026-05-05 A | 26DX82-057 | 100% |  |
| 26DX82-060 |  | Malowanie i oznakowanie – Sekcja 08 | 7d | 2026-05-05 A | 2026-05-14 A | 26DX82-059 FF+2d | 100% |  |
| 26DX82-059 |  | Izolacje – Sekcja 08 | 5d | 2026-05-07 A | 2026-05-15 A | 26DX82-058 | 100% |  |
|  | SEKCJA 09 | **Sekcja 09** |  | 2026-01-06 | 2026-04-29 |  |  |  |
|  | PODSEKCJA | **Podsekcja 09.A** |  | 2026-01-06 | 2026-04-29 |  |  |  |
| 26DX82-063 |  | Prefabrykacja ruroci¹gów – Sekcja 09 | 12d | 2026-01-06 A | 2026-01-23 A | 26DX82-012, 26DX82-056 SS+5d | 100% |  |
| 26DX82-064 |  | Monta¿ ruroci¹gów – Sekcja 09 | 8.3d | 2026-03-30 A | 2026-04-13 A | 26DX82-063, 26DX82-014 SS+7d | 100% |  |
| 26DX82-065 |  | Próba ciœnieniowa – Sekcja 09 | 6d | 2026-04-10 A | 2026-04-21 A | 26DX82-064 | 100% |  |
| 26DX82-067 |  | Malowanie i oznakowanie – Sekcja 09 | 8d | 2026-04-16 A | 2026-04-29 A | 26DX82-066 FF+2d | 100% |  |
| 26DX82-066 |  | Izolacje – Sekcja 09 | 4d | 2026-04-20 A | 2026-04-28 A | 26DX82-065 | 100% |  |
|  | SEKCJA 10 | **Sekcja 10** |  | 2026-01-19 | 2026-05-06 |  |  |  |
| 26DX82-068 |  | Prefabrykacja ruroci¹gów – Sekcja 10 | 11.7d | 2026-01-19 A | 2026-02-02 A | 26DX82-012, 26DX82-063 SS+5d | 100% |  |
| 26DX82-069 |  | Monta¿ ruroci¹gów – Sekcja 10 | 12d | 2026-04-02 A | 2026-04-20 A | 26DX82-068, 26DX82-014 SS+10d | 100% |  |
| 26DX82-070 |  | Próba ciœnieniowa – Sekcja 10 | 2d | 2026-04-22 A | 2026-04-23 A | 26DX82-069 | 100% |  |
| 26DX82-071 |  | Izolacje – Sekcja 10 | 5d | 2026-04-27 A | 2026-05-05 A | 26DX82-070 | 100% |  |
| 26DX82-072 |  | Malowanie i oznakowanie – Sekcja 10 | 3d | 2026-04-30 A | 2026-05-06 A | 26DX82-071 FF+2d | 100% |  |
|  | SEKCJA 11 | **Sekcja 11** |  | 2026-01-21 | 2026-04-29 |  |  |  |

| ID | WBS | Task | Duration | Start | Finish | Predecessors | Complete | Total float |
| --- | --- | --- | --- | --- | --- | --- | --- | --- |
| 26DX82-075 |  | Prefabrykacja ruroci¹gów – Sekcja 11 | 7.7d | 2026-01-21 A | 2026-01-30 A | 26DX82-012, 26DX82-068 SS+5d | 100% |  |
| 26DX82-076 |  | Monta¿ ruroci¹gów – Sekcja 11 | 7.6d | 2026-04-01 A | 2026-04-14 A | 26DX82-075, 26DX82-014 SS+7d | 100% |  |
| 26DX82-077 |  | Próba ciœnieniowa – Sekcja 11 | 2d | 2026-04-08 A | 2026-04-09 A | 26DX82-076 | 100% |  |
| 26DX82-078 |  | Izolacje – Sekcja 11 | 11d | 2026-04-14 A | 2026-04-28 A | 26DX82-077 | 100% |  |
| 26DX82-079 |  | Malowanie i oznakowanie – Sekcja 11 | 2d | 2026-04-28 A | 2026-04-29 A | 26DX82-078 FF+2d | 100% |  |
|  | SEKCJA 12 | **Sekcja 12** |  | 2026-02-02 | 2026-09-30 |  |  |  |
|  | PODSEKCJA | **Podsekcja 12.A** |  | 2026-02-02 | 2026-09-30 |  |  |  |
| 26DX82-080 |  | Prefabrykacja ruroci¹gów – Sekcja 12 | 8.4d | 2026-02-02 A | 2026-02-11 A | 26DX82-012, 26DX82-075 SS+5d | 100% |  |
| 26DX82-081 |  | Monta¿ ruroci¹gów – Sekcja 12 | 5.3d | 2026-03-23 A | 2026-03-27 A | 26DX82-080, 26DX82-014 SS+1d | 100% |  |
| 26DX82-082 |  | Próba ciœnieniowa – Sekcja 12 | 3d | 2026-04-02 A | 2026-09-30 | 26DX82-081 | 53% | 470.6d |
| 26DX82-083 |  | Izolacje – Sekcja 12 | 11d | 2026-04-07 A | 2026-04-22 A | 26DX82-082 | 100% |  |
| 26DX82-084 |  | Malowanie i oznakowanie – Sekcja 12 | 3d | 2026-04-20 A | 2026-04-22 A | 26DX82-083 FF+2d | 100% |  |
|  | SEKCJA 13 | **Sekcja 13** |  | 2026-02-03 | 2026-10-08 |  |  |  |
| 26DX82-087 |  | Prefabrykacja ruroci¹gów – Sekcja 13 | 12.9d | 2026-02-03 A | 2026-02-20 A | 26DX82-012, 26DX82-080 SS+5d | 100% |  |
| 26DX82-088 |  | Monta¿ ruroci¹gów – Sekcja 13 | 23.3d | 2026-04-07 A | 2026-10-08 | 26DX82-087, 26DX82-014 SS+8d | 68% | 448.6d |
| 26DX82-089 |  | Próba ciœnieniowa – Sekcja 13 | 2d | 2026-05-04 A | 2026-05-07 A | 26DX82-088 | 100% |  |
| 26DX82-090 |  | Izolacje – Sekcja 13 | 8d | 2026-05-07 A | 2026-05-20 A | 26DX82-089 | 100% |  |
| 26DX82-091 |  | Malowanie i oznakowanie – Sekcja 13 | 7d | 2026-05-12 A | 2026-05-22 A | 26DX82-090 FF+2d | 100% |  |
|  | SEKCJA 14 | **Sekcja 14** |  | 2026-02-13 | 2026-05-15 |  |  |  |
| 26DX82-092 |  | Prefabrykacja ruroci¹gów – Sekcja 14 | 12.8d | 2026-02-13 A | 2026-03-04 A | 26DX82-012, 26DX82-087 SS+5d | 100% |  |
| 26DX82-093 |  | Monta¿ ruroci¹gów – Sekcja 14 | 13.3d | 2026-04-06 A | 2026-04-24 A | 26DX82-092, 26DX82-014 SS+9d | 100% |  |
| 26DX82-094 |  | Próba ciœnieniowa – Sekcja 14 | 6d | 2026-04-23 A | 2026-05-04 A | 26DX82-093 | 100% |  |
| 26DX82-095 |  | Izolacje – Sekcja 14 | 9d | 2026-04-28 A | 2026-05-11 A | 26DX82-094 | 100% |  |
| 26DX82-096 |  | Malowanie i oznakowanie – Sekcja 14 | 2d | 2026-05-11 A | 2026-05-15 A | 26DX82-095 FF+2d | 100% |  |
|  | SEKCJA 15 | **Sekcja 15** |  | 2026-02-18 | 2026-05-05 |  |  |  |
|  | PODSEKCJA | **Podsekcja 15.A** |  | 2026-02-18 | 2026-05-05 |  |  |  |
| 26DX82-099 |  | Prefabrykacja ruroci¹gów – Sekcja 15 | 12.1d | 2026-02-18 A | 2026-03-06 A | 26DX82-012, 26DX82-092 SS+5d | 100% |  |
| 26DX82-100 |  | Monta¿ ruroci¹gów – Sekcja 15 | 22.7d | 2026-03-19 A | 2026-04-21 A | 26DX82-099, 26DX82-014 SS | 100% |  |
| 26DX82-101 |  | Próba ciœnieniowa – Sekcja 15 | 2d | 2026-04-21 A | 2026-04-22 A | 26DX82-100 | 100% |  |
| 26DX82-103 |  | Malowanie i oznakowanie – Sekcja 15 | 7d | 2026-04-22 A | 2026-05-05 A | 26DX82-102 FF+2d | 100% |  |
| 26DX82-102 |  | Izolacje – Sekcja 15 | 3d | 2026-04-24 A | 2026-04-30 A | 26DX82-101 | 100% |  |
|  | SEKCJA 16 | **Sekcja 16** |  | 2026-02-27 | 2026-05-05 |  |  |  |
| 26DX82-104 |  | Prefabrykacja ruroci¹gów – Sekcja 16 | 7.4d | 2026-02-27 A | 2026-03-11 A | 26DX82-012, 26DX82-099 SS+5d | 100% |  |
| 26DX82-105 |  | Monta¿ ruroci¹gów – Sekcja 16 | 24.4d | 2026-03-24 A | 2026-04-29 A | 26DX82-104, 26DX82-014 SS | 100% |  |
| 26DX82-106 |  | Próba ciœnieniowa – Sekcja 16 | 4d | 2026-04-23 A | 2026-04-28 A | 26DX82-105 | 100% |  |
| 26DX82-108 |  | Malowanie i oznakowanie – Sekcja 16 | 7d | 2026-04-27 A | 2026-05-05 A | 26DX82-107 FF+2d | 100% |  |
| 26DX82-107 |  | Izolacje – Sekcja 16 | 3d | 2026-04-28 A | 2026-05-01 A | 26DX82-106 | 100% |  |
|  | SEKCJA 17 | **Sekcja 17** |  | 2026-03-03 | 2026-09-30 |  |  |  |
| 26DX82-111 |  | Prefabrykacja ruroci¹gów – Sekcja 17 | 11.2d | 2026-03-03 A | 2026-03-17 A | 26DX82-012, 26DX82-104 SS+5d | 100% |  |
| 26DX82-112 |  | Monta¿ ruroci¹gów – Sekcja 17 | 8.1d | 2026-04-02 A | 2026-04-14 A | 26DX82-111, 26DX82-014 SS+9d | 100% |  |
| 26DX82-113 |  | Próba ciœnieniowa – Sekcja 17 | 3d | 2026-04-14 A | 2026-04-20 A | 26DX82-112 | 100% |  |
| 26DX82-114 |  | Izolacje – Sekcja 17 | 4d | 2026-04-22 A | 2026-09-30 | 26DX82-113 | 60% | 466.8d |
| 26DX82-115 |  | Malowanie i oznakowanie – Sekcja 17 | 4d | 2026-04-27 A | 2026-09-30 | 26DX82-114 FF+2d | 75% | 465.8d |
|  | SEKCJA 18 | **Sekcja 18** |  | 2026-03-16 | 2026-05-11 |  |  |  |
|  | PODSEKCJA | **Podsekcja 18.A** |  | 2026-03-16 | 2026-05-11 |  |  |  |
| 26DX82-116 |  | Prefabrykacja ruroci¹gów – Sekcja 18 | 14.7d | 2026-03-16 A | 2026-04-07 A | 26DX82-012, 26DX82-111 SS+5d | 100% |  |
| 26DX82-117 |  | Monta¿ ruroci¹gów – Sekcja 18 | 15.1d | 2026-03-31 A | 2026-04-20 A | 26DX82-116, 26DX82-014 SS+1d | 100% |  |
| 26DX82-118 |  | Próba ciœnieniowa – Sekcja 18 | 4d | 2026-04-24 A | 2026-05-01 A | 26DX82-117 | 100% |  |
| 26DX82-119 |  | Izolacje – Sekcja 18 | 6d | 2026-04-27 A | 2026-05-05 A | 26DX82-118 | 100% |  |
| 26DX82-120 |  | Malowanie i oznakowanie – Sekcja 18 | 5d | 2026-04-30 A | 2026-05-11 A | 26DX82-119 FF+2d | 100% |  |
|  | SEKCJA 19 | **Sekcja 19** |  | 2026-03-20 | 2026-05-07 |  |  |  |
| 26DX82-123 |  | Prefabrykacja ruroci¹gów – Sekcja 19 | 8.6d | 2026-03-20 A | 2026-04-03 A | 26DX82-012, 26DX82-116 SS+5d | 100% |  |
| 26DX82-124 |  | Monta¿ ruroci¹gów – Sekcja 19 | 15d | 2026-04-01 A | 2026-04-23 A | 26DX82-123, 26DX82-014 SS+9d | 100% |  |
| 26DX82-125 |  | Próba ciœnieniowa – Sekcja 19 | 2d | 2026-04-23 A | 2026-04-27 A | 26DX82-124 | 100% |  |
| 26DX82-127 |  | Malowanie i oznakowanie – Sekcja 19 | 6d | 2026-04-27 A | 2026-05-07 A | 26DX82-126 FF+2d | 100% |  |
| 26DX82-126 |  | Izolacje – Sekcja 19 | 3d | 2026-04-29 A | 2026-05-05 A | 26DX82-125 | 100% |  |
|  | PROJ | **Projektowanie** |  | 2025-01-29 | 2025-08-20 |  |  |  |
|  | DOKUMENTAC | **Dokumentacja** |  | 2025-01-29 | 2025-08-20 |  |  |  |
| 26DX82-001 |  | Projekt wykonawczy – Sieæ œwiat³owodowa | 111d | 2025-01-29 A | 2025-07-03 A |  | 100% |  |
| 26DX82-002 |  | Uzgodnienie dokumentacji z Inwestorem | 19d | 2025-07-08 A | 2025-08-06 A | 26DX82-001 | 100% |  |
| 26DX82-003 |  | Zatwierdzenie dokumentacji do realizacji | 13d | 2025-07-31 A | 2025-08-20 A | 26DX82-002 | 100% |  |
| 26DX82-004 |  | KM: Dokumentacja zatwierdzona – Sieæ œwiat³owodowa | 0d | 2025-08-19 A | 2025-08-19 | 26DX82-003 | 100% |  |
|  | ROZR | **Rozruch** |  | 2026-06-24 | 2026-08-10 |  |  |  |
|  | ROZRUCH | **Rozruch** |  | 2026-06-24 | 2026-08-10 |  |  |  |
| 26DX82-130 |  | Przegl¹d gotowoœci do rozruchu | 8d | 2026-06-24 A | 2026-07-03 A | 26DX82-129, 26DX82-019, 26DX82-024, 26DX82-026 | 100% |  |
| 26DX82-131 |  | Rozruch na zimno | 9d | 2026-07-06 A | 2026-07-16 A | 26DX82-130 | 100% |  |
| 26DX82-132 |  | Rozruch na gor¹co / próby ruchowe | 14d | 2026-07-20 A | 2026-08-10 A | 26DX82-131 | 100% |  |
| 26DX82-133 |  | KM: Odbiór koñcowy – Sieæ œwiat³owodowa | 0d | 2026-08-04 | 2026-08-04 A | 26DX82-132 | 100% |  |
|  | ZAKU | **Zakupy** |  | 2025-03-03 | 2026-03-25 |  |  |  |
|  | DOSTAWY | **Dostawy** |  | 2025-09-12 | 2026-03-25 |  |  |  |

| ID | WBS | Task | Duration | Start | Finish | Predecessors | Complete | Total float |
| --- | --- | --- | --- | --- | --- | --- | --- | --- |
| 26DX82-008 |  | Produkcja u dostawcy | 111d | 2025-09-12 A | 2026-02-18 A | 26DX82-007 | 100% |  |
| 26DX82-009 |  | Testy FAT | 8d | 2026-02-18 A | 2026-02-27 A | 26DX82-008 | 100% |  |
| 26DX82-010 |  | Transport i dostawa na plac budowy | 15d | 2026-02-26 A | 2026-03-19 A | 26DX82-009 | 100% |  |
| 26DX82-011 |  | KM: Dostawa na budowê – Sieæ œwiat³owodowa | 0d | 2026-03-25 A | 2026-03-25 | 26DX82-010 | 100% |  |
|  | ZAMÓWIENIA | **Zamówienia** |  | 2025-03-03 | 2025-09-18 |  |  |  |
| 26DX82-005 |  | Zapytanie ofertowe | 18d | 2025-03-03 A | 2025-03-31 A | 26DX82-001 SS+20d | 100% |  |
| 26DX82-006 |  | Analiza i wybór ofert | 10d | 2025-03-26 A | 2025-04-09 A | 26DX82-005 | 100% |  |
| 26DX82-007 |  | Zawarcie umowy / zamówienie | 7d | 2025-09-08 A | 2025-09-18 A | 26DX82-006, 26DX82-004 SS, 14NX42-004 FS+12d | 100% |  |
|  | 29DM24 | **29DM24 – Uk³ady pomiarowe** |  | 2025-01-13 | 2026-11-17 |  |  |  |
|  | BUDO | **Budowa** |  | 2025-07-14 | 2026-11-17 |  |  |  |
|  | AKPIA | **AKPiA** |  | 2026-05-22 | 2026-06-04 |  |  |  |
| 29DM24-176 |  | Monta¿ uk³adów AKPiA | 10d | 2026-05-22 A | 2026-06-04 A | 29DM24-014 SS+5d | 100% |  |
|  | ELEKTRYKA | **Elektryka** |  | 2026-05-22 | 2026-10-09 |  |  |  |
| 29DM24-158 |  | Pod³¹czenia i pomiary – trasa 24 | 6d | 2026-05-22 A | 2026-06-03 A | 29DM24-157 FF | 100% |  |
| 29DM24-038 |  | Pod³¹czenia i pomiary – trasa 04 | 8d | 2026-05-25 A | 2026-09-30 | 29DM24-037 FF | 81% | 441.9d |
| 29DM24-073 |  | Uk³adanie kabli – trasa 10 | 19d | 2026-05-25 A | 2026-06-22 A | 29DM24-014 SS+10d | 100% |  |
| 29DM24-097 |  | Uk³adanie kabli – trasa 14 | 17d | 2026-05-25 A | 2026-06-18 A | 29DM24-014 SS+10d | 100% |  |
| 29DM24-025 |  | Uk³adanie kabli – trasa 02 | 13d | 2026-05-26 A | 2026-06-16 A | 29DM24-014 SS+10d | 100% |  |
| 29DM24-085 |  | Uk³adanie kabli – trasa 12 | 7d | 2026-05-26 A | 2026-06-03 A | 29DM24-014 SS+10d | 100% |  |
| 29DM24-133 |  | Uk³adanie kabli – trasa 20 | 10d | 2026-05-26 A | 2026-10-06 | 29DM24-014 SS+10d | 47% | 438.9d |
| 29DM24-157 |  | Uk³adanie kabli – trasa 24 | 4d | 2026-05-26 A | 2026-06-02 A | 29DM24-014 SS+10d | 100% |  |
| 29DM24-050 |  | Pod³¹czenia i pomiary – trasa 06 | 7d | 2026-05-27 A | 2026-06-08 A | 29DM24-049 FF | 100% |  |
| 29DM24-061 |  | Uk³adanie kabli – trasa 08 | 20d | 2026-05-27 A | 2026-06-26 A | 29DM24-014 SS+10d | 100% |  |
| 29DM24-146 |  | Pod³¹czenia i pomiary – trasa 22 | 8d | 2026-05-27 A | 2026-06-08 A | 29DM24-145 FF | 100% |  |
| 29DM24-037 |  | Uk³adanie kabli – trasa 04 | 6d | 2026-05-28 A | 2026-06-08 A | 29DM24-014 SS+10d | 100% |  |
| 29DM24-109 |  | Uk³adanie kabli – trasa 16 | 10d | 2026-05-28 A | 2026-06-15 A | 29DM24-014 SS+10d | 100% |  |
| 29DM24-169 |  | Uk³adanie kabli – trasa 26 | 9d | 2026-05-28 A | 2026-10-06 | 29DM24-014 SS+10d | 43% | 391.9d |
| 29DM24-049 |  | Uk³adanie kabli – trasa 06 | 9d | 2026-05-29 A | 2026-06-12 A | 29DM24-014 SS+10d | 100% |  |
| 29DM24-121 |  | Uk³adanie kabli – trasa 18 | 13d | 2026-05-29 A | 2026-06-19 A | 29DM24-014 SS+10d | 100% |  |
| 29DM24-145 |  | Uk³adanie kabli – trasa 22 | 6d | 2026-05-29 A | 2026-06-05 A | 29DM24-014 SS+10d | 100% |  |
| 29DM24-170 |  | Pod³¹czenia i pomiary – trasa 26 | 5d | 2026-05-29 A | 2026-06-08 A | 29DM24-169 FF | 100% |  |
| 29DM24-134 |  | Pod³¹czenia i pomiary – trasa 20 | 8d | 2026-06-01 A | 2026-06-15 A | 29DM24-133 FF | 100% |  |
| 29DM24-026 |  | Pod³¹czenia i pomiary – trasa 02 | 8d | 2026-06-03 A | 2026-06-17 A | 29DM24-025 FF | 100% |  |
| 29DM24-110 |  | Pod³¹czenia i pomiary – trasa 16 | 4d | 2026-06-08 A | 2026-06-16 A | 29DM24-109 FF | 100% |  |
| 29DM24-122 |  | Pod³¹czenia i pomiary – trasa 18 | 7d | 2026-06-08 A | 2026-06-19 A | 29DM24-121 FF | 100% |  |
| 29DM24-074 |  | Pod³¹czenia i pomiary – trasa 10 | 7d | 2026-06-16 A | 2026-06-26 A | 29DM24-073 FF | 100% |  |
| 29DM24-098 |  | Pod³¹czenia i pomiary – trasa 14 | 4d | 2026-06-16 A | 2026-06-24 A | 29DM24-097 FF | 100% |  |
| 29DM24-062 |  | Pod³¹czenia i pomiary – trasa 08 | 3d | 2026-06-17 A | 2026-06-23 A | 29DM24-061 FF | 100% |  |
| 29DM24-086 |  | Pod³¹czenia i pomiary – trasa 12 | 8d | 2026-09-30 | 2026-10-09 | 29DM24-085 FF |  | 349.9d |
|  | MONTA¯ | **Monta¿** |  | 2025-09-15 | 2026-07-23 |  |  |  |
| 29DM24-013 |  | Monta¿ konstrukcji stalowych | 32d | 2025-09-15 A | 2025-10-29 A | 29DM24-012 | 100% |  |
| 29DM24-014 |  | Monta¿ urz¹dzeñ g³ównych | 49d | 2026-05-15 A | 2026-07-23 A | 29DM24-013, 29DM24-011 | 100% |  |
| 29DM24-177 |  | KM: Zakoñczenie monta¿u – Uk³ady pomiarowe | 0d | 2026-07-17 A | 2026-07-17 | 29DM24-168, 29DM24-170, 29DM24-175, 29DM24-176, 29DM24-014 | 100% |  |
|  | ROBOTY BUD | **Roboty budowlane** |  | 2025-07-14 | 2026-11-17 |  |  |  |
| 29DM24-012 |  | Fundamenty i roboty ziemne | 48d | 2025-07-14 A | 2026-11-17 | 29DM24-007 FS+10d | 26% | 417.5d |
|  | RUROCI¥GI | **Ruroci¹gi** |  | 2025-09-18 | 2026-10-07 |  |  |  |
|  | SEKCJA 01 | **Sekcja 01** |  | 2025-09-18 | 2026-07-06 |  |  |  |
| 29DM24-015 |  | Prefabrykacja ruroci¹gów – Sekcja 01 | 9.2d | 2025-09-18 A | 2025-10-03 A | 29DM24-012 | 100% |  |
| 29DM24-016 |  | Monta¿ ruroci¹gów – Sekcja 01 | 14.2d | 2026-05-25 A | 2026-06-15 A | 29DM24-015, 29DM24-014 SS+6d | 100% |  |
| 29DM24-017 |  | Próba ciœnieniowa – Sekcja 01 | 5d | 2026-06-11 A | 2026-06-17 A | 29DM24-016 | 100% |  |
| 29DM24-018 |  | Izolacje – Sekcja 01 | 10d | 2026-06-19 A | 2026-07-02 A | 29DM24-017 | 100% |  |
| 29DM24-019 |  | Malowanie i oznakowanie – Sekcja 01 | 4d | 2026-06-30 A | 2026-07-06 A | 29DM24-018 FF+2d | 100% |  |
|  | SEKCJA 02 | **Sekcja 02** |  | 2025-09-25 | 2026-06-23 |  |  |  |
| 29DM24-020 |  | Prefabrykacja ruroci¹gów – Sekcja 02 | 12.4d | 2025-09-25 A | 2025-10-13 A | 29DM24-012, 29DM24-015 SS+5d | 100% |  |
| 29DM24-021 |  | Monta¿ ruroci¹gów – Sekcja 02 | 11d | 2026-05-25 A | 2026-06-09 A | 29DM24-020, 29DM24-014 SS+8d | 100% |  |
| 29DM24-022 |  | Próba ciœnieniowa – Sekcja 02 | 2d | 2026-06-05 A | 2026-06-09 A | 29DM24-021 | 100% |  |
| 29DM24-023 |  | Izolacje – Sekcja 02 | 5d | 2026-06-09 A | 2026-06-16 A | 29DM24-022 | 100% |  |
| 29DM24-024 |  | Malowanie i oznakowanie – Sekcja 02 | 8d | 2026-06-10 A | 2026-06-23 A | 29DM24-023 FF+2d | 100% |  |
|  | SEKCJA 03 | **Sekcja 03** |  | 2025-09-26 | 2026-06-11 |  |  |  |
|  | PODSEKCJA | **Podsekcja 03.A** |  | 2025-09-26 | 2026-06-11 |  |  |  |
| 29DM24-027 |  | Prefabrykacja ruroci¹gów – Sekcja 03 | 12.1d | 2025-09-26 A | 2025-10-15 A | 29DM24-012, 29DM24-020 SS+5d | 100% |  |
| 29DM24-028 |  | Monta¿ ruroci¹gów – Sekcja 03 | 9.1d | 2026-05-13 A | 2026-05-26 A | 29DM24-027, 29DM24-014 SS+1d | 100% |  |
| 29DM24-029 |  | Próba ciœnieniowa – Sekcja 03 | 5d | 2026-05-25 A | 2026-06-03 A | 29DM24-028 | 100% |  |
| 29DM24-031 |  | Malowanie i oznakowanie – Sekcja 03 | 5d | 2026-06-02 A | 2026-06-11 A | 29DM24-030 FF+2d | 100% |  |
| 29DM24-030 |  | Izolacje – Sekcja 03 | 4d | 2026-06-03 A | 2026-06-11 A | 29DM24-029 | 100% |  |
|  | SEKCJA 04 | **Sekcja 04** |  | 2025-10-08 | 2026-06-26 |  |  |  |
| 29DM24-032 |  | Prefabrykacja ruroci¹gów – Sekcja 04 | 3.1d | 2025-10-08 A | 2025-10-14 A | 29DM24-012, 29DM24-027 SS+5d | 100% |  |
| 29DM24-033 |  | Monta¿ ruroci¹gów – Sekcja 04 | 8.7d | 2026-05-27 A | 2026-06-09 A | 29DM24-032, 29DM24-014 SS+9d | 100% |  |
| 29DM24-034 |  | Próba ciœnieniowa – Sekcja 04 | 6d | 2026-06-08 A | 2026-06-16 A | 29DM24-033 | 100% |  |
| 29DM24-035 |  | Izolacje – Sekcja 04 | 4d | 2026-06-17 A | 2026-06-25 A | 29DM24-034 | 100% |  |

| ID | WBS | Task | Duration | Start | Finish | Predecessors | Complete | Total float |
| --- | --- | --- | --- | --- | --- | --- | --- | --- |
| 29DM24-036 |  | Malowanie i oznakowanie – Sekcja 04 | 4d | 2026-06-19 A | 2026-06-26 A | 29DM24-035 FF+2d | 100% |  |
|  | SEKCJA 05 | **Sekcja 05** |  | 2025-10-10 | 2026-10-07 |  |  |  |
| 29DM24-039 |  | Prefabrykacja ruroci¹gów – Sekcja 05 | 8.8d | 2025-10-10 A | 2025-10-21 A | 29DM24-012, 29DM24-032 SS+5d | 100% |  |
| 29DM24-040 |  | Monta¿ ruroci¹gów – Sekcja 05 | 13.5d | 2026-05-22 A | 2026-10-07 | 29DM24-039, 29DM24-014 SS+4d | 49% | 420.4d |
| 29DM24-041 |  | Próba ciœnieniowa – Sekcja 05 | 5d | 2026-06-08 A | 2026-06-12 A | 29DM24-040 | 100% |  |
| 29DM24-042 |  | Izolacje – Sekcja 05 | 10d | 2026-06-12 A | 2026-06-26 A | 29DM24-041 | 100% |  |
| 29DM24-043 |  | Malowanie i oznakowanie – Sekcja 05 | 7d | 2026-06-19 A | 2026-06-29 A | 29DM24-042 FF+2d | 100% |  |
|  | SEKCJA 06 | **Sekcja 06** |  | 2025-10-22 | 2026-07-17 |  |  |  |
|  | PODSEKCJA | **Podsekcja 06.A** |  | 2025-10-22 | 2026-07-17 |  |  |  |
| 29DM24-044 |  | Prefabrykacja ruroci¹gów – Sekcja 06 | 3d | 2025-10-22 A | 2025-10-27 A | 29DM24-012, 29DM24-039 SS+5d | 100% |  |
| 29DM24-045 |  | Monta¿ ruroci¹gów – Sekcja 06 | 25d | 2026-05-20 A | 2026-06-24 A | 29DM24-044, 29DM24-014 SS+6d | 100% |  |
| 29DM24-046 |  | Próba ciœnieniowa – Sekcja 06 | 2d | 2026-06-29 A | 2026-07-03 A | 29DM24-045 | 100% |  |
| 29DM24-047 |  | Izolacje – Sekcja 06 | 12d | 2026-07-01 A | 2026-07-17 A | 29DM24-046 | 100% |  |
| 29DM24-048 |  | Malowanie i oznakowanie – Sekcja 06 | 4d | 2026-07-14 A | 2026-07-17 A | 29DM24-047 FF+2d | 100% |  |
|  | SEKCJA 07 | **Sekcja 07** |  | 2025-10-30 | 2026-07-14 |  |  |  |
| 29DM24-051 |  | Prefabrykacja ruroci¹gów – Sekcja 07 | 3d | 2025-10-30 A | 2025-11-06 A | 29DM24-012, 29DM24-044 SS+5d | 100% |  |
| 29DM24-052 |  | Monta¿ ruroci¹gów – Sekcja 07 | 24.6d | 2026-05-26 A | 2026-07-01 A | 29DM24-051, 29DM24-014 SS+10d | 100% |  |
| 29DM24-053 |  | Próba ciœnieniowa – Sekcja 07 | 2d | 2026-06-26 A | 2026-06-29 A | 29DM24-052 | 100% |  |
| 29DM24-055 |  | Malowanie i oznakowanie – Sekcja 07 | 7d | 2026-07-01 A | 2026-07-14 A | 29DM24-054 FF+2d | 100% |  |
| 29DM24-054 |  | Izolacje – Sekcja 07 | 4d | 2026-07-06 A | 2026-07-14 A | 29DM24-053 | 100% |  |
|  | SEKCJA 08 | **Sekcja 08** |  | 2025-11-05 | 2026-10-02 |  |  |  |
| 29DM24-056 |  | Prefabrykacja ruroci¹gów – Sekcja 08 | 9.3d | 2025-11-05 A | 2025-11-19 A | 29DM24-012, 29DM24-051 SS+5d | 100% |  |
| 29DM24-057 |  | Monta¿ ruroci¹gów – Sekcja 08 | 5.8d | 2026-05-22 A | 2026-10-02 | 29DM24-056, 29DM24-014 SS+8d | 41% | 432.1d |
| 29DM24-058 |  | Próba ciœnieniowa – Sekcja 08 | 6d | 2026-05-29 A | 2026-06-08 A | 29DM24-057 | 100% |  |
| 29DM24-059 |  | Izolacje – Sekcja 08 | 5d | 2026-06-09 A | 2026-06-15 A | 29DM24-058 | 100% |  |
| 29DM24-060 |  | Malowanie i oznakowanie – Sekcja 08 | 3d | 2026-06-12 A | 2026-06-17 A | 29DM24-059 FF+2d | 100% |  |
|  | SEKCJA 09 | **Sekcja 09** |  | 2025-11-10 | 2026-06-24 |  |  |  |
|  | PODSEKCJA | **Podsekcja 09.A** |  | 2025-11-10 | 2026-06-24 |  |  |  |
| 29DM24-063 |  | Prefabrykacja ruroci¹gów – Sekcja 09 | 11.3d | 2025-11-10 A | 2025-11-24 A | 29DM24-012, 29DM24-056 SS+5d | 100% |  |
| 29DM24-064 |  | Monta¿ ruroci¹gów – Sekcja 09 | 11.8d | 2026-05-15 A | 2026-05-29 A | 29DM24-063, 29DM24-014 SS+2d | 100% |  |
| 29DM24-066 |  | Izolacje – Sekcja 09 | 12d | 2026-06-02 A | 2026-06-17 A | 29DM24-065 | 100% |  |
| 29DM24-065 |  | Próba ciœnieniowa – Sekcja 09 | 2d | 2026-06-03 A | 2026-06-09 A | 29DM24-064 | 100% |  |
| 29DM24-067 |  | Malowanie i oznakowanie – Sekcja 09 | 4d | 2026-06-19 A | 2026-06-24 A | 29DM24-066 FF+2d | 100% |  |
|  | SEKCJA 10 | **Sekcja 10** |  | 2025-11-18 | 2026-10-02 |  |  |  |
| 29DM24-068 |  | Prefabrykacja ruroci¹gów – Sekcja 10 | 6.3d | 2025-11-18 A | 2026-10-02 | 29DM24-012, 29DM24-063 SS+5d | 46% | 419.5d |
| 29DM24-069 |  | Monta¿ ruroci¹gów – Sekcja 10 | 6.2d | 2026-05-28 A | 2026-06-08 A | 29DM24-068, 29DM24-014 SS+10d | 100% |  |
| 29DM24-071 |  | Izolacje – Sekcja 10 | 5d | 2026-06-04 A | 2026-06-11 A | 29DM24-070 | 100% |  |
| 29DM24-070 |  | Próba ciœnieniowa – Sekcja 10 | 2d | 2026-06-08 A | 2026-06-11 A | 29DM24-069 | 100% |  |
| 29DM24-072 |  | Malowanie i oznakowanie – Sekcja 10 | 3d | 2026-06-15 A | 2026-06-18 A | 29DM24-071 FF+2d | 100% |  |
|  | SEKCJA 11 | **Sekcja 11** |  | 2025-11-27 | 2026-06-19 |  |  |  |
| 29DM24-075 |  | Prefabrykacja ruroci¹gów – Sekcja 11 | 12.7d | 2025-11-27 A | 2025-12-12 A | 29DM24-012, 29DM24-068 SS+5d | 100% |  |
| 29DM24-076 |  | Monta¿ ruroci¹gów – Sekcja 11 | 8.7d | 2026-05-27 A | 2026-06-08 A | 29DM24-075, 29DM24-014 SS+8d | 100% |  |
| 29DM24-078 |  | Izolacje – Sekcja 11 | 8d | 2026-06-04 A | 2026-06-17 A | 29DM24-077 | 100% |  |
| 29DM24-077 |  | Próba ciœnieniowa – Sekcja 11 | 2d | 2026-06-05 A | 2026-06-11 A | 29DM24-076 | 100% |  |
| 29DM24-079 |  | Malowanie i oznakowanie – Sekcja 11 | 8d | 2026-06-09 A | 2026-06-19 A | 29DM24-078 FF+2d | 100% |  |
|  | SEKCJA 12 | **Sekcja 12** |  | 2025-11-28 | 2026-07-22 |  |  |  |
|  | PODSEKCJA | **Podsekcja 12.A** |  | 2025-11-28 | 2026-07-22 |  |  |  |
| 29DM24-080 |  | Prefabrykacja ruroci¹gów – Sekcja 12 | 12.4d | 2025-11-28 A | 2025-12-17 A | 29DM24-012, 29DM24-075 SS+5d | 100% |  |
| 29DM24-081 |  | Monta¿ ruroci¹gów – Sekcja 12 | 23.4d | 2026-05-22 A | 2026-06-26 A | 29DM24-080, 29DM24-014 SS+8d | 100% |  |
| 29DM24-082 |  | Próba ciœnieniowa – Sekcja 12 | 4d | 2026-06-25 A | 2026-06-30 A | 29DM24-081 | 100% |  |
| 29DM24-083 |  | Izolacje – Sekcja 12 | 10d | 2026-07-02 A | 2026-07-16 A | 29DM24-082 | 100% |  |
| 29DM24-084 |  | Malowanie i oznakowanie – Sekcja 12 | 6d | 2026-07-10 A | 2026-07-22 A | 29DM24-083 FF+2d | 100% |  |
|  | SEKCJA 13 | **Sekcja 13** |  | 2025-12-10 | 2026-10-07 |  |  |  |
| 29DM24-087 |  | Prefabrykacja ruroci¹gów – Sekcja 13 | 11.1d | 2025-12-10 A | 2026-10-07 | 29DM24-012, 29DM24-080 SS+5d | 46% | 418.5d |
| 29DM24-088 |  | Monta¿ ruroci¹gów – Sekcja 13 | 12.8d | 2026-05-12 A | 2026-05-28 A | 29DM24-087, 29DM24-014 SS | 100% |  |
| 29DM24-089 |  | Próba ciœnieniowa – Sekcja 13 | 5d | 2026-06-01 A | 2026-06-08 A | 29DM24-088 | 100% |  |
| 29DM24-091 |  | Malowanie i oznakowanie – Sekcja 13 | 6d | 2026-06-03 A | 2026-06-12 A | 29DM24-090 FF+2d | 100% |  |
| 29DM24-090 |  | Izolacje – Sekcja 13 | 4d | 2026-06-09 A | 2026-06-16 A | 29DM24-089 | 100% |  |
|  | SEKCJA 14 | **Sekcja 14** |  | 2025-12-16 | 2026-10-05 |  |  |  |
| 29DM24-092 |  | Prefabrykacja ruroci¹gów – Sekcja 14 | 11.6d | 2025-12-16 A | 2025-12-30 A | 29DM24-012, 29DM24-087 SS+5d | 100% |  |
| 29DM24-093 |  | Monta¿ ruroci¹gów – Sekcja 14 | 8.4d | 2026-05-25 A | 2026-10-05 | 29DM24-092, 29DM24-014 SS+5d | 45% | 429.5d |
| 29DM24-094 |  | Próba ciœnieniowa – Sekcja 14 | 4d | 2026-06-02 A | 2026-06-09 A | 29DM24-093 | 100% |  |
| 29DM24-095 |  | Izolacje – Sekcja 14 | 6d | 2026-06-08 A | 2026-06-16 A | 29DM24-094 | 100% |  |
| 29DM24-096 |  | Malowanie i oznakowanie – Sekcja 14 | 5d | 2026-06-08 A | 2026-06-16 A | 29DM24-095 FF+2d | 100% |  |
|  | SEKCJA 15 | **Sekcja 15** |  | 2025-12-19 | 2026-06-29 |  |  |  |
|  | PODSEKCJA | **Podsekcja 15.A** |  | 2025-12-19 | 2026-06-29 |  |  |  |
| 29DM24-099 |  | Prefabrykacja ruroci¹gów – Sekcja 15 | 12.3d | 2025-12-19 A | 2026-01-05 A | 29DM24-012, 29DM24-092 SS+5d | 100% |  |
| 29DM24-100 |  | Monta¿ ruroci¹gów – Sekcja 15 | 11.3d | 2026-05-21 A | 2026-06-04 A | 29DM24-099, 29DM24-014 SS+6d | 100% |  |
| 29DM24-101 |  | Próba ciœnieniowa – Sekcja 15 | 6d | 2026-06-03 A | 2026-06-10 A | 29DM24-100 | 100% |  |
| 29DM24-102 |  | Izolacje – Sekcja 15 | 8d | 2026-06-16 A | 2026-06-26 A | 29DM24-101 | 100% |  |

| ID | WBS | Task | Duration | Start | Finish | Predecessors | Complete | Total float |
| --- | --- | --- | --- | --- | --- | --- | --- | --- |
| 29DM24-103 |  | Malowanie i oznakowanie – Sekcja 15 | 7d | 2026-06-16 A | 2026-06-29 A | 29DM24-102 FF+2d | 100% |  |
|  | SEKCJA 16 | **Sekcja 16** |  | 2025-12-31 | 2026-06-10 |  |  |  |
| 29DM24-104 |  | Prefabrykacja ruroci¹gów – Sekcja 16 | 7.3d | 2025-12-31 A | 2026-01-13 A | 29DM24-012, 29DM24-099 SS+5d | 100% |  |
| 29DM24-105 |  | Monta¿ ruroci¹gów – Sekcja 16 | 7.4d | 2026-05-25 A | 2026-06-05 A | 29DM24-104, 29DM24-014 SS+7d | 100% |  |
| 29DM24-106 |  | Próba ciœnieniowa – Sekcja 16 | 3d | 2026-06-02 A | 2026-06-05 A | 29DM24-105 | 100% |  |
| 29DM24-107 |  | Izolacje – Sekcja 16 | 3d | 2026-06-04 A | 2026-06-09 A | 29DM24-106 | 100% |  |
| 29DM24-108 |  | Malowanie i oznakowanie – Sekcja 16 | 3d | 2026-06-08 A | 2026-06-10 A | 29DM24-107 FF+2d | 100% |  |
|  | SEKCJA 17 | **Sekcja 17** |  | 2026-01-05 | 2026-06-26 |  |  |  |
| 29DM24-111 |  | Prefabrykacja ruroci¹gów – Sekcja 17 | 12.2d | 2026-01-05 A | 2026-01-21 A | 29DM24-012, 29DM24-104 SS+5d | 100% |  |
| 29DM24-112 |  | Monta¿ ruroci¹gów – Sekcja 17 | 11.2d | 2026-05-20 A | 2026-06-04 A | 29DM24-111, 29DM24-014 SS+5d | 100% |  |
| 29DM24-113 |  | Próba ciœnieniowa – Sekcja 17 | 5d | 2026-06-04 A | 2026-06-11 A | 29DM24-112 | 100% |  |
| 29DM24-114 |  | Izolacje – Sekcja 17 | 7d | 2026-06-15 A | 2026-06-26 A | 29DM24-113 | 100% |  |
| 29DM24-115 |  | Malowanie i oznakowanie – Sekcja 17 | 2d | 2026-06-22 A | 2026-06-25 A | 29DM24-114 FF+2d | 100% |  |
|  | SEKCJA 18 | **Sekcja 18** |  | 2026-01-13 | 2026-06-25 |  |  |  |
|  | PODSEKCJA | **Podsekcja 18.A** |  | 2026-01-13 | 2026-06-25 |  |  |  |
| 29DM24-116 |  | Prefabrykacja ruroci¹gów – Sekcja 18 | 11.9d | 2026-01-13 A | 2026-01-28 A | 29DM24-012, 29DM24-111 SS+5d | 100% |  |
| 29DM24-117 |  | Monta¿ ruroci¹gów – Sekcja 18 | 6.1d | 2026-05-22 A | 2026-05-29 A | 29DM24-116, 29DM24-014 SS+7d | 100% |  |
| 29DM24-118 |  | Próba ciœnieniowa – Sekcja 18 | 3d | 2026-05-28 A | 2026-06-03 A | 29DM24-117 | 100% |  |
| 29DM24-119 |  | Izolacje – Sekcja 18 | 11d | 2026-06-03 A | 2026-06-19 A | 29DM24-118 | 100% |  |
| 29DM24-120 |  | Malowanie i oznakowanie – Sekcja 18 | 2d | 2026-06-19 A | 2026-06-25 A | 29DM24-119 FF+2d | 100% |  |
|  | SEKCJA 19 | **Sekcja 19** |  | 2026-01-20 | 2026-07-02 |  |  |  |
| 29DM24-123 |  | Prefabrykacja ruroci¹gów – Sekcja 19 | 7.3d | 2026-01-20 A | 2026-01-29 A | 29DM24-012, 29DM24-116 SS+5d | 100% |  |
| 29DM24-124 |  | Monta¿ ruroci¹gów – Sekcja 19 | 22.4d | 2026-05-19 A | 2026-06-19 A | 29DM24-123, 29DM24-014 SS+5d | 100% |  |
| 29DM24-125 |  | Próba ciœnieniowa – Sekcja 19 | 3d | 2026-06-19 A | 2026-06-24 A | 29DM24-124 | 100% |  |
| 29DM24-126 |  | Izolacje – Sekcja 19 | 5d | 2026-06-22 A | 2026-06-26 A | 29DM24-125 | 100% |  |
| 29DM24-127 |  | Malowanie i oznakowanie – Sekcja 19 | 8d | 2026-06-22 A | 2026-07-02 A | 29DM24-126 FF+2d | 100% |  |
|  | SEKCJA 20 | **Sekcja 20** |  | 2026-01-23 | 2026-10-06 |  |  |  |
| 29DM24-128 |  | Prefabrykacja ruroci¹gów – Sekcja 20 | 9.7d | 2026-01-23 A | 2026-02-09 A | 29DM24-012, 29DM24-123 SS+5d | 100% |  |
| 29DM24-129 |  | Monta¿ ruroci¹gów – Sekcja 20 | 8.8d | 2026-05-29 A | 2026-10-06 | 29DM24-128, 29DM24-014 SS+10d | 33% | 419.1d |
| 29DM24-130 |  | Próba ciœnieniowa – Sekcja 20 | 6d | 2026-06-09 A | 2026-06-16 A | 29DM24-129 | 100% |  |
| 29DM24-131 |  | Izolacje – Sekcja 20 | 10d | 2026-06-12 A | 2026-06-26 A | 29DM24-130 | 100% |  |
| 29DM24-132 |  | Malowanie i oznakowanie – Sekcja 20 | 3d | 2026-06-26 A | 2026-06-30 A | 29DM24-131 FF+2d | 100% |  |
|  | SEKCJA 21 | **Sekcja 21** |  | 2026-02-04 | 2026-07-07 |  |  |  |
|  | PODSEKCJA | **Podsekcja 21.A** |  | 2026-02-04 | 2026-07-07 |  |  |  |
| 29DM24-135 |  | Prefabrykacja ruroci¹gów – Sekcja 21 | 14.7d | 2026-02-04 A | 2026-02-26 A | 29DM24-012, 29DM24-128 SS+5d | 100% |  |
| 29DM24-136 |  | Monta¿ ruroci¹gów – Sekcja 21 | 17.5d | 2026-05-22 A | 2026-06-15 A | 29DM24-135, 29DM24-014 SS+8d | 100% |  |
| 29DM24-137 |  | Próba ciœnieniowa – Sekcja 21 | 4d | 2026-06-15 A | 2026-06-19 A | 29DM24-136 | 100% |  |
| 29DM24-138 |  | Izolacje – Sekcja 21 | 10d | 2026-06-19 A | 2026-07-03 A | 29DM24-137 | 100% |  |
| 29DM24-139 |  | Malowanie i oznakowanie – Sekcja 21 | 5d | 2026-06-30 A | 2026-07-07 A | 29DM24-138 FF+2d | 100% |  |
|  | SEKCJA 22 | **Sekcja 22** |  | 2026-02-13 | 2026-10-05 |  |  |  |
| 29DM24-140 |  | Prefabrykacja ruroci¹gów – Sekcja 22 | 7.2d | 2026-02-13 A | 2026-10-05 | 29DM24-012, 29DM24-135 SS+5d | 40% | 416.5d |
| 29DM24-141 |  | Monta¿ ruroci¹gów – Sekcja 22 | 16.9d | 2026-05-18 A | 2026-06-08 A | 29DM24-140, 29DM24-014 SS+3d | 100% |  |
| 29DM24-142 |  | Próba ciœnieniowa – Sekcja 22 | 6d | 2026-06-12 A | 2026-09-30 | 29DM24-141 | 78% | 420d |
| 29DM24-143 |  | Izolacje – Sekcja 22 | 7d | 2026-06-17 A | 2026-06-29 A | 29DM24-142 | 100% |  |
| 29DM24-144 |  | Malowanie i oznakowanie – Sekcja 22 | 3d | 2026-06-29 A | 2026-07-01 A | 29DM24-143 FF+2d | 100% |  |
|  | SEKCJA 23 | **Sekcja 23** |  | 2026-02-17 | 2026-06-24 |  |  |  |
| 29DM24-147 |  | Prefabrykacja ruroci¹gów – Sekcja 23 | 14.5d | 2026-02-17 A | 2026-03-10 A | 29DM24-012, 29DM24-140 SS+5d | 100% |  |
| 29DM24-148 |  | Monta¿ ruroci¹gów – Sekcja 23 | 8.8d | 2026-05-19 A | 2026-06-02 A | 29DM24-147, 29DM24-014 SS+4d | 100% |  |
| 29DM24-149 |  | Próba ciœnieniowa – Sekcja 23 | 2d | 2026-05-27 A | 2026-06-02 A | 29DM24-148 | 100% |  |
| 29DM24-150 |  | Izolacje – Sekcja 23 | 11d | 2026-06-04 A | 2026-06-22 A | 29DM24-149 | 100% |  |
| 29DM24-151 |  | Malowanie i oznakowanie – Sekcja 23 | 8d | 2026-06-11 A | 2026-06-24 A | 29DM24-150 FF+2d | 100% |  |
|  | SEKCJA 24 | **Sekcja 24** |  | 2026-02-26 | 2026-06-18 |  |  |  |
|  | PODSEKCJA | **Podsekcja 24.A** |  | 2026-02-26 | 2026-06-18 |  |  |  |
| 29DM24-152 |  | Prefabrykacja ruroci¹gów – Sekcja 24 | 6.5d | 2026-02-26 A | 2026-03-06 A | 29DM24-012, 29DM24-147 SS+5d | 100% |  |
| 29DM24-153 |  | Monta¿ ruroci¹gów – Sekcja 24 | 11.9d | 2026-05-13 A | 2026-05-27 A | 29DM24-152, 29DM24-014 SS | 100% |  |
| 29DM24-154 |  | Próba ciœnieniowa – Sekcja 24 | 2d | 2026-05-28 A | 2026-06-01 A | 29DM24-153 | 100% |  |
| 29DM24-155 |  | Izolacje – Sekcja 24 | 12d | 2026-06-02 A | 2026-06-18 A | 29DM24-154 | 100% |  |
| 29DM24-156 |  | Malowanie i oznakowanie – Sekcja 24 | 8d | 2026-06-08 A | 2026-06-17 A | 29DM24-155 FF+2d | 100% |  |
|  | SEKCJA 25 | **Sekcja 25** |  | 2026-03-03 | 2026-07-22 |  |  |  |
| 29DM24-159 |  | Prefabrykacja ruroci¹gów – Sekcja 25 | 3.3d | 2026-03-03 A | 2026-03-10 A | 29DM24-012, 29DM24-152 SS+5d | 100% |  |
| 29DM24-160 |  | Monta¿ ruroci¹gów – Sekcja 25 | 20.1d | 2026-05-29 A | 2026-06-26 A | 29DM24-159, 29DM24-014 SS+10d | 100% |  |
| 29DM24-161 |  | Próba ciœnieniowa – Sekcja 25 | 6d | 2026-06-25 A | 2026-07-03 A | 29DM24-160 | 100% |  |
| 29DM24-162 |  | Izolacje – Sekcja 25 | 12d | 2026-07-02 A | 2026-07-22 A | 29DM24-161 | 100% |  |
| 29DM24-163 |  | Malowanie i oznakowanie – Sekcja 25 | 2d | 2026-07-17 A | 2026-07-21 A | 29DM24-162 FF+2d | 100% |  |
|  | SEKCJA 26 | **Sekcja 26** |  | 2026-03-12 | 2026-06-29 |  |  |  |
| 29DM24-164 |  | Prefabrykacja ruroci¹gów – Sekcja 26 | 4.8d | 2026-03-12 A | 2026-03-17 A | 29DM24-012, 29DM24-159 SS+5d | 100% |  |
| 29DM24-165 |  | Monta¿ ruroci¹gów – Sekcja 26 | 20.6d | 2026-05-18 A | 2026-06-15 A | 29DM24-164, 29DM24-014 SS+1d | 100% |  |
| 29DM24-166 |  | Próba ciœnieniowa – Sekcja 26 | 6d | 2026-06-09 A | 2026-06-18 A | 29DM24-165 | 100% |  |
| 29DM24-167 |  | Izolacje – Sekcja 26 | 5d | 2026-06-17 A | 2026-06-25 A | 29DM24-166 | 100% |  |
| 29DM24-168 |  | Malowanie i oznakowanie – Sekcja 26 | 5d | 2026-06-23 A | 2026-06-29 A | 29DM24-167 FF+2d | 100% |  |

| ID | WBS | Task | Duration | Start | Finish | Predecessors | Complete | Total float |
| --- | --- | --- | --- | --- | --- | --- | --- | --- |
|  | SEKCJA 27 | **Sekcja 27** |  | 2026-03-16 | 2026-06-30 |  |  |  |
|  | PODSEKCJA | **Podsekcja 27.A** |  | 2026-03-16 | 2026-06-30 |  |  |  |
| 29DM24-171 |  | Prefabrykacja ruroci¹gów – Sekcja 27 | 3.7d | 2026-03-16 A | 2026-03-18 A | 29DM24-012, 29DM24-164 SS+5d | 100% |  |
| 29DM24-172 |  | Monta¿ ruroci¹gów – Sekcja 27 | 13.8d | 2026-05-27 A | 2026-06-16 A | 29DM24-171, 29DM24-014 SS+9d | 100% |  |
| 29DM24-173 |  | Próba ciœnieniowa – Sekcja 27 | 3d | 2026-06-12 A | 2026-06-19 A | 29DM24-172 | 100% |  |
| 29DM24-175 |  | Malowanie i oznakowanie – Sekcja 27 | 8d | 2026-06-16 A | 2026-06-26 A | 29DM24-174 FF+2d | 100% |  |
| 29DM24-174 |  | Izolacje – Sekcja 27 | 7d | 2026-06-19 A | 2026-06-30 A | 29DM24-173 | 100% |  |
|  | PROJ | **Projektowanie** |  | 2025-01-13 | 2026-09-30 |  |  |  |
|  | DOKUMENTAC | **Dokumentacja** |  | 2025-01-13 | 2026-09-30 |  |  |  |
| 29DM24-001 |  | Projekt wykonawczy – Uk³ady pomiarowe | 74d | 2025-01-13 A | 2025-04-24 A |  | 100% |  |
| 29DM24-002 |  | Uzgodnienie dokumentacji z Inwestorem | 30d | 2025-04-23 A | 2025-06-05 A | 29DM24-001 | 100% |  |
| 29DM24-003 |  | Zatwierdzenie dokumentacji do realizacji | 9d | 2025-06-03 A | 2025-06-18 A | 29DM24-002 | 100% |  |
| 29DM24-004 |  | KM: Dokumentacja zatwierdzona – Uk³ady pomiarowe | 0d | 2026-09-30 | 2026-09-30 | 29DM24-003 |  | 26.9d |
|  | ROZR | **Rozruch** |  | 2026-07-17 | 2026-09-10 |  |  |  |
|  | ROZRUCH | **Rozruch** |  | 2026-07-17 | 2026-09-10 |  |  |  |
| 29DM24-178 |  | Przegl¹d gotowoœci do rozruchu | 3d | 2026-07-17 A | 2026-07-23 A | 29DM24-177, 29DM24-019, 29DM24-024, 29DM24-026 | 100% |  |
| 29DM24-179 |  | Rozruch na zimno | 12d | 2026-07-28 A | 2026-08-13 A | 29DM24-178 | 100% |  |
| 29DM24-180 |  | Rozruch na gor¹co / próby ruchowe | 21d | 2026-08-11 A | 2026-09-08 A | 29DM24-179 | 100% |  |
| 29DM24-181 |  | KM: Odbiór koñcowy – Uk³ady pomiarowe | 0d | 2026-09-10 | 2026-09-10 A | 29DM24-180 | 100% |  |
|  | ZAKU | **Zakupy** |  | 2025-02-10 | 2026-05-19 |  |  |  |
|  | DOSTAWY | **Dostawy** |  | 2025-06-26 | 2026-05-19 |  |  |  |
| 29DM24-008 |  | Produkcja u dostawcy | 204d | 2025-06-26 A | 2026-04-07 A | 29DM24-007 | 100% |  |
| 29DM24-009 |  | Testy FAT | 10d | 2026-04-06 A | 2026-04-20 A | 29DM24-008 | 100% |  |
| 29DM24-010 |  | Transport i dostawa na plac budowy | 15d | 2026-04-24 A | 2026-05-19 A | 29DM24-009 | 100% |  |
| 29DM24-011 |  | KM: Dostawa na budowê – Uk³ady pomiarowe | 0d | 2026-05-12 A | 2026-05-12 | 29DM24-010 | 100% |  |
|  | ZAMÓWIENIA | **Zamówienia** |  | 2025-02-10 | 2025-06-30 |  |  |  |
| 29DM24-005 |  | Zapytanie ofertowe | 17d | 2025-02-10 A | 2025-03-05 A | 29DM24-001 SS+20d | 100% |  |
| 29DM24-006 |  | Analiza i wybór ofert | 12d | 2025-02-27 A | 2025-03-17 A | 29DM24-005 | 100% |  |
| 29DM24-007 |  | Zawarcie umowy / zamówienie | 7d | 2025-06-19 A | 2025-06-30 A | 29DM24-006, 29DM24-004 SS, 16TC84-004 FS+6d | 100% |  |
|  | INFRASTRUKTU | **Infrastruktura i BOP** |  | 2025-01-07 | 2028-01-28 |  |  |  |
|  | 15XQ71 | **15XQ71 – Zbiornik oleju** |  | 2025-05-14 | 2027-01-06 |  |  |  |
|  | BUDO | **Budowa** |  | 2025-10-20 | 2026-11-19 |  |  |  |
|  | AKPIA | **AKPiA** |  | 2026-09-10 | 2026-11-06 |  |  |  |
| 15XQ71-068 |  | Monta¿ uk³adów AKPiA | 33d | 2026-09-10 A | 2026-11-06 | 15XQ71-014 SS+5d | 15% | 286.9d |
|  | ELEKTRYKA | **Elektryka** |  | 2026-09-17 | 2026-11-06 |  |  |  |
| 15XQ71-025 |  | Uk³adanie kabli – trasa 02 | 15d | 2026-09-17 A | 2026-10-09 | 15XQ71-014 SS+10d | 46% | 299.9d |
| 15XQ71-049 |  | Uk³adanie kabli – trasa 06 | 10d | 2026-09-21 A | 2026-10-06 | 15XQ71-014 SS+10d | 48% | 354.9d |
| 15XQ71-061 |  | Uk³adanie kabli – trasa 08 | 12d | 2026-09-21 A | 2026-10-02 | 15XQ71-014 SS+10d | 72% | 300.9d |
| 15XQ71-050 |  | Pod³¹czenia i pomiary – trasa 06 | 8d | 2026-09-23 A | 2026-09-29 A | 15XQ71-049 FF | 100% |  |
| 15XQ71-062 |  | Pod³¹czenia i pomiary – trasa 08 | 9d | 2026-09-25 A | 2026-10-06 | 15XQ71-061 FF | 42% | 299.9d |
| 15XQ71-026 |  | Pod³¹czenia i pomiary – trasa 02 | 4d | 2026-10-06 | 2026-10-09 | 15XQ71-025 FF |  | 297.8d |
| 15XQ71-037 |  | Uk³adanie kabli – trasa 04 | 18d | 2026-10-14 | 2026-11-06 | 15XQ71-014 SS+10d |  | 329.9d |
| 15XQ71-038 |  | Pod³¹czenia i pomiary – trasa 04 | 4d | 2026-11-03 | 2026-11-06 | 15XQ71-037 FF |  | 329.9d |
|  | MONTA¯ | **Monta¿** |  | 2026-01-09 | 2026-11-09 |  |  |  |
| 15XQ71-013 |  | Monta¿ konstrukcji stalowych | 30d | 2026-01-09 A | 2026-02-23 A | 15XQ71-012 | 100% |  |
| 15XQ71-014 |  | Monta¿ urz¹dzeñ g³ównych | 22d | 2026-09-30 | 2026-10-29 | 15XQ71-013, 15XQ71-011 |  | 267.9d |
| 15XQ71-069 |  | KM: Zakoñczenie monta¿u – Zbiornik oleju | 0d | 2026-11-09 | 2026-11-09 | 15XQ71-060, 15XQ71-062, 15XQ71-067, 15XQ71-068, 15XQ71-014 |  | 277.8d |
|  | ROBOTY BUD | **Roboty budowlane** |  | 2025-10-20 | 2026-01-13 |  |  |  |
| 15XQ71-012 |  | Fundamenty i roboty ziemne | 59d | 2025-10-20 A | 2026-01-13 A | 15XQ71-007 FS+12d | 100% |  |
|  | RUROCI¥GI | **Ruroci¹gi** |  | 2026-01-13 | 2026-11-19 |  |  |  |
|  | SEKCJA 01 | **Sekcja 01** |  | 2026-01-13 | 2026-10-01 |  |  |  |
| 15XQ71-015 |  | Prefabrykacja ruroci¹gów – Sekcja 01 | 3.2d | 2026-01-13 A | 2026-01-19 A | 15XQ71-012 | 100% |  |
| 15XQ71-016 |  | Monta¿ ruroci¹gów – Sekcja 01 | 5.1d | 2026-09-17 A | 2026-09-28 A | 15XQ71-015, 15XQ71-014 SS+8d | 100% |  |
| 15XQ71-017 |  | Próba ciœnieniowa – Sekcja 01 | 3d | 2026-09-22 A | 2026-09-24 A | 15XQ71-016 | 100% |  |
| 15XQ71-018 |  | Izolacje – Sekcja 01 | 5d | 2026-09-25 A | 2026-09-30 | 15XQ71-017 | 68% | 301.8d |
| 15XQ71-019 |  | Malowanie i oznakowanie – Sekcja 01 | 5d | 2026-09-30 A | 2026-10-01 | 15XQ71-018 FF+2d | 44% | 300.9d |
|  | SEKCJA 02 | **Sekcja 02** |  | 2026-01-20 | 2026-10-07 |  |  |  |
| 15XQ71-020 |  | Prefabrykacja ruroci¹gów – Sekcja 02 | 9.4d | 2026-01-20 A | 2026-02-03 A | 15XQ71-012, 15XQ71-015 SS+5d | 100% |  |
| 15XQ71-021 |  | Monta¿ ruroci¹gów – Sekcja 02 | 10.1d | 2026-09-16 A | 2026-10-07 | 15XQ71-020, 15XQ71-014 SS+6d | 37% | 298.8d |
| 15XQ71-022 |  | Próba ciœnieniowa – Sekcja 02 | 2d | 2026-09-25 A | 2026-09-30 | 15XQ71-021 | 45% | 301.8d |
| 15XQ71-024 |  | Malowanie i oznakowanie – Sekcja 02 | 5d | 2026-09-28 A | 2026-09-30 | 15XQ71-023 FF+2d | 80% | 302.8d |
| 15XQ71-023 |  | Izolacje – Sekcja 02 | 3d | 2026-09-30 A | 2026-09-29 A | 15XQ71-022 | 100% |  |
|  | SEKCJA 03 | **Sekcja 03** |  | 2026-01-22 | 2026-11-02 |  |  |  |
|  | PODSEKCJA | **Podsekcja 03.A** |  | 2026-01-22 | 2026-11-02 |  |  |  |
| 15XQ71-027 |  | Prefabrykacja ruroci¹gów – Sekcja 03 | 11.1d | 2026-01-22 A | 2026-02-09 A | 15XQ71-012, 15XQ71-020 SS+5d | 100% |  |
| 15XQ71-028 |  | Monta¿ ruroci¹gów – Sekcja 03 | 9.8d | 2026-09-15 A | 2026-09-25 A | 15XQ71-027, 15XQ71-014 SS+9d | 100% |  |
| 15XQ71-029 |  | Próba ciœnieniowa – Sekcja 03 | 2d | 2026-09-28 A | 2026-09-30 | 15XQ71-028 | 50% | 347.1d |
| 15XQ71-030 |  | Izolacje – Sekcja 03 | 8d | 2026-10-20 | 2026-10-29 | 15XQ71-029 |  | 333.9d |
| 15XQ71-031 |  | Malowanie i oznakowanie – Sekcja 03 | 8d | 2026-10-22 | 2026-11-02 | 15XQ71-030 FF+2d |  | 333.9d |
|  | SEKCJA 04 | **Sekcja 04** |  | 2026-01-28 | 2026-11-19 |  |  |  |

| ID | WBS | Task | Duration | Start | Finish | Predecessors | Complete | Total float |
| --- | --- | --- | --- | --- | --- | --- | --- | --- |
| 15XQ71-032 |  | Prefabrykacja ruroci¹gów – Sekcja 04 | 7.9d | 2026-01-28 A | 2026-02-10 A | 15XQ71-012, 15XQ71-027 SS+5d | 100% |  |
| 15XQ71-033 |  | Monta¿ ruroci¹gów – Sekcja 04 | 24.3d | 2026-10-05 | 2026-11-05 | 15XQ71-032, 15XQ71-014 SS+3d |  | 320.6d |
| 15XQ71-034 |  | Próba ciœnieniowa – Sekcja 04 | 5d | 2026-11-06 | 2026-11-12 | 15XQ71-033 |  | 320.6d |
| 15XQ71-035 |  | Izolacje – Sekcja 04 | 3d | 2026-11-13 | 2026-11-17 | 15XQ71-034 |  | 320.6d |
| 15XQ71-036 |  | Malowanie i oznakowanie – Sekcja 04 | 4d | 2026-11-16 | 2026-11-19 | 15XQ71-035 FF+2d |  | 320.6d |
|  | SEKCJA 05 | **Sekcja 05** |  | 2026-02-04 | 2026-10-26 |  |  |  |
| 15XQ71-039 |  | Prefabrykacja ruroci¹gów – Sekcja 05 | 3.2d | 2026-02-04 A | 2026-02-09 A | 15XQ71-012, 15XQ71-032 SS+5d | 100% |  |
| 15XQ71-040 |  | Monta¿ ruroci¹gów – Sekcja 05 | 19.3d | 2026-09-30 | 2026-10-26 | 15XQ71-039, 15XQ71-014 SS |  | 320.6d |
| 15XQ71-041 |  | Próba ciœnieniowa – Sekcja 05 | 5d | 2026-09-30 A | 2026-10-01 | 15XQ71-040 | 56% | 339.9d |
| 15XQ71-042 |  | Izolacje – Sekcja 05 | 11d | 2026-10-02 | 2026-10-16 | 15XQ71-041 |  | 342.7d |
| 15XQ71-043 |  | Malowanie i oznakowanie – Sekcja 05 | 3d | 2026-10-16 | 2026-10-20 | 15XQ71-042 FF+2d |  | 342.7d |
|  | SEKCJA 06 | **Sekcja 06** |  | 2026-02-17 | 2026-11-02 |  |  |  |
|  | PODSEKCJA | **Podsekcja 06.A** |  | 2026-02-17 | 2026-11-02 |  |  |  |
| 15XQ71-044 |  | Prefabrykacja ruroci¹gów – Sekcja 06 | 3.8d | 2026-02-17 A | 2026-02-19 A | 15XQ71-012, 15XQ71-039 SS+5d | 100% |  |
| 15XQ71-045 |  | Monta¿ ruroci¹gów – Sekcja 06 | 19.6d | 2026-09-08 A | 2026-10-12 | 15XQ71-044, 15XQ71-014 SS+2d | 54% | 339.3d |
| 15XQ71-046 |  | Próba ciœnieniowa – Sekcja 06 | 4d | 2026-10-13 | 2026-10-16 | 15XQ71-045 |  | 333.9d |
| 15XQ71-047 |  | Izolacje – Sekcja 06 | 9d | 2026-10-19 | 2026-10-29 | 15XQ71-046 |  | 333.9d |
| 15XQ71-048 |  | Malowanie i oznakowanie – Sekcja 06 | 6d | 2026-10-26 | 2026-11-02 | 15XQ71-047 FF+2d |  | 333.9d |
|  | SEKCJA 07 | **Sekcja 07** |  | 2026-02-23 | 2026-10-30 |  |  |  |
| 15XQ71-051 |  | Prefabrykacja ruroci¹gów – Sekcja 07 | 7d | 2026-02-23 A | 2026-03-04 A | 15XQ71-012, 15XQ71-044 SS+5d | 100% |  |
| 15XQ71-052 |  | Monta¿ ruroci¹gów – Sekcja 07 | 20.6d | 2026-09-15 A | 2026-10-13 | 15XQ71-051, 15XQ71-014 SS+8d | 50% | 335.3d |
| 15XQ71-053 |  | Próba ciœnieniowa – Sekcja 07 | 4d | 2026-10-14 | 2026-10-19 | 15XQ71-052 |  | 334.7d |
| 15XQ71-054 |  | Izolacje – Sekcja 07 | 7d | 2026-10-20 | 2026-10-28 | 15XQ71-053 |  | 334.7d |
| 15XQ71-055 |  | Malowanie i oznakowanie – Sekcja 07 | 4d | 2026-10-27 | 2026-10-30 | 15XQ71-054 FF+2d |  | 334.7d |
|  | SEKCJA 08 | **Sekcja 08** |  | 2026-02-25 | 2026-10-08 |  |  |  |
| 15XQ71-056 |  | Prefabrykacja ruroci¹gów – Sekcja 08 | 10.8d | 2026-02-25 A | 2026-03-11 A | 15XQ71-012, 15XQ71-051 SS+5d | 100% |  |
| 15XQ71-057 |  | Monta¿ ruroci¹gów – Sekcja 08 | 19.9d | 2026-09-04 A | 2026-09-29 A | 15XQ71-056, 15XQ71-014 SS | 100% |  |
| 15XQ71-058 |  | Próba ciœnieniowa – Sekcja 08 | 5d | 2026-09-30 A | 2026-09-30 | 15XQ71-057 | 80% | 294.9d |
| 15XQ71-059 |  | Izolacje – Sekcja 08 | 4d | 2026-10-01 | 2026-10-06 | 15XQ71-058 |  | 298.9d |
| 15XQ71-060 |  | Malowanie i oznakowanie – Sekcja 08 | 6d | 2026-10-01 | 2026-10-08 | 15XQ71-059 FF+2d |  | 298.9d |
|  | SEKCJA 09 | **Sekcja 09** |  | 2026-03-04 | 2026-09-30 |  |  |  |
|  | PODSEKCJA | **Podsekcja 09.A** |  | 2026-03-04 | 2026-09-30 |  |  |  |
| 15XQ71-063 |  | Prefabrykacja ruroci¹gów – Sekcja 09 | 7.9d | 2026-03-04 A | 2026-03-17 A | 15XQ71-012, 15XQ71-056 SS+5d | 100% |  |
| 15XQ71-064 |  | Monta¿ ruroci¹gów – Sekcja 09 | 8.3d | 2026-09-03 A | 2026-09-14 A | 15XQ71-063, 15XQ71-014 SS+2d | 100% |  |
| 15XQ71-065 |  | Próba ciœnieniowa – Sekcja 09 | 6d | 2026-09-21 A | 2026-09-29 A | 15XQ71-064 | 100% |  |
| 15XQ71-066 |  | Izolacje – Sekcja 09 | 3d | 2026-09-23 A | 2026-09-29 A | 15XQ71-065 | 100% |  |
| 15XQ71-067 |  | Malowanie i oznakowanie – Sekcja 09 | 2d | 2026-09-30 A | 2026-09-30 | 15XQ71-066 FF+2d | 50% | 303.9d |
|  | PROJ | **Projektowanie** |  | 2025-05-14 | 2026-09-30 |  |  |  |
|  | DOKUMENTAC | **Dokumentacja** |  | 2025-05-14 | 2026-09-30 |  |  |  |
| 15XQ71-001 |  | Projekt wykonawczy – Zbiornik oleju | 73d | 2025-05-14 A | 2025-08-26 A |  | 100% |  |
| 15XQ71-002 |  | Uzgodnienie dokumentacji z Inwestorem | 12d | 2025-08-20 A | 2025-09-09 A | 15XQ71-001 | 100% |  |
| 15XQ71-003 |  | Zatwierdzenie dokumentacji do realizacji | 10d | 2025-09-09 A | 2025-09-24 A | 15XQ71-002 | 100% |  |
| 15XQ71-004 |  | KM: Dokumentacja zatwierdzona – Zbiornik oleju | 0d | 2026-09-30 | 2026-09-30 | 15XQ71-003 |  | 20.9d |
|  | ROZR | **Rozruch** |  | 2026-11-09 | 2027-01-06 |  |  |  |
|  | ROZRUCH | **Rozruch** |  | 2026-11-09 | 2027-01-06 |  |  |  |
| 15XQ71-070 |  | Przegl¹d gotowoœci do rozruchu | 8d | 2026-11-09 | 2026-11-18 | 15XQ71-069, 15XQ71-019, 15XQ71-024, 15XQ71-026 |  | 277.8d |
| 15XQ71-071 |  | Rozruch na zimno | 9d | 2026-11-19 | 2026-12-01 | 15XQ71-070 |  | 277.8d |
| 15XQ71-072 |  | Rozruch na gor¹co / próby ruchowe | 25d | 2026-12-02 | 2027-01-05 | 15XQ71-071 |  | 277.8d |
| 15XQ71-073 |  | KM: Odbiór koñcowy – Zbiornik oleju | 0d | 2027-01-06 | 2027-01-06 | 15XQ71-072 |  | 277.8d |
|  | ZAKU | **Zakupy** |  | 2025-06-10 | 2026-09-03 |  |  |  |
|  | DOSTAWY | **Dostawy** |  | 2025-09-30 | 2026-09-03 |  |  |  |
| 15XQ71-008 |  | Produkcja u dostawcy | 227d | 2025-09-30 A | 2026-08-17 A | 15XQ71-007 | 100% |  |
| 15XQ71-009 |  | Testy FAT | 3d | 2026-08-19 A | 2026-08-21 A | 15XQ71-008 | 100% |  |
| 15XQ71-010 |  | Transport i dostawa na plac budowy | 10d | 2026-08-20 A | 2026-09-03 A | 15XQ71-009 | 100% |  |
| 15XQ71-011 |  | KM: Dostawa na budowê – Zbiornik oleju | 0d | 2026-09-01 A | 2026-09-01 | 15XQ71-010 | 100% |  |
|  | ZAMÓWIENIA | **Zamówienia** |  | 2025-06-10 | 2025-10-03 |  |  |  |
| 15XQ71-005 |  | Zapytanie ofertowe | 17d | 2025-06-10 A | 2025-07-04 A | 15XQ71-001 SS+20d | 100% |  |
| 15XQ71-006 |  | Analiza i wybór ofert | 20d | 2025-07-07 A | 2025-08-05 A | 15XQ71-005 | 100% |  |
| 15XQ71-007 |  | Zawarcie umowy / zamówienie | 7d | 2025-09-25 A | 2025-10-03 A | 15XQ71-006, 15XQ71-004 SS, 18TY85-004 SS+7d | 100% |  |
|  | 19WP38 | **19WP38 – Stacja redukcyjno-pomiarowa gazu** |  | 2025-04-11 | 2026-10-06 |  |  |  |
|  | BUDO | **Budowa** |  | 2025-11-19 | 2026-10-06 |  |  |  |
|  | AKPIA | **AKPiA** |  | 2026-04-13 | 2026-05-08 |  |  |  |
| 19WP38-063 |  | Monta¿ uk³adów AKPiA | 20d | 2026-04-13 A | 2026-05-08 A | 19WP38-014 SS+5d | 100% |  |
|  | ELEKTRYKA | **Elektryka** |  | 2026-04-20 | 2026-10-06 |  |  |  |
| 19WP38-025 |  | Uk³adanie kabli – trasa 02 | 4d | 2026-04-20 A | 2026-04-28 A | 19WP38-014 SS+10d | 100% |  |
| 19WP38-037 |  | Uk³adanie kabli – trasa 04 | 7d | 2026-04-20 A | 2026-04-29 A | 19WP38-014 SS+10d | 100% |  |
| 19WP38-026 |  | Pod³¹czenia i pomiary – trasa 02 | 4d | 2026-04-21 A | 2026-04-27 A | 19WP38-025 FF | 100% |  |
| 19WP38-061 |  | Uk³adanie kabli – trasa 08 | 13d | 2026-04-21 A | 2026-05-11 A | 19WP38-014 SS+10d | 100% |  |
| 19WP38-049 |  | Uk³adanie kabli – trasa 06 | 20d | 2026-04-24 A | 2026-05-25 A | 19WP38-014 SS+10d | 100% |  |
| 19WP38-038 |  | Pod³¹czenia i pomiary – trasa 04 | 6d | 2026-04-28 A | 2026-10-06 | 19WP38-037 FF | 15% | 462.9d |

| ID | WBS | Task | Duration | Start | Finish | Predecessors | Complete | Total float |
| --- | --- | --- | --- | --- | --- | --- | --- | --- |
| 19WP38-062 |  | Pod³¹czenia i pomiary – trasa 08 | 5d | 2026-04-30 A | 2026-05-06 A | 19WP38-061 FF | 100% |  |
| 19WP38-050 |  | Pod³¹czenia i pomiary – trasa 06 | 6d | 2026-05-13 A | 2026-05-21 A | 19WP38-049 FF | 100% |  |
|  | MONTA¯ | **Monta¿** |  | 2025-12-19 | 2026-05-29 |  |  |  |
| 19WP38-013 |  | Monta¿ konstrukcji stalowych | 27d | 2025-12-19 A | 2026-01-27 A | 19WP38-012 | 100% |  |
| 19WP38-014 |  | Monta¿ urz¹dzeñ g³ównych | 38d | 2026-04-07 A | 2026-05-29 A | 19WP38-013, 19WP38-011 | 100% |  |
| 19WP38-064 |  | KM: Zakoñczenie monta¿u – Stacja redukcyjno-pomiarowa gazu | 0d | 2026-05-28 A | 2026-05-28 | 19WP38-055, 19WP38-060, 19WP38-062, 19WP38-063, 19WP38-014 | 100% |  |
|  | ROBOTY BUD | **Roboty budowlane** |  | 2025-11-19 | 2025-12-18 |  |  |  |
| 19WP38-012 |  | Fundamenty i roboty ziemne | 20d | 2025-11-19 A | 2025-12-18 A | 19WP38-007 FS+11d | 100% |  |
|  | RUROCI¥GI | **Ruroci¹gi** |  | 2025-12-19 | 2026-10-06 |  |  |  |
|  | SEKCJA 01 | **Sekcja 01** |  | 2025-12-19 | 2026-05-05 |  |  |  |
| 19WP38-015 |  | Prefabrykacja ruroci¹gów – Sekcja 01 | 12.2d | 2025-12-19 A | 2026-01-07 A | 19WP38-012 | 100% |  |
| 19WP38-016 |  | Monta¿ ruroci¹gów – Sekcja 01 | 14d | 2026-04-06 A | 2026-04-27 A | 19WP38-015, 19WP38-014 SS | 100% |  |
| 19WP38-018 |  | Izolacje – Sekcja 01 | 4d | 2026-04-28 A | 2026-05-01 A | 19WP38-017 | 100% |  |
| 19WP38-017 |  | Próba ciœnieniowa – Sekcja 01 | 2d | 2026-04-30 A | 2026-05-05 A | 19WP38-016 | 100% |  |
| 19WP38-019 |  | Malowanie i oznakowanie – Sekcja 01 | 4d | 2026-04-30 A | 2026-05-05 A | 19WP38-018 FF+2d | 100% |  |
|  | SEKCJA 02 | **Sekcja 02** |  | 2025-12-23 | 2026-05-28 |  |  |  |
| 19WP38-020 |  | Prefabrykacja ruroci¹gów – Sekcja 02 | 14.6d | 2025-12-23 A | 2026-01-13 A | 19WP38-012, 19WP38-015 SS+5d | 100% |  |
| 19WP38-021 |  | Monta¿ ruroci¹gów – Sekcja 02 | 19.1d | 2026-04-10 A | 2026-05-06 A | 19WP38-020, 19WP38-014 SS+2d | 100% |  |
| 19WP38-022 |  | Próba ciœnieniowa – Sekcja 02 | 5d | 2026-05-06 A | 2026-05-12 A | 19WP38-021 | 100% |  |
| 19WP38-023 |  | Izolacje – Sekcja 02 | 7d | 2026-05-15 A | 2026-05-28 A | 19WP38-022 | 100% |  |
| 19WP38-024 |  | Malowanie i oznakowanie – Sekcja 02 | 8d | 2026-05-18 A | 2026-05-28 A | 19WP38-023 FF+2d | 100% |  |
|  | SEKCJA 03 | **Sekcja 03** |  | 2026-01-02 | 2026-06-04 |  |  |  |
|  | PODSEKCJA | **Podsekcja 03.A** |  | 2026-01-02 | 2026-06-04 |  |  |  |
| 19WP38-027 |  | Prefabrykacja ruroci¹gów – Sekcja 03 | 13.2d | 2026-01-02 A | 2026-01-22 A | 19WP38-012, 19WP38-020 SS+5d | 100% |  |
| 19WP38-028 |  | Monta¿ ruroci¹gów – Sekcja 03 | 22.2d | 2026-04-15 A | 2026-05-15 A | 19WP38-027, 19WP38-014 SS+4d | 100% |  |
| 19WP38-030 |  | Izolacje – Sekcja 03 | 9d | 2026-05-15 A | 2026-05-28 A | 19WP38-029 | 100% |  |
| 19WP38-029 |  | Próba ciœnieniowa – Sekcja 03 | 2d | 2026-05-18 A | 2026-05-21 A | 19WP38-028 | 100% |  |
| 19WP38-031 |  | Malowanie i oznakowanie – Sekcja 03 | 7d | 2026-05-22 A | 2026-06-04 A | 19WP38-030 FF+2d | 100% |  |
|  | SEKCJA 04 | **Sekcja 04** |  | 2026-01-05 | 2026-05-22 |  |  |  |
| 19WP38-032 |  | Prefabrykacja ruroci¹gów – Sekcja 04 | 13.6d | 2026-01-05 A | 2026-01-26 A | 19WP38-012, 19WP38-027 SS+5d | 100% |  |
| 19WP38-033 |  | Monta¿ ruroci¹gów – Sekcja 04 | 17.6d | 2026-04-09 A | 2026-05-05 A | 19WP38-032, 19WP38-014 SS+1d | 100% |  |
| 19WP38-034 |  | Próba ciœnieniowa – Sekcja 04 | 3d | 2026-05-06 A | 2026-05-11 A | 19WP38-033 | 100% |  |
| 19WP38-035 |  | Izolacje – Sekcja 04 | 11d | 2026-05-07 A | 2026-05-21 A | 19WP38-034 | 100% |  |
| 19WP38-036 |  | Malowanie i oznakowanie – Sekcja 04 | 8d | 2026-05-12 A | 2026-05-22 A | 19WP38-035 FF+2d | 100% |  |
|  | SEKCJA 05 | **Sekcja 05** |  | 2026-01-15 | 2026-05-07 |  |  |  |
| 19WP38-039 |  | Prefabrykacja ruroci¹gów – Sekcja 05 | 13.7d | 2026-01-15 A | 2026-02-05 A | 19WP38-012, 19WP38-032 SS+5d | 100% |  |
| 19WP38-040 |  | Monta¿ ruroci¹gów – Sekcja 05 | 8.5d | 2026-04-07 A | 2026-04-20 A | 19WP38-039, 19WP38-014 SS+1d | 100% |  |
| 19WP38-041 |  | Próba ciœnieniowa – Sekcja 05 | 6d | 2026-04-23 A | 2026-04-30 A | 19WP38-040 | 100% |  |
| 19WP38-042 |  | Izolacje – Sekcja 05 | 4d | 2026-04-27 A | 2026-04-30 A | 19WP38-041 | 100% |  |
| 19WP38-043 |  | Malowanie i oznakowanie – Sekcja 05 | 2d | 2026-05-01 A | 2026-05-07 A | 19WP38-042 FF+2d | 100% |  |
|  | SEKCJA 06 | **Sekcja 06** |  | 2026-01-22 | 2026-10-06 |  |  |  |
|  | PODSEKCJA | **Podsekcja 06.A** |  | 2026-01-22 | 2026-10-06 |  |  |  |
| 19WP38-044 |  | Prefabrykacja ruroci¹gów – Sekcja 06 | 9.8d | 2026-01-22 A | 2026-02-04 A | 19WP38-012, 19WP38-039 SS+5d | 100% |  |
| 19WP38-045 |  | Monta¿ ruroci¹gów – Sekcja 06 | 8.1d | 2026-04-08 A | 2026-10-06 | 19WP38-044, 19WP38-014 SS | 33% | 460.8d |
| 19WP38-046 |  | Próba ciœnieniowa – Sekcja 06 | 3d | 2026-04-22 A | 2026-04-27 A | 19WP38-045 | 100% |  |
| 19WP38-047 |  | Izolacje – Sekcja 06 | 9d | 2026-04-27 A | 2026-05-07 A | 19WP38-046 | 100% |  |
| 19WP38-048 |  | Malowanie i oznakowanie – Sekcja 06 | 3d | 2026-05-07 A | 2026-05-14 A | 19WP38-047 FF+2d | 100% |  |
|  | SEKCJA 07 | **Sekcja 07** |  | 2026-01-29 | 2026-06-02 |  |  |  |
| 19WP38-051 |  | Prefabrykacja ruroci¹gów – Sekcja 07 | 7.7d | 2026-01-29 A | 2026-02-10 A | 19WP38-012, 19WP38-044 SS+5d | 100% |  |
| 19WP38-052 |  | Monta¿ ruroci¹gów – Sekcja 07 | 18.1d | 2026-04-17 A | 2026-05-12 A | 19WP38-051, 19WP38-014 SS+6d | 100% |  |
| 19WP38-053 |  | Próba ciœnieniowa – Sekcja 07 | 6d | 2026-05-11 A | 2026-05-18 A | 19WP38-052 | 100% |  |
| 19WP38-055 |  | Malowanie i oznakowanie – Sekcja 07 | 7d | 2026-05-20 A | 2026-05-29 A | 19WP38-054 FF+2d | 100% |  |
| 19WP38-054 |  | Izolacje – Sekcja 07 | 5d | 2026-05-22 A | 2026-06-02 A | 19WP38-053 | 100% |  |
|  | SEKCJA 08 | **Sekcja 08** |  | 2026-02-03 | 2026-05-26 |  |  |  |
| 19WP38-056 |  | Prefabrykacja ruroci¹gów – Sekcja 08 | 14.7d | 2026-02-03 A | 2026-02-24 A | 19WP38-012, 19WP38-051 SS+5d | 100% |  |
| 19WP38-057 |  | Monta¿ ruroci¹gów – Sekcja 08 | 17.5d | 2026-04-21 A | 2026-05-14 A | 19WP38-056, 19WP38-014 SS+9d | 100% |  |
| 19WP38-058 |  | Próba ciœnieniowa – Sekcja 08 | 3d | 2026-05-18 A | 2026-05-21 A | 19WP38-057 | 100% |  |
| 19WP38-059 |  | Izolacje – Sekcja 08 | 3d | 2026-05-18 A | 2026-05-20 A | 19WP38-058 | 100% |  |
| 19WP38-060 |  | Malowanie i oznakowanie – Sekcja 08 | 5d | 2026-05-19 A | 2026-05-26 A | 19WP38-059 FF+2d | 100% |  |
|  | PROJ | **Projektowanie** |  | 2025-04-11 | 2026-10-01 |  |  |  |
|  | DOKUMENTAC | **Dokumentacja** |  | 2025-04-11 | 2026-10-01 |  |  |  |
| 19WP38-001 |  | Projekt wykonawczy – Stacja redukcyjno-pomiarowa gazu | 108d | 2025-04-11 A | 2025-09-11 A |  | 100% |  |
| 19WP38-002 |  | Uzgodnienie dokumentacji z Inwestorem | 14d | 2025-09-09 A | 2025-10-01 A | 19WP38-001 | 100% |  |
| 19WP38-003 |  | Zatwierdzenie dokumentacji do realizacji | 15d | 2025-10-01 A | 2026-10-01 | 19WP38-002 | 87% | 402.9d |
| 19WP38-004 |  | KM: Dokumentacja zatwierdzona – Stacja redukcyjno-pomiarowa gazu | 0d | 2025-10-22 A | 2025-10-22 | 19WP38-003 | 100% |  |
|  | ROZR | **Rozruch** |  | 2026-06-01 | 2026-07-20 |  |  |  |
|  | ROZRUCH | **Rozruch** |  | 2026-06-01 | 2026-07-20 |  |  |  |
| 19WP38-065 |  | Przegl¹d gotowoœci do rozruchu | 5d | 2026-06-01 A | 2026-06-10 A | 19WP38-064, 19WP38-019, 19WP38-024, 19WP38-026 | 100% |  |
| 19WP38-066 |  | Rozruch na zimno | 12d | 2026-06-04 A | 2026-06-22 A | 19WP38-065 | 100% |  |
| 19WP38-067 |  | Rozruch na gor¹co / próby ruchowe | 15d | 2026-06-25 A | 2026-07-20 A | 19WP38-066 | 100% |  |

| ID | WBS | Task | Duration | Start | Finish | Predecessors | Complete | Total float |
| --- | --- | --- | --- | --- | --- | --- | --- | --- |
| 19WP38-068 |  | KM: Odbiór koñcowy – Stacja redukcyjno-pomiarowa gazu | 0d | 2026-07-13 | 2026-07-13 A | 19WP38-067 | 100% |  |
|  | ZAKU | **Zakupy** |  | 2025-05-14 | 2026-04-09 |  |  |  |
|  | DOSTAWY | **Dostawy** |  | 2025-11-06 | 2026-04-09 |  |  |  |
| 19WP38-008 |  | Produkcja u dostawcy | 64d | 2025-11-06 A | 2026-02-05 A | 19WP38-007 | 100% |  |
| 19WP38-009 |  | Testy FAT | 10d | 2026-02-02 A | 2026-02-13 A | 19WP38-008 | 100% |  |
| 19WP38-010 |  | Transport i dostawa na plac budowy | 37d | 2026-02-16 A | 2026-04-07 A | 19WP38-009 | 100% |  |
| 19WP38-011 |  | KM: Dostawa na budowê – Stacja redukcyjno-pomiarowa gazu | 0d | 2026-04-09 A | 2026-04-09 | 19WP38-010 | 100% |  |
|  | ZAMÓWIENIA | **Zamówienia** |  | 2025-05-14 | 2025-11-05 |  |  |  |
| 19WP38-005 |  | Zapytanie ofertowe | 18d | 2025-05-14 A | 2025-06-10 A | 19WP38-001 SS+20d | 100% |  |
| 19WP38-006 |  | Analiza i wybór ofert | 19d | 2025-06-06 A | 2025-07-03 A | 19WP38-005 | 100% |  |
| 19WP38-007 |  | Zawarcie umowy / zamówienie | 9d | 2025-10-22 A | 2025-11-05 A | 19WP38-006, 19WP38-004 SS, 12PB41-004 SS+4d | 100% |  |
|  | 25DF82 | **25DF82 – Wentylacja i klimatyzacja** |  | 2025-06-16 | 2027-02-12 |  |  |  |
|  | BUDO | **Budowa** |  | 2025-10-31 | 2026-12-16 |  |  |  |
|  | AKPIA | **AKPiA** |  | 2026-09-04 | 2026-09-29 |  |  |  |
| 25DF82-099 |  | Monta¿ uk³adów AKPiA | 17d | 2026-09-04 A | 2026-09-29 A | 25DF82-014 SS+5d | 100% |  |
|  | ELEKTRYKA | **Elektryka** |  | 2026-09-10 | 2026-10-15 |  |  |  |
| 25DF82-062 |  | Pod³¹czenia i pomiary – trasa 08 | 8d | 2026-09-10 A | 2026-09-21 A | 25DF82-061 FF | 100% |  |
| 25DF82-061 |  | Uk³adanie kabli – trasa 08 | 8d | 2026-09-11 A | 2026-09-24 A | 25DF82-014 SS+10d | 100% |  |
| 25DF82-097 |  | Uk³adanie kabli – trasa 14 | 11d | 2026-09-11 A | 2026-09-29 A | 25DF82-014 SS+10d | 100% |  |
| 25DF82-025 |  | Uk³adanie kabli – trasa 02 | 10d | 2026-09-14 A | 2026-09-29 A | 25DF82-014 SS+10d | 100% |  |
| 25DF82-073 |  | Uk³adanie kabli – trasa 10 | 14d | 2026-09-14 A | 2026-10-06 | 25DF82-014 SS+10d | 63% | 355.9d |
| 25DF82-037 |  | Uk³adanie kabli – trasa 04 | 17d | 2026-09-15 A | 2026-10-13 | 25DF82-014 SS+10d | 37% | 351.9d |
| 25DF82-049 |  | Uk³adanie kabli – trasa 06 | 14d | 2026-09-15 A | 2026-10-15 | 25DF82-014 SS+10d | 13% | 354.9d |
| 25DF82-085 |  | Uk³adanie kabli – trasa 12 | 6d | 2026-09-16 A | 2026-09-25 A | 25DF82-014 SS+10d | 100% |  |
| 25DF82-086 |  | Pod³¹czenia i pomiary – trasa 12 | 3d | 2026-09-18 A | 2026-09-24 A | 25DF82-085 FF | 100% |  |
| 25DF82-026 |  | Pod³¹czenia i pomiary – trasa 02 | 5d | 2026-09-22 A | 2026-09-29 A | 25DF82-025 FF | 100% |  |
| 25DF82-098 |  | Pod³¹czenia i pomiary – trasa 14 | 7d | 2026-09-22 A | 2026-09-29 A | 25DF82-097 FF | 100% |  |
| 25DF82-074 |  | Pod³¹czenia i pomiary – trasa 10 | 9d | 2026-09-24 A | 2026-10-02 | 25DF82-073 FF | 67% | 352.9d |
| 25DF82-050 |  | Pod³¹czenia i pomiary – trasa 06 | 8d | 2026-10-06 | 2026-10-15 | 25DF82-049 FF |  | 345.7d |
| 25DF82-038 |  | Pod³¹czenia i pomiary – trasa 04 | 3d | 2026-10-09 | 2026-10-13 | 25DF82-037 FF |  | 347.2d |
|  | MONTA¯ | **Monta¿** |  | 2025-12-02 | 2026-12-16 |  |  |  |
| 25DF82-013 |  | Monta¿ konstrukcji stalowych | 32d | 2025-12-02 A | 2026-01-19 A | 25DF82-012 | 100% |  |
| 25DF82-014 |  | Monta¿ urz¹dzeñ g³ównych | 65d | 2026-09-02 A | 2026-12-15 | 25DF82-013, 25DF82-011 | 15% | 260.9d |
| 25DF82-100 |  | KM: Zakoñczenie monta¿u – Wentylacja i klimatyzacja | 0d | 2026-12-16 | 2026-12-16 | 25DF82-091, 25DF82-096, 25DF82-098, 25DF82-099, 25DF82-014 |  | 250.8d |
|  | ROBOTY BUD | **Roboty budowlane** |  | 2025-10-31 | 2025-12-08 |  |  |  |
| 25DF82-012 |  | Fundamenty i roboty ziemne | 24d | 2025-10-31 A | 2025-12-08 A | 25DF82-007 FS+14d | 100% |  |
|  | RUROCI¥GI | **Ruroci¹gi** |  | 2025-12-02 | 2026-11-23 |  |  |  |
|  | SEKCJA 01 | **Sekcja 01** |  | 2025-12-02 | 2026-10-14 |  |  |  |
| 25DF82-015 |  | Prefabrykacja ruroci¹gów – Sekcja 01 | 4d | 2025-12-02 A | 2025-12-10 A | 25DF82-012 | 100% |  |
| 25DF82-016 |  | Monta¿ ruroci¹gów – Sekcja 01 | 17.7d | 2026-09-07 A | 2026-09-29 A | 25DF82-015, 25DF82-014 SS+6d | 100% |  |
| 25DF82-017 |  | Próba ciœnieniowa – Sekcja 01 | 6d | 2026-09-30 | 2026-10-07 | 25DF82-016 |  | 294.9d |
| 25DF82-018 |  | Izolacje – Sekcja 01 | 3d | 2026-10-08 | 2026-10-12 | 25DF82-017 |  | 294.9d |
| 25DF82-019 |  | Malowanie i oznakowanie – Sekcja 01 | 4d | 2026-10-09 | 2026-10-14 | 25DF82-018 FF+2d |  | 294.9d |
|  | SEKCJA 02 | **Sekcja 02** |  | 2025-12-11 | 2026-10-07 |  |  |  |
| 25DF82-020 |  | Prefabrykacja ruroci¹gów – Sekcja 02 | 10d | 2025-12-11 A | 2025-12-29 A | 25DF82-012, 25DF82-015 SS+5d | 100% |  |
| 25DF82-021 |  | Monta¿ ruroci¹gów – Sekcja 02 | 14.5d | 2026-09-01 A | 2026-09-18 A | 25DF82-020, 25DF82-014 SS | 100% |  |
| 25DF82-022 |  | Próba ciœnieniowa – Sekcja 02 | 2d | 2026-09-16 A | 2026-09-22 A | 25DF82-021 | 100% |  |
| 25DF82-023 |  | Izolacje – Sekcja 02 | 8d | 2026-09-25 A | 2026-10-07 | 25DF82-022 | 22% | 298.4d |
| 25DF82-024 |  | Malowanie i oznakowanie – Sekcja 02 | 6d | 2026-09-25 A | 2026-10-06 | 25DF82-023 FF+2d | 10% | 302.4d |
|  | SEKCJA 03 | **Sekcja 03** |  | 2025-12-16 | 2026-10-28 |  |  |  |
|  | PODSEKCJA | **Podsekcja 03.A** |  | 2025-12-16 | 2026-10-28 |  |  |  |
| 25DF82-027 |  | Prefabrykacja ruroci¹gów – Sekcja 03 | 10.3d | 2025-12-16 A | 2025-12-31 A | 25DF82-012, 25DF82-020 SS+5d | 100% |  |
| 25DF82-028 |  | Monta¿ ruroci¹gów – Sekcja 03 | 22.8d | 2026-09-01 A | 2026-10-08 | 25DF82-027, 25DF82-014 SS+1d | 65% | 342.1d |
| 25DF82-029 |  | Próba ciœnieniowa – Sekcja 03 | 2d | 2026-10-09 | 2026-10-12 | 25DF82-028 |  | 336d |
| 25DF82-030 |  | Izolacje – Sekcja 03 | 10d | 2026-10-13 | 2026-10-26 | 25DF82-029 |  | 336d |
| 25DF82-031 |  | Malowanie i oznakowanie – Sekcja 03 | 6d | 2026-10-21 | 2026-10-28 | 25DF82-030 FF+2d |  | 336d |
|  | SEKCJA 04 | **Sekcja 04** |  | 2026-09-17 | 2026-11-03 |  |  |  |
| 25DF82-033 |  | Monta¿ ruroci¹gów – Sekcja 04 | 12.2d | 2026-09-17 A | 2026-10-01 | 25DF82-032, 25DF82-014 SS+10d | 76% | 339.7d |
| 25DF82-034 |  | Próba ciœnieniowa – Sekcja 04 | 5d | 2026-09-29 A | 2026-10-02 | 25DF82-033 | 34% | 343.7d |
| 25DF82-032 |  | Prefabrykacja ruroci¹gów – Sekcja 04 | 14.4d | 2026-09-30 | 2026-10-19 | 25DF82-012, 25DF82-027 SS+5d |  | 215.7d |
| 25DF82-035 |  | Izolacje – Sekcja 04 | 8d | 2026-10-21 | 2026-10-30 | 25DF82-034 |  | 332.9d |
| 25DF82-036 |  | Malowanie i oznakowanie – Sekcja 04 | 5d | 2026-10-28 | 2026-11-03 | 25DF82-035 FF+2d |  | 332.9d |
|  | SEKCJA 05 | **Sekcja 05** |  | 2026-01-01 | 2026-10-07 |  |  |  |
| 25DF82-039 |  | Prefabrykacja ruroci¹gów – Sekcja 05 | 5.7d | 2026-01-01 A | 2026-01-07 A | 25DF82-012, 25DF82-032 SS+5d | 100% |  |
| 25DF82-040 |  | Monta¿ ruroci¹gów – Sekcja 05 | 12d | 2026-09-11 A | 2026-10-07 | 25DF82-039, 25DF82-014 SS+8d | 42% | 344.9d |
| 25DF82-041 |  | Próba ciœnieniowa – Sekcja 05 | 2d | 2026-09-24 A | 2026-09-29 A | 25DF82-040 | 100% |  |
| 25DF82-042 |  | Izolacje – Sekcja 05 | 10d | 2026-09-30 A | 2026-10-02 | 25DF82-041 | 67% | 345.9d |
| 25DF82-043 |  | Malowanie i oznakowanie – Sekcja 05 | 5d | 2026-09-30 | 2026-10-06 | 25DF82-042 FF+2d |  | 352.6d |
|  | SEKCJA 06 | **Sekcja 06** |  | 2026-01-07 | 2026-09-29 |  |  |  |
|  | PODSEKCJA | **Podsekcja 06.A** |  | 2026-01-07 | 2026-09-29 |  |  |  |

| ID | WBS | Task | Duration | Start | Finish | Predecessors | Complete | Total float |
| --- | --- | --- | --- | --- | --- | --- | --- | --- |
| 25DF82-044 |  | Prefabrykacja ruroci¹gów – Sekcja 06 | 7.3d | 2026-01-07 A | 2026-01-15 A | 25DF82-012, 25DF82-039 SS+5d | 100% |  |
| 25DF82-045 |  | Monta¿ ruroci¹gów – Sekcja 06 | 7.2d | 2026-09-03 A | 2026-09-11 A | 25DF82-044, 25DF82-014 SS+5d | 100% |  |
| 25DF82-046 |  | Próba ciœnieniowa – Sekcja 06 | 4d | 2026-09-17 A | 2026-09-24 A | 25DF82-045 | 100% |  |
| 25DF82-047 |  | Izolacje – Sekcja 06 | 3d | 2026-09-23 A | 2026-09-29 A | 25DF82-046 | 100% |  |
| 25DF82-048 |  | Malowanie i oznakowanie – Sekcja 06 | 2d | 2026-09-29 A | 2026-09-29 A | 25DF82-047 FF+2d | 100% |  |
|  | SEKCJA 07 | **Sekcja 07** |  | 2026-01-14 | 2026-10-19 |  |  |  |
| 25DF82-051 |  | Prefabrykacja ruroci¹gów – Sekcja 07 | 13.7d | 2026-01-14 A | 2026-02-02 A | 25DF82-012, 25DF82-044 SS+5d | 100% |  |
| 25DF82-052 |  | Monta¿ ruroci¹gów – Sekcja 07 | 16d | 2026-09-14 A | 2026-09-29 A | 25DF82-051, 25DF82-014 SS+9d | 100% |  |
| 25DF82-053 |  | Próba ciœnieniowa – Sekcja 07 | 6d | 2026-09-30 | 2026-10-07 | 25DF82-052 |  | 343.9d |
| 25DF82-054 |  | Izolacje – Sekcja 07 | 6d | 2026-10-08 | 2026-10-15 | 25DF82-053 |  | 343.9d |
| 25DF82-055 |  | Malowanie i oznakowanie – Sekcja 07 | 2d | 2026-10-16 | 2026-10-19 | 25DF82-054 FF+2d |  | 343.9d |
|  | SEKCJA 08 | **Sekcja 08** |  | 2026-01-26 | 2026-10-19 |  |  |  |
| 25DF82-056 |  | Prefabrykacja ruroci¹gów – Sekcja 08 | 11.2d | 2026-01-26 A | 2026-02-11 A | 25DF82-012, 25DF82-051 SS+5d | 100% |  |
| 25DF82-057 |  | Monta¿ ruroci¹gów – Sekcja 08 | 14d | 2026-09-08 A | 2026-09-29 A | 25DF82-056, 25DF82-014 SS+5d | 100% |  |
| 25DF82-058 |  | Próba ciœnieniowa – Sekcja 08 | 5d | 2026-09-29 A | 2026-10-01 | 25DF82-057 | 46% | 341.9d |
| 25DF82-059 |  | Izolacje – Sekcja 08 | 10d | 2026-10-02 | 2026-10-15 | 25DF82-058 |  | 343.2d |
| 25DF82-060 |  | Malowanie i oznakowanie – Sekcja 08 | 7d | 2026-10-09 | 2026-10-19 | 25DF82-059 FF+2d |  | 343.2d |
|  | SEKCJA 09 | **Sekcja 09** |  | 2026-01-27 | 2026-10-06 |  |  |  |
|  | PODSEKCJA | **Podsekcja 09.A** |  | 2026-01-27 | 2026-10-06 |  |  |  |
| 25DF82-063 |  | Prefabrykacja ruroci¹gów – Sekcja 09 | 12.1d | 2026-01-27 A | 2026-02-12 A | 25DF82-012, 25DF82-056 SS+5d | 100% |  |
| 25DF82-064 |  | Monta¿ ruroci¹gów – Sekcja 09 | 11.3d | 2026-09-04 A | 2026-09-23 A | 25DF82-063, 25DF82-014 SS+3d | 100% |  |
| 25DF82-065 |  | Próba ciœnieniowa – Sekcja 09 | 2d | 2026-09-18 A | 2026-09-23 A | 25DF82-064 | 100% |  |
| 25DF82-066 |  | Izolacje – Sekcja 09 | 11d | 2026-09-24 A | 2026-10-06 | 25DF82-065 | 54% | 348.6d |
| 25DF82-067 |  | Malowanie i oznakowanie – Sekcja 09 | 7d | 2026-09-30 A | 2026-10-02 | 25DF82-066 FF+2d | 53% | 350.9d |
|  | SEKCJA 10 | **Sekcja 10** |  | 2026-02-10 | 2026-11-23 |  |  |  |
| 25DF82-068 |  | Prefabrykacja ruroci¹gów – Sekcja 10 | 3.5d | 2026-02-10 A | 2026-09-30 | 25DF82-012, 25DF82-063 SS+5d | 46% | 411.7d |
| 25DF82-069 |  | Monta¿ ruroci¹gów – Sekcja 10 | 24.5d | 2026-09-08 A | 2026-10-14 | 25DF82-068, 25DF82-014 SS+3d | 52% | 331.4d |
| 25DF82-070 |  | Próba ciœnieniowa – Sekcja 10 | 4d | 2026-10-29 | 2026-11-03 | 25DF82-069 |  | 318.9d |
| 25DF82-071 |  | Izolacje – Sekcja 10 | 12d | 2026-11-04 | 2026-11-19 | 25DF82-070 |  | 318.9d |
| 25DF82-072 |  | Malowanie i oznakowanie – Sekcja 10 | 7d | 2026-11-13 | 2026-11-23 | 25DF82-071 FF+2d |  | 318.9d |
|  | SEKCJA 11 | **Sekcja 11** |  | 2026-02-13 | 2026-09-29 |  |  |  |
| 25DF82-075 |  | Prefabrykacja ruroci¹gów – Sekcja 11 | 7.1d | 2026-02-13 A | 2026-02-26 A | 25DF82-012, 25DF82-068 SS+5d | 100% |  |
| 25DF82-076 |  | Monta¿ ruroci¹gów – Sekcja 11 | 9.5d | 2026-09-01 A | 2026-09-15 A | 25DF82-075, 25DF82-014 SS+3d | 100% |  |
| 25DF82-077 |  | Próba ciœnieniowa – Sekcja 11 | 3d | 2026-09-14 A | 2026-09-18 A | 25DF82-076 | 100% |  |
| 25DF82-078 |  | Izolacje – Sekcja 11 | 6d | 2026-09-23 A | 2026-09-29 A | 25DF82-077 | 100% |  |
| 25DF82-079 |  | Malowanie i oznakowanie – Sekcja 11 | 4d | 2026-09-24 A | 2026-09-29 A | 25DF82-078 FF+2d | 100% |  |
|  | SEKCJA 12 | **Sekcja 12** |  | 2026-02-20 | 2026-10-12 |  |  |  |
|  | PODSEKCJA | **Podsekcja 12.A** |  | 2026-02-20 | 2026-10-12 |  |  |  |
| 25DF82-080 |  | Prefabrykacja ruroci¹gów – Sekcja 12 | 6.1d | 2026-02-20 A | 2026-03-02 A | 25DF82-012, 25DF82-075 SS+5d | 100% |  |
| 25DF82-081 |  | Monta¿ ruroci¹gów – Sekcja 12 | 18.2d | 2026-08-28 A | 2026-09-22 A | 25DF82-080, 25DF82-014 SS+1d | 100% |  |
| 25DF82-082 |  | Próba ciœnieniowa – Sekcja 12 | 5d | 2026-09-28 A | 2026-10-01 | 25DF82-081 | 46% | 347.7d |
| 25DF82-083 |  | Izolacje – Sekcja 12 | 5d | 2026-10-02 | 2026-10-08 | 25DF82-082 |  | 348.2d |
| 25DF82-084 |  | Malowanie i oznakowanie – Sekcja 12 | 3d | 2026-10-08 | 2026-10-12 | 25DF82-083 FF+2d |  | 348.2d |
|  | SEKCJA 13 | **Sekcja 13** |  | 2026-03-02 | 2026-09-30 |  |  |  |
| 25DF82-087 |  | Prefabrykacja ruroci¹gów – Sekcja 13 | 6.1d | 2026-03-02 A | 2026-03-12 A | 25DF82-012, 25DF82-080 SS+5d | 100% |  |
| 25DF82-088 |  | Monta¿ ruroci¹gów – Sekcja 13 | 7.4d | 2026-09-09 A | 2026-09-17 A | 25DF82-087, 25DF82-014 SS+9d | 100% |  |
| 25DF82-089 |  | Próba ciœnieniowa – Sekcja 13 | 2d | 2026-09-22 A | 2026-09-23 A | 25DF82-088 | 100% |  |
| 25DF82-090 |  | Izolacje – Sekcja 13 | 4d | 2026-09-28 A | 2026-09-29 A | 25DF82-089 | 100% |  |
| 25DF82-091 |  | Malowanie i oznakowanie – Sekcja 13 | 3d | 2026-09-30 A | 2026-09-30 | 25DF82-090 FF+2d | 53% | 302.9d |
|  | SEKCJA 14 | **Sekcja 14** |  | 2026-03-06 | 2026-10-26 |  |  |  |
| 25DF82-092 |  | Prefabrykacja ruroci¹gów – Sekcja 14 | 7.3d | 2026-03-06 A | 2026-03-19 A | 25DF82-012, 25DF82-087 SS+5d | 100% |  |
| 25DF82-093 |  | Monta¿ ruroci¹gów – Sekcja 14 | 21.9d | 2026-09-08 A | 2026-10-09 | 25DF82-092, 25DF82-014 SS+5d | 63% | 289d |
| 25DF82-094 |  | Próba ciœnieniowa – Sekcja 14 | 4d | 2026-10-12 | 2026-10-15 | 25DF82-093 |  | 286.7d |
| 25DF82-095 |  | Izolacje – Sekcja 14 | 5d | 2026-10-16 | 2026-10-22 | 25DF82-094 |  | 286.7d |
| 25DF82-096 |  | Malowanie i oznakowanie – Sekcja 14 | 7d | 2026-10-16 | 2026-10-26 | 25DF82-095 FF+2d |  | 286.7d |
|  | PROJ | **Projektowanie** |  | 2025-06-16 | 2025-09-29 |  |  |  |
|  | DOKUMENTAC | **Dokumentacja** |  | 2025-06-16 | 2025-09-29 |  |  |  |
| 25DF82-001 |  | Projekt wykonawczy – Wentylacja i klimatyzacja | 41d | 2025-06-16 A | 2025-08-14 A |  | 100% |  |
| 25DF82-002 |  | Uzgodnienie dokumentacji z Inwestorem | 26d | 2025-08-12 A | 2025-09-17 A | 25DF82-001 | 100% |  |
| 25DF82-003 |  | Zatwierdzenie dokumentacji do realizacji | 7d | 2025-09-17 A | 2025-09-29 A | 25DF82-002 | 100% |  |
| 25DF82-004 |  | KM: Dokumentacja zatwierdzona – Wentylacja i klimatyzacja | 0d | 2025-09-23 A | 2025-09-23 | 25DF82-003 | 100% |  |
|  | ROZR | **Rozruch** |  | 2026-12-16 | 2027-02-12 |  |  |  |
|  | ROZRUCH | **Rozruch** |  | 2026-12-16 | 2027-02-12 |  |  |  |
| 25DF82-101 |  | Przegl¹d gotowoœci do rozruchu | 6d | 2026-12-16 | 2026-12-23 | 25DF82-100, 25DF82-019, 25DF82-024, 25DF82-026 |  | 250.8d |
| 25DF82-102 |  | Rozruch na zimno | 12d | 2026-12-24 | 2027-01-08 | 25DF82-101 |  | 250.8d |
| 25DF82-103 |  | Rozruch na gor¹co / próby ruchowe | 24d | 2027-01-11 | 2027-02-11 | 25DF82-102 |  | 250.8d |
| 25DF82-104 |  | KM: Odbiór koñcowy – Wentylacja i klimatyzacja | 0d | 2027-02-12 | 2027-02-12 | 25DF82-103 |  | 250.8d |
|  | ZAKU | **Zakupy** |  | 2025-07-09 | 2026-08-28 |  |  |  |
|  | DOSTAWY | **Dostawy** |  | 2025-10-14 | 2026-08-28 |  |  |  |
| 25DF82-008 |  | Produkcja u dostawcy | 202d | 2025-10-14 A | 2026-07-22 A | 25DF82-007 | 100% |  |

| ID | WBS | Task | Duration | Start | Finish | Predecessors | Complete | Total float |
| --- | --- | --- | --- | --- | --- | --- | --- | --- |
| 25DF82-009 |  | Testy FAT | 8d | 2026-07-24 A | 2026-08-07 A | 25DF82-008 | 100% |  |
| 25DF82-010 |  | Transport i dostawa na plac budowy | 20d | 2026-08-03 A | 2026-08-28 A | 25DF82-009 | 100% |  |
| 25DF82-011 |  | KM: Dostawa na budowê – Wentylacja i klimatyzacja | 0d | 2026-08-28 A | 2026-08-28 | 25DF82-010 | 100% |  |
|  | ZAMÓWIENIA | **Zamówienia** |  | 2025-07-09 | 2025-10-17 |  |  |  |
| 25DF82-005 |  | Zapytanie ofertowe | 17d | 2025-07-09 A | 2025-08-05 A | 25DF82-001 SS+20d | 100% |  |
| 25DF82-006 |  | Analiza i wybór ofert | 19d | 2025-08-05 A | 2025-09-03 A | 25DF82-005 | 100% |  |
| 25DF82-007 |  | Zawarcie umowy / zamówienie | 7d | 2025-10-06 A | 2025-10-17 A | 25DF82-006, 25DF82-004 SS, 10BW45-004 SF+15d | 100% |  |
|  | 25ND89 | **25ND89 – Instalacje przeciwpo¿arowe** |  | 2025-01-07 | 2026-11-13 |  |  |  |
|  | BUDO | **Budowa** |  | 2025-10-24 | 2026-10-13 |  |  |  |
|  | AKPIA | **AKPiA** |  | 2026-04-28 | 2026-05-11 |  |  |  |
| 25ND89-099 |  | Monta¿ uk³adów AKPiA | 10d | 2026-04-28 A | 2026-05-11 A | 25ND89-014 SS+5d | 100% |  |
|  | ELEKTRYKA | **Elektryka** |  | 2026-04-28 | 2026-10-13 |  |  |  |
| 25ND89-086 |  | Pod³¹czenia i pomiary – trasa 12 | 10d | 2026-04-28 A | 2026-05-13 A | 25ND89-085 FF | 100% |  |
| 25ND89-049 |  | Uk³adanie kabli – trasa 06 | 17d | 2026-04-30 A | 2026-05-27 A | 25ND89-014 SS+10d | 100% |  |
| 25ND89-085 |  | Uk³adanie kabli – trasa 12 | 6d | 2026-04-30 A | 2026-05-11 A | 25ND89-014 SS+10d | 100% |  |
| 25ND89-061 |  | Uk³adanie kabli – trasa 08 | 7d | 2026-05-01 A | 2026-05-12 A | 25ND89-014 SS+10d | 100% |  |
| 25ND89-025 |  | Uk³adanie kabli – trasa 02 | 10d | 2026-05-05 A | 2026-05-18 A | 25ND89-014 SS+10d | 100% |  |
| 25ND89-037 |  | Uk³adanie kabli – trasa 04 | 13d | 2026-05-05 A | 2026-05-26 A | 25ND89-014 SS+10d | 100% |  |
| 25ND89-073 |  | Uk³adanie kabli – trasa 10 | 12d | 2026-05-06 A | 2026-10-13 | 25ND89-014 SS+10d | 11% | 450.9d |
| 25ND89-097 |  | Uk³adanie kabli – trasa 14 | 10d | 2026-05-06 A | 2026-05-22 A | 25ND89-014 SS+10d | 100% |  |
| 25ND89-062 |  | Pod³¹czenia i pomiary – trasa 08 | 5d | 2026-05-08 A | 2026-05-15 A | 25ND89-061 FF | 100% |  |
| 25ND89-074 |  | Pod³¹czenia i pomiary – trasa 10 | 8d | 2026-05-11 A | 2026-05-25 A | 25ND89-073 FF | 100% |  |
| 25ND89-098 |  | Pod³¹czenia i pomiary – trasa 14 | 6d | 2026-05-12 A | 2026-05-21 A | 25ND89-097 FF | 100% |  |
| 25ND89-026 |  | Pod³¹czenia i pomiary – trasa 02 | 4d | 2026-05-15 A | 2026-09-30 | 25ND89-025 FF | 52% | 403.9d |
| 25ND89-038 |  | Pod³¹czenia i pomiary – trasa 04 | 4d | 2026-05-20 A | 2026-09-30 | 25ND89-037 FF | 75% | 448.9d |
| 25ND89-050 |  | Pod³¹czenia i pomiary – trasa 06 | 4d | 2026-05-25 A | 2026-05-28 A | 25ND89-049 FF | 100% |  |
|  | MONTA¯ | **Monta¿** |  | 2026-01-13 | 2026-06-10 |  |  |  |
| 25ND89-013 |  | Monta¿ konstrukcji stalowych | 25d | 2026-01-13 A | 2026-02-17 A | 25ND89-012 | 100% |  |
| 25ND89-014 |  | Monta¿ urz¹dzeñ g³ównych | 36d | 2026-04-21 A | 2026-06-10 A | 25ND89-013, 25ND89-011 | 100% |  |
| 25ND89-100 |  | KM: Zakoñczenie monta¿u – Instalacje przeciwpo¿arowe | 0d | 2026-06-08 A | 2026-06-08 | 25ND89-091, 25ND89-096, 25ND89-098, 25ND89-099, 25ND89-014 | 100% |  |
|  | ROBOTY BUD | **Roboty budowlane** |  | 2025-10-24 | 2026-01-09 |  |  |  |
| 25ND89-012 |  | Fundamenty i roboty ziemne | 56d | 2025-10-24 A | 2026-01-09 A | 25ND89-007 FS+12d | 100% |  |
|  | RUROCI¥GI | **Ruroci¹gi** |  | 2026-01-13 | 2026-10-13 |  |  |  |
|  | SEKCJA 01 | **Sekcja 01** |  | 2026-01-13 | 2026-06-11 |  |  |  |
| 25ND89-015 |  | Prefabrykacja ruroci¹gów – Sekcja 01 | 3.2d | 2026-01-13 A | 2026-01-15 A | 25ND89-012 | 100% |  |
| 25ND89-016 |  | Monta¿ ruroci¹gów – Sekcja 01 | 19.1d | 2026-04-24 A | 2026-05-21 A | 25ND89-015, 25ND89-014 SS+6d | 100% |  |
| 25ND89-017 |  | Próba ciœnieniowa – Sekcja 01 | 2d | 2026-05-25 A | 2026-05-28 A | 25ND89-016 | 100% |  |
| 25ND89-018 |  | Izolacje – Sekcja 01 | 7d | 2026-05-28 A | 2026-06-05 A | 25ND89-017 | 100% |  |
| 25ND89-019 |  | Malowanie i oznakowanie – Sekcja 01 | 7d | 2026-06-02 A | 2026-06-11 A | 25ND89-018 FF+2d | 100% |  |
|  | SEKCJA 02 | **Sekcja 02** |  | 2026-01-20 | 2026-06-08 |  |  |  |
| 25ND89-020 |  | Prefabrykacja ruroci¹gów – Sekcja 02 | 14.8d | 2026-01-20 A | 2026-02-11 A | 25ND89-012, 25ND89-015 SS+5d | 100% |  |
| 25ND89-021 |  | Monta¿ ruroci¹gów – Sekcja 02 | 13.2d | 2026-04-23 A | 2026-05-12 A | 25ND89-020, 25ND89-014 SS+5d | 100% |  |
| 25ND89-022 |  | Próba ciœnieniowa – Sekcja 02 | 6d | 2026-05-13 A | 2026-05-21 A | 25ND89-021 | 100% |  |
| 25ND89-023 |  | Izolacje – Sekcja 02 | 10d | 2026-05-25 A | 2026-06-08 A | 25ND89-022 | 100% |  |
| 25ND89-024 |  | Malowanie i oznakowanie – Sekcja 02 | 4d | 2026-06-03 A | 2026-06-08 A | 25ND89-023 FF+2d | 100% |  |
|  | SEKCJA 03 | **Sekcja 03** |  | 2026-01-26 | 2026-06-12 |  |  |  |
|  | PODSEKCJA | **Podsekcja 03.A** |  | 2026-01-26 | 2026-06-12 |  |  |  |
| 25ND89-027 |  | Prefabrykacja ruroci¹gów – Sekcja 03 | 10d | 2026-01-26 A | 2026-02-10 A | 25ND89-012, 25ND89-020 SS+5d | 100% |  |
| 25ND89-028 |  | Monta¿ ruroci¹gów – Sekcja 03 | 20.6d | 2026-05-01 A | 2026-05-28 A | 25ND89-027, 25ND89-014 SS+10d | 100% |  |
| 25ND89-029 |  | Próba ciœnieniowa – Sekcja 03 | 4d | 2026-05-29 A | 2026-06-03 A | 25ND89-028 | 100% |  |
| 25ND89-030 |  | Izolacje – Sekcja 03 | 3d | 2026-06-04 A | 2026-06-09 A | 25ND89-029 | 100% |  |
| 25ND89-031 |  | Malowanie i oznakowanie – Sekcja 03 | 5d | 2026-06-04 A | 2026-06-12 A | 25ND89-030 FF+2d | 100% |  |
|  | SEKCJA 04 | **Sekcja 04** |  | 2026-02-05 | 2026-10-02 |  |  |  |
| 25ND89-032 |  | Prefabrykacja ruroci¹gów – Sekcja 04 | 7.3d | 2026-02-05 A | 2026-02-16 A | 25ND89-012, 25ND89-027 SS+5d | 100% |  |
| 25ND89-033 |  | Monta¿ ruroci¹gów – Sekcja 04 | 6.3d | 2026-05-05 A | 2026-05-14 A | 25ND89-032, 25ND89-014 SS+10d | 100% |  |
| 25ND89-034 |  | Próba ciœnieniowa – Sekcja 04 | 3d | 2026-05-14 A | 2026-05-20 A | 25ND89-033 | 100% |  |
| 25ND89-035 |  | Izolacje – Sekcja 04 | 12d | 2026-05-18 A | 2026-06-02 A | 25ND89-034 | 100% |  |
| 25ND89-036 |  | Malowanie i oznakowanie – Sekcja 04 | 6d | 2026-05-26 A | 2026-10-02 | 25ND89-035 FF+2d | 38% | 442.6d |
|  | SEKCJA 05 | **Sekcja 05** |  | 2026-02-10 | 2026-05-28 |  |  |  |
| 25ND89-039 |  | Prefabrykacja ruroci¹gów – Sekcja 05 | 7.6d | 2026-02-10 A | 2026-02-18 A | 25ND89-012, 25ND89-032 SS+5d | 100% |  |
| 25ND89-040 |  | Monta¿ ruroci¹gów – Sekcja 05 | 12.4d | 2026-04-29 A | 2026-05-15 A | 25ND89-039, 25ND89-014 SS+5d | 100% |  |
| 25ND89-041 |  | Próba ciœnieniowa – Sekcja 05 | 2d | 2026-05-13 A | 2026-05-18 A | 25ND89-040 | 100% |  |
| 25ND89-042 |  | Izolacje – Sekcja 05 | 8d | 2026-05-15 A | 2026-05-28 A | 25ND89-041 | 100% |  |
| 25ND89-043 |  | Malowanie i oznakowanie – Sekcja 05 | 3d | 2026-05-25 A | 2026-05-28 A | 25ND89-042 FF+2d | 100% |  |
|  | SEKCJA 06 | **Sekcja 06** |  | 2026-02-17 | 2026-06-11 |  |  |  |
|  | PODSEKCJA | **Podsekcja 06.A** |  | 2026-02-17 | 2026-06-11 |  |  |  |
| 25ND89-044 |  | Prefabrykacja ruroci¹gów – Sekcja 06 | 14.2d | 2026-02-17 A | 2026-03-06 A | 25ND89-012, 25ND89-039 SS+5d | 100% |  |
| 25ND89-045 |  | Monta¿ ruroci¹gów – Sekcja 06 | 22.1d | 2026-04-17 A | 2026-05-20 A | 25ND89-044, 25ND89-014 SS+1d | 100% |  |
| 25ND89-046 |  | Próba ciœnieniowa – Sekcja 06 | 4d | 2026-05-19 A | 2026-05-22 A | 25ND89-045 | 100% |  |
| 25ND89-047 |  | Izolacje – Sekcja 06 | 10d | 2026-05-27 A | 2026-06-11 A | 25ND89-046 | 100% |  |

| ID | WBS | Task | Duration | Start | Finish | Predecessors | Complete | Total float |
| --- | --- | --- | --- | --- | --- | --- | --- | --- |
| 25ND89-048 |  | Malowanie i oznakowanie – Sekcja 06 | 6d | 2026-06-02 A | 2026-06-10 A | 25ND89-047 FF+2d | 100% |  |
|  | SEKCJA 07 | **Sekcja 07** |  | 2026-02-26 | 2026-10-13 |  |  |  |
| 25ND89-051 |  | Prefabrykacja ruroci¹gów – Sekcja 07 | 15d | 2026-02-26 A | 2026-10-09 | 25ND89-012, 25ND89-044 SS+5d | 47% | 389.9d |
| 25ND89-052 |  | Monta¿ ruroci¹gów – Sekcja 07 | 12.6d | 2026-04-29 A | 2026-10-13 | 25ND89-051, 25ND89-014 SS+6d | 13% | 445.3d |
| 25ND89-053 |  | Próba ciœnieniowa – Sekcja 07 | 5d | 2026-05-14 A | 2026-05-22 A | 25ND89-052 | 100% |  |
| 25ND89-054 |  | Izolacje – Sekcja 07 | 3d | 2026-05-19 A | 2026-05-22 A | 25ND89-053 | 100% |  |
| 25ND89-055 |  | Malowanie i oznakowanie – Sekcja 07 | 8d | 2026-05-19 A | 2026-06-02 A | 25ND89-054 FF+2d | 100% |  |
|  | SEKCJA 08 | **Sekcja 08** |  | 2026-03-03 | 2026-06-03 |  |  |  |
| 25ND89-056 |  | Prefabrykacja ruroci¹gów – Sekcja 08 | 12.5d | 2026-03-03 A | 2026-03-20 A | 25ND89-012, 25ND89-051 SS+5d | 100% |  |
| 25ND89-057 |  | Monta¿ ruroci¹gów – Sekcja 08 | 12d | 2026-04-30 A | 2026-05-19 A | 25ND89-056, 25ND89-014 SS+9d | 100% |  |
| 25ND89-058 |  | Próba ciœnieniowa – Sekcja 08 | 2d | 2026-05-15 A | 2026-05-20 A | 25ND89-057 | 100% |  |
| 25ND89-059 |  | Izolacje – Sekcja 08 | 5d | 2026-05-20 A | 2026-05-29 A | 25ND89-058 | 100% |  |
| 25ND89-060 |  | Malowanie i oznakowanie – Sekcja 08 | 6d | 2026-05-22 A | 2026-06-03 A | 25ND89-059 FF+2d | 100% |  |
|  | SEKCJA 09 | **Sekcja 09** |  | 2026-03-10 | 2026-06-15 |  |  |  |
|  | PODSEKCJA | **Podsekcja 09.A** |  | 2026-03-10 | 2026-06-15 |  |  |  |
| 25ND89-063 |  | Prefabrykacja ruroci¹gów – Sekcja 09 | 14.7d | 2026-03-10 A | 2026-03-31 A | 25ND89-012, 25ND89-056 SS+5d | 100% |  |
| 25ND89-064 |  | Monta¿ ruroci¹gów – Sekcja 09 | 21d | 2026-05-01 A | 2026-06-02 A | 25ND89-063, 25ND89-014 SS+8d | 100% |  |
| 25ND89-065 |  | Próba ciœnieniowa – Sekcja 09 | 2d | 2026-06-01 A | 2026-06-05 A | 25ND89-064 | 100% |  |
| 25ND89-066 |  | Izolacje – Sekcja 09 | 4d | 2026-06-01 A | 2026-06-08 A | 25ND89-065 | 100% |  |
| 25ND89-067 |  | Malowanie i oznakowanie – Sekcja 09 | 6d | 2026-06-03 A | 2026-06-15 A | 25ND89-066 FF+2d | 100% |  |
|  | SEKCJA 10 | **Sekcja 10** |  | 2026-03-19 | 2026-06-16 |  |  |  |
| 25ND89-068 |  | Prefabrykacja ruroci¹gów – Sekcja 10 | 9.8d | 2026-03-19 A | 2026-04-01 A | 25ND89-012, 25ND89-063 SS+5d | 100% |  |
| 25ND89-069 |  | Monta¿ ruroci¹gów – Sekcja 10 | 14.1d | 2026-04-30 A | 2026-05-19 A | 25ND89-068, 25ND89-014 SS+9d | 100% |  |
| 25ND89-070 |  | Próba ciœnieniowa – Sekcja 10 | 4d | 2026-05-22 A | 2026-05-27 A | 25ND89-069 | 100% |  |
| 25ND89-071 |  | Izolacje – Sekcja 10 | 12d | 2026-05-25 A | 2026-06-10 A | 25ND89-070 | 100% |  |
| 25ND89-072 |  | Malowanie i oznakowanie – Sekcja 10 | 2d | 2026-06-11 A | 2026-06-16 A | 25ND89-071 FF+2d | 100% |  |
|  | SEKCJA 11 | **Sekcja 11** |  | 2026-03-24 | 2026-06-04 |  |  |  |
| 25ND89-075 |  | Prefabrykacja ruroci¹gów – Sekcja 11 | 9d | 2026-03-24 A | 2026-04-07 A | 25ND89-012, 25ND89-068 SS+5d | 100% |  |
| 25ND89-076 |  | Monta¿ ruroci¹gów – Sekcja 11 | 16.6d | 2026-05-06 A | 2026-06-01 A | 25ND89-075, 25ND89-014 SS+10d | 100% |  |
| 25ND89-077 |  | Próba ciœnieniowa – Sekcja 11 | 2d | 2026-05-22 A | 2026-05-25 A | 25ND89-076 | 100% |  |
| 25ND89-079 |  | Malowanie i oznakowanie – Sekcja 11 | 8d | 2026-05-25 A | 2026-06-04 A | 25ND89-078 FF+2d | 100% |  |
| 25ND89-078 |  | Izolacje – Sekcja 11 | 4d | 2026-05-28 A | 2026-06-04 A | 25ND89-077 | 100% |  |
|  | SEKCJA 12 | **Sekcja 12** |  | 2026-03-31 | 2026-10-06 |  |  |  |
|  | PODSEKCJA | **Podsekcja 12.A** |  | 2026-03-31 | 2026-10-06 |  |  |  |
| 25ND89-080 |  | Prefabrykacja ruroci¹gów – Sekcja 12 | 8.9d | 2026-03-31 A | 2026-04-09 A | 25ND89-012, 25ND89-075 SS+5d | 100% |  |
| 25ND89-081 |  | Monta¿ ruroci¹gów – Sekcja 12 | 21.8d | 2026-04-29 A | 2026-10-06 | 25ND89-080, 25ND89-014 SS+4d | 76% | 427.1d |
| 25ND89-082 |  | Próba ciœnieniowa – Sekcja 12 | 5d | 2026-05-26 A | 2026-06-04 A | 25ND89-081 | 100% |  |
| 25ND89-083 |  | Izolacje – Sekcja 12 | 12d | 2026-06-02 A | 2026-06-17 A | 25ND89-082 | 100% |  |
| 25ND89-084 |  | Malowanie i oznakowanie – Sekcja 12 | 8d | 2026-06-05 A | 2026-06-19 A | 25ND89-083 FF+2d | 100% |  |
|  | SEKCJA 13 | **Sekcja 13** |  | 2026-04-03 | 2026-10-13 |  |  |  |
| 25ND89-087 |  | Prefabrykacja ruroci¹gów – Sekcja 13 | 7.2d | 2026-04-03 A | 2026-04-13 A | 25ND89-012, 25ND89-080 SS+5d | 100% |  |
| 25ND89-088 |  | Monta¿ ruroci¹gów – Sekcja 13 | 6.7d | 2026-05-05 A | 2026-05-14 A | 25ND89-087, 25ND89-014 SS+9d | 100% |  |
| 25ND89-089 |  | Próba ciœnieniowa – Sekcja 13 | 2d | 2026-05-11 A | 2026-05-15 A | 25ND89-088 | 100% |  |
| 25ND89-091 |  | Malowanie i oznakowanie – Sekcja 13 | 7d | 2026-05-21 A | 2026-06-01 A | 25ND89-090 FF+2d | 100% |  |
| 25ND89-090 |  | Izolacje – Sekcja 13 | 10d | 2026-09-30 | 2026-10-13 | 25ND89-089 |  | 297.9d |
|  | SEKCJA 14 | **Sekcja 14** |  | 2026-04-13 | 2026-06-09 |  |  |  |
| 25ND89-092 |  | Prefabrykacja ruroci¹gów – Sekcja 14 | 15d | 2026-04-13 A | 2026-05-01 A | 25ND89-012, 25ND89-087 SS+5d | 100% |  |
| 25ND89-093 |  | Monta¿ ruroci¹gów – Sekcja 14 | 8d | 2026-05-05 A | 2026-05-14 A | 25ND89-092, 25ND89-014 SS+7d | 100% |  |
| 25ND89-094 |  | Próba ciœnieniowa – Sekcja 14 | 3d | 2026-05-15 A | 2026-05-21 A | 25ND89-093 | 100% |  |
| 25ND89-095 |  | Izolacje – Sekcja 14 | 11d | 2026-05-20 A | 2026-06-04 A | 25ND89-094 | 100% |  |
| 25ND89-096 |  | Malowanie i oznakowanie – Sekcja 14 | 2d | 2026-06-05 A | 2026-06-09 A | 25ND89-095 FF+2d | 100% |  |
|  | PROJ | **Projektowanie** |  | 2025-01-07 | 2026-11-13 |  |  |  |
|  | DOKUMENTAC | **Dokumentacja** |  | 2025-01-07 | 2026-11-13 |  |  |  |
| 25ND89-001 |  | Projekt wykonawczy – Instalacje przeciwpo¿arowe | 91d | 2025-01-07 A | 2026-11-13 |  | 63% | 457.7d |
| 25ND89-002 |  | Uzgodnienie dokumentacji z Inwestorem | 23d | 2025-05-15 A | 2025-06-16 A | 25ND89-001 | 100% |  |
| 25ND89-003 |  | Zatwierdzenie dokumentacji do realizacji | 11d | 2025-06-13 A | 2025-07-02 A | 25ND89-002 | 100% |  |
| 25ND89-004 |  | KM: Dokumentacja zatwierdzona – Instalacje przeciwpo¿arowe | 0d | 2025-07-04 A | 2025-07-04 | 25ND89-003 | 100% |  |
|  | ROZR | **Rozruch** |  | 2026-06-08 | 2026-10-12 |  |  |  |
|  | ROZRUCH | **Rozruch** |  | 2026-06-08 | 2026-10-12 |  |  |  |
| 25ND89-101 |  | Przegl¹d gotowoœci do rozruchu | 7d | 2026-06-08 A | 2026-06-16 A | 25ND89-100, 25ND89-019, 25ND89-024, 25ND89-026 | 100% |  |
| 25ND89-102 |  | Rozruch na zimno | 7d | 2026-06-22 A | 2026-07-02 A | 25ND89-101 | 100% |  |
| 25ND89-103 |  | Rozruch na gor¹co / próby ruchowe | 24d | 2026-07-01 A | 2026-10-12 | 25ND89-102 | 62% | 388.7d |
| 25ND89-104 |  | KM: Odbiór koñcowy – Instalacje przeciwpo¿arowe | 0d | 2026-07-28 | 2026-07-28 A | 25ND89-103 | 100% |  |
|  | ZAKU | **Zakupy** |  | 2025-02-03 | 2026-04-20 |  |  |  |
|  | DOSTAWY | **Dostawy** |  | 2025-10-08 | 2026-04-20 |  |  |  |
| 25ND89-008 |  | Produkcja u dostawcy | 121d | 2025-10-08 A | 2026-03-27 A | 25ND89-007 | 100% |  |
| 25ND89-009 |  | Testy FAT | 5d | 2026-03-31 A | 2026-04-09 A | 25ND89-008 | 100% |  |
| 25ND89-010 |  | Transport i dostawa na plac budowy | 11d | 2026-04-02 A | 2026-04-16 A | 25ND89-009 | 100% |  |
| 25ND89-011 |  | KM: Dostawa na budowê – Instalacje przeciwpo¿arowe | 0d | 2026-04-20 A | 2026-04-20 | 25ND89-010 | 100% |  |
|  | ZAMÓWIENIA | **Zamówienia** |  | 2025-02-03 | 2025-10-14 |  |  |  |

| ID | WBS | Task | Duration | Start | Finish | Predecessors | Complete | Total float |
| --- | --- | --- | --- | --- | --- | --- | --- | --- |
| 25ND89-005 |  | Zapytanie ofertowe | 19d | 2025-02-03 A | 2025-02-28 A | 25ND89-001 SS+20d | 100% |  |
| 25ND89-006 |  | Analiza i wybór ofert | 15d | 2025-02-28 A | 2025-03-25 A | 25ND89-005 | 100% |  |
| 25ND89-007 |  | Zawarcie umowy / zamówienie | 5d | 2025-10-06 A | 2025-10-14 A | 25ND89-006, 25ND89-004 SS, 12FX78-004 SS+11d | 100% |  |
|  | 26CG51 | **26CG51 – Ogrodzenie i monitoring** |  | 2025-05-07 | 2028-01-28 |  |  |  |
|  | BUDO | **Budowa** |  | 2025-10-14 | 2027-12-06 |  |  |  |
|  | AKPIA | **AKPiA** |  | 2027-10-06 | 2027-10-19 |  |  |  |
| 26CG51-116 |  | Monta¿ uk³adów AKPiA | 10d | 2027-10-06 | 2027-10-19 | 26CG51-014 SS+5d |  | 34.4d |
|  | ELEKTRYKA | **Elektryka** |  | 2027-10-13 | 2027-11-05 |  |  |  |
| 26CG51-025 |  | Uk³adanie kabli – trasa 02 | 11d | 2027-10-13 | 2027-10-27 | 26CG51-014 SS+10d |  | 28.4d |
| 26CG51-037 |  | Uk³adanie kabli – trasa 04 | 18d | 2027-10-13 | 2027-11-05 | 26CG51-014 SS+10d |  | 69.4d |
| 26CG51-049 |  | Uk³adanie kabli – trasa 06 | 8d | 2027-10-13 | 2027-10-22 | 26CG51-014 SS+10d |  | 79.4d |
| 26CG51-050 |  | Pod³¹czenia i pomiary – trasa 06 | 8d | 2027-10-13 | 2027-10-22 | 26CG51-049 FF |  | 79.4d |
| 26CG51-061 |  | Uk³adanie kabli – trasa 08 | 14d | 2027-10-13 | 2027-11-01 | 26CG51-014 SS+10d |  | 73.4d |
| 26CG51-073 |  | Uk³adanie kabli – trasa 10 | 17d | 2027-10-13 | 2027-11-04 | 26CG51-014 SS+10d |  | 70.4d |
| 26CG51-085 |  | Uk³adanie kabli – trasa 12 | 13d | 2027-10-13 | 2027-10-29 | 26CG51-014 SS+10d |  | 74.4d |
| 26CG51-097 |  | Uk³adanie kabli – trasa 14 | 17d | 2027-10-13 | 2027-11-04 | 26CG51-014 SS+10d |  | 70.4d |
| 26CG51-109 |  | Uk³adanie kabli – trasa 16 | 8d | 2027-10-13 | 2027-10-22 | 26CG51-014 SS+10d |  | 31.4d |
| 26CG51-110 |  | Pod³¹czenia i pomiary – trasa 16 | 5d | 2027-10-18 | 2027-10-22 | 26CG51-109 FF |  | 31.4d |
| 26CG51-086 |  | Pod³¹czenia i pomiary – trasa 12 | 6d | 2027-10-22 | 2027-10-29 | 26CG51-085 FF |  | 74.4d |
| 26CG51-026 |  | Pod³¹czenia i pomiary – trasa 02 | 3d | 2027-10-25 | 2027-10-27 | 26CG51-025 FF |  | 28.4d |
| 26CG51-062 |  | Pod³¹czenia i pomiary – trasa 08 | 6d | 2027-10-25 | 2027-11-01 | 26CG51-061 FF |  | 73.4d |
| 26CG51-074 |  | Pod³¹czenia i pomiary – trasa 10 | 9d | 2027-10-25 | 2027-11-04 | 26CG51-073 FF |  | 70.4d |
| 26CG51-098 |  | Pod³¹czenia i pomiary – trasa 14 | 7d | 2027-10-27 | 2027-11-04 | 26CG51-097 FF |  | 70.4d |
| 26CG51-038 |  | Pod³¹czenia i pomiary – trasa 04 | 6d | 2027-10-29 | 2027-11-05 | 26CG51-037 FF |  | 69.4d |
|  | MONTA¯ | **Monta¿** |  | 2025-12-17 | 2027-12-06 |  |  |  |
| 26CG51-013 |  | Monta¿ konstrukcji stalowych | 38d | 2025-12-17 A | 2026-02-06 A | 26CG51-012 | 100% |  |
| 26CG51-014 |  | Monta¿ urz¹dzeñ g³ównych | 35d | 2027-09-29 | 2027-11-16 | 26CG51-013, 26CG51-011 |  | 0d |
| 26CG51-117 |  | KM: Zakoñczenie monta¿u – Ogrodzenie i monitoring | 0d | 2027-12-06 | 2027-12-06 | 26CG51-108, 26CG51-110, 26CG51-115, 26CG51-116, 26CG51-014 |  | 1.4d |
|  | ROBOTY BUD | **Roboty budowlane** |  | 2025-10-14 | 2025-12-22 |  |  |  |
| 26CG51-012 |  | Fundamenty i roboty ziemne | 47d | 2025-10-14 A | 2025-12-22 A | 26CG51-007 FS+4d | 100% |  |
|  | RUROCI¥GI | **Ruroci¹gi** |  | 2025-12-18 | 2027-12-06 |  |  |  |
|  | SEKCJA 01 | **Sekcja 01** |  | 2025-12-18 | 2027-12-06 |  |  |  |
| 26CG51-015 |  | Prefabrykacja ruroci¹gów – Sekcja 01 | 4.8d | 2025-12-18 A | 2025-12-25 A | 26CG51-012 | 100% |  |
| 26CG51-016 |  | Monta¿ ruroci¹gów – Sekcja 01 | 21.4d | 2027-10-13 | 2027-11-10 | 26CG51-015, 26CG51-014 SS+10d |  | 0d |
| 26CG51-017 |  | Próba ciœnieniowa – Sekcja 01 | 5d | 2027-11-11 | 2027-11-17 | 26CG51-016 |  | 0d |
| 26CG51-018 |  | Izolacje – Sekcja 01 | 11d | 2027-11-18 | 2027-12-02 | 26CG51-017 |  | 0d |
| 26CG51-019 |  | Malowanie i oznakowanie – Sekcja 01 | 8d | 2027-11-25 | 2027-12-06 | 26CG51-018 FF+2d |  | 0d |
|  | SEKCJA 02 | **Sekcja 02** |  | 2025-12-25 | 2027-11-12 |  |  |  |
| 26CG51-020 |  | Prefabrykacja ruroci¹gów – Sekcja 02 | 5.5d | 2025-12-25 A | 2026-01-02 A | 26CG51-012, 26CG51-015 SS+5d | 100% |  |
| 26CG51-021 |  | Monta¿ ruroci¹gów – Sekcja 02 | 19.6d | 2027-10-04 | 2027-10-29 | 26CG51-020, 26CG51-014 SS+3d |  | 16.8d |
| 26CG51-022 |  | Próba ciœnieniowa – Sekcja 02 | 2d | 2027-11-01 | 2027-11-02 | 26CG51-021 |  | 16.8d |
| 26CG51-023 |  | Izolacje – Sekcja 02 | 6d | 2027-11-03 | 2027-11-10 | 26CG51-022 |  | 16.8d |
| 26CG51-024 |  | Malowanie i oznakowanie – Sekcja 02 | 3d | 2027-11-10 | 2027-11-12 | 26CG51-023 FF+2d |  | 16.8d |
|  | SEKCJA 03 | **Sekcja 03** |  | 2026-01-02 | 2027-11-19 |  |  |  |
|  | PODSEKCJA | **Podsekcja 03.A** |  | 2026-01-02 | 2027-11-19 |  |  |  |
| 26CG51-027 |  | Prefabrykacja ruroci¹gów – Sekcja 03 | 3.9d | 2026-01-02 A | 2026-01-09 A | 26CG51-012, 26CG51-020 SS+5d | 100% |  |
| 26CG51-028 |  | Monta¿ ruroci¹gów – Sekcja 03 | 7.5d | 2027-10-13 | 2027-10-22 | 26CG51-027, 26CG51-014 SS+10d |  | 59.9d |
| 26CG51-029 |  | Próba ciœnieniowa – Sekcja 03 | 6d | 2027-10-25 | 2027-11-01 | 26CG51-028 |  | 59.9d |
| 26CG51-030 |  | Izolacje – Sekcja 03 | 12d | 2027-11-02 | 2027-11-17 | 26CG51-029 |  | 59.9d |
| 26CG51-031 |  | Malowanie i oznakowanie – Sekcja 03 | 6d | 2027-11-12 | 2027-11-19 | 26CG51-030 FF+2d |  | 59.9d |
|  | SEKCJA 04 | **Sekcja 04** |  | 2026-01-09 | 2027-11-12 |  |  |  |
| 26CG51-032 |  | Prefabrykacja ruroci¹gów – Sekcja 04 | 4.4d | 2026-01-09 A | 2026-01-19 A | 26CG51-012, 26CG51-027 SS+5d | 100% |  |
| 26CG51-033 |  | Monta¿ ruroci¹gów – Sekcja 04 | 5.5d | 2027-10-12 | 2027-10-19 | 26CG51-032, 26CG51-014 SS+9d |  | 64.9d |
| 26CG51-034 |  | Próba ciœnieniowa – Sekcja 04 | 5d | 2027-10-20 | 2027-10-26 | 26CG51-033 |  | 64.9d |
| 26CG51-035 |  | Izolacje – Sekcja 04 | 11d | 2027-10-27 | 2027-11-10 | 26CG51-034 |  | 64.9d |
| 26CG51-036 |  | Malowanie i oznakowanie – Sekcja 04 | 2d | 2027-11-11 | 2027-11-12 | 26CG51-035 FF+2d |  | 64.9d |
|  | SEKCJA 05 | **Sekcja 05** |  | 2026-01-14 | 2027-11-17 |  |  |  |
| 26CG51-039 |  | Prefabrykacja ruroci¹gów – Sekcja 05 | 13.8d | 2026-01-14 A | 2026-02-03 A | 26CG51-012, 26CG51-032 SS+5d | 100% |  |
| 26CG51-040 |  | Monta¿ ruroci¹gów – Sekcja 05 | 18.2d | 2027-09-30 | 2027-10-25 | 26CG51-039, 26CG51-014 SS+1d |  | 61.2d |
| 26CG51-041 |  | Próba ciœnieniowa – Sekcja 05 | 4d | 2027-10-26 | 2027-10-29 | 26CG51-040 |  | 61.2d |
| 26CG51-042 |  | Izolacje – Sekcja 05 | 11d | 2027-11-01 | 2027-11-15 | 26CG51-041 |  | 61.2d |
| 26CG51-043 |  | Malowanie i oznakowanie – Sekcja 05 | 4d | 2027-11-12 | 2027-11-17 | 26CG51-042 FF+2d |  | 61.2d |
|  | SEKCJA 06 | **Sekcja 06** |  | 2026-01-23 | 2027-10-21 |  |  |  |
|  | PODSEKCJA | **Podsekcja 06.A** |  | 2026-01-23 | 2027-10-21 |  |  |  |
| 26CG51-044 |  | Prefabrykacja ruroci¹gów – Sekcja 06 | 8d | 2026-01-23 A | 2026-02-03 A | 26CG51-012, 26CG51-039 SS+5d | 100% |  |
| 26CG51-045 |  | Monta¿ ruroci¹gów – Sekcja 06 | 6.6d | 2027-09-29 | 2027-10-07 | 26CG51-044, 26CG51-014 SS |  | 80.8d |
| 26CG51-046 |  | Próba ciœnieniowa – Sekcja 06 | 2d | 2027-10-08 | 2027-10-11 | 26CG51-045 |  | 80.8d |
| 26CG51-047 |  | Izolacje – Sekcja 06 | 6d | 2027-10-12 | 2027-10-19 | 26CG51-046 |  | 80.8d |
| 26CG51-048 |  | Malowanie i oznakowanie – Sekcja 06 | 6d | 2027-10-14 | 2027-10-21 | 26CG51-047 FF+2d |  | 80.8d |
|  | SEKCJA 07 | **Sekcja 07** |  | 2026-01-29 | 2027-12-02 |  |  |  |

| ID | WBS | Task | Duration | Start | Finish | Predecessors | Complete | Total float |
| --- | --- | --- | --- | --- | --- | --- | --- | --- |
| 26CG51-051 |  | Prefabrykacja ruroci¹gów – Sekcja 07 | 5.6d | 2026-01-29 A | 2026-02-05 A | 26CG51-012, 26CG51-044 SS+5d | 100% |  |
| 26CG51-052 |  | Monta¿ ruroci¹gów – Sekcja 07 | 24.5d | 2027-10-01 | 2027-11-04 | 26CG51-051, 26CG51-014 SS+2d |  | 50.9d |
| 26CG51-053 |  | Próba ciœnieniowa – Sekcja 07 | 6d | 2027-11-05 | 2027-11-12 | 26CG51-052 |  | 50.9d |
| 26CG51-054 |  | Izolacje – Sekcja 07 | 12d | 2027-11-15 | 2027-11-30 | 26CG51-053 |  | 50.9d |
| 26CG51-055 |  | Malowanie i oznakowanie – Sekcja 07 | 3d | 2027-11-30 | 2027-12-02 | 26CG51-054 FF+2d |  | 50.9d |
|  | SEKCJA 08 | **Sekcja 08** |  | 2026-02-05 | 2027-11-11 |  |  |  |
| 26CG51-056 |  | Prefabrykacja ruroci¹gów – Sekcja 08 | 4.2d | 2026-02-05 A | 2026-02-11 A | 26CG51-012, 26CG51-051 SS+5d | 100% |  |
| 26CG51-057 |  | Monta¿ ruroci¹gów – Sekcja 08 | 21.4d | 2027-10-05 | 2027-11-02 | 26CG51-056, 26CG51-014 SS+4d |  | 65d |
| 26CG51-058 |  | Próba ciœnieniowa – Sekcja 08 | 2d | 2027-11-03 | 2027-11-04 | 26CG51-057 |  | 65d |
| 26CG51-060 |  | Malowanie i oznakowanie – Sekcja 08 | 6d | 2027-11-04 | 2027-11-11 | 26CG51-059 FF+2d |  | 65d |
| 26CG51-059 |  | Izolacje – Sekcja 08 | 3d | 2027-11-05 | 2027-11-09 | 26CG51-058 |  | 65d |
|  | SEKCJA 09 | **Sekcja 09** |  | 2026-02-13 | 2027-11-15 |  |  |  |
|  | PODSEKCJA | **Podsekcja 09.A** |  | 2026-02-13 | 2027-11-15 |  |  |  |
| 26CG51-063 |  | Prefabrykacja ruroci¹gów – Sekcja 09 | 6.8d | 2026-02-13 A | 2026-02-25 A | 26CG51-012, 26CG51-056 SS+5d | 100% |  |
| 26CG51-064 |  | Monta¿ ruroci¹gów – Sekcja 09 | 22.8d | 2027-09-30 | 2027-11-01 | 26CG51-063, 26CG51-014 SS+1d |  | 63.6d |
| 26CG51-065 |  | Próba ciœnieniowa – Sekcja 09 | 4d | 2027-11-02 | 2027-11-05 | 26CG51-064 |  | 63.6d |
| 26CG51-066 |  | Izolacje – Sekcja 09 | 4d | 2027-11-08 | 2027-11-11 | 26CG51-065 |  | 63.6d |
| 26CG51-067 |  | Malowanie i oznakowanie – Sekcja 09 | 5d | 2027-11-09 | 2027-11-15 | 26CG51-066 FF+2d |  | 63.6d |
|  | SEKCJA 10 | **Sekcja 10** |  | 2026-02-23 | 2027-11-15 |  |  |  |
| 26CG51-068 |  | Prefabrykacja ruroci¹gów – Sekcja 10 | 8.4d | 2026-02-23 A | 2026-09-30 | 26CG51-012, 26CG51-063 SS+5d | 77% | 378d |
| 26CG51-069 |  | Monta¿ ruroci¹gów – Sekcja 10 | 10.5d | 2027-10-06 | 2027-10-20 | 26CG51-068, 26CG51-014 SS+5d |  | 63.9d |
| 26CG51-070 |  | Próba ciœnieniowa – Sekcja 10 | 5d | 2027-10-21 | 2027-10-27 | 26CG51-069 |  | 63.9d |
| 26CG51-071 |  | Izolacje – Sekcja 10 | 11d | 2027-10-28 | 2027-11-11 | 26CG51-070 |  | 63.9d |
| 26CG51-072 |  | Malowanie i oznakowanie – Sekcja 10 | 4d | 2027-11-10 | 2027-11-15 | 26CG51-071 FF+2d |  | 63.9d |
|  | SEKCJA 11 | **Sekcja 11** |  | 2026-09-30 | 2027-10-28 |  |  |  |
| 26CG51-075 |  | Prefabrykacja ruroci¹gów – Sekcja 11 | 8.1d | 2026-09-30 | 2026-10-09 | 26CG51-012, 26CG51-068 SS+5d |  | 226d |
| 26CG51-076 |  | Monta¿ ruroci¹gów – Sekcja 11 | 8.8d | 2027-09-29 | 2027-10-11 | 26CG51-075, 26CG51-014 SS |  | 75.6d |
| 26CG51-077 |  | Próba ciœnieniowa – Sekcja 11 | 2d | 2027-10-12 | 2027-10-13 | 26CG51-076 |  | 75.6d |
| 26CG51-078 |  | Izolacje – Sekcja 11 | 9d | 2027-10-14 | 2027-10-26 | 26CG51-077 |  | 75.6d |
| 26CG51-079 |  | Malowanie i oznakowanie – Sekcja 11 | 7d | 2027-10-20 | 2027-10-28 | 26CG51-078 FF+2d |  | 75.6d |
|  | SEKCJA 12 | **Sekcja 12** |  | 2026-03-02 | 2027-11-19 |  |  |  |
|  | PODSEKCJA | **Podsekcja 12.A** |  | 2026-03-02 | 2027-11-19 |  |  |  |
| 26CG51-080 |  | Prefabrykacja ruroci¹gów – Sekcja 12 | 13d | 2026-03-02 A | 2026-03-19 A | 26CG51-012, 26CG51-075 SS+5d | 100% |  |
| 26CG51-081 |  | Monta¿ ruroci¹gów – Sekcja 12 | 15.6d | 2027-10-08 | 2027-10-29 | 26CG51-080, 26CG51-014 SS+7d |  | 59.8d |
| 26CG51-082 |  | Próba ciœnieniowa – Sekcja 12 | 3d | 2027-11-01 | 2027-11-03 | 26CG51-081 |  | 59.8d |
| 26CG51-083 |  | Izolacje – Sekcja 12 | 10d | 2027-11-04 | 2027-11-17 | 26CG51-082 |  | 59.8d |
| 26CG51-084 |  | Malowanie i oznakowanie – Sekcja 12 | 5d | 2027-11-15 | 2027-11-19 | 26CG51-083 FF+2d |  | 59.8d |
|  | SEKCJA 13 | **Sekcja 13** |  | 2026-03-10 | 2027-11-30 |  |  |  |
| 26CG51-087 |  | Prefabrykacja ruroci¹gów – Sekcja 13 | 5.2d | 2026-03-10 A | 2026-03-17 A | 26CG51-012, 26CG51-080 SS+5d | 100% |  |
| 26CG51-088 |  | Monta¿ ruroci¹gów – Sekcja 13 | 16.1d | 2027-10-13 | 2027-11-03 | 26CG51-087, 26CG51-014 SS+10d |  | 52.3d |
| 26CG51-089 |  | Próba ciœnieniowa – Sekcja 13 | 5d | 2027-11-04 | 2027-11-10 | 26CG51-088 |  | 52.3d |
| 26CG51-090 |  | Izolacje – Sekcja 13 | 12d | 2027-11-11 | 2027-11-26 | 26CG51-089 |  | 52.3d |
| 26CG51-091 |  | Malowanie i oznakowanie – Sekcja 13 | 8d | 2027-11-19 | 2027-11-30 | 26CG51-090 FF+2d |  | 52.3d |
|  | SEKCJA 14 | **Sekcja 14** |  | 2026-03-19 | 2027-11-09 |  |  |  |
| 26CG51-092 |  | Prefabrykacja ruroci¹gów – Sekcja 14 | 11.8d | 2026-03-19 A | 2026-04-02 A | 26CG51-012, 26CG51-087 SS+5d | 100% |  |
| 26CG51-093 |  | Monta¿ ruroci¹gów – Sekcja 14 | 12.5d | 2027-10-08 | 2027-10-26 | 26CG51-092, 26CG51-014 SS+7d |  | 67.9d |
| 26CG51-094 |  | Próba ciœnieniowa – Sekcja 14 | 4d | 2027-10-27 | 2027-11-01 | 26CG51-093 |  | 67.9d |
| 26CG51-095 |  | Izolacje – Sekcja 14 | 4d | 2027-11-02 | 2027-11-05 | 26CG51-094 |  | 67.9d |
| 26CG51-096 |  | Malowanie i oznakowanie – Sekcja 14 | 4d | 2027-11-04 | 2027-11-09 | 26CG51-095 FF+2d |  | 67.9d |
|  | SEKCJA 15 | **Sekcja 15** |  | 2026-03-27 | 2027-11-22 |  |  |  |
|  | PODSEKCJA | **Podsekcja 15.A** |  | 2026-03-27 | 2027-11-22 |  |  |  |
| 26CG51-099 |  | Prefabrykacja ruroci¹gów – Sekcja 15 | 6.5d | 2026-03-27 A | 2026-04-08 A | 26CG51-012, 26CG51-092 SS+5d | 100% |  |
| 26CG51-100 |  | Monta¿ ruroci¹gów – Sekcja 15 | 24.4d | 2027-10-05 | 2027-11-05 | 26CG51-099, 26CG51-014 SS+4d |  | 58d |
| 26CG51-101 |  | Próba ciœnieniowa – Sekcja 15 | 6d | 2027-11-08 | 2027-11-15 | 26CG51-100 |  | 58d |
| 26CG51-103 |  | Malowanie i oznakowanie – Sekcja 15 | 8d | 2027-11-11 | 2027-11-22 | 26CG51-102 FF+2d |  | 58d |
| 26CG51-102 |  | Izolacje – Sekcja 15 | 3d | 2027-11-16 | 2027-11-18 | 26CG51-101 |  | 58d |
|  | SEKCJA 16 | **Sekcja 16** |  | 2026-03-31 | 2027-11-11 |  |  |  |
| 26CG51-104 |  | Prefabrykacja ruroci¹gów – Sekcja 16 | 4.4d | 2026-03-31 A | 2026-09-30 | 26CG51-012, 26CG51-099 SS+5d | 77% | 382d |
| 26CG51-105 |  | Monta¿ ruroci¹gów – Sekcja 16 | 14d | 2027-09-30 | 2027-10-19 | 26CG51-104, 26CG51-014 SS+1d |  | 17.4d |
| 26CG51-106 |  | Próba ciœnieniowa – Sekcja 16 | 6d | 2027-10-20 | 2027-10-27 | 26CG51-105 |  | 17.4d |
| 26CG51-107 |  | Izolacje – Sekcja 16 | 9d | 2027-10-28 | 2027-11-09 | 26CG51-106 |  | 17.4d |
| 26CG51-108 |  | Malowanie i oznakowanie – Sekcja 16 | 8d | 2027-11-02 | 2027-11-11 | 26CG51-107 FF+2d |  | 17.4d |
|  | SEKCJA 17 | **Sekcja 17** |  | 2026-04-06 | 2027-12-03 |  |  |  |
| 26CG51-111 |  | Prefabrykacja ruroci¹gów – Sekcja 17 | 11.9d | 2026-04-06 A | 2026-04-21 A | 26CG51-012, 26CG51-104 SS+5d | 100% |  |
| 26CG51-112 |  | Monta¿ ruroci¹gów – Sekcja 17 | 25d | 2027-10-07 | 2027-11-10 | 26CG51-111, 26CG51-014 SS+6d |  | 1.4d |
| 26CG51-113 |  | Próba ciœnieniowa – Sekcja 17 | 6d | 2027-11-11 | 2027-11-18 | 26CG51-112 |  | 1.4d |
| 26CG51-114 |  | Izolacje – Sekcja 17 | 9d | 2027-11-19 | 2027-12-01 | 26CG51-113 |  | 1.4d |
| 26CG51-115 |  | Malowanie i oznakowanie – Sekcja 17 | 2d | 2027-12-02 | 2027-12-03 | 26CG51-114 FF+2d |  | 1.4d |
|  | PROJ | **Projektowanie** |  | 2025-05-07 | 2025-09-24 |  |  |  |
|  | DOKUMENTAC | **Dokumentacja** |  | 2025-05-07 | 2025-09-24 |  |  |  |

| ID | WBS | Task | Duration | Start | Finish | Predecessors | Complete | Total float |
| --- | --- | --- | --- | --- | --- | --- | --- | --- |
| 26CG51-001 |  | Projekt wykonawczy – Ogrodzenie i monitoring | 62d | 2025-05-07 A | 2025-08-05 A |  | 100% |  |
| 26CG51-002 |  | Uzgodnienie dokumentacji z Inwestorem | 22d | 2025-08-05 A | 2025-09-04 A | 26CG51-001 | 100% |  |
| 26CG51-003 |  | Zatwierdzenie dokumentacji do realizacji | 15d | 2025-09-03 A | 2025-09-23 A | 26CG51-002 | 100% |  |
| 26CG51-004 |  | KM: Dokumentacja zatwierdzona – Ogrodzenie i monitoring | 0d | 2025-09-24 A | 2025-09-24 | 26CG51-003 | 100% |  |
|  | ROZR | **Rozruch** |  | 2027-12-07 | 2028-01-28 |  |  |  |
|  | ROZRUCH | **Rozruch** |  | 2027-12-07 | 2028-01-28 |  |  |  |
| 26CG51-118 |  | Przegl¹d gotowoœci do rozruchu | 8d | 2027-12-07 | 2027-12-16 | 26CG51-117, 26CG51-019, 26CG51-024, 26CG51-026 |  | 0d |
| 26CG51-119 |  | Rozruch na zimno | 7d | 2027-12-17 | 2027-12-27 | 26CG51-118 |  | 0d |
| 26CG51-120 |  | Rozruch na gor¹co / próby ruchowe | 23d | 2027-12-28 | 2028-01-27 | 26CG51-119 |  | 0d |
| 26CG51-121 |  | KM: Odbiór koñcowy – Ogrodzenie i monitoring | 0d | 2028-01-28 | 2028-01-28 | 26CG51-120 |  | 0d |
|  | ZAKU | **Zakupy** |  | 2025-06-04 | 2027-09-29 |  |  |  |
|  | DOSTAWY | **Dostawy** |  | 2025-10-08 | 2027-09-29 |  |  |  |
| 26CG51-008 |  | Produkcja u dostawcy | 278d | 2025-10-08 A | 2027-08-10 | 26CG51-007 | 19% | 202.5d |
| 26CG51-009 |  | Testy FAT | 5d | 2027-08-11 | 2027-08-17 | 26CG51-008 |  | 0d |
| 26CG51-010 |  | Transport i dostawa na plac budowy | 30d | 2027-08-18 | 2027-09-28 | 26CG51-009 |  | 0d |
| 26CG51-011 |  | KM: Dostawa na budowê – Ogrodzenie i monitoring | 0d | 2027-09-29 | 2027-09-29 | 26CG51-010 |  | 0d |
|  | ZAMÓWIENIA | **Zamówienia** |  | 2025-06-04 | 2025-10-03 |  |  |  |
| 26CG51-005 |  | Zapytanie ofertowe | 19d | 2025-06-04 A | 2025-06-30 A | 26CG51-001 SS+20d | 100% |  |
| 26CG51-006 |  | Analiza i wybór ofert | 14d | 2025-07-07 A | 2025-07-24 A | 26CG51-005 | 100% |  |
| 26CG51-007 |  | Zawarcie umowy / zamówienie | 8d | 2025-09-23 A | 2025-10-03 A | 26CG51-006, 26CG51-004 SS, 10YD43-004 FS+2d, 28BP20-004 SS+11d | 100% |  |
|  | 28AM31 | **28AM31 – Drogi i place** |  | 2025-04-04 | 2027-11-09 |  |  |  |
|  | BUDO | **Budowa** |  | 2025-11-05 | 2027-10-14 |  |  |  |
|  | AKPIA | **AKPiA** |  | 2027-08-18 | 2027-09-06 |  |  |  |
| 28AM31-104 |  | Monta¿ uk³adów AKPiA | 14d | 2027-08-18 | 2027-09-06 | 28AM31-014 SS+5d |  | 81.1d |
|  | ELEKTRYKA | **Elektryka** |  | 2027-08-23 | 2027-09-21 |  |  |  |
| 28AM31-074 |  | Pod³¹czenia i pomiary – trasa 10 | 9d | 2027-08-23 | 2027-09-02 | 28AM31-073 FF |  | 115.1d |
| 28AM31-086 |  | Pod³¹czenia i pomiary – trasa 12 | 5d | 2027-08-24 | 2027-08-30 | 28AM31-085 FF |  | 118.1d |
| 28AM31-025 |  | Uk³adanie kabli – trasa 02 | 6d | 2027-08-25 | 2027-09-01 | 28AM31-014 SS+10d |  | 84.1d |
| 28AM31-026 |  | Pod³¹czenia i pomiary – trasa 02 | 6d | 2027-08-25 | 2027-09-01 | 28AM31-025 FF |  | 84.1d |
| 28AM31-037 |  | Uk³adanie kabli – trasa 04 | 13d | 2027-08-25 | 2027-09-10 | 28AM31-014 SS+10d |  | 109.1d |
| 28AM31-049 |  | Uk³adanie kabli – trasa 06 | 12d | 2027-08-25 | 2027-09-09 | 28AM31-014 SS+10d |  | 110.1d |
| 28AM31-061 |  | Uk³adanie kabli – trasa 08 | 20d | 2027-08-25 | 2027-09-21 | 28AM31-014 SS+10d |  | 102.1d |
| 28AM31-073 |  | Uk³adanie kabli – trasa 10 | 7d | 2027-08-25 | 2027-09-02 | 28AM31-014 SS+10d |  | 115.1d |
| 28AM31-085 |  | Uk³adanie kabli – trasa 12 | 4d | 2027-08-25 | 2027-08-30 | 28AM31-014 SS+10d |  | 118.1d |
| 28AM31-097 |  | Uk³adanie kabli – trasa 14 | 12d | 2027-08-25 | 2027-09-09 | 28AM31-014 SS+10d |  | 78.1d |
| 28AM31-050 |  | Pod³¹czenia i pomiary – trasa 06 | 8d | 2027-08-31 | 2027-09-09 | 28AM31-049 FF |  | 110.1d |
| 28AM31-098 |  | Pod³¹czenia i pomiary – trasa 14 | 4d | 2027-09-06 | 2027-09-09 | 28AM31-097 FF |  | 78.1d |
| 28AM31-038 |  | Pod³¹czenia i pomiary – trasa 04 | 4d | 2027-09-07 | 2027-09-10 | 28AM31-037 FF |  | 109.1d |
| 28AM31-062 |  | Pod³¹czenia i pomiary – trasa 08 | 4d | 2027-09-16 | 2027-09-21 | 28AM31-061 FF |  | 102.1d |
|  | MONTA¯ | **Monta¿** |  | 2025-12-15 | 2027-10-08 |  |  |  |
| 28AM31-013 |  | Monta¿ konstrukcji stalowych | 41d | 2025-12-15 A | 2026-02-11 A | 28AM31-012 | 100% |  |
| 28AM31-014 |  | Monta¿ urz¹dzeñ g³ównych | 42d | 2027-08-11 | 2027-10-07 | 28AM31-013, 28AM31-011 |  | 58.1d |
| 28AM31-105 |  | KM: Zakoñczenie monta¿u – Drogi i place | 0d | 2027-10-08 | 2027-10-08 | 28AM31-096, 28AM31-098, 28AM31-103, 28AM31-104, 28AM31-014 |  | 58.1d |
|  | ROBOTY BUD | **Roboty budowlane** |  | 2025-11-05 | 2025-12-16 |  |  |  |
| 28AM31-012 |  | Fundamenty i roboty ziemne | 27d | 2025-11-05 A | 2025-12-16 A | 28AM31-007 FS+20d | 100% |  |
|  | RUROCI¥GI | **Ruroci¹gi** |  | 2025-12-11 | 2027-10-14 |  |  |  |
|  | SEKCJA 01 | **Sekcja 01** |  | 2025-12-11 | 2027-09-08 |  |  |  |
| 28AM31-015 |  | Prefabrykacja ruroci¹gów – Sekcja 01 | 12.2d | 2025-12-11 A | 2025-12-30 A | 28AM31-012 | 100% |  |
| 28AM31-016 |  | Monta¿ ruroci¹gów – Sekcja 01 | 8.2d | 2027-08-11 | 2027-08-23 | 28AM31-015, 28AM31-014 SS |  | 79.9d |
| 28AM31-017 |  | Próba ciœnieniowa – Sekcja 01 | 6d | 2027-08-24 | 2027-08-31 | 28AM31-016 |  | 79.9d |
| 28AM31-018 |  | Izolacje – Sekcja 01 | 4d | 2027-09-01 | 2027-09-06 | 28AM31-017 |  | 79.9d |
| 28AM31-019 |  | Malowanie i oznakowanie – Sekcja 01 | 3d | 2027-09-06 | 2027-09-08 | 28AM31-018 FF+2d |  | 79.9d |
|  | SEKCJA 02 | **Sekcja 02** |  | 2025-12-18 | 2027-09-17 |  |  |  |
| 28AM31-020 |  | Prefabrykacja ruroci¹gów – Sekcja 02 | 4.4d | 2025-12-18 A | 2025-12-23 A | 28AM31-012, 28AM31-015 SS+5d | 100% |  |
| 28AM31-021 |  | Monta¿ ruroci¹gów – Sekcja 02 | 12.9d | 2027-08-13 | 2027-08-31 | 28AM31-020, 28AM31-014 SS+2d |  | 72.2d |
| 28AM31-022 |  | Próba ciœnieniowa – Sekcja 02 | 2d | 2027-09-01 | 2027-09-02 | 28AM31-021 |  | 72.2d |
| 28AM31-023 |  | Izolacje – Sekcja 02 | 9d | 2027-09-03 | 2027-09-15 | 28AM31-022 |  | 72.2d |
| 28AM31-024 |  | Malowanie i oznakowanie – Sekcja 02 | 3d | 2027-09-15 | 2027-09-17 | 28AM31-023 FF+2d |  | 72.2d |
|  | SEKCJA 03 | **Sekcja 03** |  | 2025-12-26 | 2027-09-29 |  |  |  |
|  | PODSEKCJA | **Podsekcja 03.A** |  | 2025-12-26 | 2027-09-29 |  |  |  |
| 28AM31-027 |  | Prefabrykacja ruroci¹gów – Sekcja 03 | 12.5d | 2025-12-26 A | 2026-01-15 A | 28AM31-012, 28AM31-020 SS+5d | 100% |  |
| 28AM31-028 |  | Monta¿ ruroci¹gów – Sekcja 03 | 14.9d | 2027-08-19 | 2027-09-08 | 28AM31-027, 28AM31-014 SS+6d |  | 96.2d |
| 28AM31-029 |  | Próba ciœnieniowa – Sekcja 03 | 4d | 2027-09-09 | 2027-09-14 | 28AM31-028 |  | 96.2d |
| 28AM31-030 |  | Izolacje – Sekcja 03 | 9d | 2027-09-15 | 2027-09-27 | 28AM31-029 |  | 96.2d |
| 28AM31-031 |  | Malowanie i oznakowanie – Sekcja 03 | 4d | 2027-09-24 | 2027-09-29 | 28AM31-030 FF+2d |  | 96.2d |
|  | SEKCJA 04 | **Sekcja 04** |  | 2026-01-02 | 2027-09-22 |  |  |  |
| 28AM31-032 |  | Prefabrykacja ruroci¹gów – Sekcja 04 | 6.1d | 2026-01-02 A | 2026-01-09 A | 28AM31-012, 28AM31-027 SS+5d | 100% |  |
| 28AM31-033 |  | Monta¿ ruroci¹gów – Sekcja 04 | 8.5d | 2027-08-18 | 2027-08-30 | 28AM31-032, 28AM31-014 SS+5d |  | 101.6d |
| 28AM31-034 |  | Próba ciœnieniowa – Sekcja 04 | 6d | 2027-08-31 | 2027-09-07 | 28AM31-033 |  | 101.6d |
| 28AM31-035 |  | Izolacje – Sekcja 04 | 9d | 2027-09-08 | 2027-09-20 | 28AM31-034 |  | 101.6d |

| ID | WBS | Task | Duration | Start | Finish | Predecessors | Complete | Total float |
| --- | --- | --- | --- | --- | --- | --- | --- | --- |
| 28AM31-036 |  | Malowanie i oznakowanie – Sekcja 04 | 8d | 2027-09-13 | 2027-09-22 | 28AM31-035 FF+2d |  | 101.6d |
|  | SEKCJA 05 | **Sekcja 05** |  | 2026-01-13 | 2027-09-15 |  |  |  |
| 28AM31-039 |  | Prefabrykacja ruroci¹gów – Sekcja 05 | 6.4d | 2026-01-13 A | 2026-01-23 A | 28AM31-012, 28AM31-032 SS+5d | 100% |  |
| 28AM31-040 |  | Monta¿ ruroci¹gów – Sekcja 05 | 8d | 2027-08-20 | 2027-08-31 | 28AM31-039, 28AM31-014 SS+7d |  | 106.1d |
| 28AM31-041 |  | Próba ciœnieniowa – Sekcja 05 | 2d | 2027-09-01 | 2027-09-02 | 28AM31-040 |  | 106.1d |
| 28AM31-042 |  | Izolacje – Sekcja 05 | 7d | 2027-09-03 | 2027-09-13 | 28AM31-041 |  | 106.1d |
| 28AM31-043 |  | Malowanie i oznakowanie – Sekcja 05 | 2d | 2027-09-14 | 2027-09-15 | 28AM31-042 FF+2d |  | 106.1d |
|  | SEKCJA 06 | **Sekcja 06** |  | 2026-01-20 | 2027-10-04 |  |  |  |
|  | PODSEKCJA | **Podsekcja 06.A** |  | 2026-01-20 | 2027-10-04 |  |  |  |
| 28AM31-044 |  | Prefabrykacja ruroci¹gów – Sekcja 06 | 5.1d | 2026-01-20 A | 2026-01-26 A | 28AM31-012, 28AM31-039 SS+5d | 100% |  |
| 28AM31-045 |  | Monta¿ ruroci¹gów – Sekcja 06 | 16.4d | 2027-08-23 | 2027-09-14 | 28AM31-044, 28AM31-014 SS+8d |  | 93.7d |
| 28AM31-046 |  | Próba ciœnieniowa – Sekcja 06 | 2d | 2027-09-15 | 2027-09-16 | 28AM31-045 |  | 93.7d |
| 28AM31-047 |  | Izolacje – Sekcja 06 | 10d | 2027-09-17 | 2027-09-30 | 28AM31-046 |  | 93.7d |
| 28AM31-048 |  | Malowanie i oznakowanie – Sekcja 06 | 5d | 2027-09-28 | 2027-10-04 | 28AM31-047 FF+2d |  | 93.7d |
|  | SEKCJA 07 | **Sekcja 07** |  | 2026-01-23 | 2027-09-27 |  |  |  |
| 28AM31-051 |  | Prefabrykacja ruroci¹gów – Sekcja 07 | 14.5d | 2026-01-23 A | 2026-02-12 A | 28AM31-012, 28AM31-044 SS+5d | 100% |  |
| 28AM31-052 |  | Monta¿ ruroci¹gów – Sekcja 07 | 10.5d | 2027-08-20 | 2027-09-03 | 28AM31-051, 28AM31-014 SS+7d |  | 98.6d |
| 28AM31-053 |  | Próba ciœnieniowa – Sekcja 07 | 6d | 2027-09-06 | 2027-09-13 | 28AM31-052 |  | 98.6d |
| 28AM31-054 |  | Izolacje – Sekcja 07 | 8d | 2027-09-14 | 2027-09-23 | 28AM31-053 |  | 98.6d |
| 28AM31-055 |  | Malowanie i oznakowanie – Sekcja 07 | 5d | 2027-09-21 | 2027-09-27 | 28AM31-054 FF+2d |  | 98.6d |
|  | SEKCJA 08 | **Sekcja 08** |  | 2026-02-03 | 2027-09-17 |  |  |  |
| 28AM31-056 |  | Prefabrykacja ruroci¹gów – Sekcja 08 | 6.5d | 2026-02-03 A | 2026-02-10 A | 28AM31-012, 28AM31-051 SS+5d | 100% |  |
| 28AM31-057 |  | Monta¿ ruroci¹gów – Sekcja 08 | 11.6d | 2027-08-12 | 2027-08-27 | 28AM31-056, 28AM31-014 SS+1d |  | 104.5d |
| 28AM31-058 |  | Próba ciœnieniowa – Sekcja 08 | 2d | 2027-08-30 | 2027-08-31 | 28AM31-057 |  | 104.5d |
| 28AM31-059 |  | Izolacje – Sekcja 08 | 11d | 2027-09-01 | 2027-09-15 | 28AM31-058 |  | 104.5d |
| 28AM31-060 |  | Malowanie i oznakowanie – Sekcja 08 | 5d | 2027-09-13 | 2027-09-17 | 28AM31-059 FF+2d |  | 104.5d |
|  | SEKCJA 09 | **Sekcja 09** |  | 2026-02-10 | 2027-10-13 |  |  |  |
|  | PODSEKCJA | **Podsekcja 09.A** |  | 2026-02-10 | 2027-10-13 |  |  |  |
| 28AM31-063 |  | Prefabrykacja ruroci¹gów – Sekcja 09 | 9.8d | 2026-02-10 A | 2026-02-23 A | 28AM31-012, 28AM31-056 SS+5d | 100% |  |
| 28AM31-064 |  | Monta¿ ruroci¹gów – Sekcja 09 | 20.5d | 2027-08-24 | 2027-09-21 | 28AM31-063, 28AM31-014 SS+9d |  | 86.6d |
| 28AM31-065 |  | Próba ciœnieniowa – Sekcja 09 | 2d | 2027-09-22 | 2027-09-23 | 28AM31-064 |  | 86.6d |
| 28AM31-066 |  | Izolacje – Sekcja 09 | 12d | 2027-09-24 | 2027-10-11 | 28AM31-065 |  | 86.6d |
| 28AM31-067 |  | Malowanie i oznakowanie – Sekcja 09 | 3d | 2027-10-11 | 2027-10-13 | 28AM31-066 FF+2d |  | 86.6d |
|  | SEKCJA 10 | **Sekcja 10** |  | 2026-02-13 | 2027-09-30 |  |  |  |
| 28AM31-068 |  | Prefabrykacja ruroci¹gów – Sekcja 10 | 7.5d | 2026-02-13 A | 2026-02-24 A | 28AM31-012, 28AM31-063 SS+5d | 100% |  |
| 28AM31-069 |  | Monta¿ ruroci¹gów – Sekcja 10 | 11.3d | 2027-08-20 | 2027-09-06 | 28AM31-068, 28AM31-014 SS+7d |  | 95.8d |
| 28AM31-070 |  | Próba ciœnieniowa – Sekcja 10 | 4d | 2027-09-07 | 2027-09-10 | 28AM31-069 |  | 95.8d |
| 28AM31-071 |  | Izolacje – Sekcja 10 | 12d | 2027-09-13 | 2027-09-28 | 28AM31-070 |  | 95.8d |
| 28AM31-072 |  | Malowanie i oznakowanie – Sekcja 10 | 5d | 2027-09-24 | 2027-09-30 | 28AM31-071 FF+2d |  | 95.8d |
|  | SEKCJA 11 | **Sekcja 11** |  | 2026-02-20 | 2027-09-22 |  |  |  |
| 28AM31-075 |  | Prefabrykacja ruroci¹gów – Sekcja 11 | 5d | 2026-02-20 A | 2026-02-27 A | 28AM31-012, 28AM31-068 SS+5d | 100% |  |
| 28AM31-076 |  | Monta¿ ruroci¹gów – Sekcja 11 | 9.1d | 2027-08-18 | 2027-08-30 | 28AM31-075, 28AM31-014 SS+5d |  | 101d |
| 28AM31-077 |  | Próba ciœnieniowa – Sekcja 11 | 5d | 2027-08-31 | 2027-09-06 | 28AM31-076 |  | 101d |
| 28AM31-078 |  | Izolacje – Sekcja 11 | 10d | 2027-09-07 | 2027-09-20 | 28AM31-077 |  | 101d |
| 28AM31-079 |  | Malowanie i oznakowanie – Sekcja 11 | 4d | 2027-09-17 | 2027-09-22 | 28AM31-078 FF+2d |  | 101d |
|  | SEKCJA 12 | **Sekcja 12** |  | 2026-03-03 | 2027-10-05 |  |  |  |
|  | PODSEKCJA | **Podsekcja 12.A** |  | 2026-03-03 | 2027-10-05 |  |  |  |
| 28AM31-080 |  | Prefabrykacja ruroci¹gów – Sekcja 12 | 14.3d | 2026-03-03 A | 2026-03-24 A | 28AM31-012, 28AM31-075 SS+5d | 100% |  |
| 28AM31-081 |  | Monta¿ ruroci¹gów – Sekcja 12 | 21.9d | 2027-08-24 | 2027-09-22 | 28AM31-080, 28AM31-014 SS+9d |  | 92.2d |
| 28AM31-082 |  | Próba ciœnieniowa – Sekcja 12 | 3d | 2027-09-23 | 2027-09-27 | 28AM31-081 |  | 92.2d |
| 28AM31-084 |  | Malowanie i oznakowanie – Sekcja 12 | 8d | 2027-09-24 | 2027-10-05 | 28AM31-083 FF+2d |  | 92.2d |
| 28AM31-083 |  | Izolacje – Sekcja 12 | 4d | 2027-09-28 | 2027-10-01 | 28AM31-082 |  | 92.2d |
|  | SEKCJA 13 | **Sekcja 13** |  | 2026-03-10 | 2027-10-14 |  |  |  |
| 28AM31-087 |  | Prefabrykacja ruroci¹gów – Sekcja 13 | 5d | 2026-03-10 A | 2026-03-18 A | 28AM31-012, 28AM31-080 SS+5d | 100% |  |
| 28AM31-088 |  | Monta¿ ruroci¹gów – Sekcja 13 | 21.1d | 2027-08-23 | 2027-09-20 | 28AM31-087, 28AM31-014 SS+8d |  | 85d |
| 28AM31-089 |  | Próba ciœnieniowa – Sekcja 13 | 6d | 2027-09-21 | 2027-09-28 | 28AM31-088 |  | 85d |
| 28AM31-090 |  | Izolacje – Sekcja 13 | 10d | 2027-09-29 | 2027-10-12 | 28AM31-089 |  | 85d |
| 28AM31-091 |  | Malowanie i oznakowanie – Sekcja 13 | 6d | 2027-10-07 | 2027-10-14 | 28AM31-090 FF+2d |  | 85d |
|  | SEKCJA 14 | **Sekcja 14** |  | 2026-03-12 | 2027-09-10 |  |  |  |
| 28AM31-092 |  | Prefabrykacja ruroci¹gów – Sekcja 14 | 5.5d | 2026-03-12 A | 2026-03-20 A | 28AM31-012, 28AM31-087 SS+5d | 100% |  |
| 28AM31-093 |  | Monta¿ ruroci¹gów – Sekcja 14 | 8.8d | 2027-08-18 | 2027-08-30 | 28AM31-092, 28AM31-014 SS+5d |  | 77.3d |
| 28AM31-094 |  | Próba ciœnieniowa – Sekcja 14 | 3d | 2027-08-31 | 2027-09-02 | 28AM31-093 |  | 77.3d |
| 28AM31-095 |  | Izolacje – Sekcja 14 | 4d | 2027-09-03 | 2027-09-08 | 28AM31-094 |  | 77.3d |
| 28AM31-096 |  | Malowanie i oznakowanie – Sekcja 14 | 6d | 2027-09-03 | 2027-09-10 | 28AM31-095 FF+2d |  | 77.3d |
|  | SEKCJA 15 | **Sekcja 15** |  | 2026-03-18 | 2027-09-29 |  |  |  |
|  | PODSEKCJA | **Podsekcja 15.A** |  | 2026-03-18 | 2027-09-29 |  |  |  |
| 28AM31-099 |  | Prefabrykacja ruroci¹gów – Sekcja 15 | 13.8d | 2026-03-18 A | 2026-04-07 A | 28AM31-012, 28AM31-092 SS+5d | 100% |  |
| 28AM31-100 |  | Monta¿ ruroci¹gów – Sekcja 15 | 24.5d | 2027-08-17 | 2027-09-20 | 28AM31-099, 28AM31-014 SS+4d |  | 64.6d |
| 28AM31-101 |  | Próba ciœnieniowa – Sekcja 15 | 2d | 2027-09-21 | 2027-09-22 | 28AM31-100 |  | 64.6d |
| 28AM31-102 |  | Izolacje – Sekcja 15 | 3d | 2027-09-23 | 2027-09-27 | 28AM31-101 |  | 64.6d |

| ID | WBS | Task | Duration | Start | Finish | Predecessors | Complete | Total float |
| --- | --- | --- | --- | --- | --- | --- | --- | --- |
| 28AM31-103 |  | Malowanie i oznakowanie – Sekcja 15 | 5d | 2027-09-23 | 2027-09-29 | 28AM31-102 FF+2d |  | 64.6d |
|  | PROJ | **Projektowanie** |  | 2025-04-04 | 2025-07-31 |  |  |  |
|  | DOKUMENTAC | **Dokumentacja** |  | 2025-04-04 | 2025-07-31 |  |  |  |
| 28AM31-001 |  | Projekt wykonawczy – Drogi i place | 45d | 2025-04-04 A | 2025-06-06 A |  | 100% |  |
| 28AM31-002 |  | Uzgodnienie dokumentacji z Inwestorem | 24d | 2025-06-02 A | 2025-07-04 A | 28AM31-001 | 100% |  |
| 28AM31-003 |  | Zatwierdzenie dokumentacji do realizacji | 15d | 2025-07-08 A | 2025-07-30 A | 28AM31-002 | 100% |  |
| 28AM31-004 |  | KM: Dokumentacja zatwierdzona – Drogi i place | 0d | 2025-07-31 A | 2025-07-31 | 28AM31-003 | 100% |  |
|  | ROZR | **Rozruch** |  | 2027-10-08 | 2027-11-09 |  |  |  |
|  | ROZRUCH | **Rozruch** |  | 2027-10-08 | 2027-11-09 |  |  |  |
| 28AM31-106 |  | Przegl¹d gotowoœci do rozruchu | 4d | 2027-10-08 | 2027-10-13 | 28AM31-105, 28AM31-019, 28AM31-024, 28AM31-026 |  | 58.1d |
| 28AM31-107 |  | Rozruch na zimno | 6d | 2027-10-14 | 2027-10-21 | 28AM31-106 |  | 58.1d |
| 28AM31-108 |  | Rozruch na gor¹co / próby ruchowe | 12d | 2027-10-22 | 2027-11-08 | 28AM31-107 |  | 58.1d |
| 28AM31-109 |  | KM: Odbiór koñcowy – Drogi i place | 0d | 2027-11-09 | 2027-11-09 | 28AM31-108 |  | 58.1d |
|  | ZAKU | **Zakupy** |  | 2025-04-30 | 2027-08-11 |  |  |  |
|  | DOSTAWY | **Dostawy** |  | 2025-10-08 | 2027-08-11 |  |  |  |
| 28AM31-008 |  | Produkcja u dostawcy | 277d | 2025-10-08 A | 2027-06-11 | 28AM31-007 | 34% | 219.9d |
| 28AM31-009 |  | Testy FAT | 6d | 2027-06-14 | 2027-06-21 | 28AM31-008 |  | 58.1d |
| 28AM31-010 |  | Transport i dostawa na plac budowy | 36d | 2027-06-22 | 2027-08-10 | 28AM31-009 |  | 58.1d |
| 28AM31-011 |  | KM: Dostawa na budowê – Drogi i place | 0d | 2027-08-11 | 2027-08-11 | 28AM31-010 |  | 58.1d |
|  | ZAMÓWIENIA | **Zamówienia** |  | 2025-04-30 | 2025-10-07 |  |  |  |
| 28AM31-005 |  | Zapytanie ofertowe | 23d | 2025-04-30 A | 2025-06-02 A | 28AM31-001 SS+20d | 100% |  |
| 28AM31-006 |  | Analiza i wybór ofert | 19d | 2025-06-04 A | 2025-07-01 A | 28AM31-005 | 100% |  |
| 28AM31-007 |  | Zawarcie umowy / zamówienie | 8d | 2025-09-26 A | 2025-10-07 A | 28AM31-006, 28AM31-004 SS, 10BW45-004 FS+4d | 100% |  |
|  | 28YY90 | **28YY90 – Warsztat** |  | 2025-05-20 | 2026-11-23 |  |  |  |
|  | BUDO | **Budowa** |  | 2026-01-20 | 2026-11-16 |  |  |  |
|  | AKPIA | **AKPiA** |  | 2026-08-28 | 2026-09-29 |  |  |  |
| 28YY90-111 |  | Monta¿ uk³adów AKPiA | 25d | 2026-08-28 A | 2026-09-29 A | 28YY90-014 SS+5d | 100% |  |
|  | ELEKTRYKA | **Elektryka** |  | 2026-08-28 | 2026-10-13 |  |  |  |
| 28YY90-050 |  | Pod³¹czenia i pomiary – trasa 06 | 9d | 2026-08-28 A | 2026-09-10 A | 28YY90-049 FF | 100% |  |
| 28YY90-025 |  | Uk³adanie kabli – trasa 02 | 16d | 2026-09-02 A | 2026-09-28 A | 28YY90-014 SS+10d | 100% |  |
| 28YY90-037 |  | Uk³adanie kabli – trasa 04 | 9d | 2026-09-02 A | 2026-09-15 A | 28YY90-014 SS+10d | 100% |  |
| 28YY90-098 |  | Pod³¹czenia i pomiary – trasa 14 | 4d | 2026-09-04 A | 2026-09-11 A | 28YY90-097 FF | 100% |  |
| 28YY90-062 |  | Pod³¹czenia i pomiary – trasa 08 | 5d | 2026-09-07 A | 2026-09-14 A | 28YY90-061 FF | 100% |  |
| 28YY90-061 |  | Uk³adanie kabli – trasa 08 | 7d | 2026-09-08 A | 2026-09-21 A | 28YY90-014 SS+10d | 100% |  |
| 28YY90-073 |  | Uk³adanie kabli – trasa 10 | 17d | 2026-09-08 A | 2026-09-29 A | 28YY90-014 SS+10d | 100% |  |
| 28YY90-085 |  | Uk³adanie kabli – trasa 12 | 4d | 2026-09-08 A | 2026-09-16 A | 28YY90-014 SS+10d | 100% |  |
| 28YY90-097 |  | Uk³adanie kabli – trasa 14 | 5d | 2026-09-08 A | 2026-09-17 A | 28YY90-014 SS+10d | 100% |  |
| 28YY90-109 |  | Uk³adanie kabli – trasa 16 | 15d | 2026-09-08 A | 2026-09-28 A | 28YY90-014 SS+10d | 100% |  |
| 28YY90-049 |  | Uk³adanie kabli – trasa 06 | 5d | 2026-09-09 A | 2026-10-02 | 28YY90-014 SS+10d | 24% | 367.9d |
| 28YY90-038 |  | Pod³¹czenia i pomiary – trasa 04 | 5d | 2026-09-10 A | 2026-09-17 A | 28YY90-037 FF | 100% |  |
| 28YY90-026 |  | Pod³¹czenia i pomiary – trasa 02 | 5d | 2026-09-17 A | 2026-09-25 A | 28YY90-025 FF | 100% |  |
| 28YY90-074 |  | Pod³¹czenia i pomiary – trasa 10 | 3d | 2026-09-28 A | 2026-09-29 A | 28YY90-073 FF | 100% |  |
| 28YY90-086 |  | Pod³¹czenia i pomiary – trasa 12 | 10d | 2026-09-30 | 2026-10-13 | 28YY90-085 FF |  | 347.9d |
| 28YY90-110 |  | Pod³¹czenia i pomiary – trasa 16 | 5d | 2026-09-30 | 2026-10-06 | 28YY90-109 FF |  | 320.9d |
|  | MONTA¯ | **Monta¿** |  | 2026-02-23 | 2026-10-22 |  |  |  |
| 28YY90-013 |  | Monta¿ konstrukcji stalowych | 25d | 2026-02-23 A | 2026-10-20 | 28YY90-012 | 38% | 414.5d |
| 28YY90-014 |  | Monta¿ urz¹dzeñ g³ównych | 32d | 2026-08-20 A | 2026-10-21 | 28YY90-013, 28YY90-011 | 48% | 311.5d |
| 28YY90-112 |  | KM: Zakoñczenie monta¿u – Warsztat | 0d | 2026-10-22 | 2026-10-22 | 28YY90-103, 28YY90-108, 28YY90-110, 28YY90-111, 28YY90-014 |  | 309.2d |
|  | ROBOTY BUD | **Roboty budowlane** |  | 2026-01-20 | 2026-10-09 |  |  |  |
| 28YY90-012 |  | Fundamenty i roboty ziemne | 26d | 2026-01-20 A | 2026-10-09 | 28YY90-007 FS+6d | 69% | 357.2d |
|  | RUROCI¥GI | **Ruroci¹gi** |  | 2026-02-24 | 2026-11-16 |  |  |  |
|  | SEKCJA 01 | **Sekcja 01** |  | 2026-02-24 | 2026-10-09 |  |  |  |
| 28YY90-015 |  | Prefabrykacja ruroci¹gów – Sekcja 01 | 6.7d | 2026-02-24 A | 2026-03-06 A | 28YY90-012 | 100% |  |
| 28YY90-016 |  | Monta¿ ruroci¹gów – Sekcja 01 | 24.3d | 2026-08-26 A | 2026-09-29 A | 28YY90-015, 28YY90-014 SS+4d | 100% |  |
| 28YY90-017 |  | Próba ciœnieniowa – Sekcja 01 | 6d | 2026-09-30 A | 2026-09-30 | 28YY90-016 | 78% | 312.9d |
| 28YY90-019 |  | Malowanie i oznakowanie – Sekcja 01 | 8d | 2026-09-30 | 2026-10-09 | 28YY90-018 FF+2d |  | 317.6d |
| 28YY90-018 |  | Izolacje – Sekcja 01 | 5d | 2026-10-01 | 2026-10-07 | 28YY90-017 |  | 317.6d |
|  | SEKCJA 02 | **Sekcja 02** |  | 2026-02-26 | 2026-09-18 |  |  |  |
| 28YY90-020 |  | Prefabrykacja ruroci¹gów – Sekcja 02 | 11.6d | 2026-02-26 A | 2026-03-13 A | 28YY90-012, 28YY90-015 SS+5d | 100% |  |
| 28YY90-021 |  | Monta¿ ruroci¹gów – Sekcja 02 | 7.8d | 2026-08-25 A | 2026-09-02 A | 28YY90-020, 28YY90-014 SS | 100% |  |
| 28YY90-022 |  | Próba ciœnieniowa – Sekcja 02 | 5d | 2026-08-31 A | 2026-09-09 A | 28YY90-021 | 100% |  |
| 28YY90-023 |  | Izolacje – Sekcja 02 | 7d | 2026-09-07 A | 2026-09-15 A | 28YY90-022 | 100% |  |
| 28YY90-024 |  | Malowanie i oznakowanie – Sekcja 02 | 6d | 2026-09-10 A | 2026-09-18 A | 28YY90-023 FF+2d | 100% |  |
|  | SEKCJA 03 | **Sekcja 03** |  | 2026-03-11 | 2026-09-23 |  |  |  |
|  | PODSEKCJA | **Podsekcja 03.A** |  | 2026-03-11 | 2026-09-23 |  |  |  |
| 28YY90-027 |  | Prefabrykacja ruroci¹gów – Sekcja 03 | 10.1d | 2026-03-11 A | 2026-03-26 A | 28YY90-012, 28YY90-020 SS+5d | 100% |  |
| 28YY90-028 |  | Monta¿ ruroci¹gów – Sekcja 03 | 7.8d | 2026-08-25 A | 2026-09-02 A | 28YY90-027, 28YY90-014 SS | 100% |  |
| 28YY90-029 |  | Próba ciœnieniowa – Sekcja 03 | 5d | 2026-09-03 A | 2026-09-14 A | 28YY90-028 | 100% |  |
| 28YY90-031 |  | Malowanie i oznakowanie – Sekcja 03 | 8d | 2026-09-09 A | 2026-09-22 A | 28YY90-030 FF+2d | 100% |  |
| 28YY90-030 |  | Izolacje – Sekcja 03 | 7d | 2026-09-10 A | 2026-09-23 A | 28YY90-029 | 100% |  |

| ID | WBS | Task | Duration | Start | Finish | Predecessors | Complete | Total float |
| --- | --- | --- | --- | --- | --- | --- | --- | --- |
|  | SEKCJA 04 | **Sekcja 04** |  | 2026-03-16 | 2026-10-14 |  |  |  |
| 28YY90-032 |  | Prefabrykacja ruroci¹gów – Sekcja 04 | 13.4d | 2026-03-16 A | 2026-04-01 A | 28YY90-012, 28YY90-027 SS+5d | 100% |  |
| 28YY90-033 |  | Monta¿ ruroci¹gów – Sekcja 04 | 23.1d | 2026-08-25 A | 2026-09-24 A | 28YY90-032, 28YY90-014 SS+4d | 100% |  |
| 28YY90-034 |  | Próba ciœnieniowa – Sekcja 04 | 4d | 2026-09-30 A | 2026-09-30 | 28YY90-033 | 70% | 343.9d |
| 28YY90-035 |  | Izolacje – Sekcja 04 | 8d | 2026-10-01 | 2026-10-12 | 28YY90-034 |  | 346.7d |
| 28YY90-036 |  | Malowanie i oznakowanie – Sekcja 04 | 5d | 2026-10-08 | 2026-10-14 | 28YY90-035 FF+2d |  | 346.7d |
|  | SEKCJA 05 | **Sekcja 05** |  | 2026-03-25 | 2026-10-13 |  |  |  |
| 28YY90-039 |  | Prefabrykacja ruroci¹gów – Sekcja 05 | 14.8d | 2026-03-25 A | 2026-04-15 A | 28YY90-012, 28YY90-032 SS+5d | 100% |  |
| 28YY90-040 |  | Monta¿ ruroci¹gów – Sekcja 05 | 20.6d | 2026-08-27 A | 2026-09-28 A | 28YY90-039, 28YY90-014 SS+4d | 100% |  |
| 28YY90-041 |  | Próba ciœnieniowa – Sekcja 05 | 5d | 2026-09-25 A | 2026-09-29 A | 28YY90-040 | 100% |  |
| 28YY90-042 |  | Izolacje – Sekcja 05 | 8d | 2026-09-30 | 2026-10-09 | 28YY90-041 |  | 347.9d |
| 28YY90-043 |  | Malowanie i oznakowanie – Sekcja 05 | 7d | 2026-10-05 | 2026-10-13 | 28YY90-042 FF+2d |  | 347.9d |
|  | SEKCJA 06 | **Sekcja 06** |  | 2026-03-30 | 2026-10-06 |  |  |  |
|  | PODSEKCJA | **Podsekcja 06.A** |  | 2026-03-30 | 2026-10-06 |  |  |  |
| 28YY90-044 |  | Prefabrykacja ruroci¹gów – Sekcja 06 | 5.8d | 2026-03-30 A | 2026-04-07 A | 28YY90-012, 28YY90-039 SS+5d | 100% |  |
| 28YY90-045 |  | Monta¿ ruroci¹gów – Sekcja 06 | 18.2d | 2026-08-28 A | 2026-09-22 A | 28YY90-044, 28YY90-014 SS+3d | 100% |  |
| 28YY90-046 |  | Próba ciœnieniowa – Sekcja 06 | 4d | 2026-09-18 A | 2026-09-24 A | 28YY90-045 | 100% |  |
| 28YY90-047 |  | Izolacje – Sekcja 06 | 7d | 2026-09-28 A | 2026-10-02 | 28YY90-046 | 57% | 350.7d |
| 28YY90-048 |  | Malowanie i oznakowanie – Sekcja 06 | 5d | 2026-09-30 | 2026-10-06 | 28YY90-047 FF+2d |  | 352.9d |
|  | SEKCJA 07 | **Sekcja 07** |  | 2026-04-02 | 2026-09-28 |  |  |  |
| 28YY90-051 |  | Prefabrykacja ruroci¹gów – Sekcja 07 | 6.5d | 2026-04-02 A | 2026-04-10 A | 28YY90-012, 28YY90-044 SS+5d | 100% |  |
| 28YY90-052 |  | Monta¿ ruroci¹gów – Sekcja 07 | 8.9d | 2026-09-01 A | 2026-09-14 A | 28YY90-051, 28YY90-014 SS+5d | 100% |  |
| 28YY90-053 |  | Próba ciœnieniowa – Sekcja 07 | 5d | 2026-09-11 A | 2026-09-22 A | 28YY90-052 | 100% |  |
| 28YY90-054 |  | Izolacje – Sekcja 07 | 6d | 2026-09-17 A | 2026-09-24 A | 28YY90-053 | 100% |  |
| 28YY90-055 |  | Malowanie i oznakowanie – Sekcja 07 | 4d | 2026-09-23 A | 2026-09-28 A | 28YY90-054 FF+2d | 100% |  |
|  | SEKCJA 08 | **Sekcja 08** |  | 2026-04-10 | 2026-10-21 |  |  |  |
| 28YY90-056 |  | Prefabrykacja ruroci¹gów – Sekcja 08 | 3.4d | 2026-04-10 A | 2026-04-16 A | 28YY90-012, 28YY90-051 SS+5d | 100% |  |
| 28YY90-057 |  | Monta¿ ruroci¹gów – Sekcja 08 | 21.5d | 2026-08-31 A | 2026-10-01 | 28YY90-056, 28YY90-014 SS+3d | 89% | 340.4d |
| 28YY90-058 |  | Próba ciœnieniowa – Sekcja 08 | 6d | 2026-09-28 A | 2026-10-05 | 28YY90-057 | 22% | 341.4d |
| 28YY90-059 |  | Izolacje – Sekcja 08 | 10d | 2026-10-06 | 2026-10-19 | 28YY90-058 |  | 341.2d |
| 28YY90-060 |  | Malowanie i oznakowanie – Sekcja 08 | 7d | 2026-10-13 | 2026-10-21 | 28YY90-059 FF+2d |  | 341.2d |
|  | SEKCJA 09 | **Sekcja 09** |  | 2026-04-22 | 2026-10-12 |  |  |  |
|  | PODSEKCJA | **Podsekcja 09.A** |  | 2026-04-22 | 2026-10-12 |  |  |  |
| 28YY90-063 |  | Prefabrykacja ruroci¹gów – Sekcja 09 | 10.4d | 2026-04-22 A | 2026-05-05 A | 28YY90-012, 28YY90-056 SS+5d | 100% |  |
| 28YY90-064 |  | Monta¿ ruroci¹gów – Sekcja 09 | 22.1d | 2026-08-28 A | 2026-09-28 A | 28YY90-063, 28YY90-014 SS+6d | 100% |  |
| 28YY90-065 |  | Próba ciœnieniowa – Sekcja 09 | 5d | 2026-09-30 A | 2026-09-30 | 28YY90-064 | 80% | 344.9d |
| 28YY90-066 |  | Izolacje – Sekcja 09 | 6d | 2026-10-01 | 2026-10-08 | 28YY90-065 |  | 348.9d |
| 28YY90-067 |  | Malowanie i oznakowanie – Sekcja 09 | 8d | 2026-10-01 | 2026-10-12 | 28YY90-066 FF+2d |  | 348.9d |
|  | SEKCJA 10 | **Sekcja 10** |  | 2026-04-24 | 2026-10-07 |  |  |  |
| 28YY90-068 |  | Prefabrykacja ruroci¹gów – Sekcja 10 | 14.8d | 2026-04-24 A | 2026-05-18 A | 28YY90-012, 28YY90-063 SS+5d | 100% |  |
| 28YY90-069 |  | Monta¿ ruroci¹gów – Sekcja 10 | 17.7d | 2026-09-02 A | 2026-09-28 A | 28YY90-068, 28YY90-014 SS+6d | 100% |  |
| 28YY90-070 |  | Próba ciœnieniowa – Sekcja 10 | 4d | 2026-09-25 A | 2026-10-01 | 28YY90-069 | 32% | 350.2d |
| 28YY90-071 |  | Izolacje – Sekcja 10 | 4d | 2026-09-28 A | 2026-09-30 | 28YY90-070 | 75% | 353.2d |
| 28YY90-072 |  | Malowanie i oznakowanie – Sekcja 10 | 7d | 2026-09-30 A | 2026-10-07 | 28YY90-071 FF+2d | 14% | 350.9d |
|  | SEKCJA 11 | **Sekcja 11** |  | 2026-05-04 | 2026-10-20 |  |  |  |
| 28YY90-075 |  | Prefabrykacja ruroci¹gów – Sekcja 11 | 8.2d | 2026-05-04 A | 2026-05-13 A | 28YY90-012, 28YY90-068 SS+5d | 100% |  |
| 28YY90-076 |  | Monta¿ ruroci¹gów – Sekcja 11 | 24.2d | 2026-08-28 A | 2026-09-29 A | 28YY90-075, 28YY90-014 SS+3d | 100% |  |
| 28YY90-077 |  | Próba ciœnieniowa – Sekcja 11 | 5d | 2026-09-30 A | 2026-09-30 | 28YY90-076 | 80% | 338.9d |
| 28YY90-078 |  | Izolacje – Sekcja 11 | 12d | 2026-10-01 | 2026-10-16 | 28YY90-077 |  | 342.9d |
| 28YY90-079 |  | Malowanie i oznakowanie – Sekcja 11 | 4d | 2026-10-15 | 2026-10-20 | 28YY90-078 FF+2d |  | 342.9d |
|  | SEKCJA 12 | **Sekcja 12** |  | 2026-05-07 | 2026-10-06 |  |  |  |
|  | PODSEKCJA | **Podsekcja 12.A** |  | 2026-05-07 | 2026-10-06 |  |  |  |
| 28YY90-080 |  | Prefabrykacja ruroci¹gów – Sekcja 12 | 3.8d | 2026-05-07 A | 2026-05-12 A | 28YY90-012, 28YY90-075 SS+5d | 100% |  |
| 28YY90-081 |  | Monta¿ ruroci¹gów – Sekcja 12 | 22.1d | 2026-08-21 A | 2026-10-02 | 28YY90-080, 28YY90-014 SS+1d | 82% | 349.8d |
| 28YY90-082 |  | Próba ciœnieniowa – Sekcja 12 | 3d | 2026-09-25 A | 2026-09-29 A | 28YY90-081 | 100% |  |
| 28YY90-083 |  | Izolacje – Sekcja 12 | 9d | 2026-09-25 A | 2026-10-02 | 28YY90-082 | 61% | 349.8d |
| 28YY90-084 |  | Malowanie i oznakowanie – Sekcja 12 | 2d | 2026-10-05 | 2026-10-06 | 28YY90-083 FF+2d |  | 352.4d |
|  | SEKCJA 13 | **Sekcja 13** |  | 2026-05-18 | 2026-11-16 |  |  |  |
| 28YY90-087 |  | Prefabrykacja ruroci¹gów – Sekcja 13 | 12.7d | 2026-05-18 A | 2026-06-02 A | 28YY90-012, 28YY90-080 SS+5d | 100% |  |
| 28YY90-088 |  | Monta¿ ruroci¹gów – Sekcja 13 | 20.3d | 2026-09-30 | 2026-10-27 | 28YY90-087, 28YY90-014 SS+9d |  | 323.6d |
| 28YY90-089 |  | Próba ciœnieniowa – Sekcja 13 | 4d | 2026-10-28 | 2026-11-02 | 28YY90-088 |  | 323.6d |
| 28YY90-090 |  | Izolacje – Sekcja 13 | 8d | 2026-11-03 | 2026-11-12 | 28YY90-089 |  | 323.6d |
| 28YY90-091 |  | Malowanie i oznakowanie – Sekcja 13 | 3d | 2026-11-12 | 2026-11-16 | 28YY90-090 FF+2d |  | 323.6d |
|  | SEKCJA 14 | **Sekcja 14** |  | 2026-05-27 | 2026-09-30 |  |  |  |
| 28YY90-092 |  | Prefabrykacja ruroci¹gów – Sekcja 14 | 7.4d | 2026-05-27 A | 2026-06-08 A | 28YY90-012, 28YY90-087 SS+5d | 100% |  |
| 28YY90-093 |  | Monta¿ ruroci¹gów – Sekcja 14 | 7.7d | 2026-08-21 A | 2026-09-02 A | 28YY90-092, 28YY90-014 SS+1d | 100% |  |
| 28YY90-094 |  | Próba ciœnieniowa – Sekcja 14 | 5d | 2026-09-01 A | 2026-09-07 A | 28YY90-093 | 100% |  |
| 28YY90-095 |  | Izolacje – Sekcja 14 | 5d | 2026-09-07 A | 2026-09-16 A | 28YY90-094 | 100% |  |
| 28YY90-096 |  | Malowanie i oznakowanie – Sekcja 14 | 7d | 2026-09-11 A | 2026-09-30 | 28YY90-095 FF+2d | 81% | 363.2d |
|  | SEKCJA 15 | **Sekcja 15** |  | 2026-05-29 | 2026-10-21 |  |  |  |

| ID | WBS | Task | Duration | Start | Finish | Predecessors | Complete | Total float |
| --- | --- | --- | --- | --- | --- | --- | --- | --- |
|  | PODSEKCJA | **Podsekcja 15.A** |  | 2026-05-29 | 2026-10-21 |  |  |  |
| 28YY90-099 |  | Prefabrykacja ruroci¹gów – Sekcja 15 | 12.3d | 2026-05-29 A | 2026-06-18 A | 28YY90-012, 28YY90-092 SS+5d | 100% |  |
| 28YY90-100 |  | Monta¿ ruroci¹gów – Sekcja 15 | 23.4d | 2026-08-24 A | 2026-09-24 A | 28YY90-099, 28YY90-014 SS+2d | 100% |  |
| 28YY90-101 |  | Próba ciœnieniowa – Sekcja 15 | 4d | 2026-09-29 A | 2026-10-01 | 28YY90-100 | 35% | 308.5d |
| 28YY90-102 |  | Izolacje – Sekcja 15 | 12d | 2026-10-02 | 2026-10-19 | 28YY90-101 |  | 309.3d |
| 28YY90-103 |  | Malowanie i oznakowanie – Sekcja 15 | 7d | 2026-10-13 | 2026-10-21 | 28YY90-102 FF+2d |  | 309.3d |
|  | SEKCJA 16 | **Sekcja 16** |  | 2026-06-05 | 2026-09-21 |  |  |  |
| 28YY90-104 |  | Prefabrykacja ruroci¹gów – Sekcja 16 | 10.7d | 2026-06-05 A | 2026-06-19 A | 28YY90-012, 28YY90-099 SS+5d | 100% |  |
| 28YY90-105 |  | Monta¿ ruroci¹gów – Sekcja 16 | 7.3d | 2026-08-31 A | 2026-09-08 A | 28YY90-104, 28YY90-014 SS+4d | 100% |  |
| 28YY90-106 |  | Próba ciœnieniowa – Sekcja 16 | 4d | 2026-09-04 A | 2026-09-14 A | 28YY90-105 | 100% |  |
| 28YY90-107 |  | Izolacje – Sekcja 16 | 6d | 2026-09-11 A | 2026-09-21 A | 28YY90-106 | 100% |  |
| 28YY90-108 |  | Malowanie i oznakowanie – Sekcja 16 | 5d | 2026-09-14 A | 2026-09-21 A | 28YY90-107 FF+2d | 100% |  |
|  | PROJ | **Projektowanie** |  | 2025-05-20 | 2026-09-30 |  |  |  |
|  | DOKUMENTAC | **Dokumentacja** |  | 2025-05-20 | 2026-09-30 |  |  |  |
| 28YY90-001 |  | Projekt wykonawczy – Warsztat | 95d | 2025-05-20 A | 2025-10-02 A |  | 100% |  |
| 28YY90-002 |  | Uzgodnienie dokumentacji z Inwestorem | 30d | 2025-10-03 A | 2025-11-13 A | 28YY90-001 | 100% |  |
| 28YY90-003 |  | Zatwierdzenie dokumentacji do realizacji | 10d | 2025-11-14 A | 2025-11-27 A | 28YY90-002 | 100% |  |
| 28YY90-004 |  | KM: Dokumentacja zatwierdzona – Warsztat | 0d | 2026-09-30 | 2026-09-30 | 28YY90-003 |  | 114.5d |
|  | ROZR | **Rozruch** |  | 2026-10-22 | 2026-11-23 |  |  |  |
|  | ROZRUCH | **Rozruch** |  | 2026-10-22 | 2026-11-23 |  |  |  |
| 28YY90-113 |  | Przegl¹d gotowoœci do rozruchu | 6d | 2026-10-22 | 2026-10-29 | 28YY90-112, 28YY90-019, 28YY90-024, 28YY90-026 |  | 309.2d |
| 28YY90-114 |  | Rozruch na zimno | 6d | 2026-10-30 | 2026-11-06 | 28YY90-113 |  | 309.2d |
| 28YY90-115 |  | Rozruch na gor¹co / próby ruchowe | 10d | 2026-11-09 | 2026-11-20 | 28YY90-114 |  | 309.2d |
| 28YY90-116 |  | KM: Odbiór koñcowy – Warsztat | 0d | 2026-11-23 | 2026-11-23 | 28YY90-115 |  | 309.2d |
|  | ZAKU | **Zakupy** |  | 2025-06-17 | 2026-08-25 |  |  |  |
|  | DOSTAWY | **Dostawy** |  | 2026-01-06 | 2026-08-25 |  |  |  |
| 28YY90-008 |  | Produkcja u dostawcy | 140d | 2026-01-06 A | 2026-07-22 A | 28YY90-007 | 100% |  |
| 28YY90-009 |  | Testy FAT | 6d | 2026-07-22 A | 2026-07-31 A | 28YY90-008 | 100% |  |
| 28YY90-010 |  | Transport i dostawa na plac budowy | 15d | 2026-07-30 A | 2026-08-24 A | 28YY90-009 | 100% |  |
| 28YY90-011 |  | KM: Dostawa na budowê – Warsztat | 0d | 2026-08-25 A | 2026-08-25 | 28YY90-010 | 100% |  |
|  | ZAMÓWIENIA | **Zamówienia** |  | 2025-06-17 | 2026-01-08 |  |  |  |
| 28YY90-005 |  | Zapytanie ofertowe | 24d | 2025-06-17 A | 2025-07-18 A | 28YY90-001 SS+20d | 100% |  |
| 28YY90-006 |  | Analiza i wybór ofert | 12d | 2025-07-23 A | 2025-08-08 A | 28YY90-005 | 100% |  |
| 28YY90-007 |  | Zawarcie umowy / zamówienie | 7d | 2025-12-29 A | 2026-01-08 A | 28YY90-006, 28YY90-004 SS, 21MY97-004 SF+8d | 100% |  |
|  | 29XB26 | **29XB26 – Magazyn** |  | 2025-06-12 | 2026-11-04 |  |  |  |
|  | BUDO | **Budowa** |  | 2026-01-28 | 2026-10-19 |  |  |  |
|  | AKPIA | **AKPiA** |  | 2026-07-23 | 2026-08-25 |  |  |  |
| 29XB26-087 |  | Monta¿ uk³adów AKPiA | 23d | 2026-07-23 A | 2026-08-25 A | 29XB26-014 SS+5d | 100% |  |
|  | ELEKTRYKA | **Elektryka** |  | 2026-07-28 | 2026-10-02 |  |  |  |
| 29XB26-050 |  | Pod³¹czenia i pomiary – trasa 06 | 8d | 2026-07-28 A | 2026-08-06 A | 29XB26-049 FF | 100% |  |
| 29XB26-025 |  | Uk³adanie kabli – trasa 02 | 16d | 2026-07-29 A | 2026-08-20 A | 29XB26-014 SS+10d | 100% |  |
| 29XB26-037 |  | Uk³adanie kabli – trasa 04 | 18d | 2026-07-29 A | 2026-08-24 A | 29XB26-014 SS+10d | 100% |  |
| 29XB26-061 |  | Uk³adanie kabli – trasa 08 | 12d | 2026-07-29 A | 2026-08-13 A | 29XB26-014 SS+10d | 100% |  |
| 29XB26-085 |  | Uk³adanie kabli – trasa 12 | 17d | 2026-07-30 A | 2026-08-21 A | 29XB26-014 SS+10d | 100% |  |
| 29XB26-073 |  | Uk³adanie kabli – trasa 10 | 20d | 2026-07-31 A | 2026-09-01 A | 29XB26-014 SS+10d | 100% |  |
| 29XB26-049 |  | Uk³adanie kabli – trasa 06 | 5d | 2026-08-03 A | 2026-10-01 | 29XB26-014 SS+10d | 58% | 394.9d |
| 29XB26-062 |  | Pod³¹czenia i pomiary – trasa 08 | 9d | 2026-08-03 A | 2026-08-17 A | 29XB26-061 FF | 100% |  |
| 29XB26-086 |  | Pod³¹czenia i pomiary – trasa 12 | 9d | 2026-08-07 A | 2026-08-24 A | 29XB26-085 FF | 100% |  |
| 29XB26-038 |  | Pod³¹czenia i pomiary – trasa 04 | 9d | 2026-08-11 A | 2026-08-26 A | 29XB26-037 FF | 100% |  |
| 29XB26-074 |  | Pod³¹czenia i pomiary – trasa 10 | 5d | 2026-08-17 A | 2026-08-24 A | 29XB26-073 FF | 100% |  |
| 29XB26-026 |  | Pod³¹czenia i pomiary – trasa 02 | 4d | 2026-08-19 A | 2026-10-02 | 29XB26-025 FF | 12% | 340.9d |
|  | MONTA¯ | **Monta¿** |  | 2026-03-18 | 2026-09-16 |  |  |  |
| 29XB26-013 |  | Monta¿ konstrukcji stalowych | 26d | 2026-03-18 A | 2026-04-24 A | 29XB26-012 | 100% |  |
| 29XB26-014 |  | Monta¿ urz¹dzeñ g³ównych | 26d | 2026-07-13 A | 2026-08-17 A | 29XB26-013, 29XB26-011 | 100% |  |
| 29XB26-088 |  | KM: Zakoñczenie monta¿u – Magazyn | 0d | 2026-09-16 A | 2026-09-16 | 29XB26-079, 29XB26-084, 29XB26-086, 29XB26-087, 29XB26-014 | 100% |  |
|  | ROBOTY BUD | **Roboty budowlane** |  | 2026-01-28 | 2026-03-19 |  |  |  |
| 29XB26-012 |  | Fundamenty i roboty ziemne | 36d | 2026-01-28 A | 2026-03-19 A | 29XB26-007 FS+4d | 100% |  |
|  | RUROCI¥GI | **Ruroci¹gi** |  | 2026-03-16 | 2026-10-19 |  |  |  |
|  | SEKCJA 01 | **Sekcja 01** |  | 2026-03-16 | 2026-10-19 |  |  |  |
| 29XB26-015 |  | Prefabrykacja ruroci¹gów – Sekcja 01 | 8.9d | 2026-03-16 A | 2026-03-26 A | 29XB26-012 | 100% |  |
| 29XB26-017 |  | Próba ciœnieniowa – Sekcja 01 | 5d | 2026-07-31 A | 2026-08-06 A | 29XB26-016 | 100% |  |
| 29XB26-019 |  | Malowanie i oznakowanie – Sekcja 01 | 4d | 2026-08-11 A | 2026-08-19 A | 29XB26-018 FF+2d | 100% |  |
| 29XB26-018 |  | Izolacje – Sekcja 01 | 4d | 2026-08-13 A | 2026-08-21 A | 29XB26-017 | 100% |  |
| 29XB26-016 |  | Monta¿ ruroci¹gów – Sekcja 01 | 14.2d | 2026-09-30 | 2026-10-19 | 29XB26-015, 29XB26-014 SS |  | 289.7d |
|  | SEKCJA 02 | **Sekcja 02** |  | 2026-03-25 | 2026-09-14 |  |  |  |
| 29XB26-020 |  | Prefabrykacja ruroci¹gów – Sekcja 02 | 10.3d | 2026-03-25 A | 2026-04-10 A | 29XB26-012, 29XB26-015 SS+5d | 100% |  |
| 29XB26-021 |  | Monta¿ ruroci¹gów – Sekcja 02 | 22.7d | 2026-07-23 A | 2026-08-24 A | 29XB26-020, 29XB26-014 SS+6d | 100% |  |
| 29XB26-022 |  | Próba ciœnieniowa – Sekcja 02 | 4d | 2026-08-21 A | 2026-08-26 A | 29XB26-021 | 100% |  |
| 29XB26-023 |  | Izolacje – Sekcja 02 | 6d | 2026-09-01 A | 2026-09-09 A | 29XB26-022 | 100% |  |
| 29XB26-024 |  | Malowanie i oznakowanie – Sekcja 02 | 2d | 2026-09-09 A | 2026-09-14 A | 29XB26-023 FF+2d | 100% |  |

| ID | WBS | Task | Duration | Start | Finish | Predecessors | Complete | Total float |
| --- | --- | --- | --- | --- | --- | --- | --- | --- |
|  | SEKCJA 03 | **Sekcja 03** |  | 2026-03-30 | 2026-08-25 |  |  |  |
|  | PODSEKCJA | **Podsekcja 03.A** |  | 2026-03-30 | 2026-08-25 |  |  |  |
| 29XB26-027 |  | Prefabrykacja ruroci¹gów – Sekcja 03 | 9d | 2026-03-30 A | 2026-04-14 A | 29XB26-012, 29XB26-020 SS+5d | 100% |  |
| 29XB26-028 |  | Monta¿ ruroci¹gów – Sekcja 03 | 13.3d | 2026-07-22 A | 2026-08-07 A | 29XB26-027, 29XB26-014 SS+6d | 100% |  |
| 29XB26-030 |  | Izolacje – Sekcja 03 | 4d | 2026-08-12 A | 2026-08-19 A | 29XB26-029 | 100% |  |
| 29XB26-029 |  | Próba ciœnieniowa – Sekcja 03 | 3d | 2026-08-13 A | 2026-08-20 A | 29XB26-028 | 100% |  |
| 29XB26-031 |  | Malowanie i oznakowanie – Sekcja 03 | 5d | 2026-08-14 A | 2026-08-25 A | 29XB26-030 FF+2d | 100% |  |
|  | SEKCJA 04 | **Sekcja 04** |  | 2026-04-06 | 2026-08-18 |  |  |  |
| 29XB26-032 |  | Prefabrykacja ruroci¹gów – Sekcja 04 | 9.7d | 2026-04-06 A | 2026-04-17 A | 29XB26-012, 29XB26-027 SS+5d | 100% |  |
| 29XB26-033 |  | Monta¿ ruroci¹gów – Sekcja 04 | 11.1d | 2026-07-15 A | 2026-07-29 A | 29XB26-032, 29XB26-014 SS+2d | 100% |  |
| 29XB26-034 |  | Próba ciœnieniowa – Sekcja 04 | 5d | 2026-08-03 A | 2026-08-07 A | 29XB26-033 | 100% |  |
| 29XB26-035 |  | Izolacje – Sekcja 04 | 4d | 2026-08-10 A | 2026-08-13 A | 29XB26-034 | 100% |  |
| 29XB26-036 |  | Malowanie i oznakowanie – Sekcja 04 | 3d | 2026-08-12 A | 2026-08-18 A | 29XB26-035 FF+2d | 100% |  |
|  | SEKCJA 05 | **Sekcja 05** |  | 2026-04-16 | 2026-08-24 |  |  |  |
| 29XB26-039 |  | Prefabrykacja ruroci¹gów – Sekcja 05 | 6.2d | 2026-04-16 A | 2026-04-23 A | 29XB26-012, 29XB26-032 SS+5d | 100% |  |
| 29XB26-040 |  | Monta¿ ruroci¹gów – Sekcja 05 | 12.6d | 2026-07-16 A | 2026-08-04 A | 29XB26-039, 29XB26-014 SS+2d | 100% |  |
| 29XB26-041 |  | Próba ciœnieniowa – Sekcja 05 | 5d | 2026-07-31 A | 2026-08-06 A | 29XB26-040 | 100% |  |
| 29XB26-042 |  | Izolacje – Sekcja 05 | 8d | 2026-08-12 A | 2026-08-21 A | 29XB26-041 | 100% |  |
| 29XB26-043 |  | Malowanie i oznakowanie – Sekcja 05 | 4d | 2026-08-17 A | 2026-08-24 A | 29XB26-042 FF+2d | 100% |  |
|  | SEKCJA 06 | **Sekcja 06** |  | 2026-04-20 | 2026-09-04 |  |  |  |
|  | PODSEKCJA | **Podsekcja 06.A** |  | 2026-04-20 | 2026-09-04 |  |  |  |
| 29XB26-044 |  | Prefabrykacja ruroci¹gów – Sekcja 06 | 4.4d | 2026-04-20 A | 2026-04-23 A | 29XB26-012, 29XB26-039 SS+5d | 100% |  |
| 29XB26-045 |  | Monta¿ ruroci¹gów – Sekcja 06 | 23.2d | 2026-07-20 A | 2026-08-21 A | 29XB26-044, 29XB26-014 SS+3d | 100% |  |
| 29XB26-046 |  | Próba ciœnieniowa – Sekcja 06 | 6d | 2026-08-18 A | 2026-08-27 A | 29XB26-045 | 100% |  |
| 29XB26-048 |  | Malowanie i oznakowanie – Sekcja 06 | 8d | 2026-08-25 A | 2026-09-04 A | 29XB26-047 FF+2d | 100% |  |
| 29XB26-047 |  | Izolacje – Sekcja 06 | 5d | 2026-08-26 A | 2026-09-04 A | 29XB26-046 | 100% |  |
|  | SEKCJA 07 | **Sekcja 07** |  | 2026-04-27 | 2026-09-10 |  |  |  |
| 29XB26-051 |  | Prefabrykacja ruroci¹gów – Sekcja 07 | 7d | 2026-04-27 A | 2026-05-06 A | 29XB26-012, 29XB26-044 SS+5d | 100% |  |
| 29XB26-052 |  | Monta¿ ruroci¹gów – Sekcja 07 | 22.1d | 2026-07-30 A | 2026-09-01 A | 29XB26-051, 29XB26-014 SS+9d | 100% |  |
| 29XB26-053 |  | Próba ciœnieniowa – Sekcja 07 | 2d | 2026-08-27 A | 2026-08-31 A | 29XB26-052 | 100% |  |
| 29XB26-054 |  | Izolacje – Sekcja 07 | 5d | 2026-08-31 A | 2026-09-04 A | 29XB26-053 | 100% |  |
| 29XB26-055 |  | Malowanie i oznakowanie – Sekcja 07 | 5d | 2026-09-01 A | 2026-09-10 A | 29XB26-054 FF+2d | 100% |  |
|  | SEKCJA 08 | **Sekcja 08** |  | 2026-05-05 | 2026-08-21 |  |  |  |
| 29XB26-056 |  | Prefabrykacja ruroci¹gów – Sekcja 08 | 3.4d | 2026-05-05 A | 2026-05-11 A | 29XB26-012, 29XB26-051 SS+5d | 100% |  |
| 29XB26-057 |  | Monta¿ ruroci¹gów – Sekcja 08 | 10d | 2026-07-23 A | 2026-08-07 A | 29XB26-056, 29XB26-014 SS+4d | 100% |  |
| 29XB26-058 |  | Próba ciœnieniowa – Sekcja 08 | 4d | 2026-08-04 A | 2026-08-12 A | 29XB26-057 | 100% |  |
| 29XB26-059 |  | Izolacje – Sekcja 08 | 7d | 2026-08-10 A | 2026-08-19 A | 29XB26-058 | 100% |  |
| 29XB26-060 |  | Malowanie i oznakowanie – Sekcja 08 | 6d | 2026-08-11 A | 2026-08-21 A | 29XB26-059 FF+2d | 100% |  |
|  | SEKCJA 09 | **Sekcja 09** |  | 2026-05-12 | 2026-08-14 |  |  |  |
|  | PODSEKCJA | **Podsekcja 09.A** |  | 2026-05-12 | 2026-08-14 |  |  |  |
| 29XB26-063 |  | Prefabrykacja ruroci¹gów – Sekcja 09 | 11.9d | 2026-05-12 A | 2026-05-29 A | 29XB26-012, 29XB26-056 SS+5d | 100% |  |
| 29XB26-064 |  | Monta¿ ruroci¹gów – Sekcja 09 | 9.2d | 2026-07-14 A | 2026-07-28 A | 29XB26-063, 29XB26-014 SS+1d | 100% |  |
| 29XB26-065 |  | Próba ciœnieniowa – Sekcja 09 | 5d | 2026-07-30 A | 2026-08-05 A | 29XB26-064 | 100% |  |
| 29XB26-066 |  | Izolacje – Sekcja 09 | 5d | 2026-08-06 A | 2026-08-14 A | 29XB26-065 | 100% |  |
| 29XB26-067 |  | Malowanie i oznakowanie – Sekcja 09 | 2d | 2026-08-11 A | 2026-08-13 A | 29XB26-066 FF+2d | 100% |  |
|  | SEKCJA 10 | **Sekcja 10** |  | 2026-05-22 | 2026-09-08 |  |  |  |
| 29XB26-068 |  | Prefabrykacja ruroci¹gów – Sekcja 10 | 4.1d | 2026-05-22 A | 2026-05-27 A | 29XB26-012, 29XB26-063 SS+5d | 100% |  |
| 29XB26-069 |  | Monta¿ ruroci¹gów – Sekcja 10 | 18.3d | 2026-07-29 A | 2026-08-26 A | 29XB26-068, 29XB26-014 SS+8d | 100% |  |
| 29XB26-070 |  | Próba ciœnieniowa – Sekcja 10 | 4d | 2026-08-19 A | 2026-08-24 A | 29XB26-069 | 100% |  |
| 29XB26-071 |  | Izolacje – Sekcja 10 | 7d | 2026-08-27 A | 2026-09-07 A | 29XB26-070 | 100% |  |
| 29XB26-072 |  | Malowanie i oznakowanie – Sekcja 10 | 8d | 2026-08-27 A | 2026-09-08 A | 29XB26-071 FF+2d | 100% |  |
|  | SEKCJA 11 | **Sekcja 11** |  | 2026-05-28 | 2026-09-11 |  |  |  |
| 29XB26-075 |  | Prefabrykacja ruroci¹gów – Sekcja 11 | 3.6d | 2026-05-28 A | 2026-06-02 A | 29XB26-012, 29XB26-068 SS+5d | 100% |  |
| 29XB26-076 |  | Monta¿ ruroci¹gów – Sekcja 11 | 20.7d | 2026-07-21 A | 2026-08-17 A | 29XB26-075, 29XB26-014 SS+4d | 100% |  |
| 29XB26-077 |  | Próba ciœnieniowa – Sekcja 11 | 5d | 2026-08-19 A | 2026-08-28 A | 29XB26-076 | 100% |  |
| 29XB26-078 |  | Izolacje – Sekcja 11 | 12d | 2026-08-27 A | 2026-09-11 A | 29XB26-077 | 100% |  |
| 29XB26-079 |  | Malowanie i oznakowanie – Sekcja 11 | 5d | 2026-09-07 A | 2026-09-11 A | 29XB26-078 FF+2d | 100% |  |
|  | SEKCJA 12 | **Sekcja 12** |  | 2026-06-01 | 2026-10-01 |  |  |  |
|  | PODSEKCJA | **Podsekcja 12.A** |  | 2026-06-01 | 2026-10-01 |  |  |  |
| 29XB26-080 |  | Prefabrykacja ruroci¹gów – Sekcja 12 | 14.6d | 2026-06-01 A | 2026-06-19 A | 29XB26-012, 29XB26-075 SS+5d | 100% |  |
| 29XB26-081 |  | Monta¿ ruroci¹gów – Sekcja 12 | 9.8d | 2026-07-17 A | 2026-10-01 | 29XB26-080, 29XB26-014 SS+2d | 71% | 349.1d |
| 29XB26-082 |  | Próba ciœnieniowa – Sekcja 12 | 3d | 2026-07-30 A | 2026-08-04 A | 29XB26-081 | 100% |  |
| 29XB26-083 |  | Izolacje – Sekcja 12 | 4d | 2026-08-03 A | 2026-08-11 A | 29XB26-082 | 100% |  |
| 29XB26-084 |  | Malowanie i oznakowanie – Sekcja 12 | 2d | 2026-08-07 A | 2026-08-12 A | 29XB26-083 FF+2d | 100% |  |
|  | PROJ | **Projektowanie** |  | 2025-06-12 | 2026-01-12 |  |  |  |
|  | DOKUMENTAC | **Dokumentacja** |  | 2025-06-12 | 2026-01-12 |  |  |  |
| 29XB26-001 |  | Projekt wykonawczy – Magazyn | 113d | 2025-06-12 A | 2025-11-17 A |  | 100% |  |
| 29XB26-002 |  | Uzgodnienie dokumentacji z Inwestorem | 26d | 2025-11-18 A | 2025-12-23 A | 29XB26-001 | 100% |  |
| 29XB26-003 |  | Zatwierdzenie dokumentacji do realizacji | 12d | 2025-12-19 A | 2026-01-07 A | 29XB26-002 | 100% |  |
| 29XB26-004 |  | KM: Dokumentacja zatwierdzona – Magazyn | 0d | 2026-01-12 A | 2026-01-12 | 29XB26-003 | 100% |  |

| ID | WBS | Task | Duration | Start | Finish | Predecessors | Complete | Total float |
| --- | --- | --- | --- | --- | --- | --- | --- | --- |
|  | ROZR | **Rozruch** |  | 2026-09-15 | 2026-11-04 |  |  |  |
|  | ROZRUCH | **Rozruch** |  | 2026-09-15 | 2026-11-04 |  |  |  |
| 29XB26-089 |  | Przegl¹d gotowoœci do rozruchu | 5d | 2026-09-15 A | 2026-09-22 A | 29XB26-088, 29XB26-019, 29XB26-024, 29XB26-026 | 100% |  |
| 29XB26-090 |  | Rozruch na zimno | 12d | 2026-09-18 A | 2026-10-12 | 29XB26-089 | 18% | 327.2d |
| 29XB26-091 |  | Rozruch na gor¹co / próby ruchowe | 16d | 2026-10-13 | 2026-11-03 | 29XB26-090 |  | 322.1d |
| 29XB26-092 |  | KM: Odbiór koñcowy – Magazyn | 0d | 2026-11-04 | 2026-11-04 | 29XB26-091 |  | 322.1d |
|  | ZAKU | **Zakupy** |  | 2025-07-10 | 2026-09-30 |  |  |  |
|  | DOSTAWY | **Dostawy** |  | 2026-01-21 | 2026-09-30 |  |  |  |
| 29XB26-008 |  | Produkcja u dostawcy | 103d | 2026-01-21 A | 2026-06-15 A | 29XB26-007 | 100% |  |
| 29XB26-009 |  | Testy FAT | 9d | 2026-06-16 A | 2026-09-30 | 29XB26-008 | 80% | 325.2d |
| 29XB26-010 |  | Transport i dostawa na plac budowy | 13d | 2026-06-25 A | 2026-07-15 A | 29XB26-009 | 100% |  |
| 29XB26-011 |  | KM: Dostawa na budowê – Magazyn | 0d | 2026-07-15 A | 2026-07-15 | 29XB26-010 | 100% |  |
|  | ZAMÓWIENIA | **Zamówienia** |  | 2025-07-10 | 2026-01-20 |  |  |  |
| 29XB26-005 |  | Zapytanie ofertowe | 17d | 2025-07-10 A | 2025-08-06 A | 29XB26-001 SS+20d | 100% |  |
| 29XB26-006 |  | Analiza i wybór ofert | 20d | 2025-08-01 A | 2025-08-29 A | 29XB26-005 | 100% |  |
| 29XB26-007 |  | Zawarcie umowy / zamówienie | 9d | 2026-01-06 A | 2026-01-20 A | 29XB26-006, 29XB26-004 SS, 12FX78-004 FS+3d | 100% |  |
|  | 29YB32 | **29YB32 – Budynek administracyjny** |  | 2025-03-17 | 2026-10-09 |  |  |  |
|  | BUDO | **Budowa** |  | 2026-01-07 | 2026-10-02 |  |  |  |
|  | AKPIA | **AKPiA** |  | 2026-06-17 | 2026-08-04 |  |  |  |
| 29YB32-092 |  | Monta¿ uk³adów AKPiA | 33d | 2026-06-17 A | 2026-08-04 A | 29YB32-014 SS+5d | 100% |  |
|  | ELEKTRYKA | **Elektryka** |  | 2026-06-24 | 2026-10-01 |  |  |  |
| 29YB32-049 |  | Uk³adanie kabli – trasa 06 | 7d | 2026-06-24 A | 2026-07-06 A | 29YB32-014 SS+10d | 100% |  |
| 29YB32-085 |  | Uk³adanie kabli – trasa 12 | 6d | 2026-06-25 A | 2026-07-03 A | 29YB32-014 SS+10d | 100% |  |
| 29YB32-025 |  | Uk³adanie kabli – trasa 02 | 6d | 2026-06-26 A | 2026-07-07 A | 29YB32-014 SS+10d | 100% |  |
| 29YB32-061 |  | Uk³adanie kabli – trasa 08 | 6d | 2026-06-26 A | 2026-07-08 A | 29YB32-014 SS+10d | 100% |  |
| 29YB32-073 |  | Uk³adanie kabli – trasa 10 | 14d | 2026-06-26 A | 2026-07-16 A | 29YB32-014 SS+10d | 100% |  |
| 29YB32-086 |  | Pod³¹czenia i pomiary – trasa 12 | 5d | 2026-06-26 A | 2026-10-01 | 29YB32-085 FF | 58% | 375.9d |
| 29YB32-037 |  | Uk³adanie kabli – trasa 04 | 14d | 2026-06-29 A | 2026-07-17 A | 29YB32-014 SS+10d | 100% |  |
| 29YB32-050 |  | Pod³¹czenia i pomiary – trasa 06 | 4d | 2026-06-29 A | 2026-07-02 A | 29YB32-049 FF | 100% |  |
| 29YB32-074 |  | Pod³¹czenia i pomiary – trasa 10 | 10d | 2026-06-29 A | 2026-07-10 A | 29YB32-073 FF | 100% |  |
| 29YB32-026 |  | Pod³¹czenia i pomiary – trasa 02 | 5d | 2026-06-30 A | 2026-07-09 A | 29YB32-025 FF | 100% |  |
| 29YB32-038 |  | Pod³¹czenia i pomiary – trasa 04 | 10d | 2026-06-30 A | 2026-07-16 A | 29YB32-037 FF | 100% |  |
| 29YB32-062 |  | Pod³¹czenia i pomiary – trasa 08 | 3d | 2026-07-01 A | 2026-07-03 A | 29YB32-061 FF | 100% |  |
|  | MONTA¯ | **Monta¿** |  | 2026-03-24 | 2026-08-14 |  |  |  |
| 29YB32-013 |  | Monta¿ konstrukcji stalowych | 32d | 2026-03-24 A | 2026-05-06 A | 29YB32-012 | 100% |  |
| 29YB32-014 |  | Monta¿ urz¹dzeñ g³ównych | 43d | 2026-06-15 A | 2026-08-14 A | 29YB32-013, 29YB32-011 | 100% |  |
| 29YB32-093 |  | KM: Zakoñczenie monta¿u – Budynek administracyjny | 0d | 2026-08-11 A | 2026-08-11 | 29YB32-084, 29YB32-086, 29YB32-091, 29YB32-092, 29YB32-014 | 100% |  |
|  | ROBOTY BUD | **Roboty budowlane** |  | 2026-01-07 | 2026-03-27 |  |  |  |
| 29YB32-012 |  | Fundamenty i roboty ziemne | 55d | 2026-01-07 A | 2026-03-27 A | 29YB32-007 FS+2d | 100% |  |
|  | RUROCI¥GI | **Ruroci¹gi** |  | 2026-03-27 | 2026-10-02 |  |  |  |
|  | SEKCJA 01 | **Sekcja 01** |  | 2026-03-27 | 2026-07-24 |  |  |  |
| 29YB32-015 |  | Prefabrykacja ruroci¹gów – Sekcja 01 | 3.5d | 2026-03-27 A | 2026-04-01 A | 29YB32-012 | 100% |  |
| 29YB32-016 |  | Monta¿ ruroci¹gów – Sekcja 01 | 11d | 2026-06-29 A | 2026-07-16 A | 29YB32-015, 29YB32-014 SS+10d | 100% |  |
| 29YB32-017 |  | Próba ciœnieniowa – Sekcja 01 | 4d | 2026-07-08 A | 2026-07-15 A | 29YB32-016 | 100% |  |
| 29YB32-018 |  | Izolacje – Sekcja 01 | 4d | 2026-07-20 A | 2026-07-24 A | 29YB32-017 | 100% |  |
| 29YB32-019 |  | Malowanie i oznakowanie – Sekcja 01 | 3d | 2026-07-21 A | 2026-07-23 A | 29YB32-018 FF+2d | 100% |  |
|  | SEKCJA 02 | **Sekcja 02** |  | 2026-03-31 | 2026-08-10 |  |  |  |
| 29YB32-020 |  | Prefabrykacja ruroci¹gów – Sekcja 02 | 11.5d | 2026-03-31 A | 2026-04-16 A | 29YB32-012, 29YB32-015 SS+5d | 100% |  |
| 29YB32-021 |  | Monta¿ ruroci¹gów – Sekcja 02 | 21d | 2026-06-26 A | 2026-07-27 A | 29YB32-020, 29YB32-014 SS+9d | 100% |  |
| 29YB32-022 |  | Próba ciœnieniowa – Sekcja 02 | 4d | 2026-07-23 A | 2026-07-28 A | 29YB32-021 | 100% |  |
| 29YB32-023 |  | Izolacje – Sekcja 02 | 5d | 2026-07-28 A | 2026-08-06 A | 29YB32-022 | 100% |  |
| 29YB32-024 |  | Malowanie i oznakowanie – Sekcja 02 | 3d | 2026-08-04 A | 2026-08-10 A | 29YB32-023 FF+2d | 100% |  |
|  | SEKCJA 03 | **Sekcja 03** |  | 2026-04-09 | 2026-08-05 |  |  |  |
|  | PODSEKCJA | **Podsekcja 03.A** |  | 2026-04-09 | 2026-08-05 |  |  |  |
| 29YB32-027 |  | Prefabrykacja ruroci¹gów – Sekcja 03 | 13.3d | 2026-04-09 A | 2026-04-30 A | 29YB32-012, 29YB32-020 SS+5d | 100% |  |
| 29YB32-028 |  | Monta¿ ruroci¹gów – Sekcja 03 | 18.6d | 2026-06-23 A | 2026-07-17 A | 29YB32-027, 29YB32-014 SS+9d | 100% |  |
| 29YB32-029 |  | Próba ciœnieniowa – Sekcja 03 | 3d | 2026-07-17 A | 2026-07-22 A | 29YB32-028 | 100% |  |
| 29YB32-030 |  | Izolacje – Sekcja 03 | 7d | 2026-07-21 A | 2026-08-03 A | 29YB32-029 | 100% |  |
| 29YB32-031 |  | Malowanie i oznakowanie – Sekcja 03 | 6d | 2026-07-24 A | 2026-08-05 A | 29YB32-030 FF+2d | 100% |  |
|  | SEKCJA 04 | **Sekcja 04** |  | 2026-04-14 | 2026-07-31 |  |  |  |
| 29YB32-032 |  | Prefabrykacja ruroci¹gów – Sekcja 04 | 4.5d | 2026-04-14 A | 2026-04-22 A | 29YB32-012, 29YB32-027 SS+5d | 100% |  |
| 29YB32-033 |  | Monta¿ ruroci¹gów – Sekcja 04 | 12.3d | 2026-06-24 A | 2026-07-14 A | 29YB32-032, 29YB32-014 SS+9d | 100% |  |
| 29YB32-034 |  | Próba ciœnieniowa – Sekcja 04 | 2d | 2026-07-13 A | 2026-07-16 A | 29YB32-033 | 100% |  |
| 29YB32-035 |  | Izolacje – Sekcja 04 | 11d | 2026-07-16 A | 2026-07-30 A | 29YB32-034 | 100% |  |
| 29YB32-036 |  | Malowanie i oznakowanie – Sekcja 04 | 6d | 2026-07-24 A | 2026-07-31 A | 29YB32-035 FF+2d | 100% |  |
|  | SEKCJA 05 | **Sekcja 05** |  | 2026-04-23 | 2026-08-13 |  |  |  |
| 29YB32-039 |  | Prefabrykacja ruroci¹gów – Sekcja 05 | 11d | 2026-04-23 A | 2026-05-08 A | 29YB32-012, 29YB32-032 SS+5d | 100% |  |
| 29YB32-040 |  | Monta¿ ruroci¹gów – Sekcja 05 | 20.3d | 2026-06-15 A | 2026-07-14 A | 29YB32-039, 29YB32-014 SS+4d | 100% |  |
| 29YB32-041 |  | Próba ciœnieniowa – Sekcja 05 | 6d | 2026-07-15 A | 2026-07-23 A | 29YB32-040 | 100% |  |
| 29YB32-042 |  | Izolacje – Sekcja 05 | 11d | 2026-07-22 A | 2026-08-05 A | 29YB32-041 | 100% |  |

| ID | WBS | Task | Duration | Start | Finish | Predecessors | Complete | Total float |
| --- | --- | --- | --- | --- | --- | --- | --- | --- |
| 29YB32-043 |  | Malowanie i oznakowanie – Sekcja 05 | 3d | 2026-08-07 A | 2026-08-13 A | 29YB32-042 FF+2d | 100% |  |
|  | SEKCJA 06 | **Sekcja 06** |  | 2026-04-30 | 2026-07-30 |  |  |  |
|  | PODSEKCJA | **Podsekcja 06.A** |  | 2026-04-30 | 2026-07-30 |  |  |  |
| 29YB32-044 |  | Prefabrykacja ruroci¹gów – Sekcja 06 | 10.8d | 2026-04-30 A | 2026-05-13 A | 29YB32-012, 29YB32-039 SS+5d | 100% |  |
| 29YB32-045 |  | Monta¿ ruroci¹gów – Sekcja 06 | 11.9d | 2026-06-16 A | 2026-06-30 A | 29YB32-044, 29YB32-014 SS+5d | 100% |  |
| 29YB32-046 |  | Próba ciœnieniowa – Sekcja 06 | 6d | 2026-07-07 A | 2026-07-17 A | 29YB32-045 | 100% |  |
| 29YB32-047 |  | Izolacje – Sekcja 06 | 12d | 2026-07-14 A | 2026-07-30 A | 29YB32-046 | 100% |  |
| 29YB32-048 |  | Malowanie i oznakowanie – Sekcja 06 | 3d | 2026-07-24 A | 2026-07-28 A | 29YB32-047 FF+2d | 100% |  |
|  | SEKCJA 07 | **Sekcja 07** |  | 2026-05-08 | 2026-08-12 |  |  |  |
| 29YB32-051 |  | Prefabrykacja ruroci¹gów – Sekcja 07 | 13.9d | 2026-05-08 A | 2026-05-26 A | 29YB32-012, 29YB32-044 SS+5d | 100% |  |
| 29YB32-052 |  | Monta¿ ruroci¹gów – Sekcja 07 | 19.3d | 2026-06-23 A | 2026-07-22 A | 29YB32-051, 29YB32-014 SS+6d | 100% |  |
| 29YB32-053 |  | Próba ciœnieniowa – Sekcja 07 | 5d | 2026-07-17 A | 2026-07-28 A | 29YB32-052 | 100% |  |
| 29YB32-054 |  | Izolacje – Sekcja 07 | 12d | 2026-07-21 A | 2026-08-05 A | 29YB32-053 | 100% |  |
| 29YB32-055 |  | Malowanie i oznakowanie – Sekcja 07 | 7d | 2026-07-31 A | 2026-08-12 A | 29YB32-054 FF+2d | 100% |  |
|  | SEKCJA 08 | **Sekcja 08** |  | 2026-05-18 | 2026-10-02 |  |  |  |
| 29YB32-056 |  | Prefabrykacja ruroci¹gów – Sekcja 08 | 8.1d | 2026-05-18 A | 2026-05-27 A | 29YB32-012, 29YB32-051 SS+5d | 100% |  |
| 29YB32-057 |  | Monta¿ ruroci¹gów – Sekcja 08 | 12.2d | 2026-06-22 A | 2026-07-07 A | 29YB32-056, 29YB32-014 SS+6d | 100% |  |
| 29YB32-058 |  | Próba ciœnieniowa – Sekcja 08 | 6d | 2026-07-03 A | 2026-07-10 A | 29YB32-057 | 100% |  |
| 29YB32-059 |  | Izolacje – Sekcja 08 | 7d | 2026-07-16 A | 2026-07-29 A | 29YB32-058 | 100% |  |
| 29YB32-060 |  | Malowanie i oznakowanie – Sekcja 08 | 7d | 2026-07-22 A | 2026-10-02 | 29YB32-059 FF+2d | 54% | 400.7d |
|  | SEKCJA 09 | **Sekcja 09** |  | 2026-05-19 | 2026-08-05 |  |  |  |
|  | PODSEKCJA | **Podsekcja 09.A** |  | 2026-05-19 | 2026-08-05 |  |  |  |
| 29YB32-063 |  | Prefabrykacja ruroci¹gów – Sekcja 09 | 10d | 2026-05-19 A | 2026-06-03 A | 29YB32-012, 29YB32-056 SS+5d | 100% |  |
| 29YB32-064 |  | Monta¿ ruroci¹gów – Sekcja 09 | 20.9d | 2026-06-23 A | 2026-07-20 A | 29YB32-063, 29YB32-014 SS+7d | 100% |  |
| 29YB32-065 |  | Próba ciœnieniowa – Sekcja 09 | 2d | 2026-07-16 A | 2026-07-21 A | 29YB32-064 | 100% |  |
| 29YB32-066 |  | Izolacje – Sekcja 09 | 4d | 2026-07-22 A | 2026-07-29 A | 29YB32-065 | 100% |  |
| 29YB32-067 |  | Malowanie i oznakowanie – Sekcja 09 | 7d | 2026-07-23 A | 2026-08-05 A | 29YB32-066 FF+2d | 100% |  |
|  | SEKCJA 10 | **Sekcja 10** |  | 2026-05-27 | 2026-07-27 |  |  |  |
| 29YB32-068 |  | Prefabrykacja ruroci¹gów – Sekcja 10 | 5d | 2026-05-27 A | 2026-06-03 A | 29YB32-012, 29YB32-063 SS+5d | 100% |  |
| 29YB32-069 |  | Monta¿ ruroci¹gów – Sekcja 10 | 13.6d | 2026-06-22 A | 2026-07-13 A | 29YB32-068, 29YB32-014 SS+9d | 100% |  |
| 29YB32-070 |  | Próba ciœnieniowa – Sekcja 10 | 2d | 2026-07-15 A | 2026-07-21 A | 29YB32-069 | 100% |  |
| 29YB32-071 |  | Izolacje – Sekcja 10 | 4d | 2026-07-16 A | 2026-07-22 A | 29YB32-070 | 100% |  |
| 29YB32-072 |  | Malowanie i oznakowanie – Sekcja 10 | 4d | 2026-07-21 A | 2026-07-27 A | 29YB32-071 FF+2d | 100% |  |
|  | SEKCJA 11 | **Sekcja 11** |  | 2026-06-08 | 2026-07-22 |  |  |  |
| 29YB32-075 |  | Prefabrykacja ruroci¹gów – Sekcja 11 | 11.3d | 2026-06-08 A | 2026-06-24 A | 29YB32-012, 29YB32-068 SS+5d | 100% |  |
| 29YB32-076 |  | Monta¿ ruroci¹gów – Sekcja 11 | 8.7d | 2026-06-19 A | 2026-07-03 A | 29YB32-075, 29YB32-014 SS+4d | 100% |  |
| 29YB32-077 |  | Próba ciœnieniowa – Sekcja 11 | 5d | 2026-07-01 A | 2026-07-07 A | 29YB32-076 | 100% |  |
| 29YB32-078 |  | Izolacje – Sekcja 11 | 6d | 2026-07-10 A | 2026-07-22 A | 29YB32-077 | 100% |  |
| 29YB32-079 |  | Malowanie i oznakowanie – Sekcja 11 | 4d | 2026-07-13 A | 2026-07-17 A | 29YB32-078 FF+2d | 100% |  |
|  | SEKCJA 12 | **Sekcja 12** |  | 2026-06-15 | 2026-07-28 |  |  |  |
|  | PODSEKCJA | **Podsekcja 12.A** |  | 2026-06-15 | 2026-07-28 |  |  |  |
| 29YB32-080 |  | Prefabrykacja ruroci¹gów – Sekcja 12 | 3.9d | 2026-06-15 A | 2026-06-18 A | 29YB32-012, 29YB32-075 SS+5d | 100% |  |
| 29YB32-081 |  | Monta¿ ruroci¹gów – Sekcja 12 | 16d | 2026-06-19 A | 2026-07-15 A | 29YB32-080, 29YB32-014 SS+4d | 100% |  |
| 29YB32-082 |  | Próba ciœnieniowa – Sekcja 12 | 5d | 2026-07-09 A | 2026-07-20 A | 29YB32-081 | 100% |  |
| 29YB32-083 |  | Izolacje – Sekcja 12 | 7d | 2026-07-17 A | 2026-07-28 A | 29YB32-082 | 100% |  |
| 29YB32-084 |  | Malowanie i oznakowanie – Sekcja 12 | 3d | 2026-07-22 A | 2026-07-27 A | 29YB32-083 FF+2d | 100% |  |
|  | SEKCJA 13 | **Sekcja 13** |  | 2026-06-18 | 2026-07-24 |  |  |  |
| 29YB32-087 |  | Prefabrykacja ruroci¹gów – Sekcja 13 | 5.7d | 2026-06-18 A | 2026-06-25 A | 29YB32-012, 29YB32-080 SS+5d | 100% |  |
| 29YB32-088 |  | Monta¿ ruroci¹gów – Sekcja 13 | 7d | 2026-06-24 A | 2026-07-06 A | 29YB32-087, 29YB32-014 SS+2d | 100% |  |
| 29YB32-089 |  | Próba ciœnieniowa – Sekcja 13 | 2d | 2026-07-02 A | 2026-07-08 A | 29YB32-088 | 100% |  |
| 29YB32-090 |  | Izolacje – Sekcja 13 | 10d | 2026-07-10 A | 2026-07-23 A | 29YB32-089 | 100% |  |
| 29YB32-091 |  | Malowanie i oznakowanie – Sekcja 13 | 8d | 2026-07-15 A | 2026-07-24 A | 29YB32-090 FF+2d | 100% |  |
|  | PROJ | **Projektowanie** |  | 2025-03-17 | 2026-10-09 |  |  |  |
|  | DOKUMENTAC | **Dokumentacja** |  | 2025-03-17 | 2026-10-09 |  |  |  |
| 29YB32-001 |  | Projekt wykonawczy – Budynek administracyjny | 116d | 2025-03-17 A | 2025-08-27 A |  | 100% |  |
| 29YB32-002 |  | Uzgodnienie dokumentacji z Inwestorem | 27d | 2025-08-28 A | 2026-10-09 | 29YB32-001 | 70% | 389.9d |
| 29YB32-003 |  | Zatwierdzenie dokumentacji do realizacji | 15d | 2025-10-07 A | 2025-10-27 A | 29YB32-002 | 100% |  |
| 29YB32-004 |  | KM: Dokumentacja zatwierdzona – Budynek administracyjny | 0d | 2025-10-24 A | 2025-10-24 | 29YB32-003 | 100% |  |
|  | ROZR | **Rozruch** |  | 2026-08-11 | 2026-09-29 |  |  |  |
|  | ROZRUCH | **Rozruch** |  | 2026-08-11 | 2026-09-29 |  |  |  |
| 29YB32-094 |  | Przegl¹d gotowoœci do rozruchu | 4d | 2026-08-11 A | 2026-08-19 A | 29YB32-093, 29YB32-019, 29YB32-024, 29YB32-026 | 100% |  |
| 29YB32-095 |  | Rozruch na zimno | 11d | 2026-08-13 A | 2026-08-28 A | 29YB32-094 | 100% |  |
| 29YB32-096 |  | Rozruch na gor¹co / próby ruchowe | 20d | 2026-08-28 A | 2026-09-28 A | 29YB32-095 | 100% |  |
| 29YB32-097 |  | KM: Odbiór koñcowy – Budynek administracyjny | 0d | 2026-09-29 | 2026-09-29 A | 29YB32-096 | 100% |  |
|  | ZAKU | **Zakupy** |  | 2025-04-18 | 2026-06-15 |  |  |  |
|  | DOSTAWY | **Dostawy** |  | 2026-01-05 | 2026-06-15 |  |  |  |
| 29YB32-008 |  | Produkcja u dostawcy | 67d | 2026-01-05 A | 2026-04-07 A | 29YB32-007 | 100% |  |
| 29YB32-009 |  | Testy FAT | 8d | 2026-04-13 A | 2026-04-22 A | 29YB32-008 | 100% |  |
| 29YB32-010 |  | Transport i dostawa na plac budowy | 37d | 2026-04-21 A | 2026-06-11 A | 29YB32-009 | 100% |  |
| 29YB32-011 |  | KM: Dostawa na budowê – Budynek administracyjny | 0d | 2026-06-15 A | 2026-06-15 | 29YB32-010 | 100% |  |

| ID | WBS | Task | Duration | Start | Finish | Predecessors | Complete |
| --- | --- | --- | --- | --- | --- | --- | --- |
|  | ZAMÓWIENIA | **Zamówienia** |  | 2025-04-18 | 2026-01-06 |  |  |
| 29YB32-005 |  | Zapytanie ofertowe | 29d | 2025-04-18 A | 2025-05-30 A | 29YB32-001 SS+20d | 100% |
| 29YB32-006 |  | Analiza i wybór ofert | 13d | 2025-05-26 A | 2025-06-13 A | 29YB32-005 | 100% |
| 29YB32-007 |  | Zawarcie umowy / zamówienie | 10d | 2025-12-24 A | 2026-01-06 A | 29YB32-006, 29YB32-004 SS, 26DX82-004 SS, 21MY97-004 SF+6d | 100% |

## Version 2 (data date 2026-10-07, saved 2026-10-07, file PL5001_SYNTH_schedule_Rev0H_DD07102026.xer)

Note of the change: M0: szkielet Vite+React+TS, guard, deploy, dane syntetyczne

Last finish 2028-01-28 → 2028-03-01 (+33d). Complete tasks 1044 → 1183.

Changed:

| ID | Task | Start | Finish | Complete | Total float |
| --- | --- | --- | --- | --- | --- |
| AUTOMATYKA_I | **Automatyka i AKPiA** |  | 2028-01-28 → 2028-03-01 (+33d) |  |  |
| 10PQ22 | **10PQ22 – System DCS** | 2025-06-18 → 2025-06-17 (-1d) | 2028-01-28 → 2028-03-01 (+33d) |  |  |
| BUDO | **Budowa** |  | 2026-10-09 → 2026-09-15 (-24d) |  |  |
| RUROCI¥GI | **Ruroci¹gi** |  | 2026-10-09 → 2026-09-11 (-28d) |  |  |
| SEKCJA 02 | **Sekcja 02** |  | 2026-10-02 → 2026-08-10 (-53d) |  |  |
| 10PQ22-021 | Monta¿ ruroci¹gów – Sekcja 02 | 2026-07-20 A → 2026-07-17 A (-3d) | 2026-10-02 → 2026-07-29 A (-65d) | 41% → 100% | 348.8d → none |
| SEKCJA 09 | **Sekcja 09** |  | 2026-10-08 → 2026-08-28 (-41d) |  |  |
| PODSEKCJA | **Podsekcja 09.A** |  | 2026-10-08 → 2026-08-28 (-41d) |  |  |
| 10PQ22-063 | Prefabrykacja ruroci¹gów – Sekcja 09 |  | 2026-10-08 → 2026-05-21 A (-140d) | 31% → 100% | 335.5d → none |
| SEKCJA 12 | **Sekcja 12** | 2026-05-25 → 2026-05-21 (-4d) | 2026-10-09 → 2026-08-19 (-51d) |  |  |
| PODSEKCJA | **Podsekcja 12.A** | 2026-05-25 → 2026-05-21 (-4d) | 2026-10-09 → 2026-08-19 (-51d) |  |  |
| 10PQ22-080 | Prefabrykacja ruroci¹gów – Sekcja 12 | 2026-05-25 A → 2026-05-21 A (-4d) | 2026-10-09 → 2026-06-05 A (-126d) | 27% → 100% | 337.5d → none |
| SEKCJA 16 | **Sekcja 16** |  | 2026-09-30 → 2026-08-17 (-44d) |  |  |
| 10PQ22-106 | Próba ciœnieniowa – Sekcja 16 | 2026-07-29 A → 2026-07-28 A (-1d) | 2026-09-30 → 2026-08-06 A (-55d) | 80% → 100% | 344d → none |
| SEKCJA 17 | **Sekcja 17** |  | 2026-10-01 → 2026-09-08 (-23d) |  |  |
| 10PQ22-113 | Próba ciœnieniowa – Sekcja 17 |  | 2026-10-01 → 2026-08-19 A (-43d) | 58% → 100% | 328.9d → none |
| 10PQ22-114 | Izolacje – Sekcja 17 | 2026-08-21 A → 2026-08-18 A (-3d) | 2026-10-01 → 2026-09-07 A (-24d) | 81% → 100% | 327.9d → none |
| PROJ | **Projektowanie** | 2025-06-18 → 2025-06-17 (-1d) | 2027-01-18 → 2026-01-08 (-375d) |  |  |
| DOKUMENTAC | **Dokumentacja** | 2025-06-18 → 2025-06-17 (-1d) | 2027-01-18 → 2026-01-08 (-375d) |  |  |
| 10PQ22-001 | Projekt wykonawczy – System DCS | 2025-06-18 A → 2025-06-17 A (-1d) | 2027-01-18 → 2025-11-17 A (-427d) | 27% → 100% | 324.9d → none |
| ROZR | **Rozruch** |  | 2028-01-28 → 2028-03-01 (+33d) |  |  |
| KAMIENIE M | **Kamienie milowe** | 2028-01-28 → 2028-03-01 (+33d) | 2028-01-28 → 2028-03-01 (+33d) |  |  |
| 10PQ22-122 | KM: Zakoñczenie rozruchu – PL5001-SE-03 | 2028-01-28 → 2028-03-01 (+33d) | 2028-01-28 → 2028-03-01 (+33d) |  | 0d → 27.9d |
| ROZRUCH | **Rozruch** |  | 2026-10-23 → 2026-10-20 (-3d) |  |  |
| 10PQ22-119 | Rozruch na zimno | 2026-09-21 A → 2026-09-22 A (+1d) | 2026-09-30 → 2026-10-06 A (+6d) | 88% → 100% | 325.9d → none |
| 10PQ22-120 | Rozruch na gor¹co / próby ruchowe | 2026-10-01 → 2026-10-07 A (+6d) | 2026-10-22 → 2026-10-19 (-3d) | 0% → 44% | 330.4d → 377.6d |
| 10PQ22-121 | KM: Odbiór koñcowy – System DCS | 2026-10-23 → 2026-10-20 (-3d) | 2026-10-23 → 2026-10-20 (-3d) |  | 330.4d → 384.6d |
| ZAKU | **Zakupy** |  | 2026-12-31 → 2026-07-09 (-175d) |  |  |
| DOSTAWY | **Dostawy** |  | 2026-12-31 → 2026-07-09 (-175d) |  |  |
| 10PQ22-008 | Produkcja u dostawcy |  | 2026-12-31 → 2026-05-07 A (-238d) | 17% → 100% | 324.9d → none |
| 12DQ22 | **12DQ22 – System SCADA** |  | 2027-09-07 → 2027-10-18 (+41d) |  |  |
| BUDO | **Budowa** |  | 2027-08-06 → 2027-08-20 (+14d) |  |  |
| AKPIA | **AKPiA** | 2027-05-11 → 2027-04-20 (-21d) | 2027-06-03 → 2027-05-13 (-21d) |  |  |
| 12DQ22-164 | Monta¿ uk³adów AKPiA | 2027-05-11 → 2027-04-20 (-21d) | 2027-06-03 → 2027-05-13 (-21d) |  | 148.9d → 213.9d |
| ELEKTRYKA | **Elektryka** | 2027-05-12 → 2027-04-21 (-21d) | 2027-06-11 → 2027-05-21 (-21d) |  |  |
| 12DQ22-074 | Pod³¹czenia i pomiary – trasa 10 | 2027-05-12 → 2027-04-21 (-21d) | 2027-05-21 → 2027-04-30 (-21d) |  | 189.9d → 254.9d |
| 12DQ22-134 | Pod³¹czenia i pomiary – trasa 20 | 2027-05-12 → 2027-04-21 (-21d) | 2027-05-21 → 2027-04-30 (-21d) |  | 189.9d → 254.9d |
| 12DQ22-025 | Uk³adanie kabli – trasa 02 | 2027-05-18 → 2027-04-27 (-21d) | 2027-06-03 → 2027-05-13 (-21d) |  | 148.9d → 213.9d |
| 12DQ22-037 | Uk³adanie kabli – trasa 04 | 2027-05-18 → 2027-04-27 (-21d) | 2027-05-27 → 2027-05-06 (-21d) |  | 185.9d → 250.9d |
| 12DQ22-049 | Uk³adanie kabli – trasa 06 | 2027-05-18 → 2027-04-27 (-21d) | 2027-06-09 → 2027-05-19 (-21d) |  | 176.9d → 241.9d |
| 12DQ22-061 | Uk³adanie kabli – trasa 08 | 2027-05-18 → 2027-04-27 (-21d) | 2027-05-28 → 2027-05-07 (-21d) |  | 184.9d → 249.9d |
| 12DQ22-073 | Uk³adanie kabli – trasa 10 | 2027-05-18 → 2027-04-27 (-21d) | 2027-05-21 → 2027-04-30 (-21d) |  | 189.9d → 254.9d |
| 12DQ22-085 | Uk³adanie kabli – trasa 12 | 2027-05-18 → 2027-04-27 (-21d) | 2027-06-11 → 2027-05-21 (-21d) |  | 174.9d → 239.9d |
| 12DQ22-097 | Uk³adanie kabli – trasa 14 | 2027-05-18 → 2027-04-27 (-21d) | 2027-05-25 → 2027-05-04 (-21d) |  | 187.9d → 252.9d |
| 12DQ22-109 | Uk³adanie kabli – trasa 16 | 2027-05-18 → 2027-04-27 (-21d) | 2027-05-28 → 2027-05-07 (-21d) |  | 184.9d → 249.9d |
| 12DQ22-121 | Uk³adanie kabli – trasa 18 | 2027-05-18 → 2027-04-27 (-21d) | 2027-06-11 → 2027-05-21 (-21d) |  | 174.9d → 239.9d |
| 12DQ22-133 | Uk³adanie kabli – trasa 20 | 2027-05-18 → 2027-04-27 (-21d) | 2027-05-21 → 2027-04-30 (-21d) |  | 189.9d → 254.9d |
| 12DQ22-145 | Uk³adanie kabli – trasa 22 | 2027-05-18 → 2027-04-27 (-21d) | 2027-06-03 → 2027-05-13 (-21d) |  | 180.9d → 245.9d |
| 12DQ22-157 | Uk³adanie kabli – trasa 24 | 2027-05-18 → 2027-04-27 (-21d) | 2027-05-31 → 2027-05-10 (-21d) |  | 151.9d → 216.9d |
| 12DQ22-110 | Pod³¹czenia i pomiary – trasa 16 | 2027-05-19 → 2027-04-28 (-21d) | 2027-05-28 → 2027-05-07 (-21d) |  | 184.9d → 249.9d |
| 12DQ22-062 | Pod³¹czenia i pomiary – trasa 08 | 2027-05-20 → 2027-04-29 (-21d) | 2027-05-28 → 2027-05-07 (-21d) |  | 184.9d → 249.9d |
| 12DQ22-038 | Pod³¹czenia i pomiary – trasa 04 | 2027-05-21 → 2027-04-30 (-21d) | 2027-05-27 → 2027-05-06 (-21d) |  | 185.9d → 250.9d |
| 12DQ22-098 | Pod³¹czenia i pomiary – trasa 14 | 2027-05-21 → 2027-04-30 (-21d) | 2027-05-25 → 2027-05-04 (-21d) |  | 187.9d → 252.9d |
| 12DQ22-158 | Pod³¹czenia i pomiary – trasa 24 | 2027-05-25 → 2027-05-04 (-21d) | 2027-05-31 → 2027-05-10 (-21d) |  | 151.9d → 216.9d |
| 12DQ22-146 | Pod³¹czenia i pomiary – trasa 22 | 2027-05-27 → 2027-05-06 (-21d) | 2027-06-03 → 2027-05-13 (-21d) |  | 180.9d → 245.9d |
| 12DQ22-026 | Pod³¹czenia i pomiary – trasa 02 | 2027-06-01 → 2027-05-11 (-21d) | 2027-06-03 → 2027-05-13 (-21d) |  | 148.9d → 213.9d |
| 12DQ22-086 | Pod³¹czenia i pomiary – trasa 12 | 2027-06-01 → 2027-05-11 (-21d) | 2027-06-11 → 2027-05-21 (-21d) |  | 174.9d → 239.9d |
| 12DQ22-050 | Pod³¹czenia i pomiary – trasa 06 | 2027-06-04 → 2027-05-14 (-21d) | 2027-06-09 → 2027-05-19 (-21d) |  | 176.9d → 241.9d |
| 12DQ22-122 | Pod³¹czenia i pomiary – trasa 18 | 2027-06-09 → 2027-05-19 (-21d) | 2027-06-11 → 2027-05-21 (-21d) |  | 174.9d → 239.9d |
| MONTA¯ | **Monta¿** |  | 2027-08-06 → 2027-07-16 (-21d) |  |  |
| 12DQ22-014 | Monta¿ urz¹dzeñ g³ównych | 2027-05-04 → 2027-04-13 (-21d) | 2027-08-05 → 2027-07-15 (-21d) |  | 103.9d → 168.9d |
| 12DQ22-165 | KM: Zakoñczenie monta¿u – System SCADA | 2027-08-06 → 2027-07-16 (-21d) | 2027-08-06 → 2027-07-16 (-21d) |  | 103.9d → 168.9d |
| RUROCI¥GI | **Ruroci¹gi** |  | 2027-07-02 → 2027-08-20 (+49d) |  |  |
| SEKCJA 01 | **Sekcja 01** |  | 2027-06-18 → 2027-05-31 (-18d) |  |  |
| 12DQ22-016 | Monta¿ ruroci¹gów – Sekcja 01 | 2027-05-04 → 2027-04-13 (-21d) | 2027-05-26 → 2027-05-06 (-20d) |  | 137.5d → 202.5d |
| 12DQ22-017 | Próba ciœnieniowa – Sekcja 01 | 2027-05-27 → 2027-05-07 (-20d) | 2027-06-01 → 2027-05-12 (-20d) |  | 137.5d → 202.5d |
| 12DQ22-018 | Izolacje – Sekcja 01 | 2027-06-02 → 2027-05-13 (-20d) | 2027-06-16 → 2027-05-27 (-20d) |  | 137.5d → 202.5d |
| 12DQ22-019 | Malowanie i oznakowanie – Sekcja 01 | 2027-06-11 → 2027-05-24 (-18d) | 2027-06-18 → 2027-05-31 (-18d) |  | 137.5d → 202.5d |
| SEKCJA 02 | **Sekcja 02** |  | 2027-06-28 → 2027-06-07 (-21d) |  |  |
| 12DQ22-021 | Monta¿ ruroci¹gów – Sekcja 02 | 2027-05-18 → 2027-04-27 (-21d) | 2027-06-14 → 2027-05-24 (-21d) |  | 131.8d → 196.8d |

| ID | Task | Start | Finish | Total float |
| --- | --- | --- | --- | --- |
| 12DQ22-022 | Próba ciœnieniowa – Sekcja 02 | 2027-06-15 → 2027-05-25 (-21d) | 2027-06-16 → 2027-05-26 (-21d) | 131.8d → 196.8d |
| 12DQ22-023 | Izolacje – Sekcja 02 | 2027-06-17 → 2027-05-27 (-21d) | 2027-06-24 → 2027-06-03 (-21d) | 131.8d → 196.8d |
| 12DQ22-024 | Malowanie i oznakowanie – Sekcja 02 | 2027-06-25 → 2027-06-04 (-21d) | 2027-06-28 → 2027-06-07 (-21d) | 131.8d → 196.8d |
| SEKCJA 03 | **Sekcja 03** |  | 2027-06-17 → 2027-05-27 (-21d) |  |
| PODSEKCJA | **Podsekcja 03.A** |  | 2027-06-17 → 2027-05-27 (-21d) |  |
| 12DQ22-028 | Monta¿ ruroci¹gów – Sekcja 03 | 2027-05-06 → 2027-04-15 (-21d) | 2027-05-25 → 2027-05-04 (-21d) | 170.7d → 235.7d |
| 12DQ22-029 | Próba ciœnieniowa – Sekcja 03 | 2027-05-26 → 2027-05-05 (-21d) | 2027-06-01 → 2027-05-11 (-21d) | 170.7d → 235.7d |
| 12DQ22-030 | Izolacje – Sekcja 03 | 2027-06-02 → 2027-05-12 (-21d) | 2027-06-15 → 2027-05-25 (-21d) | 170.7d → 235.7d |
| 12DQ22-031 | Malowanie i oznakowanie – Sekcja 03 | 2027-06-09 → 2027-05-19 (-21d) | 2027-06-17 → 2027-05-27 (-21d) | 170.7d → 235.7d |
| SEKCJA 04 | **Sekcja 04** |  | 2027-06-15 → 2027-05-26 (-20d) |  |
| 12DQ22-033 | Monta¿ ruroci¹gów – Sekcja 04 | 2027-05-11 → 2027-04-20 (-21d) | 2027-05-26 → 2027-05-06 (-20d) | 172.1d → 237.1d |
| 12DQ22-034 | Próba ciœnieniowa – Sekcja 04 | 2027-05-27 → 2027-05-07 (-20d) | 2027-06-03 → 2027-05-14 (-20d) | 172.1d → 237.1d |
| 12DQ22-035 | Izolacje – Sekcja 04 | 2027-06-04 → 2027-05-17 (-18d) | 2027-06-11 → 2027-05-24 (-18d) | 172.1d → 237.1d |
| 12DQ22-036 | Malowanie i oznakowanie – Sekcja 04 | 2027-06-10 → 2027-05-21 (-20d) | 2027-06-15 → 2027-05-26 (-20d) | 172.1d → 237.1d |
| SEKCJA 05 | **Sekcja 05** |  | 2027-06-22 → 2027-07-19 (+27d) |  |
| 12DQ22-040 | Monta¿ ruroci¹gów – Sekcja 05 | 2027-05-14 → 2027-04-23 (-21d) | 2027-06-02 → 2027-05-12 (-21d) | 167.9d → 232.9d |
| 12DQ22-041 | Próba ciœnieniowa – Sekcja 05 | 2027-06-03 → 2027-06-30 (+27d) | 2027-06-09 → 2027-07-06 (+27d) | 167.9d → 199.6d |
| 12DQ22-042 | Izolacje – Sekcja 05 | 2027-06-10 → 2027-07-07 (+27d) | 2027-06-18 → 2027-07-15 (+27d) | 167.9d → 199.6d |
| 12DQ22-043 | Malowanie i oznakowanie – Sekcja 05 | 2027-06-16 → 2027-07-13 (+27d) | 2027-06-22 → 2027-07-19 (+27d) | 167.9d → 199.6d |
| SEKCJA 06 | **Sekcja 06** |  | 2027-06-01 → 2027-05-11 (-21d) |  |
| PODSEKCJA | **Podsekcja 06.A** |  | 2027-06-01 → 2027-05-11 (-21d) |  |
| 12DQ22-045 | Monta¿ ruroci¹gów – Sekcja 06 | 2027-05-04 → 2027-04-13 (-21d) | 2027-05-13 → 2027-04-22 (-21d) | 182.8d → 247.8d |
| 12DQ22-046 | Próba ciœnieniowa – Sekcja 06 | 2027-05-14 → 2027-04-23 (-21d) | 2027-05-17 → 2027-04-26 (-21d) | 182.8d → 247.8d |
| 12DQ22-047 | Izolacje – Sekcja 06 | 2027-05-18 → 2027-04-27 (-21d) | 2027-05-28 → 2027-05-07 (-21d) | 182.8d → 247.8d |
| 12DQ22-048 | Malowanie i oznakowanie – Sekcja 06 | 2027-05-21 → 2027-04-30 (-21d) | 2027-06-01 → 2027-05-11 (-21d) | 182.8d → 247.8d |
| SEKCJA 07 | **Sekcja 07** |  | 2027-06-24 → 2027-06-04 (-20d) |  |
| 12DQ22-052 | Monta¿ ruroci¹gów – Sekcja 07 | 2027-05-07 → 2027-04-16 (-21d) | 2027-06-01 → 2027-05-12 (-20d) | 165.2d → 230.2d |
| 12DQ22-053 | Próba ciœnieniowa – Sekcja 07 | 2027-06-02 → 2027-05-13 (-20d) | 2027-06-08 → 2027-05-19 (-20d) | 165.2d → 230.2d |
| 12DQ22-054 | Izolacje – Sekcja 07 | 2027-06-09 → 2027-05-20 (-20d) | 2027-06-22 → 2027-06-02 (-20d) | 165.2d → 230.2d |
| 12DQ22-055 | Malowanie i oznakowanie – Sekcja 07 | 2027-06-18 → 2027-05-31 (-18d) | 2027-06-24 → 2027-06-04 (-20d) | 165.2d → 230.2d |
| SEKCJA 08 | **Sekcja 08** |  | 2027-06-25 → 2027-07-27 (+32d) |  |
| 12DQ22-057 | Monta¿ ruroci¹gów – Sekcja 08 | 2027-05-06 → 2027-04-15 (-21d) | 2027-06-04 → 2027-05-17 (-18d) | 164.5d → 229.5d |
| 12DQ22-058 | Próba ciœnieniowa – Sekcja 08 | 2027-06-07 → 2027-05-18 (-20d) | 2027-06-10 → 2027-05-21 (-20d) | 164.5d → 229.5d |
| 12DQ22-059 | Izolacje – Sekcja 08 | 2027-06-11 → 2027-07-13 (+32d) | 2027-06-23 → 2027-07-23 (+30d) | 164.5d → 193.6d |
| 12DQ22-060 | Malowanie i oznakowanie – Sekcja 08 | 2027-06-22 → 2027-07-22 (+30d) | 2027-06-25 → 2027-07-27 (+32d) | 164.5d → 193.6d |
| SEKCJA 09 | **Sekcja 09** |  | 2027-06-28 → 2027-06-08 (-20d) |  |
| PODSEKCJA | **Podsekcja 09.A** |  | 2027-06-28 → 2027-06-08 (-20d) |  |
| 12DQ22-064 | Monta¿ ruroci¹gów – Sekcja 09 | 2027-05-18 → 2027-04-27 (-21d) | 2027-06-04 → 2027-05-17 (-18d) | 163d → 228d |
| 12DQ22-065 | Próba ciœnieniowa – Sekcja 09 | 2027-06-07 → 2027-05-18 (-20d) | 2027-06-09 → 2027-05-20 (-20d) | 163d → 228d |
| 12DQ22-066 | Izolacje – Sekcja 09 | 2027-06-10 → 2027-05-21 (-20d) | 2027-06-24 → 2027-06-04 (-20d) | 163d → 228d |
| 12DQ22-067 | Malowanie i oznakowanie – Sekcja 09 | 2027-06-18 → 2027-05-31 (-18d) | 2027-06-28 → 2027-06-08 (-20d) | 163d → 228d |
| SEKCJA 10 | **Sekcja 10** |  | 2027-07-01 → 2027-08-20 (+50d) |  |
| 12DQ22-069 | Monta¿ ruroci¹gów – Sekcja 10 | 2027-05-18 → 2027-07-07 (+50d) | 2027-06-14 → 2027-08-03 (+50d) | 160d → 174.7d |
| 12DQ22-070 | Próba ciœnieniowa – Sekcja 10 | 2027-06-15 → 2027-08-04 (+50d) | 2027-06-17 → 2027-08-06 (+50d) | 160d → 174.7d |
| 12DQ22-071 | Izolacje – Sekcja 10 | 2027-06-18 → 2027-08-09 (+52d) | 2027-06-29 → 2027-08-18 (+50d) | 160d → 174.7d |
| 12DQ22-072 | Malowanie i oznakowanie – Sekcja 10 | 2027-06-23 → 2027-08-12 (+50d) | 2027-07-01 → 2027-08-20 (+50d) | 160d → 174.7d |
| SEKCJA 11 | **Sekcja 11** |  | 2027-07-02 → 2027-06-11 (-21d) |  |
| 12DQ22-076 | Monta¿ ruroci¹gów – Sekcja 11 | 2027-05-10 → 2027-04-19 (-21d) | 2027-06-10 → 2027-05-20 (-21d) | 159.7d → 224.7d |
| 12DQ22-077 | Próba ciœnieniowa – Sekcja 11 | 2027-06-11 → 2027-05-21 (-21d) | 2027-06-16 → 2027-05-26 (-21d) | 159.7d → 224.7d |
| 12DQ22-078 | Izolacje – Sekcja 11 | 2027-06-17 → 2027-05-27 (-21d) | 2027-06-30 → 2027-06-09 (-21d) | 159.7d → 224.7d |
| 12DQ22-079 | Malowanie i oznakowanie – Sekcja 11 | 2027-06-23 → 2027-06-02 (-21d) | 2027-07-02 → 2027-06-11 (-21d) | 159.7d → 224.7d |
| SEKCJA 12 | **Sekcja 12** |  | 2027-06-25 → 2027-06-07 (-18d) |  |
| PODSEKCJA | **Podsekcja 12.A** |  | 2027-06-25 → 2027-06-07 (-18d) |  |
| 12DQ22-081 | Monta¿ ruroci¹gów – Sekcja 12 | 2027-05-14 → 2027-04-23 (-21d) | 2027-06-01 → 2027-05-12 (-20d) | 164.4d → 229.4d |
| 12DQ22-082 | Próba ciœnieniowa – Sekcja 12 | 2027-06-02 → 2027-05-13 (-20d) | 2027-06-09 → 2027-05-20 (-20d) | 164.4d → 229.4d |
| 12DQ22-083 | Izolacje – Sekcja 12 | 2027-06-10 → 2027-05-21 (-20d) | 2027-06-23 → 2027-06-03 (-20d) | 164.4d → 229.4d |
| 12DQ22-084 | Malowanie i oznakowanie – Sekcja 12 | 2027-06-22 → 2027-06-02 (-20d) | 2027-06-25 → 2027-06-07 (-18d) | 164.4d → 229.4d |
| SEKCJA 13 | **Sekcja 13** |  | 2027-06-22 → 2027-06-02 (-20d) |  |
| 12DQ22-088 | Monta¿ ruroci¹gów – Sekcja 13 | 2027-05-07 → 2027-04-16 (-21d) | 2027-06-02 → 2027-05-13 (-20d) | 167d → 232d |
| 12DQ22-089 | Próba ciœnieniowa – Sekcja 13 | 2027-06-03 → 2027-05-14 (-20d) | 2027-06-09 → 2027-05-20 (-20d) | 167d → 232d |
| 12DQ22-090 | Izolacje – Sekcja 13 | 2027-06-10 → 2027-05-21 (-20d) | 2027-06-18 → 2027-05-31 (-18d) | 167d → 232d |
| 12DQ22-091 | Malowanie i oznakowanie – Sekcja 13 | 2027-06-15 → 2027-05-26 (-20d) | 2027-06-22 → 2027-06-02 (-20d) | 167d → 232d |
| SEKCJA 14 | **Sekcja 14** |  | 2027-06-04 → 2027-05-17 (-18d) |  |
| 12DQ22-093 | Monta¿ ruroci¹gów – Sekcja 14 | 2027-05-13 → 2027-04-22 (-21d) | 2027-05-21 → 2027-05-03 (-18d) | 179.5d → 244.5d |
| 12DQ22-094 | Próba ciœnieniowa – Sekcja 14 | 2027-05-24 → 2027-05-04 (-20d) | 2027-05-27 → 2027-05-07 (-20d) | 179.5d → 244.5d |
| 12DQ22-095 | Izolacje – Sekcja 14 | 2027-05-28 → 2027-05-10 (-18d) | 2027-06-02 → 2027-05-13 (-20d) | 179.5d → 244.5d |
| 12DQ22-096 | Malowanie i oznakowanie – Sekcja 14 | 2027-06-01 → 2027-05-12 (-20d) | 2027-06-04 → 2027-05-17 (-18d) | 179.5d → 244.5d |
| SEKCJA 15 | **Sekcja 15** |  | 2027-05-28 → 2027-05-10 (-18d) |  |
| PODSEKCJA | **Podsekcja 15.A** |  | 2027-05-28 → 2027-05-10 (-18d) |  |
| 12DQ22-100 | Monta¿ ruroci¹gów – Sekcja 15 | 2027-05-04 → 2027-04-13 (-21d) | 2027-05-12 → 2027-04-22 (-20d) | 184.4d → 249.4d |

| ID | Task | Start | Finish | Complete | Total float |
| --- | --- | --- | --- | --- | --- |
| 12DQ22-101 | Próba ciœnieniowa – Sekcja 15 | 2027-05-13 → 2027-04-23 (-20d) | 2027-05-14 → 2027-04-26 (-18d) |  | 184.4d → 249.4d |
| 12DQ22-102 | Izolacje – Sekcja 15 | 2027-05-17 → 2027-04-27 (-20d) | 2027-05-26 → 2027-05-06 (-20d) |  | 184.4d → 249.4d |
| 12DQ22-103 | Malowanie i oznakowanie – Sekcja 15 | 2027-05-27 → 2027-05-07 (-20d) | 2027-05-28 → 2027-05-10 (-18d) |  | 184.4d → 249.4d |
| SEKCJA 16 | **Sekcja 16** |  | 2027-06-02 → 2027-06-24 (+22d) |  |  |
| 12DQ22-105 | Monta¿ ruroci¹gów – Sekcja 16 | 2027-05-07 → 2027-04-16 (-21d) | 2027-05-13 → 2027-04-23 (-20d) |  | 181d → 246d |
| 12DQ22-106 | Próba ciœnieniowa – Sekcja 16 | 2027-05-14 → 2027-04-26 (-18d) | 2027-05-18 → 2027-04-28 (-20d) |  | 181d → 246d |
| 12DQ22-107 | Izolacje – Sekcja 16 | 2027-05-19 → 2027-06-10 (+22d) | 2027-05-31 → 2027-06-22 (+22d) |  | 181d → 216.6d |
| 12DQ22-108 | Malowanie i oznakowanie – Sekcja 16 | 2027-05-31 → 2027-06-22 (+22d) | 2027-06-02 → 2027-06-24 (+22d) |  | 181d → 216.6d |
| SEKCJA 17 | **Sekcja 17** |  | 2027-06-24 → 2027-06-03 (-21d) |  |  |
| 12DQ22-112 | Monta¿ ruroci¹gów – Sekcja 17 | 2027-05-14 → 2027-04-23 (-21d) | 2027-06-02 → 2027-05-12 (-21d) |  | 165.8d → 230.8d |
| 12DQ22-113 | Próba ciœnieniowa – Sekcja 17 | 2027-06-03 → 2027-05-13 (-21d) | 2027-06-08 → 2027-05-18 (-21d) |  | 165.8d → 230.8d |
| 12DQ22-114 | Izolacje – Sekcja 17 | 2027-06-09 → 2027-05-19 (-21d) | 2027-06-22 → 2027-06-01 (-21d) |  | 165.8d → 230.8d |
| 12DQ22-115 | Malowanie i oznakowanie – Sekcja 17 | 2027-06-18 → 2027-05-28 (-21d) | 2027-06-24 → 2027-06-03 (-21d) |  | 165.8d → 230.8d |
| SEKCJA 18 | **Sekcja 18** |  | 2027-06-17 → 2027-07-19 (+32d) |  |  |
| PODSEKCJA | **Podsekcja 18.A** |  | 2027-06-17 → 2027-07-19 (+32d) |  |  |
| 12DQ22-117 | Monta¿ ruroci¹gów – Sekcja 18 | 2027-05-13 → 2027-04-22 (-21d) | 2027-05-25 → 2027-05-05 (-20d) |  | 170.4d → 235.4d |
| 12DQ22-118 | Próba ciœnieniowa – Sekcja 18 | 2027-05-26 → 2027-05-06 (-20d) | 2027-06-02 → 2027-05-13 (-20d) |  | 170.4d → 235.4d |
| 12DQ22-119 | Izolacje – Sekcja 18 | 2027-06-03 → 2027-07-05 (+32d) | 2027-06-15 → 2027-07-15 (+30d) |  | 170.4d → 199.6d |
| 12DQ22-120 | Malowanie i oznakowanie – Sekcja 18 | 2027-06-14 → 2027-07-14 (+30d) | 2027-06-17 → 2027-07-19 (+32d) |  | 170.4d → 199.6d |
| SEKCJA 19 | **Sekcja 19** |  | 2027-06-09 → 2027-05-19 (-21d) |  |  |
| 12DQ22-124 | Monta¿ ruroci¹gów – Sekcja 19 | 2027-05-17 → 2027-04-26 (-21d) | 2027-05-26 → 2027-05-05 (-21d) |  | 176.7d → 241.7d |
| 12DQ22-125 | Próba ciœnieniowa – Sekcja 19 | 2027-05-27 → 2027-05-06 (-21d) | 2027-05-28 → 2027-05-07 (-21d) |  | 176.7d → 241.7d |
| 12DQ22-126 | Izolacje – Sekcja 19 | 2027-05-31 → 2027-05-10 (-21d) | 2027-06-07 → 2027-05-17 (-21d) |  | 176.7d → 241.7d |
| 12DQ22-127 | Malowanie i oznakowanie – Sekcja 19 | 2027-06-02 → 2027-05-12 (-21d) | 2027-06-09 → 2027-05-19 (-21d) |  | 176.7d → 241.7d |
| SEKCJA 20 | **Sekcja 20** |  | 2027-05-31 → 2027-05-10 (-21d) |  |  |
| 12DQ22-129 | Monta¿ ruroci¹gów – Sekcja 20 | 2027-05-04 → 2027-04-13 (-21d) | 2027-05-11 → 2027-04-20 (-21d) |  | 183.9d → 248.9d |
| 12DQ22-130 | Próba ciœnieniowa – Sekcja 20 | 2027-05-12 → 2027-04-21 (-21d) | 2027-05-14 → 2027-04-23 (-21d) |  | 183.9d → 248.9d |
| 12DQ22-131 | Izolacje – Sekcja 20 | 2027-05-17 → 2027-04-26 (-21d) | 2027-05-27 → 2027-05-06 (-21d) |  | 183.9d → 248.9d |
| 12DQ22-132 | Malowanie i oznakowanie – Sekcja 20 | 2027-05-24 → 2027-05-03 (-21d) | 2027-05-31 → 2027-05-10 (-21d) |  | 183.9d → 248.9d |
| SEKCJA 21 | **Sekcja 21** |  | 2027-06-09 → 2027-05-20 (-20d) |  |  |
| PODSEKCJA | **Podsekcja 21.A** |  | 2027-06-09 → 2027-05-20 (-20d) |  |  |
| 12DQ22-136 | Monta¿ ruroci¹gów – Sekcja 21 | 2027-05-14 → 2027-04-23 (-21d) | 2027-05-21 → 2027-05-03 (-18d) |  | 176.5d → 241.5d |
| 12DQ22-137 | Próba ciœnieniowa – Sekcja 21 | 2027-05-24 → 2027-05-04 (-20d) | 2027-05-28 → 2027-05-10 (-18d) |  | 176.5d → 241.5d |
| 12DQ22-138 | Izolacje – Sekcja 21 | 2027-05-31 → 2027-05-11 (-20d) | 2027-06-07 → 2027-05-18 (-20d) |  | 176.5d → 241.5d |
| 12DQ22-139 | Malowanie i oznakowanie – Sekcja 21 | 2027-05-31 → 2027-05-11 (-20d) | 2027-06-09 → 2027-05-20 (-20d) |  | 176.5d → 241.5d |
| SEKCJA 22 | **Sekcja 22** |  | 2027-06-18 → 2027-05-31 (-18d) |  |  |
| 12DQ22-141 | Monta¿ ruroci¹gów – Sekcja 22 | 2027-05-17 → 2027-04-26 (-21d) | 2027-05-31 → 2027-05-11 (-20d) |  | 169d → 234d |
| 12DQ22-142 | Próba ciœnieniowa – Sekcja 22 | 2027-06-01 → 2027-05-12 (-20d) | 2027-06-04 → 2027-05-17 (-18d) |  | 169d → 234d |
| 12DQ22-143 | Izolacje – Sekcja 22 | 2027-06-07 → 2027-05-18 (-20d) | 2027-06-16 → 2027-05-27 (-20d) |  | 169d → 234d |
| 12DQ22-144 | Malowanie i oznakowanie – Sekcja 22 | 2027-06-11 → 2027-05-24 (-18d) | 2027-06-18 → 2027-05-31 (-18d) |  | 169d → 234d |
| SEKCJA 23 | **Sekcja 23** |  | 2027-06-18 → 2027-05-31 (-18d) |  |  |
| 12DQ22-148 | Monta¿ ruroci¹gów – Sekcja 23 | 2027-05-12 → 2027-04-21 (-21d) | 2027-05-24 → 2027-05-04 (-20d) |  | 169.5d → 234.5d |
| 12DQ22-149 | Próba ciœnieniowa – Sekcja 23 | 2027-05-25 → 2027-05-05 (-20d) | 2027-06-01 → 2027-05-12 (-20d) |  | 169.5d → 234.5d |
| 12DQ22-150 | Izolacje – Sekcja 23 | 2027-06-02 → 2027-05-13 (-20d) | 2027-06-16 → 2027-05-27 (-20d) |  | 169.5d → 234.5d |
| 12DQ22-151 | Malowanie i oznakowanie – Sekcja 23 | 2027-06-16 → 2027-05-27 (-20d) | 2027-06-18 → 2027-05-31 (-18d) |  | 169.5d → 234.5d |
| SEKCJA 24 | **Sekcja 24** |  | 2027-06-14 → 2027-05-24 (-21d) |  |  |
| PODSEKCJA | **Podsekcja 24.A** |  | 2027-06-14 → 2027-05-24 (-21d) |  |  |
| 12DQ22-153 | Monta¿ ruroci¹gów – Sekcja 24 | 2027-05-10 → 2027-04-19 (-21d) | 2027-05-25 → 2027-05-04 (-21d) |  | 141.7d → 206.7d |
| 12DQ22-154 | Próba ciœnieniowa – Sekcja 24 | 2027-05-26 → 2027-05-05 (-21d) | 2027-06-01 → 2027-05-11 (-21d) |  | 141.7d → 206.7d |
| 12DQ22-155 | Izolacje – Sekcja 24 | 2027-06-02 → 2027-05-12 (-21d) | 2027-06-10 → 2027-05-20 (-21d) |  | 141.7d → 206.7d |
| 12DQ22-156 | Malowanie i oznakowanie – Sekcja 24 | 2027-06-03 → 2027-05-13 (-21d) | 2027-06-14 → 2027-05-24 (-21d) |  | 141.7d → 206.7d |
| SEKCJA 25 | **Sekcja 25** |  | 2027-06-10 → 2027-05-21 (-20d) |  |  |
| 12DQ22-160 | Monta¿ ruroci¹gów – Sekcja 25 | 2027-05-04 → 2027-04-13 (-21d) | 2027-05-21 → 2027-05-03 (-18d) |  | 143.6d → 208.6d |
| 12DQ22-161 | Próba ciœnieniowa – Sekcja 25 | 2027-05-24 → 2027-05-04 (-20d) | 2027-05-25 → 2027-05-05 (-20d) |  | 143.6d → 208.6d |
| 12DQ22-162 | Izolacje – Sekcja 25 | 2027-05-26 → 2027-05-06 (-20d) | 2027-06-08 → 2027-05-19 (-20d) |  | 143.6d → 208.6d |
| 12DQ22-163 | Malowanie i oznakowanie – Sekcja 25 | 2027-06-02 → 2027-05-13 (-20d) | 2027-06-10 → 2027-05-21 (-20d) |  | 143.6d → 208.6d |
| ROZR | **Rozruch** | 2027-08-06 → 2027-07-16 (-21d) | 2027-09-07 → 2027-10-18 (+41d) |  |  |
| ROZRUCH | **Rozruch** | 2027-08-06 → 2027-07-16 (-21d) | 2027-09-07 → 2027-10-18 (+41d) |  |  |
| 12DQ22-166 | Przegl¹d gotowoœci do rozruchu | 2027-08-06 → 2027-07-16 (-21d) | 2027-08-12 → 2027-07-22 (-21d) |  | 103.9d → 168.9d |
| 12DQ22-167 | Rozruch na zimno | 2027-08-13 → 2027-09-23 (+41d) | 2027-08-23 → 2027-10-01 (+39d) |  | 103.9d → 125.6d |
| 12DQ22-168 | Rozruch na gor¹co / próby ruchowe | 2027-08-24 → 2027-10-04 (+41d) | 2027-09-06 → 2027-10-15 (+39d) |  | 103.9d → 125.6d |
| 12DQ22-169 | KM: Odbiór koñcowy – System SCADA | 2027-09-07 → 2027-10-18 (+41d) | 2027-09-07 → 2027-10-18 (+41d) |  | 103.9d → 125.6d |
| ZAKU | **Zakupy** |  | 2027-05-04 → 2027-04-13 (-21d) |  |  |
| DOSTAWY | **Dostawy** |  | 2027-05-04 → 2027-04-13 (-21d) |  |  |
| 12DQ22-008 | Produkcja u dostawcy |  | 2027-03-31 → 2027-03-10 (-21d) | 55% → 61% | 143.9d → 194.6d |
| 12DQ22-009 | Testy FAT | 2027-04-01 → 2027-03-11 (-21d) | 2027-04-06 → 2027-03-16 (-21d) |  | 103.9d → 168.9d |
| 12DQ22-010 | Transport i dostawa na plac budowy | 2027-04-07 → 2027-03-17 (-21d) | 2027-05-03 → 2027-04-12 (-21d) |  | 103.9d → 168.9d |
| 12DQ22-011 | KM: Dostawa na budowê – System SCADA | 2027-05-04 → 2027-04-13 (-21d) | 2027-05-04 → 2027-04-13 (-21d) |  | 103.9d → 168.9d |
| 16KE73 | **16KE73 – System zabezpieczeñ** |  | 2027-01-04 → 2027-01-05 (+1d) |  |  |
| BUDO | **Budowa** |  | 2026-11-30 → 2026-12-07 (+7d) |  |  |

| ID | Task | Start | Finish | Complete | Total float |
| --- | --- | --- | --- | --- | --- |
| ELEKTRYKA | **Elektryka** |  | 2026-10-23 → 2026-10-27 (+4d) |  |  |
| 16KE73-026 | Pod³¹czenia i pomiary – trasa 02 | 2026-09-18 A → 2026-09-17 A (-1d) | 2026-10-02 → 2026-10-05 A (+3d) | 67% → 100% | 313.9d → none |
| 16KE73-049 | Uk³adanie kabli – trasa 06 | 2026-09-30 → 2026-09-17 A (-13d) | 2026-10-23 → 2026-10-08 (-15d) | 0% → 87% | 339.9d → 399.6d |
| 16KE73-121 | Uk³adanie kabli – trasa 18 | 2026-09-30 → 2026-09-17 A (-13d) | 2026-10-16 → 2026-10-05 A (-11d) | 0% → 100% | 344.9d → none |
| 16KE73-073 | Uk³adanie kabli – trasa 10 | 2026-09-30 → 2026-09-18 A (-12d) | 2026-10-22 → 2026-10-27 (+5d) | 0% → 11% | 340.9d → 399.6d |
| 16KE73-085 | Uk³adanie kabli – trasa 12 | 2026-09-21 A → 2026-09-18 A (-3d) | 2026-10-19 → 2026-10-21 (+2d) | 14% → 30% | 347.9d → 399.6d |
| 16KE73-109 | Uk³adanie kabli – trasa 16 | 2026-09-21 A → 2026-09-18 A (-3d) | 2026-10-08 → 2026-10-06 A (-2d) | 42% → 100% | 351.9d → none |
| 16KE73-025 | Uk³adanie kabli – trasa 02 | 2026-09-21 A → 2026-09-22 A (+1d) | 2026-10-06 → 2026-10-05 A (-1d) | 44% → 100% | 312.9d → none |
| 16KE73-098 | Pod³¹czenia i pomiary – trasa 14 | 2026-09-28 A → 2026-09-22 A (-6d) | 2026-10-06 → 2026-10-02 A (-4d) | 12% → 100% | 353.9d → none |
| 16KE73-134 | Pod³¹czenia i pomiary – trasa 20 | 2026-09-22 A → 2026-09-25 A (+3d) | 2026-10-05 → 2026-10-02 A (-3d) | 25% → 100% | 315.9d → none |
| 16KE73-062 | Pod³¹czenia i pomiary – trasa 08 | 2026-09-24 A → 2026-09-28 A (+4d) | 2026-10-01 → 2026-10-07 (+6d) | 77% → 79% | 352.9d → 401.6d |
| 16KE73-110 | Pod³¹czenia i pomiary – trasa 16 |  | 2026-09-30 → 2026-10-06 A (+6d) | 55% → 100% | 353.9d → none |
| 16KE73-122 | Pod³¹czenia i pomiary – trasa 18 | 2026-10-14 → 2026-10-05 A (-9d) | 2026-10-16 → 2026-10-06 A (-10d) | 0% → 100% | 344.9d → none |
| 16KE73-086 | Pod³¹czenia i pomiary – trasa 12 | 2026-10-09 → 2026-10-06 A (-3d) | 2026-10-19 → 2026-10-12 (-7d) | 0% → 34% | 343.3d → 397.6d |
| 16KE73-050 | Pod³¹czenia i pomiary – trasa 06 | 2026-10-21 → 2026-10-07 (-14d) | 2026-10-23 → 2026-10-09 (-14d) |  | 339.9d → 400.6d |
| 16KE73-061 | Uk³adanie kabli – trasa 08 | 2026-09-30 → 2026-10-07 (+7d) | 2026-10-19 → 2026-10-26 (+7d) |  | 343.9d → 389.6d |
| 16KE73-074 | Pod³¹czenia i pomiary – trasa 10 | 2026-10-16 → 2026-10-07 A (-9d) | 2026-10-22 → 2026-10-08 (-14d) | 0% → 42% | 340.9d → 398.6d |
| MONTA¯ | **Monta¿** |  | 2026-11-19 → 2026-11-06 (-13d) |  |  |
| 16KE73-014 | Monta¿ urz¹dzeñ g³ównych | 2026-09-03 A → 2026-09-04 A (+1d) | 2026-11-18 → 2026-11-05 (-13d) | 28% → 55% | 283.9d → 333.6d |
| 16KE73-141 | KM: Zakoñczenie monta¿u – System zabezpieczeñ | 2026-11-19 → 2026-11-06 (-13d) | 2026-11-19 → 2026-11-06 (-13d) |  | 279.1d → 338.8d |
| RUROCI¥GI | **Ruroci¹gi** |  | 2026-11-30 → 2026-12-07 (+7d) |  |  |
| SEKCJA 01 | **Sekcja 01** |  | 2026-11-17 → 2026-10-15 (-33d) |  |  |
| 16KE73-016 | Monta¿ ruroci¹gów – Sekcja 01 | 2026-09-17 A → 2026-09-16 A (-1d) | 2026-10-12 → 2026-10-01 A (-11d) | 19% → 100% | 300.1d → none |
| 16KE73-017 | Próba ciœnieniowa – Sekcja 01 | 2026-10-13 → 2026-10-01 A (-12d) | 2026-10-14 → 2026-10-02 A (-12d) | 0% → 100% | 293.3d → none |
| 16KE73-018 | Izolacje – Sekcja 01 | 2026-11-03 → 2026-10-07 A (-27d) | 2026-11-13 → 2026-10-13 (-31d) | 0% → 44% | 280.9d → 350.6d |
| 16KE73-019 | Malowanie i oznakowanie – Sekcja 01 | 2026-11-13 → 2026-10-13 (-31d) | 2026-11-17 → 2026-10-15 (-33d) |  | 280.9d → 354.6d |
| SEKCJA 02 | **Sekcja 02** |  | 2026-11-09 → 2026-11-19 (+10d) |  |  |
| 16KE73-021 | Monta¿ ruroci¹gów – Sekcja 02 | 2026-09-16 A → 2026-09-17 A (+1d) | 2026-10-21 → 2026-10-20 (-1d) | 23% → 53% | 291.2d → 340.9d |
| 16KE73-022 | Próba ciœnieniowa – Sekcja 02 | 2026-10-22 → 2026-10-21 (-1d) | 2026-10-23 → 2026-10-22 (-1d) |  | 286.1d → 338.3d |
| 16KE73-023 | Izolacje – Sekcja 02 | 2026-10-26 → 2026-11-05 (+10d) | 2026-11-05 → 2026-11-17 (+12d) |  | 286.1d → 329.6d |
| 16KE73-024 | Malowanie i oznakowanie – Sekcja 02 | 2026-10-29 → 2026-11-10 (+12d) | 2026-11-09 → 2026-11-19 (+10d) |  | 286.1d → 329.6d |
| SEKCJA 03 | **Sekcja 03** |  | 2026-11-30 → 2026-11-09 (-21d) |  |  |
| PODSEKCJA | **Podsekcja 03.A** |  | 2026-11-30 → 2026-11-09 (-21d) |  |  |
| 16KE73-028 | Monta¿ ruroci¹gów – Sekcja 03 | 2026-10-16 → 2026-09-17 A (-29d) | 2026-11-13 → 2026-10-14 (-30d) | 0% → 70% | 313.1d → 384.8d |
| 16KE73-029 | Próba ciœnieniowa – Sekcja 03 | 2026-11-16 → 2026-10-15 (-32d) | 2026-11-20 → 2026-10-21 (-30d) |  | 313.1d → 386.1d |
| 16KE73-030 | Izolacje – Sekcja 03 | 2026-11-23 → 2026-10-22 (-32d) | 2026-11-26 → 2026-10-27 (-30d) |  | 313.1d → 386.1d |
| 16KE73-031 | Malowanie i oznakowanie – Sekcja 03 | 2026-11-23 → 2026-11-02 (-21d) | 2026-11-30 → 2026-11-09 (-21d) |  | 313.1d → 379.6d |
| SEKCJA 04 | **Sekcja 04** |  | 2026-10-02 → 2026-10-13 (+11d) |  |  |
| 16KE73-034 | Próba ciœnieniowa – Sekcja 04 | 2026-09-25 A → 2026-09-29 A (+4d) | 2026-09-30 → 2026-10-02 A (+2d) | 40% → 100% | 346.8d → none |
| 16KE73-035 | Izolacje – Sekcja 04 |  | 2026-09-30 → 2026-10-09 (+9d) | 88% → 68% | 345.9d → 396.5d |
| 16KE73-036 | Malowanie i oznakowanie – Sekcja 04 | 2026-09-30 → 2026-10-09 (+9d) | 2026-10-02 → 2026-10-13 (+11d) |  | 354.7d → 398.4d |
| SEKCJA 05 | **Sekcja 05** |  | 2026-11-09 → 2026-10-26 (-14d) |  |  |
| 16KE73-040 | Monta¿ ruroci¹gów – Sekcja 05 | 2026-09-09 A → 2026-09-07 A (-2d) | 2026-10-21 → 2026-10-26 (+5d) | 17% → 26% | 339.8d → 392.5d |
| 16KE73-041 | Próba ciœnieniowa – Sekcja 05 | 2026-10-22 → 2026-10-06 A (-16d) | 2026-10-27 → 2026-10-09 (-18d) | 0% → 15% | 328.3d → 391.5d |
| 16KE73-042 | Izolacje – Sekcja 05 | 2026-10-28 → 2026-10-12 (-16d) | 2026-11-05 → 2026-10-20 (-16d) |  | 328.3d → 391.2d |
| 16KE73-043 | Malowanie i oznakowanie – Sekcja 05 | 2026-11-06 → 2026-10-21 (-16d) | 2026-11-09 → 2026-10-22 (-18d) |  | 328.3d → 391.2d |
| SEKCJA 06 | **Sekcja 06** |  | 2026-10-09 → 2026-10-06 (-3d) |  |  |
| PODSEKCJA | **Podsekcja 06.A** |  | 2026-10-09 → 2026-10-06 (-3d) |  |  |
| 16KE73-048 | Malowanie i oznakowanie – Sekcja 06 | 2026-09-30 → 2026-09-25 A (-5d) | 2026-10-09 → 2026-10-06 A (-3d) | 0% → 100% | 349.9d → none |
| 16KE73-047 | Izolacje – Sekcja 06 | 2026-09-30 → 2026-09-29 A (-1d) | 2026-10-05 → 2026-10-02 A (-3d) | 0% → 100% | 351.9d → none |
| SEKCJA 07 | **Sekcja 07** |  | 2026-10-05 → 2026-10-20 (+15d) |  |  |
| 16KE73-054 | Izolacje – Sekcja 07 | 2026-09-24 A → 2026-09-28 A (+4d) | 2026-10-01 → 2026-10-16 (+15d) | 78% → 19% | 349.5d → 398.2d |
| 16KE73-055 | Malowanie i oznakowanie – Sekcja 07 | 2026-10-01 → 2026-10-16 (+15d) | 2026-10-05 → 2026-10-20 (+15d) |  | 353.7d → 393.5d |
| SEKCJA 08 | **Sekcja 08** |  | 2026-10-22 → 2026-10-15 (-7d) |  |  |
| 16KE73-057 | Monta¿ ruroci¹gów – Sekcja 08 | 2026-09-07 A → 2026-09-02 A (-5d) | 2026-10-07 → 2026-10-05 A (-2d) | 71% → 100% | 340.5d → none |
| 16KE73-058 | Próba ciœnieniowa – Sekcja 08 | 2026-10-08 → 2026-10-07 A (-1d) | 2026-10-15 → 2026-10-08 (-7d) | 0% → 52% | 340d → 392.6d |
| 16KE73-060 | Malowanie i oznakowanie – Sekcja 08 | 2026-10-14 → 2026-10-07 (-7d) | 2026-10-22 → 2026-10-15 (-7d) |  | 340d → 395.7d |
| 16KE73-059 | Izolacje – Sekcja 08 | 2026-10-16 → 2026-10-09 (-7d) | 2026-10-20 → 2026-10-13 (-7d) |  | 340d → 395.7d |
| SEKCJA 09 | **Sekcja 09** | 2026-03-04 → 2026-03-05 (+1d) | 2026-11-13 → 2026-11-04 (-9d) |  |  |
| PODSEKCJA | **Podsekcja 09.A** | 2026-03-04 → 2026-03-05 (+1d) | 2026-11-13 → 2026-11-04 (-9d) |  |  |
| 16KE73-063 | Prefabrykacja ruroci¹gów – Sekcja 09 | 2026-03-04 A → 2026-03-05 A (+1d) | 2026-10-15 → 2026-03-26 A (-203d) | 12% → 100% | 367.1d → none |
| 16KE73-064 | Monta¿ ruroci¹gów – Sekcja 09 | 2026-09-17 A → 2026-09-23 A (+6d) | 2026-10-22 → 2026-10-13 (-9d) | 13% → 70% | 331.3d → 378d |
| 16KE73-065 | Próba ciœnieniowa – Sekcja 09 | 2026-10-23 → 2026-10-14 (-9d) | 2026-10-27 → 2026-10-16 (-11d) |  | 324.8d → 381.7d |
| 16KE73-066 | Izolacje – Sekcja 09 | 2026-10-28 → 2026-10-19 (-9d) | 2026-11-11 → 2026-11-02 (-9d) |  | 324.8d → 381.7d |
| 16KE73-067 | Malowanie i oznakowanie – Sekcja 09 | 2026-11-04 → 2026-10-26 (-9d) | 2026-11-13 → 2026-11-04 (-9d) |  | 324.8d → 381.7d |
| SEKCJA 10 | **Sekcja 10** |  | 2026-10-22 → 2026-12-07 (+46d) |  |  |
| 16KE73-070 | Próba ciœnieniowa – Sekcja 10 | 2026-09-30 A → 2026-09-28 A (-2d) | 2026-10-05 → 2026-10-06 A (+1d) | 18% → 100% | 339.9d → none |
| 16KE73-071 | Izolacje – Sekcja 10 | 2026-10-06 → 2026-10-07 A (+1d) | 2026-10-20 → 2026-10-19 (-1d) | 0% → 13% | 340.8d → 390.6d |
| 16KE73-072 | Malowanie i oznakowanie – Sekcja 10 | 2026-10-20 → 2026-12-03 (+44d) | 2026-10-22 → 2026-12-07 (+46d) |  | 340.8d → 359.6d |
| SEKCJA 11 | **Sekcja 11** |  | 2026-10-02 → 2026-10-06 (+4d) |  |  |

| ID | Task | Start | Finish | Complete | Total float |
| --- | --- | --- | --- | --- | --- |
| 16KE73-078 | Izolacje – Sekcja 11 | 2026-09-28 A → 2026-09-23 A (-5d) | 2026-09-30 → 2026-10-05 A (+5d) | 83% → 100% | 350.2d → none |
| 16KE73-079 | Malowanie i oznakowanie – Sekcja 11 | 2026-09-24 A → 2026-09-28 A (+4d) | 2026-10-02 → 2026-10-06 A (+4d) | 61% → 100% | 353.2d → none |
| SEKCJA 12 | **Sekcja 12** |  | 2026-10-02 → 2026-10-13 (+11d) |  |  |
| PODSEKCJA | **Podsekcja 12.A** |  | 2026-10-02 → 2026-10-13 (+11d) |  |  |
| 16KE73-083 | Izolacje – Sekcja 12 | 2026-09-25 A → 2026-09-30 A (+5d) | 2026-09-30 → 2026-10-13 (+13d) | 73% → 16% | 351.3d → 399d |
| 16KE73-084 | Malowanie i oznakowanie – Sekcja 12 |  | 2026-10-02 → 2026-10-08 (+6d) | 43% → 58% | 351.9d → 402d |
| 16KE73-089 | Próba ciœnieniowa – Sekcja 13 | 2026-09-30 A → 2026-09-28 A (-2d) | 2026-09-30 → 2026-10-05 A (+5d) | 64% → 100% | 338.9d → none |
| 16KE73-090 | Izolacje – Sekcja 13 | 2026-10-01 → 2026-10-07 A (+6d) |  | 0% → 28% | 342.1d → 389.6d |
| SEKCJA 14 | **Sekcja 14** | 2026-04-07 → 2026-04-06 (-1d) | 2026-10-20 → 2026-10-15 (-5d) |  |  |
| 16KE73-092 | Prefabrykacja ruroci¹gów – Sekcja 14 | 2026-04-07 A → 2026-04-06 A (-1d) | 2026-10-05 → 2026-04-20 A (-168d) | 54% → 100% | 368.1d → none |
| 16KE73-094 | Próba ciœnieniowa – Sekcja 14 | 2026-09-28 A → 2026-09-29 A (+1d) | 2026-09-30 → 2026-10-01 A (+1d) | 67% → 100% | 342d → none |
| 16KE73-095 | Izolacje – Sekcja 14 | 2026-10-01 → 2026-10-06 A (+5d) | 2026-10-16 → 2026-10-13 (-3d) | 0% → 51% | 342.9d → 389.7d |
| 16KE73-096 | Malowanie i oznakowanie – Sekcja 14 | 2026-10-12 → 2026-10-07 (-5d) | 2026-10-20 → 2026-10-15 (-5d) |  | 342.9d → 395.7d |
| SEKCJA 15 | **Sekcja 15** |  | 2026-11-03 → 2026-10-22 (-12d) |  |  |
| PODSEKCJA | **Podsekcja 15.A** |  | 2026-11-03 → 2026-10-22 (-12d) |  |  |
| 16KE73-100 | Monta¿ ruroci¹gów – Sekcja 15 |  | 2026-10-15 → 2026-10-02 A (-13d) | 39% → 100% | 342.1d → none |
| 16KE73-101 | Próba ciœnieniowa – Sekcja 15 | 2026-10-16 → 2026-10-02 A (-14d) | 2026-10-20 → 2026-10-08 (-12d) | 0% → 33% | 332.8d → 392.8d |
| 16KE73-102 | Izolacje – Sekcja 15 | 2026-10-21 → 2026-10-09 (-12d) | 2026-10-30 → 2026-10-20 (-10d) |  | 332.8d → 391.6d |
| 16KE73-103 | Malowanie i oznakowanie – Sekcja 15 | 2026-10-23 → 2026-10-13 (-10d) | 2026-11-03 → 2026-10-22 (-12d) |  | 332.8d → 391.6d |
| SEKCJA 16 | **Sekcja 16** | 2026-04-23 → 2026-04-21 (-2d) |  |  |  |
| 16KE73-104 | Prefabrykacja ruroci¹gów – Sekcja 16 | 2026-04-23 A → 2026-04-21 A (-2d) | 2026-10-06 → 2026-04-29 A (-160d) | 14% → 100% | 366.1d → none |
| 16KE73-105 | Monta¿ ruroci¹gów – Sekcja 16 | 2026-09-09 A → 2026-09-10 A (+1d) | 2026-10-02 → 2026-09-30 A (-2d) | 74% → 100% | 343.4d → none |
| 16KE73-107 | Izolacje – Sekcja 16 | 2026-09-30 → 2026-10-05 A (+5d) |  | 0% → 37% | 344.9d → 392.1d |
| SEKCJA 17 | **Sekcja 17** |  | 2026-10-06 → 2026-10-19 (+13d) |  |  |
| 16KE73-114 | Izolacje – Sekcja 17 | 2026-09-29 A → 2026-10-01 A (+2d) | 2026-09-30 → 2026-10-15 (+15d) | 87% → 22% | 346.4d → 395.1d |
| 16KE73-115 | Malowanie i oznakowanie – Sekcja 17 | 2026-09-30 → 2026-10-13 (+13d) | 2026-10-06 → 2026-10-19 (+13d) |  | 352.9d → 393.8d |
| SEKCJA 18 | **Sekcja 18** |  | 2026-10-23 → 2026-10-13 (-10d) |  |  |
| PODSEKCJA | **Podsekcja 18.A** |  | 2026-10-23 → 2026-10-13 (-10d) |  |  |
| 16KE73-117 | Monta¿ ruroci¹gów – Sekcja 18 | 2026-09-18 A → 2026-09-11 A (-7d) | 2026-10-12 → 2026-09-29 A (-13d) | 33% → 100% | 343.1d → none |
| 16KE73-118 | Próba ciœnieniowa – Sekcja 18 | 2026-10-13 → 2026-10-06 A (-7d) | 2026-10-15 → 2026-10-07 (-8d) | 0% → 37% | 339.7d → 394.8d |
| 16KE73-119 | Izolacje – Sekcja 18 | 2026-10-16 → 2026-10-06 A (-10d) | 2026-10-21 → 2026-10-08 (-13d) | 0% → 50% | 339.7d → 397.8d |
| 16KE73-120 | Malowanie i oznakowanie – Sekcja 18 | 2026-10-16 → 2026-10-07 A (-9d) | 2026-10-23 → 2026-10-13 (-10d) | 0% → 15% | 339.7d → 397.6d |
| SEKCJA 19 | **Sekcja 19** |  | 2026-10-16 → 2026-10-12 (-4d) |  |  |
| 16KE73-124 | Monta¿ ruroci¹gów – Sekcja 19 | 2026-09-09 A → 2026-09-10 A (+1d) | 2026-10-01 → 2026-10-05 A (+4d) | 87% → 100% | 344.6d → none |
| 16KE73-125 | Próba ciœnieniowa – Sekcja 19 | 2026-10-02 → 2026-10-01 A (-1d) | 2026-10-09 → 2026-10-07 (-2d) | 0% → 78% | 344.7d → 396.3d |
| 16KE73-127 | Malowanie i oznakowanie – Sekcja 19 | 2026-10-08 → 2026-10-07 A (-1d) | 2026-10-16 → 2026-10-08 (-8d) | 0% → 66% | 344.7d → 396.6d |
| 16KE73-126 | Izolacje – Sekcja 19 | 2026-10-12 → 2026-10-08 (-4d) | 2026-10-14 → 2026-10-12 (-2d) |  | 344.7d → 397.3d |
| SEKCJA 20 | **Sekcja 20** |  | 2026-11-02 → 2026-10-21 (-12d) |  |  |
| 16KE73-129 | Monta¿ ruroci¹gów – Sekcja 20 | 2026-09-16 A → 2026-09-14 A (-2d) | 2026-10-15 → 2026-10-05 A (-10d) | 21% → 100% | 298d → none |
| 16KE73-130 | Próba ciœnieniowa – Sekcja 20 | 2026-10-16 → 2026-10-07 A (-9d) | 2026-10-21 → 2026-10-09 (-12d) | 0% → 22% | 291.4d → 349.6d |
| 16KE73-131 | Izolacje – Sekcja 20 | 2026-10-22 → 2026-10-12 (-10d) | 2026-10-29 → 2026-10-19 (-10d) |  | 291.4d → 350.5d |
| 16KE73-132 | Malowanie i oznakowanie – Sekcja 20 | 2026-10-29 → 2026-10-19 (-10d) | 2026-11-02 → 2026-10-21 (-12d) |  | 291.4d → 350.5d |
| SEKCJA 21 | **Sekcja 21** |  | 2026-10-02 → 2026-10-15 (+13d) |  |  |
| PODSEKCJA | **Podsekcja 21.A** |  | 2026-10-02 → 2026-10-15 (+13d) |  |  |
| 16KE73-138 | Izolacje – Sekcja 21 | 2026-09-30 A → 2026-10-01 A (+1d) | 2026-09-30 → 2026-10-13 (+13d) | 68% → 13% | 307.9d → 357.6d |
| 16KE73-139 | Malowanie i oznakowanie – Sekcja 21 | 2026-10-01 → 2026-10-14 (+13d) | 2026-10-02 → 2026-10-15 (+13d) |  | 312d → 354.4d |
| ROZR | **Rozruch** | 2026-11-19 → 2026-11-20 (+1d) | 2027-01-04 → 2027-01-05 (+1d) |  |  |
| ROZRUCH | **Rozruch** | 2026-11-19 → 2026-11-20 (+1d) | 2027-01-04 → 2027-01-05 (+1d) |  |  |
| 16KE73-142 | Przegl¹d gotowoœci do rozruchu | 2026-11-19 → 2026-11-20 (+1d) | 2026-11-26 → 2026-11-27 (+1d) |  | 279.1d → 329.6d |
| 16KE73-143 | Rozruch na zimno | 2026-11-27 → 2026-11-30 (+3d) | 2026-12-17 → 2026-12-18 (+1d) |  | 279.1d → 329.6d |
| 16KE73-144 | Rozruch na gor¹co / próby ruchowe | 2026-12-18 → 2026-12-21 (+3d) | 2027-01-01 → 2027-01-04 (+3d) |  | 279.1d → 329.6d |
| 16KE73-145 | KM: Odbiór koñcowy – System zabezpieczeñ | 2027-01-04 → 2027-01-05 (+1d) | 2027-01-04 → 2027-01-05 (+1d) |  | 279.1d → 329.6d |
| 21MY97 | **21MY97 – Analizatory spalin (CEMS)** |  | 2027-08-11 → 2027-08-30 (+19d) |  |  |
| BUDO | **Budowa** |  | 2027-07-14 → 2027-08-05 (+22d) |  |  |
| AKPIA | **AKPiA** | 2027-05-21 → 2027-03-24 (-58d) | 2027-06-04 → 2027-04-07 (-58d) |  |  |
| 21MY97-080 | Monta¿ uk³adów AKPiA | 2027-05-21 → 2027-03-24 (-58d) | 2027-06-04 → 2027-04-07 (-58d) |  | 141.3d → 234.6d |
| ELEKTRYKA | **Elektryka** | 2027-05-28 → 2027-03-31 (-58d) | 2027-06-23 → 2027-04-26 (-58d) |  |  |
| 21MY97-025 | Uk³adanie kabli – trasa 02 | 2027-05-28 → 2027-03-31 (-58d) | 2027-06-17 → 2027-04-20 (-58d) |  | 132.3d → 225.6d |
| 21MY97-037 | Uk³adanie kabli – trasa 04 | 2027-05-28 → 2027-03-31 (-58d) | 2027-06-23 → 2027-04-26 (-58d) |  | 166.3d → 259.6d |
| 21MY97-049 | Uk³adanie kabli – trasa 06 | 2027-05-28 → 2027-03-31 (-58d) | 2027-06-22 → 2027-04-23 (-60d) |  | 167.3d → 260.6d |
| 21MY97-061 | Uk³adanie kabli – trasa 08 | 2027-05-28 → 2027-03-31 (-58d) | 2027-06-07 → 2027-04-08 (-60d) |  | 178.3d → 271.6d |
| 21MY97-073 | Uk³adanie kabli – trasa 10 | 2027-05-28 → 2027-03-31 (-58d) | 2027-06-07 → 2027-04-08 (-60d) |  | 140.3d → 233.6d |
| 21MY97-074 | Pod³¹czenia i pomiary – trasa 10 | 2027-05-31 → 2027-04-01 (-60d) | 2027-06-07 → 2027-04-08 (-60d) |  | 140.3d → 233.6d |
| 21MY97-062 | Pod³¹czenia i pomiary – trasa 08 | 2027-06-02 → 2027-04-05 (-58d) | 2027-06-07 → 2027-04-08 (-60d) |  | 178.3d → 271.6d |
| 21MY97-026 | Pod³¹czenia i pomiary – trasa 02 | 2027-06-10 → 2027-04-13 (-58d) | 2027-06-17 → 2027-04-20 (-58d) |  | 132.3d → 225.6d |
| 21MY97-038 | Pod³¹czenia i pomiary – trasa 04 | 2027-06-15 → 2027-04-16 (-60d) | 2027-06-23 → 2027-04-26 (-58d) |  | 166.3d → 259.6d |
| 21MY97-050 | Pod³¹czenia i pomiary – trasa 06 | 2027-06-15 → 2027-04-16 (-60d) | 2027-06-22 → 2027-04-23 (-60d) |  | 167.3d → 260.6d |
| MONTA¯ | **Monta¿** |  | 2027-07-02 → 2027-05-04 (-59d) |  |  |
| 21MY97-014 | Monta¿ urz¹dzeñ g³ównych | 2027-05-14 → 2027-03-17 (-58d) | 2027-06-15 → 2027-04-16 (-60d) |  | 122.6d → 215.9d |
| 21MY97-081 | KM: Zakoñczenie monta¿u – Analizatory spalin (CEMS) | 2027-07-02 → 2027-05-04 (-59d) | 2027-07-02 → 2027-05-04 (-59d) |  | 122.6d → 215.9d |

| ID | Task | Start | Finish | Complete | Total float |
| --- | --- | --- | --- | --- | --- |
| RUROCI¥GI | **Ruroci¹gi** | 2026-02-27 → 2026-02-23 (-4d) | 2027-07-14 → 2027-08-05 (+22d) |  |  |
| SEKCJA 01 | **Sekcja 01** | 2026-02-27 → 2026-02-23 (-4d) | 2027-06-21 → 2027-07-20 (+29d) |  |  |
| 21MY97-015 | Prefabrykacja ruroci¹gów – Sekcja 01 | 2026-02-27 A → 2026-02-23 A (-4d) | 2026-09-30 → 2026-03-06 A (-208d) | 80% → 100% | 386.4d → none |
| 21MY97-016 | Monta¿ ruroci¹gów – Sekcja 01 | 2027-05-20 → 2027-06-21 (+32d) | 2027-06-01 → 2027-06-30 (+29d) |  | 130.9d → 160.2d |
| 21MY97-017 | Próba ciœnieniowa – Sekcja 01 | 2027-06-02 → 2027-07-01 (+29d) | 2027-06-07 → 2027-07-06 (+29d) |  | 130.9d → 160.2d |
| 21MY97-018 | Izolacje – Sekcja 01 | 2027-06-08 → 2027-07-07 (+29d) | 2027-06-17 → 2027-07-16 (+29d) |  | 130.9d → 160.2d |
| 21MY97-019 | Malowanie i oznakowanie – Sekcja 01 | 2027-06-16 → 2027-07-15 (+29d) | 2027-06-21 → 2027-07-20 (+29d) |  | 130.9d → 160.2d |
| SEKCJA 02 | **Sekcja 02** |  | 2027-06-29 → 2027-04-29 (-61d) |  |  |
| 21MY97-021 | Monta¿ ruroci¹gów – Sekcja 02 | 2027-05-28 → 2027-03-31 (-58d) | 2027-06-07 → 2027-04-07 (-61d) |  | 124.5d → 217.8d |
| 21MY97-022 | Próba ciœnieniowa – Sekcja 02 | 2027-06-08 → 2027-04-08 (-61d) | 2027-06-09 → 2027-04-09 (-61d) |  | 124.5d → 217.8d |
| 21MY97-023 | Izolacje – Sekcja 02 | 2027-06-10 → 2027-04-12 (-59d) | 2027-06-25 → 2027-04-27 (-59d) |  | 124.5d → 217.8d |
| 21MY97-024 | Malowanie i oznakowanie – Sekcja 02 | 2027-06-24 → 2027-04-26 (-59d) | 2027-06-29 → 2027-04-29 (-61d) |  | 124.5d → 217.8d |
| SEKCJA 03 | **Sekcja 03** |  | 2027-07-07 → 2027-05-07 (-61d) |  |  |
| PODSEKCJA | **Podsekcja 03.A** |  | 2027-07-07 → 2027-05-07 (-61d) |  |  |
| 21MY97-028 | Monta¿ ruroci¹gów – Sekcja 03 | 2027-05-21 → 2027-03-24 (-58d) | 2027-06-23 → 2027-04-23 (-61d) |  | 156.5d → 249.8d |
| 21MY97-029 | Próba ciœnieniowa – Sekcja 03 | 2027-06-24 → 2027-04-26 (-59d) | 2027-06-25 → 2027-04-27 (-59d) |  | 156.5d → 249.8d |
| 21MY97-030 | Izolacje – Sekcja 03 | 2027-06-28 → 2027-04-28 (-61d) | 2027-07-05 → 2027-05-05 (-61d) |  | 156.5d → 249.8d |
| 21MY97-031 | Malowanie i oznakowanie – Sekcja 03 | 2027-06-28 → 2027-04-28 (-61d) | 2027-07-07 → 2027-05-07 (-61d) |  | 156.5d → 249.8d |
| SEKCJA 04 | **Sekcja 04** |  | 2027-06-28 → 2027-04-29 (-60d) |  |  |
| 21MY97-033 | Monta¿ ruroci¹gów – Sekcja 04 | 2027-05-25 → 2027-03-26 (-60d) | 2027-06-08 → 2027-04-09 (-60d) |  | 163.1d → 256.4d |
| 21MY97-034 | Próba ciœnieniowa – Sekcja 04 | 2027-06-09 → 2027-04-12 (-58d) | 2027-06-16 → 2027-04-19 (-58d) |  | 163.1d → 256.4d |
| 21MY97-035 | Izolacje – Sekcja 04 | 2027-06-17 → 2027-04-20 (-58d) | 2027-06-24 → 2027-04-27 (-58d) |  | 163.1d → 256.4d |
| 21MY97-036 | Malowanie i oznakowanie – Sekcja 04 | 2027-06-24 → 2027-04-27 (-58d) | 2027-06-28 → 2027-04-29 (-60d) |  | 163.1d → 256.4d |
| SEKCJA 05 | **Sekcja 05** |  | 2027-07-05 → 2027-05-05 (-61d) |  |  |
| 21MY97-040 | Monta¿ ruroci¹gów – Sekcja 05 | 2027-05-18 → 2027-03-19 (-60d) | 2027-06-14 → 2027-04-14 (-61d) |  | 158.7d → 252d |
| 21MY97-041 | Próba ciœnieniowa – Sekcja 05 | 2027-06-15 → 2027-04-15 (-61d) | 2027-06-16 → 2027-04-16 (-61d) |  | 158.7d → 252d |
| 21MY97-042 | Izolacje – Sekcja 05 | 2027-06-17 → 2027-04-19 (-59d) | 2027-07-01 → 2027-05-03 (-59d) |  | 158.7d → 252d |
| 21MY97-043 | Malowanie i oznakowanie – Sekcja 05 | 2027-06-28 → 2027-04-28 (-61d) | 2027-07-05 → 2027-05-05 (-61d) |  | 158.7d → 252d |
| SEKCJA 06 | **Sekcja 06** |  | 2027-06-11 → 2027-04-14 (-58d) |  |  |
| PODSEKCJA | **Podsekcja 06.A** |  | 2027-06-11 → 2027-04-14 (-58d) |  |  |
| 21MY97-045 | Monta¿ ruroci¹gów – Sekcja 06 | 2027-05-21 → 2027-03-24 (-58d) | 2027-05-27 → 2027-03-30 (-58d) |  | 174.1d → 267.4d |
| 21MY97-046 | Próba ciœnieniowa – Sekcja 06 | 2027-05-28 → 2027-03-31 (-58d) | 2027-06-02 → 2027-04-05 (-58d) |  | 174.1d → 267.4d |
| 21MY97-048 | Malowanie i oznakowanie – Sekcja 06 | 2027-06-02 → 2027-04-05 (-58d) | 2027-06-11 → 2027-04-14 (-58d) |  | 174.1d → 267.4d |
| 21MY97-047 | Izolacje – Sekcja 06 | 2027-06-03 → 2027-04-06 (-58d) | 2027-06-09 → 2027-04-12 (-58d) |  | 174.1d → 267.4d |
| SEKCJA 07 | **Sekcja 07** |  | 2027-07-14 → 2027-05-14 (-61d) |  |  |
| 21MY97-052 | Monta¿ ruroci¹gów – Sekcja 07 | 2027-05-21 → 2027-03-24 (-58d) | 2027-06-22 → 2027-04-22 (-61d) |  | 151.9d → 245.2d |
| 21MY97-053 | Próba ciœnieniowa – Sekcja 07 | 2027-06-23 → 2027-04-23 (-61d) | 2027-06-24 → 2027-04-26 (-59d) |  | 151.9d → 245.2d |
| 21MY97-054 | Izolacje – Sekcja 07 | 2027-06-25 → 2027-04-27 (-59d) | 2027-07-12 → 2027-05-12 (-61d) |  | 151.9d → 245.2d |
| 21MY97-055 | Malowanie i oznakowanie – Sekcja 07 | 2027-07-05 → 2027-05-05 (-61d) | 2027-07-14 → 2027-05-14 (-61d) |  | 151.9d → 245.2d |
| SEKCJA 08 | **Sekcja 08** |  | 2027-06-23 → 2027-08-05 (+43d) |  |  |
| 21MY97-057 | Monta¿ ruroci¹gów – Sekcja 08 | 2027-05-25 → 2027-03-26 (-60d) | 2027-06-07 → 2027-04-08 (-60d) |  | 166d → 259.3d |
| 21MY97-058 | Próba ciœnieniowa – Sekcja 08 | 2027-06-08 → 2027-04-09 (-60d) | 2027-06-10 → 2027-04-13 (-58d) |  | 166d → 259.3d |
| 21MY97-059 | Izolacje – Sekcja 08 | 2027-06-11 → 2027-07-26 (+45d) | 2027-06-21 → 2027-08-03 (+43d) |  | 166d → 186.6d |
| 21MY97-060 | Malowanie i oznakowanie – Sekcja 08 | 2027-06-15 → 2027-07-28 (+43d) | 2027-06-23 → 2027-08-05 (+43d) |  | 166d → 186.6d |
| SEKCJA 09 | **Sekcja 09** |  | 2027-06-30 → 2027-04-30 (-61d) |  |  |
| PODSEKCJA | **Podsekcja 09.A** |  | 2027-06-30 → 2027-04-30 (-61d) |  |  |
| 21MY97-064 | Monta¿ ruroci¹gów – Sekcja 09 | 2027-05-26 → 2027-03-29 (-58d) | 2027-06-15 → 2027-04-15 (-61d) |  | 161.6d → 254.9d |
| 21MY97-065 | Próba ciœnieniowa – Sekcja 09 | 2027-06-16 → 2027-04-16 (-61d) | 2027-06-21 → 2027-04-21 (-61d) |  | 161.6d → 254.9d |
| 21MY97-066 | Izolacje – Sekcja 09 | 2027-06-22 → 2027-04-22 (-61d) | 2027-06-28 → 2027-04-28 (-61d) |  | 161.6d → 254.9d |
| 21MY97-067 | Malowanie i oznakowanie – Sekcja 09 | 2027-06-22 → 2027-04-22 (-61d) | 2027-06-30 → 2027-04-30 (-61d) |  | 161.6d → 254.9d |
| SEKCJA 10 | **Sekcja 10** |  | 2027-07-01 → 2027-05-03 (-59d) |  |  |
| 21MY97-069 | Monta¿ ruroci¹gów – Sekcja 10 | 2027-05-28 → 2027-03-31 (-58d) | 2027-06-17 → 2027-04-19 (-59d) |  | 122.6d → 215.9d |
| 21MY97-070 | Próba ciœnieniowa – Sekcja 10 | 2027-06-18 → 2027-04-20 (-59d) | 2027-06-21 → 2027-04-21 (-61d) |  | 122.6d → 215.9d |
| 21MY97-071 | Izolacje – Sekcja 10 | 2027-06-22 → 2027-04-22 (-61d) | 2027-06-29 → 2027-04-29 (-61d) |  | 122.6d → 215.9d |
| 21MY97-072 | Malowanie i oznakowanie – Sekcja 10 | 2027-06-28 → 2027-04-28 (-61d) | 2027-07-01 → 2027-05-03 (-59d) |  | 122.6d → 215.9d |
| SEKCJA 11 | **Sekcja 11** |  | 2027-06-28 → 2027-04-29 (-60d) |  |  |
| 21MY97-076 | Monta¿ ruroci¹gów – Sekcja 11 | 2027-05-26 → 2027-03-29 (-58d) | 2027-06-10 → 2027-04-13 (-58d) |  | 125.3d → 218.6d |
| 21MY97-077 | Próba ciœnieniowa – Sekcja 11 | 2027-06-11 → 2027-04-14 (-58d) | 2027-06-17 → 2027-04-20 (-58d) |  | 125.3d → 218.6d |
| 21MY97-078 | Izolacje – Sekcja 11 | 2027-06-18 → 2027-04-21 (-58d) | 2027-06-24 → 2027-04-27 (-58d) |  | 125.3d → 218.6d |
| 21MY97-079 | Malowanie i oznakowanie – Sekcja 11 | 2027-06-23 → 2027-04-26 (-58d) | 2027-06-28 → 2027-04-29 (-60d) |  | 125.3d → 218.6d |
| ROZR | **Rozruch** | 2027-07-02 → 2027-07-21 (+19d) | 2027-08-11 → 2027-08-30 (+19d) |  |  |
| ROZRUCH | **Rozruch** | 2027-07-02 → 2027-07-21 (+19d) | 2027-08-11 → 2027-08-30 (+19d) |  |  |
| 21MY97-082 | Przegl¹d gotowoœci do rozruchu | 2027-07-02 → 2027-07-21 (+19d) | 2027-07-09 → 2027-07-28 (+19d) |  | 122.6d → 160.2d |
| 21MY97-083 | Rozruch na zimno | 2027-07-12 → 2027-07-29 (+17d) | 2027-07-19 → 2027-08-05 (+17d) |  | 122.6d → 160.2d |
| 21MY97-084 | Rozruch na gor¹co / próby ruchowe | 2027-07-20 → 2027-08-06 (+17d) | 2027-08-10 → 2027-08-27 (+17d) |  | 122.6d → 160.2d |
| 21MY97-085 | KM: Odbiór koñcowy – Analizatory spalin (CEMS) | 2027-08-11 → 2027-08-30 (+19d) | 2027-08-11 → 2027-08-30 (+19d) |  | 122.6d → 160.2d |
| ZAKU | **Zakupy** |  | 2027-05-14 → 2027-03-17 (-58d) |  |  |
| DOSTAWY | **Dostawy** | 2026-01-06 → 2026-01-07 (+1d) | 2027-05-14 → 2027-03-17 (-58d) |  |  |
| 21MY97-008 | Produkcja u dostawcy | 2026-01-06 A → 2026-01-07 A (+1d) | 2027-04-02 → 2027-02-03 (-58d) | 53% → 70% | 161.2d → 210.9d |
| 21MY97-009 | Testy FAT | 2027-04-05 → 2027-02-04 (-60d) | 2027-04-15 → 2027-02-16 (-58d) |  | 122.6d → 215.9d |

| ID | Task | Start | Finish | Complete | Total float |
| --- | --- | --- | --- | --- | --- |
| 21MY97-010 | Transport i dostawa na plac budowy | 2027-04-16 → 2027-02-17 (-58d) | 2027-05-13 → 2027-03-16 (-58d) |  | 122.6d → 215.9d |
| 21MY97-011 | KM: Dostawa na budowê – Analizatory spalin (CEMS) | 2027-05-14 → 2027-03-17 (-58d) | 2027-05-14 → 2027-03-17 (-58d) |  | 122.6d → 215.9d |
| 26DX82 | **26DX82 – Sieæ œwiat³owodowa** |  | 2026-10-08 → 2026-08-10 (-59d) |  |  |
| BUDO | **Budowa** |  | 2026-10-08 → 2026-06-26 (-104d) |  |  |
| ELEKTRYKA | **Elektryka** |  | 2026-10-06 → 2026-04-30 (-159d) |  |  |
| 26DX82-122 | Pod³¹czenia i pomiary – trasa 18 |  | 2026-10-06 → 2026-04-14 A (-175d) | 24% → 100% | 436.9d → none |
| RUROCI¥GI | **Ruroci¹gi** |  | 2026-10-08 → 2026-05-22 (-139d) |  |  |
| SEKCJA 01 | **Sekcja 01** |  | 2026-09-30 → 2026-05-13 (-140d) |  |  |
| 26DX82-017 | Próba ciœnieniowa – Sekcja 01 | 2026-04-29 A → 2026-04-22 A (-7d) | 2026-09-30 → 2026-04-29 A (-154d) | 50% → 100% | 415.2d → none |
| SEKCJA 03 | **Sekcja 03** | 2025-12-01 → 2025-11-25 (-6d) | 2026-09-30 → 2026-05-04 (-149d) |  |  |
| PODSEKCJA | **Podsekcja 03.A** | 2025-12-01 → 2025-11-25 (-6d) | 2026-09-30 → 2026-05-04 (-149d) |  |  |
| 26DX82-027 | Prefabrykacja ruroci¹gów – Sekcja 03 | 2025-12-01 A → 2025-11-25 A (-6d) | 2026-09-30 → 2025-12-02 A (-302d) | 66% → 100% | 417.1d → none |
| SEKCJA 04 | **Sekcja 04** | 2025-12-05 → 2025-12-02 (-3d) | 2026-10-02 → 2026-05-04 (-151d) |  |  |
| 26DX82-032 | Prefabrykacja ruroci¹gów – Sekcja 04 | 2025-12-05 A → 2025-12-02 A (-3d) | 2026-10-02 → 2025-12-10 A (-296d) | 32% → 100% | 418.1d → none |
| SEKCJA 05 | **Sekcja 05** |  | 2026-10-01 → 2026-05-18 (-136d) |  |  |
| 26DX82-042 | Izolacje – Sekcja 05 | 2026-05-04 A → 2026-05-01 A (-3d) | 2026-10-01 → 2026-05-12 A (-142d) | 67% → 100% | 455.7d → none |
| SEKCJA 06 | **Sekcja 06** |  | 2026-10-01 → 2026-04-22 (-162d) |  |  |
| PODSEKCJA | **Podsekcja 06.A** |  | 2026-10-01 → 2026-04-22 (-162d) |  |  |
| 26DX82-047 | Izolacje – Sekcja 06 | 2026-04-06 A → 2026-04-07 A (+1d) | 2026-10-01 → 2026-04-22 A (-162d) | 74% → 100% | 473.5d → none |
| SEKCJA 12 | **Sekcja 12** |  | 2026-09-30 → 2026-04-22 (-161d) |  |  |
| PODSEKCJA | **Podsekcja 12.A** |  | 2026-09-30 → 2026-04-22 (-161d) |  |  |
| 26DX82-082 | Próba ciœnieniowa – Sekcja 12 | 2026-04-02 A → 2026-03-30 A (-3d) | 2026-09-30 → 2026-04-06 A (-177d) | 53% → 100% | 470.6d → none |
| SEKCJA 13 | **Sekcja 13** |  | 2026-10-08 → 2026-05-22 (-139d) |  |  |
| 26DX82-088 | Monta¿ ruroci¹gów – Sekcja 13 | 2026-04-07 A → 2026-04-02 A (-5d) | 2026-10-08 → 2026-05-04 A (-157d) | 68% → 100% | 448.6d → none |
| SEKCJA 17 | **Sekcja 17** |  | 2026-09-30 → 2026-05-01 (-152d) |  |  |
| 26DX82-114 | Izolacje – Sekcja 17 | 2026-04-22 A → 2026-04-16 A (-6d) | 2026-09-30 → 2026-04-22 A (-161d) | 60% → 100% | 466.8d → none |
| 26DX82-115 | Malowanie i oznakowanie – Sekcja 17 | 2026-04-27 A → 2026-04-23 A (-4d) | 2026-09-30 → 2026-05-01 A (-152d) | 75% → 100% | 465.8d → none |
| 29DM24 | **29DM24 – Uk³ady pomiarowe** |  | 2026-11-17 → 2026-09-10 (-68d) |  |  |
| BUDO | **Budowa** | 2025-07-14 → 2025-07-09 (-5d) | 2026-11-17 → 2026-07-23 (-117d) |  |  |
| ELEKTRYKA | **Elektryka** |  | 2026-10-09 → 2026-06-26 (-105d) |  |  |
| 29DM24-038 | Pod³¹czenia i pomiary – trasa 04 | 2026-05-25 A → 2026-05-26 A (+1d) | 2026-09-30 → 2026-06-09 A (-113d) | 81% → 100% | 441.9d → none |
| 29DM24-086 | Pod³¹czenia i pomiary – trasa 12 | 2026-09-30 → 2026-05-26 A (-127d) | 2026-10-09 → 2026-06-05 A (-126d) | 0% → 100% | 349.9d → none |
| 29DM24-133 | Uk³adanie kabli – trasa 20 | 2026-05-26 A → 2026-05-28 A (+2d) | 2026-10-06 → 2026-06-11 A (-117d) | 47% → 100% | 438.9d → none |
| 29DM24-169 | Uk³adanie kabli – trasa 26 |  | 2026-10-06 → 2026-06-10 A (-118d) | 43% → 100% | 391.9d → none |
| ROBOTY BUD | **Roboty budowlane** | 2025-07-14 → 2025-07-09 (-5d) | 2026-11-17 → 2025-09-12 (-431d) |  |  |
| 29DM24-012 | Fundamenty i roboty ziemne | 2025-07-14 A → 2025-07-09 A (-5d) | 2026-11-17 → 2025-09-12 A (-431d) | 26% → 100% | 417.5d → none |
| RUROCI¥GI | **Ruroci¹gi** |  | 2026-10-07 → 2026-07-22 (-77d) |  |  |
| SEKCJA 05 | **Sekcja 05** |  | 2026-10-07 → 2026-06-29 (-100d) |  |  |
| 29DM24-040 | Monta¿ ruroci¹gów – Sekcja 05 | 2026-05-22 A → 2026-05-18 A (-4d) | 2026-10-07 → 2026-06-08 A (-121d) | 49% → 100% | 420.4d → none |
| SEKCJA 08 | **Sekcja 08** |  | 2026-10-02 → 2026-06-17 (-107d) |  |  |
| 29DM24-057 | Monta¿ ruroci¹gów – Sekcja 08 |  | 2026-10-02 → 2026-05-28 A (-127d) | 41% → 100% | 432.1d → none |
| SEKCJA 10 | **Sekcja 10** | 2025-11-18 → 2025-11-19 (+1d) | 2026-10-02 → 2026-06-18 (-106d) |  |  |
| 29DM24-068 | Prefabrykacja ruroci¹gów – Sekcja 10 | 2025-11-18 A → 2025-11-19 A (+1d) | 2026-10-02 → 2025-12-01 A (-305d) | 46% → 100% | 419.5d → none |
| SEKCJA 13 | **Sekcja 13** |  | 2026-10-07 → 2026-06-16 (-113d) |  |  |
| 29DM24-087 | Prefabrykacja ruroci¹gów – Sekcja 13 |  | 2026-10-07 → 2025-12-25 A (-286d) | 46% → 100% | 418.5d → none |
| SEKCJA 14 | **Sekcja 14** |  | 2026-10-05 → 2026-06-16 (-111d) |  |  |
| 29DM24-093 | Monta¿ ruroci¹gów – Sekcja 14 | 2026-05-25 A → 2026-05-22 A (-3d) | 2026-10-05 → 2026-06-02 A (-125d) | 45% → 100% | 429.5d → none |
| SEKCJA 20 | **Sekcja 20** |  | 2026-10-06 → 2026-06-30 (-98d) |  |  |
| 29DM24-129 | Monta¿ ruroci¹gów – Sekcja 20 | 2026-05-29 A → 2026-05-27 A (-2d) | 2026-10-06 → 2026-06-10 A (-118d) | 33% → 100% | 419.1d → none |
| SEKCJA 22 | **Sekcja 22** | 2026-02-13 → 2026-02-11 (-2d) | 2026-10-05 → 2026-07-01 (-96d) |  |  |
| 29DM24-140 | Prefabrykacja ruroci¹gów – Sekcja 22 | 2026-02-13 A → 2026-02-11 A (-2d) | 2026-10-05 → 2026-02-20 A (-227d) | 40% → 100% | 416.5d → none |
| 29DM24-142 | Próba ciœnieniowa – Sekcja 22 | 2026-06-12 A → 2026-06-11 A (-1d) | 2026-09-30 → 2026-06-19 A (-103d) | 78% → 100% | 420d → none |
| PROJ | **Projektowanie** |  | 2026-09-30 → 2025-06-19 (-468d) |  |  |
| DOKUMENTAC | **Dokumentacja** |  | 2026-09-30 → 2025-06-19 (-468d) |  |  |
| 29DM24-004 | KM: Dokumentacja zatwierdzona – Uk³ady pomiarowe | 2026-09-30 → 2025-06-19 A (-468d) | 2026-09-30 → 2025-06-19 (-468d) | 0% → 100% | 26.9d → none |
| INFRASTRUKTU | **Infrastruktura i BOP** | 2025-01-07 → 2025-01-10 (+3d) | 2028-01-28 → 2028-03-01 (+33d) |  |  |
| 15XQ71 | **15XQ71 – Zbiornik oleju** |  | 2027-01-06 → 2027-01-15 (+9d) |  |  |
| BUDO | **Budowa** |  | 2026-11-19 → 2026-11-18 (-1d) |  |  |
| AKPIA | **AKPiA** |  | 2026-11-06 → 2026-10-29 (-8d) |  |  |
| 15XQ71-068 | Monta¿ uk³adów AKPiA |  | 2026-11-06 → 2026-10-29 (-8d) | 15% → 47% | 286.9d → 337.6d |
| ELEKTRYKA | **Elektryka** | 2026-09-17 → 2026-09-16 (-1d) | 2026-11-06 → 2026-10-27 (-10d) |  |  |
| 15XQ71-061 | Uk³adanie kabli – trasa 08 | 2026-09-21 A → 2026-09-16 A (-5d) | 2026-10-02 A | 72% → 100% | 300.9d → none |
| 15XQ71-037 | Uk³adanie kabli – trasa 04 | 2026-10-14 → 2026-09-18 A (-26d) | 2026-11-06 → 2026-10-27 (-10d) | 0% → 12% | 329.9d → 398.6d |
| 15XQ71-049 | Uk³adanie kabli – trasa 06 | 2026-09-21 A → 2026-09-18 A (-3d) | 2026-10-06 → 2026-10-02 A (-4d) | 48% → 100% | 354.9d → none |
| 15XQ71-025 | Uk³adanie kabli – trasa 02 | 2026-09-17 A → 2026-09-22 A (+5d) | 2026-10-09 → 2026-10-13 (+4d) | 46% → 65% | 299.9d → 347.6d |
| 15XQ71-062 | Pod³¹czenia i pomiary – trasa 08 | 2026-09-25 A → 2026-09-22 A (-3d) | 2026-10-06 A | 42% → 100% | 299.9d → none |
| 15XQ71-026 | Pod³¹czenia i pomiary – trasa 02 | 2026-10-06 → 2026-10-02 A (-4d) | 2026-10-09 → 2026-10-07 (-2d) | 0% → 62% | 297.8d → 350.6d |
| 15XQ71-038 | Pod³¹czenia i pomiary – trasa 04 | 2026-11-03 → 2026-10-07 A (-27d) | 2026-11-06 → 2026-10-07 (-30d) | 0% → 60% | 329.9d → 399.6d |
| MONTA¯ | **Monta¿** |  | 2026-11-09 → 2026-10-30 (-10d) |  |  |
| 15XQ71-014 | Monta¿ urz¹dzeñ g³ównych | 2026-09-30 → 2026-09-04 A (-26d) | 2026-10-29 → 2026-10-06 A (-23d) | 0% → 100% | 267.9d → none |

| ID | Task | Start | Finish | Complete | Total float |
| --- | --- | --- | --- | --- | --- |
| 15XQ71-069 | KM: Zakoñczenie monta¿u – Zbiornik oleju | 2026-11-09 → 2026-10-30 (-10d) | 2026-11-09 → 2026-10-30 (-10d) |  | 277.8d → 334d |
| RUROCI¥GI | **Ruroci¹gi** |  | 2026-11-19 → 2026-11-18 (-1d) |  |  |
| SEKCJA 01 | **Sekcja 01** |  | 2026-10-01 → 2026-10-05 (+4d) |  |  |
| 15XQ71-018 | Izolacje – Sekcja 01 | 2026-09-25 A → 2026-09-24 A (-1d) | 2026-09-30 → 2026-10-01 A (+1d) | 68% → 100% | 301.8d → none |
| 15XQ71-019 | Malowanie i oznakowanie – Sekcja 01 | 2026-09-30 A → 2026-09-25 A (-5d) | 2026-10-01 → 2026-10-05 A (+4d) | 44% → 100% | 300.9d → none |
| SEKCJA 02 | **Sekcja 02** |  | 2026-10-07 → 2026-10-06 (-1d) |  |  |
| 15XQ71-021 | Monta¿ ruroci¹gów – Sekcja 02 | 2026-09-16 A → 2026-09-14 A (-2d) | 2026-10-07 → 2026-09-25 A (-12d) | 37% → 100% | 298.8d → none |
| 15XQ71-022 | Próba ciœnieniowa – Sekcja 02 | 2026-09-25 A → 2026-09-23 A (-2d) | 2026-09-30 → 2026-09-25 A (-5d) | 45% → 100% | 301.8d → none |
| 15XQ71-024 | Malowanie i oznakowanie – Sekcja 02 | 2026-09-28 A → 2026-09-30 A (+2d) | 2026-09-30 → 2026-10-06 A (+6d) | 80% → 100% | 302.8d → none |
| SEKCJA 03 | **Sekcja 03** |  | 2026-11-02 → 2026-10-16 (-17d) |  |  |
| PODSEKCJA | **Podsekcja 03.A** |  | 2026-11-02 → 2026-10-16 (-17d) |  |  |
| 15XQ71-029 | Próba ciœnieniowa – Sekcja 03 |  | 2026-09-30 A | 50% → 100% | 347.1d → none |
| 15XQ71-030 | Izolacje – Sekcja 03 | 2026-10-20 → 2026-10-02 A (-18d) | 2026-10-29 → 2026-10-07 (-22d) | 0% → 88% | 333.9d → 395.8d |
| 15XQ71-031 | Malowanie i oznakowanie – Sekcja 03 | 2026-10-22 → 2026-10-07 (-15d) | 2026-11-02 → 2026-10-16 (-17d) |  | 333.9d → 395.6d |
| SEKCJA 04 | **Sekcja 04** |  | 2026-11-19 → 2026-11-18 (-1d) |  |  |
| 15XQ71-033 | Monta¿ ruroci¹gów – Sekcja 04 | 2026-10-05 → 2026-09-07 A (-28d) | 2026-11-05 → 2026-11-04 (-1d) | 0% → 13% | 320.6d → 391.3d |
| 15XQ71-034 | Próba ciœnieniowa – Sekcja 04 | 2026-11-06 → 2026-11-05 (-1d) | 2026-11-12 → 2026-11-11 (-1d) |  | 320.6d → 372.4d |
| 15XQ71-035 | Izolacje – Sekcja 04 | 2026-11-13 → 2026-11-12 (-1d) | 2026-11-17 → 2026-11-16 (-1d) |  | 320.6d → 372.4d |
| 15XQ71-036 | Malowanie i oznakowanie – Sekcja 04 | 2026-11-16 → 2026-11-13 (-3d) | 2026-11-19 → 2026-11-18 (-1d) |  | 320.6d → 372.4d |
| SEKCJA 05 | **Sekcja 05** |  | 2026-10-26 → 2026-10-12 (-14d) |  |  |
| 15XQ71-040 | Monta¿ ruroci¹gów – Sekcja 05 | 2026-09-30 → 2026-09-02 A (-28d) | 2026-10-26 → 2026-09-30 A (-26d) | 0% → 100% | 320.6d → none |
| 15XQ71-041 | Próba ciœnieniowa – Sekcja 05 |  | 2026-10-01 → 2026-10-06 A (+5d) | 56% → 100% | 339.9d → none |
| 15XQ71-042 | Izolacje – Sekcja 05 | 2026-10-02 → 2026-10-07 A (+5d) | 2026-10-16 → 2026-10-08 (-8d) | 0% → 81% | 342.7d → 390.6d |
| 15XQ71-043 | Malowanie i oznakowanie – Sekcja 05 | 2026-10-16 → 2026-10-08 (-8d) | 2026-10-20 → 2026-10-12 (-8d) |  | 342.7d → 399.5d |
| SEKCJA 06 | **Sekcja 06** |  | 2026-11-02 → 2026-10-23 (-10d) |  |  |
| PODSEKCJA | **Podsekcja 06.A** |  | 2026-11-02 → 2026-10-23 (-10d) |  |  |
| 15XQ71-045 | Monta¿ ruroci¹gów – Sekcja 06 | 2026-09-08 A → 2026-09-04 A (-4d) | 2026-10-12 → 2026-10-01 A (-11d) | 54% → 100% | 339.3d → none |
| 15XQ71-046 | Próba ciœnieniowa – Sekcja 06 | 2026-10-13 → 2026-10-02 A (-11d) | 2026-10-16 → 2026-10-08 (-8d) | 0% → 50% | 333.9d → 391d |
| 15XQ71-047 | Izolacje – Sekcja 06 | 2026-10-19 → 2026-10-09 (-10d) | 2026-10-29 → 2026-10-21 (-8d) |  | 333.9d → 390.6d |
| 15XQ71-048 | Malowanie i oznakowanie – Sekcja 06 | 2026-10-26 → 2026-10-16 (-10d) | 2026-11-02 → 2026-10-23 (-10d) |  | 333.9d → 390.6d |
| SEKCJA 07 | **Sekcja 07** |  | 2026-10-30 → 2026-11-05 (+6d) |  |  |
| 15XQ71-052 | Monta¿ ruroci¹gów – Sekcja 07 | 2026-09-15 A → 2026-09-18 A (+3d) | 2026-10-13 → 2026-10-19 (+6d) | 50% → 52% | 335.3d → 383d |
| 15XQ71-053 | Próba ciœnieniowa – Sekcja 07 | 2026-10-14 → 2026-10-20 (+6d) | 2026-10-19 → 2026-10-23 (+4d) |  | 334.7d → 380.7d |
| 15XQ71-054 | Izolacje – Sekcja 07 | 2026-10-20 → 2026-10-26 (+6d) | 2026-10-28 → 2026-11-03 (+6d) |  | 334.7d → 380.7d |
| 15XQ71-055 | Malowanie i oznakowanie – Sekcja 07 | 2026-10-27 → 2026-11-02 (+6d) | 2026-10-30 → 2026-11-05 (+6d) |  | 334.7d → 380.7d |
| 15XQ71-058 | Próba ciœnieniowa – Sekcja 08 | 2026-09-30 A → 2026-09-29 A (-1d) | 2026-09-30 → 2026-10-08 (+8d) | 80% → 60% | 294.9d → 345.7d |
| 15XQ71-059 | Izolacje – Sekcja 08 | 2026-10-01 → 2026-10-06 A (+5d) | 2026-10-06 → 2026-10-07 (+1d) | 0% → 75% | 298.9d → 345.7d |
| 15XQ71-060 | Malowanie i oznakowanie – Sekcja 08 | 2026-10-01 → 2026-10-06 A (+5d) | 2026-10-08 → 2026-10-07 (-1d) | 0% → 83% | 298.9d → 345.7d |
| SEKCJA 09 | **Sekcja 09** |  | 2026-09-30 → 2026-10-06 (+6d) |  |  |
| PODSEKCJA | **Podsekcja 09.A** |  | 2026-09-30 → 2026-10-06 (+6d) |  |  |
| 15XQ71-067 | Malowanie i oznakowanie – Sekcja 09 | 2026-09-30 A → 2026-10-02 A (+2d) | 2026-09-30 → 2026-10-06 A (+6d) | 50% → 100% | 303.9d → none |
| PROJ | **Projektowanie** |  | 2026-09-30 → 2025-09-24 (-371d) |  |  |
| DOKUMENTAC | **Dokumentacja** |  | 2026-09-30 → 2025-09-24 (-371d) |  |  |
| 15XQ71-004 | KM: Dokumentacja zatwierdzona – Zbiornik oleju | 2026-09-30 → 2025-09-24 A (-371d) | 2026-09-30 → 2025-09-24 (-371d) | 0% → 100% | 20.9d → none |
| ROZR | **Rozruch** | 2026-11-09 → 2026-11-18 (+9d) | 2027-01-06 → 2027-01-15 (+9d) |  |  |
| ROZRUCH | **Rozruch** | 2026-11-09 → 2026-11-18 (+9d) | 2027-01-06 → 2027-01-15 (+9d) |  |  |
| 15XQ71-070 | Przegl¹d gotowoœci do rozruchu | 2026-11-09 → 2026-11-18 (+9d) | 2026-11-18 → 2026-11-27 (+9d) |  | 277.8d → 321.6d |
| 15XQ71-071 | Rozruch na zimno | 2026-11-19 → 2026-11-30 (+11d) | 2026-12-01 → 2026-12-10 (+9d) |  | 277.8d → 321.6d |
| 15XQ71-072 | Rozruch na gor¹co / próby ruchowe | 2026-12-02 → 2026-12-11 (+9d) | 2027-01-05 → 2027-01-14 (+9d) |  | 277.8d → 321.6d |
| 15XQ71-073 | KM: Odbiór koñcowy – Zbiornik oleju | 2027-01-06 → 2027-01-15 (+9d) | 2027-01-06 → 2027-01-15 (+9d) |  | 277.8d → 321.6d |
| 19WP38 | **19WP38 – Stacja redukcyjno-pomiarowa gazu** |  | 2026-10-06 → 2026-07-20 (-78d) |  |  |
| BUDO | **Budowa** |  | 2026-10-06 → 2026-06-04 (-124d) |  |  |
| ELEKTRYKA | **Elektryka** |  | 2026-10-06 → 2026-05-25 (-134d) |  |  |
| 19WP38-038 | Pod³¹czenia i pomiary – trasa 04 | 2026-04-28 A → 2026-04-24 A (-4d) | 2026-10-06 → 2026-05-05 A (-154d) | 15% → 100% | 462.9d → none |
| RUROCI¥GI | **Ruroci¹gi** |  | 2026-10-06 → 2026-06-04 (-124d) |  |  |
| SEKCJA 06 | **Sekcja 06** |  | 2026-10-06 → 2026-05-14 (-145d) |  |  |
| PODSEKCJA | **Podsekcja 06.A** |  | 2026-10-06 → 2026-05-14 (-145d) |  |  |
| 19WP38-045 | Monta¿ ruroci¹gów – Sekcja 06 | 2026-04-08 A → 2026-04-10 A (+2d) | 2026-10-06 → 2026-04-24 A (-165d) | 33% → 100% | 460.8d → none |
| PROJ | **Projektowanie** |  | 2026-10-01 → 2025-10-22 (-344d) |  |  |
| DOKUMENTAC | **Dokumentacja** |  | 2026-10-01 → 2025-10-22 (-344d) |  |  |
| 19WP38-003 | Zatwierdzenie dokumentacji do realizacji | 2025-10-01 A → 2025-09-30 A (-1d) | 2026-10-01 → 2025-10-21 A (-345d) | 87% → 100% | 402.9d → none |
| 25DF82 | **25DF82 – Wentylacja i klimatyzacja** |  | 2027-02-12 → 2027-03-05 (+21d) |  |  |
| BUDO | **Budowa** |  | 2026-12-16 → 2027-01-06 (+21d) |  |  |
| ELEKTRYKA | **Elektryka** |  | 2026-10-15 → 2026-10-22 (+7d) |  |  |
| 25DF82-037 | Uk³adanie kabli – trasa 04 |  | 2026-10-13 → 2026-10-22 (+9d) | 37% → 29% | 351.9d → 402.6d |
| 25DF82-073 | Uk³adanie kabli – trasa 10 | 2026-09-14 A → 2026-09-15 A (+1d) | 2026-10-06 A | 63% → 100% | 355.9d → none |
| 25DF82-049 | Uk³adanie kabli – trasa 06 | 2026-09-15 A → 2026-09-16 A (+1d) | 2026-10-15 → 2026-10-05 A (-10d) | 13% → 100% | 354.9d → none |
| 25DF82-074 | Pod³¹czenia i pomiary – trasa 10 | 2026-09-24 A → 2026-09-18 A (-6d) | 2026-10-02 A | 67% → 100% | 352.9d → none |
| 25DF82-050 | Pod³¹czenia i pomiary – trasa 06 | 2026-10-06 → 2026-09-22 A (-14d) | 2026-10-15 → 2026-10-01 A (-14d) | 0% → 100% | 345.7d → none |
| 25DF82-038 | Pod³¹czenia i pomiary – trasa 04 | 2026-10-09 → 2026-10-06 A (-3d) | 2026-10-13 → 2026-10-06 A (-7d) | 0% → 100% | 347.2d → none |

| ID | Task | Start | Finish | Complete | Total float |
| --- | --- | --- | --- | --- | --- |
| MONTA¯ | **Monta¿** |  | 2026-12-16 → 2027-01-06 (+21d) |  |  |
| 25DF82-014 | Monta¿ urz¹dzeñ g³ównych | 2026-09-02 A → 2026-10-07 (+35d) | 2026-12-15 → 2027-01-05 (+21d) | 15% → 0% | 260.9d → 286.6d |
| 25DF82-100 | KM: Zakoñczenie monta¿u – Wentylacja i klimatyzacja | 2026-12-16 → 2027-01-06 (+21d) | 2026-12-16 → 2027-01-06 (+21d) |  | 250.8d → 286.6d |
| RUROCI¥GI | **Ruroci¹gi** |  | 2026-11-23 → 2026-11-30 (+7d) |  |  |
| SEKCJA 01 | **Sekcja 01** |  | 2026-10-14 → 2026-11-10 (+27d) |  |  |
| 25DF82-017 | Próba ciœnieniowa – Sekcja 01 | 2026-09-30 → 2026-10-05 A (+5d) | 2026-10-07 → 2026-10-12 (+5d) | 0% → 30% | 294.9d → 341.9d |
| 25DF82-018 | Izolacje – Sekcja 01 | 2026-10-08 → 2026-11-04 (+27d) | 2026-10-12 → 2026-11-06 (+25d) |  | 294.9d → 326.6d |
| 25DF82-019 | Malowanie i oznakowanie – Sekcja 01 | 2026-10-09 → 2026-11-05 (+27d) | 2026-10-14 → 2026-11-10 (+27d) |  | 294.9d → 326.6d |
| SEKCJA 02 | **Sekcja 02** |  | 2026-10-07 → 2026-10-06 (-1d) |  |  |
| 25DF82-023 | Izolacje – Sekcja 02 | 2026-09-25 A → 2026-09-24 A (-1d) | 2026-10-07 → 2026-10-06 A (-1d) | 22% → 100% | 298.4d → none |
| 25DF82-024 | Malowanie i oznakowanie – Sekcja 02 | 2026-09-25 A → 2026-09-30 A (+5d) | 2026-10-06 A | 10% → 100% | 302.4d → none |
| SEKCJA 03 | **Sekcja 03** |  | 2026-10-28 → 2026-10-19 (-9d) |  |  |
| PODSEKCJA | **Podsekcja 03.A** |  | 2026-10-28 → 2026-10-19 (-9d) |  |  |
| 25DF82-028 | Monta¿ ruroci¹gów – Sekcja 03 |  | 2026-10-08 → 2026-10-01 A (-7d) | 65% → 100% | 342.1d → none |
| 25DF82-029 | Próba ciœnieniowa – Sekcja 03 | 2026-10-09 → 2026-09-29 A (-10d) | 2026-10-12 → 2026-10-02 A (-10d) | 0% → 100% | 336d → none |
| 25DF82-030 | Izolacje – Sekcja 03 | 2026-10-13 → 2026-10-06 A (-7d) | 2026-10-26 → 2026-10-15 (-11d) | 0% → 29% | 336d → 391.8d |
| 25DF82-031 | Malowanie i oznakowanie – Sekcja 03 | 2026-10-21 → 2026-10-12 (-9d) | 2026-10-28 → 2026-10-19 (-9d) |  | 336d → 394.5d |
| SEKCJA 04 | **Sekcja 04** | 2026-09-17 → 2025-12-29 (-262d) | 2026-11-03 → 2026-10-16 (-18d) |  |  |
| 25DF82-032 | Prefabrykacja ruroci¹gów – Sekcja 04 | 2026-09-30 → 2025-12-29 A (-275d) | 2026-10-19 → 2026-01-20 A (-272d) | 0% → 100% | 215.7d → none |
| 25DF82-033 | Monta¿ ruroci¹gów – Sekcja 04 | 2026-09-17 A → 2026-09-14 A (-3d) | 2026-10-01 → 2026-09-30 A (-1d) | 76% → 100% | 339.7d → none |
| 25DF82-034 | Próba ciœnieniowa – Sekcja 04 | 2026-09-29 A → 2026-09-30 A (+1d) | 2026-10-02 → 2026-10-06 A (+4d) | 34% → 100% | 343.7d → none |
| 25DF82-035 | Izolacje – Sekcja 04 | 2026-10-21 → 2026-10-07 A (-14d) | 2026-10-30 → 2026-10-14 (-16d) | 0% → 21% | 332.9d → 393.6d |
| 25DF82-036 | Malowanie i oznakowanie – Sekcja 04 | 2026-10-28 → 2026-10-12 (-16d) | 2026-11-03 → 2026-10-16 (-18d) |  | 332.9d → 395.3d |
| SEKCJA 05 | **Sekcja 05** |  | 2026-10-07 → 2026-10-15 (+8d) |  |  |
| 25DF82-040 | Monta¿ ruroci¹gów – Sekcja 05 | 2026-09-11 A → 2026-09-10 A (-1d) | 2026-10-07 → 2026-09-28 A (-9d) | 42% → 100% | 344.9d → none |
| 25DF82-042 | Izolacje – Sekcja 05 | 2026-09-30 A → 2026-10-02 A (+2d) | 2026-10-02 → 2026-10-13 (+11d) | 67% → 45% | 345.9d → 394.6d |
| 25DF82-043 | Malowanie i oznakowanie – Sekcja 05 | 2026-09-30 → 2026-10-09 (+9d) | 2026-10-06 → 2026-10-15 (+9d) |  | 352.6d → 396.1d |
| SEKCJA 07 | **Sekcja 07** |  | 2026-10-19 → 2026-11-30 (+42d) |  |  |
| 25DF82-053 | Próba ciœnieniowa – Sekcja 07 | 2026-09-30 → 2026-10-02 A (+2d) |  | 0% → 77% | 343.9d → 392.6d |
| 25DF82-054 | Izolacje – Sekcja 07 | 2026-10-08 → 2026-11-19 (+42d) | 2026-10-15 → 2026-11-26 (+42d) |  | 343.9d → 364.6d |
| 25DF82-055 | Malowanie i oznakowanie – Sekcja 07 | 2026-10-16 → 2026-11-27 (+42d) | 2026-10-19 → 2026-11-30 (+42d) |  | 343.9d → 364.6d |
| SEKCJA 08 | **Sekcja 08** |  | 2026-10-19 → 2026-10-16 (-3d) |  |  |
| 25DF82-058 | Próba ciœnieniowa – Sekcja 08 | 2026-09-29 A → 2026-09-25 A (-4d) | 2026-10-01 → 2026-10-05 A (+4d) | 46% → 100% | 341.9d → none |
| 25DF82-059 | Izolacje – Sekcja 08 | 2026-10-02 → 2026-10-06 A (+4d) | 2026-10-15 → 2026-10-14 (-1d) | 0% → 37% | 343.2d → 392.6d |
| 25DF82-060 | Malowanie i oznakowanie – Sekcja 08 | 2026-10-09 → 2026-10-08 (-1d) | 2026-10-19 → 2026-10-16 (-3d) |  | 343.2d → 395.3d |
| SEKCJA 09 | **Sekcja 09** |  | 2026-10-06 → 2026-10-09 (+3d) |  |  |
| PODSEKCJA | **Podsekcja 09.A** |  | 2026-10-06 → 2026-10-09 (+3d) |  |  |
| 25DF82-066 | Izolacje – Sekcja 09 |  | 2026-10-06 A | 54% → 100% | 348.6d → none |
| 25DF82-067 | Malowanie i oznakowanie – Sekcja 09 | 2026-09-30 A → 2026-10-02 A (+2d) | 2026-10-02 → 2026-10-09 (+7d) | 53% → 57% | 350.9d → 399.3d |
| SEKCJA 10 | **Sekcja 10** | 2026-02-10 → 2026-02-06 (-4d) |  |  |  |
| 25DF82-068 | Prefabrykacja ruroci¹gów – Sekcja 10 | 2026-02-10 A → 2026-02-06 A (-4d) | 2026-09-30 → 2026-02-13 A (-229d) | 46% → 100% | 411.7d → none |
| 25DF82-069 | Monta¿ ruroci¹gów – Sekcja 10 | 2026-09-08 A → 2026-09-07 A (-1d) | 2026-10-14 → 2026-10-09 (-5d) | 52% → 87% | 331.4d → 383.1d |
| SEKCJA 12 | **Sekcja 12** |  | 2026-10-12 → 2026-10-09 (-3d) |  |  |
| PODSEKCJA | **Podsekcja 12.A** |  | 2026-10-12 → 2026-10-09 (-3d) |  |  |
| 25DF82-082 | Próba ciœnieniowa – Sekcja 12 | 2026-09-28 A → 2026-09-24 A (-4d) | 2026-10-01 → 2026-10-02 A (+1d) | 46% → 100% | 347.7d → none |
| 25DF82-083 | Izolacje – Sekcja 12 | 2026-10-02 A | 2026-10-08 → 2026-10-07 (-1d) | 0% → 80% | 348.2d → 399.4d |
| 25DF82-084 | Malowanie i oznakowanie – Sekcja 12 | 2026-10-08 → 2026-10-07 (-1d) | 2026-10-12 → 2026-10-09 (-3d) |  | 348.2d → 400.6d |
| SEKCJA 13 | **Sekcja 13** |  | 2026-09-30 → 2026-10-05 (+5d) |  |  |
| 25DF82-091 | Malowanie i oznakowanie – Sekcja 13 | 2026-09-30 A → 2026-09-28 A (-2d) | 2026-09-30 → 2026-10-05 A (+5d) | 53% → 100% | 302.9d → none |
| SEKCJA 14 | **Sekcja 14** |  | 2026-10-26 → 2026-10-19 (-7d) |  |  |
| 25DF82-093 | Monta¿ ruroci¹gów – Sekcja 14 | 2026-09-08 A → 2026-09-04 A (-4d) | 2026-10-09 → 2026-10-05 A (-4d) | 63% → 100% | 289d → none |
| 25DF82-094 | Próba ciœnieniowa – Sekcja 14 | 2026-10-12 → 2026-10-06 A (-6d) | 2026-10-15 → 2026-10-08 (-7d) | 0% → 28% | 286.7d → 340.7d |
| 25DF82-095 | Izolacje – Sekcja 14 | 2026-10-16 → 2026-10-09 (-7d) | 2026-10-22 → 2026-10-15 (-7d) |  | 286.7d → 341.7d |
| 25DF82-096 | Malowanie i oznakowanie – Sekcja 14 | 2026-10-16 → 2026-10-09 (-7d) | 2026-10-26 → 2026-10-19 (-7d) |  | 286.7d → 341.7d |
| ROZR | **Rozruch** | 2026-12-16 → 2027-01-06 (+21d) | 2027-02-12 → 2027-03-05 (+21d) |  |  |
| ROZRUCH | **Rozruch** | 2026-12-16 → 2027-01-06 (+21d) | 2027-02-12 → 2027-03-05 (+21d) |  |  |
| 25DF82-101 | Przegl¹d gotowoœci do rozruchu | 2026-12-16 → 2027-01-06 (+21d) | 2026-12-23 → 2027-01-13 (+21d) |  | 250.8d → 286.6d |
| 25DF82-102 | Rozruch na zimno | 2026-12-24 → 2027-01-14 (+21d) | 2027-01-08 → 2027-01-29 (+21d) |  | 250.8d → 286.6d |
| 25DF82-103 | Rozruch na gor¹co / próby ruchowe | 2027-01-11 → 2027-02-01 (+21d) | 2027-02-11 → 2027-03-04 (+21d) |  | 250.8d → 286.6d |
| 25DF82-104 | KM: Odbiór koñcowy – Wentylacja i klimatyzacja | 2027-02-12 → 2027-03-05 (+21d) | 2027-02-12 → 2027-03-05 (+21d) |  | 250.8d → 286.6d |
| 25ND89 | **25ND89 – Instalacje przeciwpo¿arowe** | 2025-01-07 → 2025-01-10 (+3d) | 2026-11-13 → 2026-07-30 (-106d) |  |  |
| BUDO | **Budowa** |  | 2026-10-13 → 2026-06-19 (-116d) |  |  |
| ELEKTRYKA | **Elektryka** |  | 2026-10-13 → 2026-05-28 (-138d) |  |  |
| 25ND89-073 | Uk³adanie kabli – trasa 10 |  | 2026-10-13 → 2026-05-25 A (-141d) | 11% → 100% | 450.9d → none |
| 25ND89-026 | Pod³¹czenia i pomiary – trasa 02 | 2026-05-15 A → 2026-05-11 A (-4d) | 2026-09-30 → 2026-05-14 A (-139d) | 52% → 100% | 403.9d → none |
| 25ND89-038 | Pod³¹czenia i pomiary – trasa 04 | 2026-05-20 A → 2026-05-15 A (-5d) | 2026-09-30 → 2026-05-21 A (-132d) | 75% → 100% | 448.9d → none |
| RUROCI¥GI | **Ruroci¹gi** |  | 2026-10-13 → 2026-06-19 (-116d) |  |  |
| SEKCJA 04 | **Sekcja 04** |  | 2026-10-02 → 2026-06-02 (-122d) |  |  |
| 25ND89-036 | Malowanie i oznakowanie – Sekcja 04 | 2026-05-26 A → 2026-05-25 A (-1d) | 2026-10-02 → 2026-06-02 A (-122d) | 38% → 100% | 442.6d → none |
| SEKCJA 07 | **Sekcja 07** | 2026-02-26 → 2026-02-23 (-3d) | 2026-10-13 → 2026-06-02 (-133d) |  |  |

| ID | Task | Start | Finish | Complete | Total float |
| --- | --- | --- | --- | --- | --- |
| 25ND89-051 | Prefabrykacja ruroci¹gów – Sekcja 07 | 2026-02-26 A → 2026-02-23 A (-3d) | 2026-10-09 → 2026-03-17 A (-206d) | 47% → 100% | 389.9d → none |
| 25ND89-052 | Monta¿ ruroci¹gów – Sekcja 07 | 2026-04-29 A → 2026-04-27 A (-2d) | 2026-10-13 → 2026-05-14 A (-152d) | 13% → 100% | 445.3d → none |
| SEKCJA 12 | **Sekcja 12** |  | 2026-10-06 → 2026-06-19 (-109d) |  |  |
| PODSEKCJA | **Podsekcja 12.A** |  | 2026-10-06 → 2026-06-19 (-109d) |  |  |
| 25ND89-081 | Monta¿ ruroci¹gów – Sekcja 12 | 2026-04-29 A → 2026-04-27 A (-2d) | 2026-10-06 → 2026-05-27 A (-132d) | 76% → 100% | 427.1d → none |
| SEKCJA 13 | **Sekcja 13** |  | 2026-10-13 → 2026-06-01 (-134d) |  |  |
| 25ND89-090 | Izolacje – Sekcja 13 | 2026-09-30 → 2026-05-11 A (-142d) | 2026-10-13 → 2026-05-22 A (-144d) | 0% → 100% | 297.9d → none |
| PROJ | **Projektowanie** | 2025-01-07 → 2025-01-10 (+3d) | 2026-11-13 → 2025-07-04 (-497d) |  |  |
| DOKUMENTAC | **Dokumentacja** | 2025-01-07 → 2025-01-10 (+3d) | 2026-11-13 → 2025-07-04 (-497d) |  |  |
| 25ND89-001 | Projekt wykonawczy – Instalacje przeciwpo¿arowe | 2025-01-07 A → 2025-01-10 A (+3d) | 2026-11-13 → 2025-05-16 A (-546d) | 63% → 100% | 457.7d → none |
| ROZR | **Rozruch** |  | 2026-10-12 → 2026-07-30 (-74d) |  |  |
| ROZRUCH | **Rozruch** |  | 2026-10-12 → 2026-07-30 (-74d) |  |  |
| 25ND89-103 | Rozruch na gor¹co / próby ruchowe | 2026-07-01 A → 2026-06-25 A (-6d) | 2026-10-12 → 2026-07-30 A (-74d) | 62% → 100% | 388.7d → none |
| 26CG51 | **26CG51 – Ogrodzenie i monitoring** |  | 2028-01-28 → 2028-03-01 (+33d) |  |  |
| BUDO | **Budowa** |  | 2027-12-06 → 2028-01-06 (+31d) |  |  |
| AKPIA | **AKPiA** | 2027-10-06 → 2027-11-08 (+33d) | 2027-10-19 → 2027-11-19 (+31d) |  |  |
| 26CG51-116 | Monta¿ uk³adów AKPiA | 2027-10-06 → 2027-11-08 (+33d) | 2027-10-19 → 2027-11-19 (+31d) |  | 34.4d → 62.3d |
| ELEKTRYKA | **Elektryka** | 2027-10-13 → 2027-11-15 (+33d) | 2027-11-05 → 2027-12-08 (+33d) |  |  |
| 26CG51-025 | Uk³adanie kabli – trasa 02 | 2027-10-13 → 2027-11-15 (+33d) | 2027-10-27 → 2027-11-29 (+33d) |  | 28.4d → 56.3d |
| 26CG51-037 | Uk³adanie kabli – trasa 04 | 2027-10-13 → 2027-11-15 (+33d) | 2027-11-05 → 2027-12-08 (+33d) |  | 69.4d → 97.3d |
| 26CG51-049 | Uk³adanie kabli – trasa 06 | 2027-10-13 → 2027-11-15 (+33d) | 2027-10-22 → 2027-11-24 (+33d) |  | 79.4d → 107.3d |
| 26CG51-050 | Pod³¹czenia i pomiary – trasa 06 | 2027-10-13 → 2027-11-15 (+33d) | 2027-10-22 → 2027-11-24 (+33d) |  | 79.4d → 107.3d |
| 26CG51-061 | Uk³adanie kabli – trasa 08 | 2027-10-13 → 2027-11-15 (+33d) | 2027-11-01 → 2027-12-02 (+31d) |  | 73.4d → 101.3d |
| 26CG51-073 | Uk³adanie kabli – trasa 10 | 2027-10-13 → 2027-11-15 (+33d) | 2027-11-04 → 2027-12-07 (+33d) |  | 70.4d → 98.3d |
| 26CG51-085 | Uk³adanie kabli – trasa 12 | 2027-10-13 → 2027-11-15 (+33d) | 2027-10-29 → 2027-12-01 (+33d) |  | 74.4d → 102.3d |
| 26CG51-097 | Uk³adanie kabli – trasa 14 | 2027-10-13 → 2027-11-15 (+33d) | 2027-11-04 → 2027-12-07 (+33d) |  | 70.4d → 98.3d |
| 26CG51-109 | Uk³adanie kabli – trasa 16 | 2027-10-13 → 2027-11-15 (+33d) | 2027-10-22 → 2027-11-24 (+33d) |  | 31.4d → 59.3d |
| 26CG51-110 | Pod³¹czenia i pomiary – trasa 16 | 2027-10-18 → 2027-11-18 (+31d) | 2027-10-22 → 2027-11-24 (+33d) |  | 31.4d → 59.3d |
| 26CG51-086 | Pod³¹czenia i pomiary – trasa 12 | 2027-10-22 → 2027-11-24 (+33d) | 2027-10-29 → 2027-12-01 (+33d) |  | 74.4d → 102.3d |
| 26CG51-026 | Pod³¹czenia i pomiary – trasa 02 | 2027-10-25 → 2027-11-25 (+31d) | 2027-10-27 → 2027-11-29 (+33d) |  | 28.4d → 56.3d |
| 26CG51-062 | Pod³¹czenia i pomiary – trasa 08 | 2027-10-25 → 2027-11-25 (+31d) | 2027-11-01 → 2027-12-02 (+31d) |  | 73.4d → 101.3d |
| 26CG51-074 | Pod³¹czenia i pomiary – trasa 10 | 2027-10-25 → 2027-11-25 (+31d) | 2027-11-04 → 2027-12-07 (+33d) |  | 70.4d → 98.3d |
| 26CG51-098 | Pod³¹czenia i pomiary – trasa 14 | 2027-10-27 → 2027-11-29 (+33d) | 2027-11-04 → 2027-12-07 (+33d) |  | 70.4d → 98.3d |
| 26CG51-038 | Pod³¹czenia i pomiary – trasa 04 | 2027-10-29 → 2027-12-01 (+33d) | 2027-11-05 → 2027-12-08 (+33d) |  | 69.4d → 97.3d |
| MONTA¯ | **Monta¿** |  | 2027-12-06 → 2028-01-06 (+31d) |  |  |
| 26CG51-014 | Monta¿ urz¹dzeñ g³ównych | 2027-09-29 → 2027-11-01 (+33d) | 2027-11-16 → 2027-12-17 (+31d) |  | 0d → 27.9d |
| 26CG51-117 | KM: Zakoñczenie monta¿u – Ogrodzenie i monitoring | 2027-12-06 → 2028-01-06 (+31d) | 2027-12-06 → 2028-01-06 (+31d) |  | 1.4d → 29.3d |
| RUROCI¥GI | **Ruroci¹gi** |  | 2027-12-06 → 2028-01-06 (+31d) |  |  |
| SEKCJA 01 | **Sekcja 01** |  | 2027-12-06 → 2028-01-06 (+31d) |  |  |
| 26CG51-016 | Monta¿ ruroci¹gów – Sekcja 01 | 2027-10-13 → 2027-11-15 (+33d) | 2027-11-10 → 2027-12-13 (+33d) |  | 0d → 27.9d |
| 26CG51-017 | Próba ciœnieniowa – Sekcja 01 | 2027-11-11 → 2027-12-14 (+33d) | 2027-11-17 → 2027-12-20 (+33d) |  | 0d → 27.9d |
| 26CG51-018 | Izolacje – Sekcja 01 | 2027-11-18 → 2027-12-21 (+33d) | 2027-12-02 → 2028-01-04 (+33d) |  | 0d → 27.9d |
| 26CG51-019 | Malowanie i oznakowanie – Sekcja 01 | 2027-11-25 → 2027-12-28 (+33d) | 2027-12-06 → 2028-01-06 (+31d) |  | 0d → 27.9d |
| SEKCJA 02 | **Sekcja 02** |  | 2027-11-12 → 2027-12-14 (+32d) |  |  |
| 26CG51-021 | Monta¿ ruroci¹gów – Sekcja 02 | 2027-10-04 → 2027-11-04 (+31d) | 2027-10-29 → 2027-11-30 (+32d) |  | 16.8d → 44.7d |
| 26CG51-022 | Próba ciœnieniowa – Sekcja 02 | 2027-11-01 → 2027-12-01 (+30d) | 2027-11-02 → 2027-12-02 (+30d) |  | 16.8d → 44.7d |
| 26CG51-023 | Izolacje – Sekcja 02 | 2027-11-03 → 2027-12-03 (+30d) | 2027-11-10 → 2027-12-10 (+30d) |  | 16.8d → 44.7d |
| 26CG51-024 | Malowanie i oznakowanie – Sekcja 02 | 2027-11-10 → 2027-12-10 (+30d) | 2027-11-12 → 2027-12-14 (+32d) |  | 16.8d → 44.7d |
| SEKCJA 03 | **Sekcja 03** |  | 2027-11-19 → 2027-12-21 (+32d) |  |  |
| PODSEKCJA | **Podsekcja 03.A** |  | 2027-11-19 → 2027-12-21 (+32d) |  |  |
| 26CG51-028 | Monta¿ ruroci¹gów – Sekcja 03 | 2027-10-13 → 2027-11-15 (+33d) | 2027-10-22 → 2027-11-23 (+32d) |  | 59.9d → 87.8d |
| 26CG51-029 | Próba ciœnieniowa – Sekcja 03 | 2027-10-25 → 2027-11-24 (+30d) | 2027-11-01 → 2027-12-01 (+30d) |  | 59.9d → 87.8d |
| 26CG51-030 | Izolacje – Sekcja 03 | 2027-11-02 → 2027-12-02 (+30d) | 2027-11-17 → 2027-12-17 (+30d) |  | 59.9d → 87.8d |
| 26CG51-031 | Malowanie i oznakowanie – Sekcja 03 | 2027-11-12 → 2027-12-14 (+32d) | 2027-11-19 → 2027-12-21 (+32d) |  | 59.9d → 87.8d |
| SEKCJA 04 | **Sekcja 04** |  | 2027-11-12 → 2027-12-14 (+32d) |  |  |
| 26CG51-033 | Monta¿ ruroci¹gów – Sekcja 04 | 2027-10-12 → 2027-11-12 (+31d) | 2027-10-19 → 2027-11-18 (+30d) |  | 64.9d → 92.8d |
| 26CG51-034 | Próba ciœnieniowa – Sekcja 04 | 2027-10-20 → 2027-11-19 (+30d) | 2027-10-26 → 2027-11-25 (+30d) |  | 64.9d → 92.8d |
| 26CG51-035 | Izolacje – Sekcja 04 | 2027-10-27 → 2027-11-26 (+30d) | 2027-11-10 → 2027-12-10 (+30d) |  | 64.9d → 92.8d |
| 26CG51-036 | Malowanie i oznakowanie – Sekcja 04 | 2027-11-11 → 2027-12-13 (+32d) | 2027-11-12 → 2027-12-14 (+32d) |  | 64.9d → 92.8d |
| SEKCJA 05 | **Sekcja 05** |  | 2027-11-17 → 2027-12-20 (+33d) |  |  |
| 26CG51-040 | Monta¿ ruroci¹gów – Sekcja 05 | 2027-09-30 → 2027-11-02 (+33d) | 2027-10-25 → 2027-11-25 (+31d) |  | 61.2d → 89.1d |
| 26CG51-041 | Próba ciœnieniowa – Sekcja 05 | 2027-10-26 → 2027-11-26 (+31d) | 2027-10-29 → 2027-12-01 (+33d) |  | 61.2d → 89.1d |
| 26CG51-042 | Izolacje – Sekcja 05 | 2027-11-01 → 2027-12-02 (+31d) | 2027-11-15 → 2027-12-16 (+31d) |  | 61.2d → 89.1d |
| 26CG51-043 | Malowanie i oznakowanie – Sekcja 05 | 2027-11-12 → 2027-12-15 (+33d) | 2027-11-17 → 2027-12-20 (+33d) |  | 61.2d → 89.1d |
| SEKCJA 06 | **Sekcja 06** |  | 2027-10-21 → 2027-11-22 (+32d) |  |  |
| PODSEKCJA | **Podsekcja 06.A** |  | 2027-10-21 → 2027-11-22 (+32d) |  |  |
| 26CG51-045 | Monta¿ ruroci¹gów – Sekcja 06 | 2027-09-29 → 2027-11-01 (+33d) | 2027-10-07 → 2027-11-08 (+32d) |  | 80.8d → 108.7d |
| 26CG51-046 | Próba ciœnieniowa – Sekcja 06 | 2027-10-08 → 2027-11-09 (+32d) | 2027-10-11 → 2027-11-10 (+30d) |  | 80.8d → 108.7d |
| 26CG51-047 | Izolacje – Sekcja 06 | 2027-10-12 → 2027-11-11 (+30d) | 2027-10-19 → 2027-11-18 (+30d) |  | 80.8d → 108.7d |
| 26CG51-048 | Malowanie i oznakowanie – Sekcja 06 | 2027-10-14 → 2027-11-15 (+32d) | 2027-10-21 → 2027-11-22 (+32d) |  | 80.8d → 108.7d |

| ID | Task | Start | Finish | Complete | Total float |
| --- | --- | --- | --- | --- | --- |
| SEKCJA 07 | **Sekcja 07** |  | 2027-12-02 → 2028-01-03 (+32d) |  |  |
| 26CG51-052 | Monta¿ ruroci¹gów – Sekcja 07 | 2027-10-01 → 2027-11-03 (+33d) | 2027-11-04 → 2027-12-06 (+32d) |  | 50.9d → 78.8d |
| 26CG51-053 | Próba ciœnieniowa – Sekcja 07 | 2027-11-05 → 2027-12-07 (+32d) | 2027-11-12 → 2027-12-14 (+32d) |  | 50.9d → 78.8d |
| 26CG51-054 | Izolacje – Sekcja 07 | 2027-11-15 → 2027-12-15 (+30d) | 2027-11-30 → 2027-12-30 (+30d) |  | 50.9d → 78.8d |
| 26CG51-055 | Malowanie i oznakowanie – Sekcja 07 | 2027-11-30 → 2027-12-30 (+30d) | 2027-12-02 → 2028-01-03 (+32d) |  | 50.9d → 78.8d |
| SEKCJA 08 | **Sekcja 08** |  | 2027-11-11 → 2027-12-14 (+33d) |  |  |
| 26CG51-057 | Monta¿ ruroci¹gów – Sekcja 08 | 2027-10-05 → 2027-11-05 (+31d) | 2027-11-02 → 2027-12-03 (+31d) |  | 65d → 92.9d |
| 26CG51-058 | Próba ciœnieniowa – Sekcja 08 | 2027-11-03 → 2027-12-06 (+33d) | 2027-11-04 → 2027-12-07 (+33d) |  | 65d → 92.9d |
| 26CG51-060 | Malowanie i oznakowanie – Sekcja 08 | 2027-11-04 → 2027-12-07 (+33d) | 2027-11-11 → 2027-12-14 (+33d) |  | 65d → 92.9d |
| 26CG51-059 | Izolacje – Sekcja 08 | 2027-11-05 → 2027-12-08 (+33d) | 2027-11-09 → 2027-12-10 (+31d) |  | 65d → 92.9d |
| SEKCJA 09 | **Sekcja 09** |  | 2027-11-15 → 2027-12-16 (+31d) |  |  |
| PODSEKCJA | **Podsekcja 09.A** |  | 2027-11-15 → 2027-12-16 (+31d) |  |  |
| 26CG51-064 | Monta¿ ruroci¹gów – Sekcja 09 | 2027-09-30 → 2027-11-02 (+33d) | 2027-11-01 → 2027-12-02 (+31d) |  | 63.6d → 91.5d |
| 26CG51-065 | Próba ciœnieniowa – Sekcja 09 | 2027-11-02 → 2027-12-03 (+31d) | 2027-11-05 → 2027-12-08 (+33d) |  | 63.6d → 91.5d |
| 26CG51-066 | Izolacje – Sekcja 09 | 2027-11-08 → 2027-12-09 (+31d) | 2027-11-11 → 2027-12-14 (+33d) |  | 63.6d → 91.5d |
| 26CG51-067 | Malowanie i oznakowanie – Sekcja 09 | 2027-11-09 → 2027-12-10 (+31d) | 2027-11-15 → 2027-12-16 (+31d) |  | 63.6d → 91.5d |
| SEKCJA 10 | **Sekcja 10** | 2026-02-23 → 2026-02-19 (-4d) | 2027-11-15 → 2027-12-15 (+30d) |  |  |
| 26CG51-068 | Prefabrykacja ruroci¹gów – Sekcja 10 | 2026-02-23 A → 2026-02-19 A (-4d) | 2026-09-30 → 2026-03-02 A (-212d) | 77% → 100% | 378d → none |
| 26CG51-069 | Monta¿ ruroci¹gów – Sekcja 10 | 2027-10-06 → 2027-11-08 (+33d) | 2027-10-20 → 2027-11-19 (+30d) |  | 63.9d → 91.8d |
| 26CG51-070 | Próba ciœnieniowa – Sekcja 10 | 2027-10-21 → 2027-11-22 (+32d) | 2027-10-27 → 2027-11-26 (+30d) |  | 63.9d → 91.8d |
| 26CG51-071 | Izolacje – Sekcja 10 | 2027-10-28 → 2027-11-29 (+32d) | 2027-11-11 → 2027-12-13 (+32d) |  | 63.9d → 91.8d |
| 26CG51-072 | Malowanie i oznakowanie – Sekcja 10 | 2027-11-10 → 2027-12-10 (+30d) | 2027-11-15 → 2027-12-15 (+30d) |  | 63.9d → 91.8d |
| SEKCJA 11 | **Sekcja 11** | 2026-09-30 → 2026-02-23 (-219d) | 2027-10-28 → 2027-11-30 (+33d) |  |  |
| 26CG51-075 | Prefabrykacja ruroci¹gów – Sekcja 11 | 2026-09-30 → 2026-02-23 A (-219d) | 2026-10-09 → 2026-03-05 A (-218d) | 0% → 100% | 226d → none |
| 26CG51-076 | Monta¿ ruroci¹gów – Sekcja 11 | 2027-09-29 → 2027-11-01 (+33d) | 2027-10-11 → 2027-11-11 (+31d) |  | 75.6d → 103.5d |
| 26CG51-077 | Próba ciœnieniowa – Sekcja 11 | 2027-10-12 → 2027-11-12 (+31d) | 2027-10-13 → 2027-11-15 (+33d) |  | 75.6d → 103.5d |
| 26CG51-078 | Izolacje – Sekcja 11 | 2027-10-14 → 2027-11-16 (+33d) | 2027-10-26 → 2027-11-26 (+31d) |  | 75.6d → 103.5d |
| 26CG51-079 | Malowanie i oznakowanie – Sekcja 11 | 2027-10-20 → 2027-11-22 (+33d) | 2027-10-28 → 2027-11-30 (+33d) |  | 75.6d → 103.5d |
| SEKCJA 12 | **Sekcja 12** |  | 2027-11-19 → 2027-12-21 (+32d) |  |  |
| PODSEKCJA | **Podsekcja 12.A** |  | 2027-11-19 → 2027-12-21 (+32d) |  |  |
| 26CG51-081 | Monta¿ ruroci¹gów – Sekcja 12 | 2027-10-08 → 2027-11-10 (+33d) | 2027-10-29 → 2027-11-30 (+32d) |  | 59.8d → 87.7d |
| 26CG51-082 | Próba ciœnieniowa – Sekcja 12 | 2027-11-01 → 2027-12-01 (+30d) | 2027-11-03 → 2027-12-03 (+30d) |  | 59.8d → 87.7d |
| 26CG51-083 | Izolacje – Sekcja 12 | 2027-11-04 → 2027-12-06 (+32d) | 2027-11-17 → 2027-12-17 (+30d) |  | 59.8d → 87.7d |
| 26CG51-084 | Malowanie i oznakowanie – Sekcja 12 | 2027-11-15 → 2027-12-15 (+30d) | 2027-11-19 → 2027-12-21 (+32d) |  | 59.8d → 87.7d |
| SEKCJA 13 | **Sekcja 13** |  | 2027-11-30 → 2027-12-31 (+31d) |  |  |
| 26CG51-088 | Monta¿ ruroci¹gów – Sekcja 13 | 2027-10-13 → 2027-11-15 (+33d) | 2027-11-03 → 2027-12-06 (+33d) |  | 52.3d → 80.2d |
| 26CG51-089 | Próba ciœnieniowa – Sekcja 13 | 2027-11-04 → 2027-12-07 (+33d) | 2027-11-10 → 2027-12-13 (+33d) |  | 52.3d → 80.2d |
| 26CG51-090 | Izolacje – Sekcja 13 | 2027-11-11 → 2027-12-14 (+33d) | 2027-11-26 → 2027-12-29 (+33d) |  | 52.3d → 80.2d |
| 26CG51-091 | Malowanie i oznakowanie – Sekcja 13 | 2027-11-19 → 2027-12-22 (+33d) | 2027-11-30 → 2027-12-31 (+31d) |  | 52.3d → 80.2d |
| SEKCJA 14 | **Sekcja 14** |  | 2027-11-09 → 2027-12-09 (+30d) |  |  |
| 26CG51-093 | Monta¿ ruroci¹gów – Sekcja 14 | 2027-10-08 → 2027-11-10 (+33d) | 2027-10-26 → 2027-11-25 (+30d) |  | 67.9d → 95.8d |
| 26CG51-094 | Próba ciœnieniowa – Sekcja 14 | 2027-10-27 → 2027-11-26 (+30d) | 2027-11-01 → 2027-12-01 (+30d) |  | 67.9d → 95.8d |
| 26CG51-095 | Izolacje – Sekcja 14 | 2027-11-02 → 2027-12-02 (+30d) | 2027-11-05 → 2027-12-07 (+32d) |  | 67.9d → 95.8d |
| 26CG51-096 | Malowanie i oznakowanie – Sekcja 14 | 2027-11-04 → 2027-12-06 (+32d) | 2027-11-09 → 2027-12-09 (+30d) |  | 67.9d → 95.8d |
| SEKCJA 15 | **Sekcja 15** |  | 2027-11-22 → 2027-12-23 (+31d) |  |  |
| PODSEKCJA | **Podsekcja 15.A** |  | 2027-11-22 → 2027-12-23 (+31d) |  |  |
| 26CG51-100 | Monta¿ ruroci¹gów – Sekcja 15 | 2027-10-05 → 2027-11-05 (+31d) | 2027-11-05 → 2027-12-08 (+33d) |  | 58d → 85.9d |
| 26CG51-101 | Próba ciœnieniowa – Sekcja 15 | 2027-11-08 → 2027-12-09 (+31d) | 2027-11-15 → 2027-12-16 (+31d) |  | 58d → 85.9d |
| 26CG51-103 | Malowanie i oznakowanie – Sekcja 15 | 2027-11-11 → 2027-12-14 (+33d) | 2027-11-22 → 2027-12-23 (+31d) |  | 58d → 85.9d |
| 26CG51-102 | Izolacje – Sekcja 15 | 2027-11-16 → 2027-12-17 (+31d) | 2027-11-18 → 2027-12-21 (+33d) |  | 58d → 85.9d |
| SEKCJA 16 | **Sekcja 16** | 2026-03-31 → 2026-03-30 (-1d) | 2027-11-11 → 2027-12-14 (+33d) |  |  |
| 26CG51-104 | Prefabrykacja ruroci¹gów – Sekcja 16 | 2026-03-31 A → 2026-03-30 A (-1d) | 2026-09-30 → 2026-04-06 A (-177d) | 77% → 100% | 382d → none |
| 26CG51-105 | Monta¿ ruroci¹gów – Sekcja 16 | 2027-09-30 → 2027-11-02 (+33d) | 2027-10-19 → 2027-11-19 (+31d) |  | 17.4d → 45.3d |
| 26CG51-106 | Próba ciœnieniowa – Sekcja 16 | 2027-10-20 → 2027-11-22 (+33d) | 2027-10-27 → 2027-11-29 (+33d) |  | 17.4d → 45.3d |
| 26CG51-107 | Izolacje – Sekcja 16 | 2027-10-28 → 2027-11-30 (+33d) | 2027-11-09 → 2027-12-10 (+31d) |  | 17.4d → 45.3d |
| 26CG51-108 | Malowanie i oznakowanie – Sekcja 16 | 2027-11-02 → 2027-12-03 (+31d) | 2027-11-11 → 2027-12-14 (+33d) |  | 17.4d → 45.3d |
| SEKCJA 17 | **Sekcja 17** |  | 2027-12-03 → 2028-01-05 (+33d) |  |  |
| 26CG51-112 | Monta¿ ruroci¹gów – Sekcja 17 | 2027-10-07 → 2027-11-09 (+33d) | 2027-11-10 → 2027-12-13 (+33d) |  | 1.4d → 29.3d |
| 26CG51-113 | Próba ciœnieniowa – Sekcja 17 | 2027-11-11 → 2027-12-14 (+33d) | 2027-11-18 → 2027-12-21 (+33d) |  | 1.4d → 29.3d |
| 26CG51-114 | Izolacje – Sekcja 17 | 2027-11-19 → 2027-12-22 (+33d) | 2027-12-01 → 2028-01-03 (+33d) |  | 1.4d → 29.3d |
| 26CG51-115 | Malowanie i oznakowanie – Sekcja 17 | 2027-12-02 → 2028-01-04 (+33d) | 2027-12-03 → 2028-01-05 (+33d) |  | 1.4d → 29.3d |
| ROZR | **Rozruch** | 2027-12-07 → 2028-01-07 (+31d) | 2028-01-28 → 2028-03-01 (+33d) |  |  |
| ROZRUCH | **Rozruch** | 2027-12-07 → 2028-01-07 (+31d) | 2028-01-28 → 2028-03-01 (+33d) |  |  |
| 26CG51-118 | Przegl¹d gotowoœci do rozruchu | 2027-12-07 → 2028-01-07 (+31d) | 2027-12-16 → 2028-01-18 (+33d) |  | 0d → 27.9d |
| 26CG51-119 | Rozruch na zimno | 2027-12-17 → 2028-01-19 (+33d) | 2027-12-27 → 2028-01-27 (+31d) |  | 0d → 27.9d |
| 26CG51-120 | Rozruch na gor¹co / próby ruchowe | 2027-12-28 → 2028-01-28 (+31d) | 2028-01-27 → 2028-02-29 (+33d) |  | 0d → 27.9d |
| 26CG51-121 | KM: Odbiór koñcowy – Ogrodzenie i monitoring | 2028-01-28 → 2028-03-01 (+33d) | 2028-01-28 → 2028-03-01 (+33d) |  | 0d → 27.9d |
| ZAKU | **Zakupy** |  | 2027-09-29 → 2027-11-01 (+33d) |  |  |
| DOSTAWY | **Dostawy** | 2025-10-08 → 2025-10-07 (-1d) | 2027-09-29 → 2027-11-01 (+33d) |  |  |
| 26CG51-008 | Produkcja u dostawcy | 2025-10-08 A → 2025-10-07 A (-1d) | 2027-08-10 → 2027-09-10 (+31d) | 19% → 12% | 202.5d → 254.2d |

| ID | Task | Start | Finish | Total float |
| --- | --- | --- | --- | --- |
| 26CG51-009 | Testy FAT | 2027-08-11 → 2027-09-13 (+33d) | 2027-08-17 → 2027-09-17 (+31d) | 0d → 27.9d |
| 26CG51-010 | Transport i dostawa na plac budowy | 2027-08-18 → 2027-09-20 (+33d) | 2027-09-28 → 2027-10-29 (+31d) | 0d → 27.9d |
| 26CG51-011 | KM: Dostawa na budowê – Ogrodzenie i monitoring | 2027-09-29 → 2027-11-01 (+33d) | 2027-09-29 → 2027-11-01 (+33d) | 0d → 27.9d |
| 28AM31 | **28AM31 – Drogi i place** |  | 2027-11-09 → 2027-11-10 (+1d) |  |
| BUDO | **Budowa** |  | 2027-10-14 → 2027-11-10 (+27d) |  |
| AKPIA | **AKPiA** | 2027-08-18 → 2027-06-04 (-75d) | 2027-09-06 → 2027-06-23 (-75d) |  |
| 28AM31-104 | Monta¿ uk³adów AKPiA | 2027-08-18 → 2027-06-04 (-75d) | 2027-09-06 → 2027-06-23 (-75d) | 81.1d → 185.6d |
| ELEKTRYKA | **Elektryka** | 2027-08-23 → 2027-06-09 (-75d) | 2027-09-21 → 2027-10-04 (+13d) |  |
| 28AM31-074 | Pod³¹czenia i pomiary – trasa 10 | 2027-08-23 → 2027-06-09 (-75d) | 2027-09-02 → 2027-06-21 (-73d) | 115.1d → 219.6d |
| 28AM31-086 | Pod³¹czenia i pomiary – trasa 12 | 2027-08-24 → 2027-06-10 (-75d) | 2027-08-30 → 2027-06-16 (-75d) | 118.1d → 222.6d |
| 28AM31-025 | Uk³adanie kabli – trasa 02 | 2027-08-25 → 2027-06-11 (-75d) | 2027-09-01 → 2027-06-18 (-75d) | 84.1d → 188.6d |
| 28AM31-026 | Pod³¹czenia i pomiary – trasa 02 | 2027-08-25 → 2027-06-11 (-75d) | 2027-09-01 → 2027-06-18 (-75d) | 84.1d → 188.6d |
| 28AM31-037 | Uk³adanie kabli – trasa 04 | 2027-08-25 → 2027-06-11 (-75d) | 2027-09-10 → 2027-06-29 (-73d) | 109.1d → 213.6d |
| 28AM31-061 | Uk³adanie kabli – trasa 08 | 2027-08-25 → 2027-06-11 (-75d) | 2027-09-21 → 2027-07-08 (-75d) | 102.1d → 206.6d |
| 28AM31-073 | Uk³adanie kabli – trasa 10 | 2027-08-25 → 2027-06-11 (-75d) | 2027-09-02 → 2027-06-21 (-73d) | 115.1d → 219.6d |
| 28AM31-085 | Uk³adanie kabli – trasa 12 | 2027-08-25 → 2027-06-11 (-75d) | 2027-08-30 → 2027-06-16 (-75d) | 118.1d → 222.6d |
| 28AM31-097 | Uk³adanie kabli – trasa 14 | 2027-08-25 → 2027-06-11 (-75d) | 2027-09-09 → 2027-06-28 (-73d) | 78.1d → 182.6d |
| 28AM31-098 | Pod³¹czenia i pomiary – trasa 14 | 2027-09-06 → 2027-06-23 (-75d) | 2027-09-09 → 2027-06-28 (-73d) | 78.1d → 182.6d |
| 28AM31-038 | Pod³¹czenia i pomiary – trasa 04 | 2027-09-07 → 2027-06-24 (-75d) | 2027-09-10 → 2027-06-29 (-73d) | 109.1d → 213.6d |
| 28AM31-062 | Pod³¹czenia i pomiary – trasa 08 | 2027-09-16 → 2027-07-05 (-73d) | 2027-09-21 → 2027-07-08 (-75d) | 102.1d → 206.6d |
| 28AM31-049 | Uk³adanie kabli – trasa 06 | 2027-08-25 → 2027-09-17 (+23d) | 2027-09-09 → 2027-10-04 (+25d) | 110.1d → 144.6d |
| 28AM31-050 | Pod³¹czenia i pomiary – trasa 06 | 2027-08-31 → 2027-09-23 (+23d) | 2027-09-09 → 2027-10-04 (+25d) | 110.1d → 144.6d |
| MONTA¯ | **Monta¿** |  | 2027-10-08 → 2027-07-27 (-73d) |  |
| 28AM31-014 | Monta¿ urz¹dzeñ g³ównych | 2027-08-11 → 2027-05-28 (-75d) | 2027-10-07 → 2027-07-26 (-73d) | 58.1d → 162.6d |
| 28AM31-105 | KM: Zakoñczenie monta¿u – Drogi i place | 2027-10-08 → 2027-07-27 (-73d) | 2027-10-08 → 2027-07-27 (-73d) | 58.1d → 162.6d |
| RUROCI¥GI | **Ruroci¹gi** |  | 2027-10-14 → 2027-11-10 (+27d) |  |
| SEKCJA 01 | **Sekcja 01** |  | 2027-09-08 → 2027-06-24 (-76d) |  |
| 28AM31-016 | Monta¿ ruroci¹gów – Sekcja 01 | 2027-08-11 → 2027-05-28 (-75d) | 2027-08-23 → 2027-06-08 (-76d) | 79.9d → 184.4d |
| 28AM31-017 | Próba ciœnieniowa – Sekcja 01 | 2027-08-24 → 2027-06-09 (-76d) | 2027-08-31 → 2027-06-16 (-76d) | 79.9d → 184.4d |
| 28AM31-018 | Izolacje – Sekcja 01 | 2027-09-01 → 2027-06-17 (-76d) | 2027-09-06 → 2027-06-22 (-76d) | 79.9d → 184.4d |
| 28AM31-019 | Malowanie i oznakowanie – Sekcja 01 | 2027-09-06 → 2027-06-22 (-76d) | 2027-09-08 → 2027-06-24 (-76d) | 79.9d → 184.4d |
| SEKCJA 02 | **Sekcja 02** |  | 2027-09-17 → 2027-07-05 (-74d) |  |
| 28AM31-021 | Monta¿ ruroci¹gów – Sekcja 02 | 2027-08-13 → 2027-06-01 (-73d) | 2027-08-31 → 2027-06-16 (-76d) | 72.2d → 176.7d |
| 28AM31-022 | Próba ciœnieniowa – Sekcja 02 | 2027-09-01 → 2027-06-17 (-76d) | 2027-09-02 → 2027-06-18 (-76d) | 72.2d → 176.7d |
| 28AM31-023 | Izolacje – Sekcja 02 | 2027-09-03 → 2027-06-21 (-74d) | 2027-09-15 → 2027-07-01 (-76d) | 72.2d → 176.7d |
| 28AM31-024 | Malowanie i oznakowanie – Sekcja 02 | 2027-09-15 → 2027-07-01 (-76d) | 2027-09-17 → 2027-07-05 (-74d) | 72.2d → 176.7d |
| SEKCJA 03 | **Sekcja 03** |  | 2027-09-29 → 2027-07-15 (-76d) |  |
| PODSEKCJA | **Podsekcja 03.A** |  | 2027-09-29 → 2027-07-15 (-76d) |  |
| 28AM31-028 | Monta¿ ruroci¹gów – Sekcja 03 | 2027-08-19 → 2027-06-07 (-73d) | 2027-09-08 → 2027-06-24 (-76d) | 96.2d → 200.7d |
| 28AM31-029 | Próba ciœnieniowa – Sekcja 03 | 2027-09-09 → 2027-06-25 (-76d) | 2027-09-14 → 2027-06-30 (-76d) | 96.2d → 200.7d |
| 28AM31-030 | Izolacje – Sekcja 03 | 2027-09-15 → 2027-07-01 (-76d) | 2027-09-27 → 2027-07-13 (-76d) | 96.2d → 200.7d |
| 28AM31-031 | Malowanie i oznakowanie – Sekcja 03 | 2027-09-24 → 2027-07-12 (-74d) | 2027-09-29 → 2027-07-15 (-76d) | 96.2d → 200.7d |
| SEKCJA 04 | **Sekcja 04** |  | 2027-09-22 → 2027-07-08 (-76d) |  |
| 28AM31-033 | Monta¿ ruroci¹gów – Sekcja 04 | 2027-08-18 → 2027-06-04 (-75d) | 2027-08-30 → 2027-06-15 (-76d) | 101.6d → 206.1d |
| 28AM31-034 | Próba ciœnieniowa – Sekcja 04 | 2027-08-31 → 2027-06-16 (-76d) | 2027-09-07 → 2027-06-23 (-76d) | 101.6d → 206.1d |
| 28AM31-035 | Izolacje – Sekcja 04 | 2027-09-08 → 2027-06-24 (-76d) | 2027-09-20 → 2027-07-06 (-76d) | 101.6d → 206.1d |
| 28AM31-036 | Malowanie i oznakowanie – Sekcja 04 | 2027-09-13 → 2027-06-29 (-76d) | 2027-09-22 → 2027-07-08 (-76d) | 101.6d → 206.1d |
| SEKCJA 05 | **Sekcja 05** |  | 2027-09-15 → 2027-11-04 (+50d) |  |
| 28AM31-040 | Monta¿ ruroci¹gów – Sekcja 05 | 2027-08-20 → 2027-10-11 (+52d) | 2027-08-31 → 2027-10-20 (+50d) | 106.1d → 121.6d |
| 28AM31-041 | Próba ciœnieniowa – Sekcja 05 | 2027-09-01 → 2027-10-21 (+50d) | 2027-09-02 → 2027-10-22 (+50d) | 106.1d → 121.6d |
| 28AM31-042 | Izolacje – Sekcja 05 | 2027-09-03 → 2027-10-25 (+52d) | 2027-09-13 → 2027-11-02 (+50d) | 106.1d → 121.6d |
| 28AM31-043 | Malowanie i oznakowanie – Sekcja 05 | 2027-09-14 → 2027-11-03 (+50d) | 2027-09-15 → 2027-11-04 (+50d) | 106.1d → 121.6d |
| SEKCJA 06 | **Sekcja 06** |  | 2027-10-04 → 2027-07-20 (-76d) |  |
| PODSEKCJA | **Podsekcja 06.A** |  | 2027-10-04 → 2027-07-20 (-76d) |  |
| 28AM31-045 | Monta¿ ruroci¹gów – Sekcja 06 | 2027-08-23 → 2027-06-09 (-75d) | 2027-09-14 → 2027-06-30 (-76d) | 93.7d → 198.2d |
| 28AM31-046 | Próba ciœnieniowa – Sekcja 06 | 2027-09-15 → 2027-07-01 (-76d) | 2027-09-16 → 2027-07-02 (-76d) | 93.7d → 198.2d |
| 28AM31-047 | Izolacje – Sekcja 06 | 2027-09-17 → 2027-07-05 (-74d) | 2027-09-30 → 2027-07-16 (-76d) | 93.7d → 198.2d |
| 28AM31-048 | Malowanie i oznakowanie – Sekcja 06 | 2027-09-28 → 2027-07-14 (-76d) | 2027-10-04 → 2027-07-20 (-76d) | 93.7d → 198.2d |
| SEKCJA 07 | **Sekcja 07** |  | 2027-09-27 → 2027-07-13 (-76d) |  |
| 28AM31-052 | Monta¿ ruroci¹gów – Sekcja 07 | 2027-08-20 → 2027-06-08 (-73d) | 2027-09-03 → 2027-06-21 (-74d) | 98.6d → 203.1d |
| 28AM31-053 | Próba ciœnieniowa – Sekcja 07 | 2027-09-06 → 2027-06-22 (-76d) | 2027-09-13 → 2027-06-29 (-76d) | 98.6d → 203.1d |
| 28AM31-054 | Izolacje – Sekcja 07 | 2027-09-14 → 2027-06-30 (-76d) | 2027-09-23 → 2027-07-09 (-76d) | 98.6d → 203.1d |
| 28AM31-055 | Malowanie i oznakowanie – Sekcja 07 | 2027-09-21 → 2027-07-07 (-76d) | 2027-09-27 → 2027-07-13 (-76d) | 98.6d → 203.1d |
| SEKCJA 08 | **Sekcja 08** |  | 2027-09-17 → 2027-07-05 (-74d) |  |
| 28AM31-057 | Monta¿ ruroci¹gów – Sekcja 08 | 2027-08-12 → 2027-05-31 (-73d) | 2027-08-27 → 2027-06-14 (-74d) | 104.5d → 209d |
| 28AM31-058 | Próba ciœnieniowa – Sekcja 08 | 2027-08-30 → 2027-06-15 (-76d) | 2027-08-31 → 2027-06-16 (-76d) | 104.5d → 209d |
| 28AM31-059 | Izolacje – Sekcja 08 | 2027-09-01 → 2027-06-17 (-76d) | 2027-09-15 → 2027-07-01 (-76d) | 104.5d → 209d |
| 28AM31-060 | Malowanie i oznakowanie – Sekcja 08 | 2027-09-13 → 2027-06-29 (-76d) | 2027-09-17 → 2027-07-05 (-74d) | 104.5d → 209d |
| SEKCJA 09 | **Sekcja 09** |  | 2027-10-13 → 2027-10-22 (+9d) |  |
| PODSEKCJA | **Podsekcja 09.A** |  | 2027-10-13 → 2027-10-22 (+9d) |  |

| ID | Task | Start | Finish | Complete | Total float |
| --- | --- | --- | --- | --- | --- |
| 28AM31-064 | Monta¿ ruroci¹gów – Sekcja 09 | 2027-08-24 → 2027-06-10 (-75d) | 2027-09-21 → 2027-07-07 (-76d) |  | 86.6d → 191.1d |
| 28AM31-065 | Próba ciœnieniowa – Sekcja 09 | 2027-09-22 → 2027-07-08 (-76d) | 2027-09-23 → 2027-07-09 (-76d) |  | 86.6d → 191.1d |
| 28AM31-066 | Izolacje – Sekcja 09 | 2027-09-24 → 2027-10-05 (+11d) | 2027-10-11 → 2027-10-20 (+9d) |  | 86.6d → 130.6d |
| 28AM31-067 | Malowanie i oznakowanie – Sekcja 09 | 2027-10-11 → 2027-10-20 (+9d) | 2027-10-13 → 2027-10-22 (+9d) |  | 86.6d → 130.6d |
| SEKCJA 10 | **Sekcja 10** |  | 2027-09-30 → 2027-07-16 (-76d) |  |  |
| 28AM31-069 | Monta¿ ruroci¹gów – Sekcja 10 | 2027-08-20 → 2027-06-08 (-73d) | 2027-09-06 → 2027-06-22 (-76d) |  | 95.8d → 200.3d |
| 28AM31-070 | Próba ciœnieniowa – Sekcja 10 | 2027-09-07 → 2027-06-23 (-76d) | 2027-09-10 → 2027-06-28 (-74d) |  | 95.8d → 200.3d |
| 28AM31-071 | Izolacje – Sekcja 10 | 2027-09-13 → 2027-06-29 (-76d) | 2027-09-28 → 2027-07-14 (-76d) |  | 95.8d → 200.3d |
| 28AM31-072 | Malowanie i oznakowanie – Sekcja 10 | 2027-09-24 → 2027-07-12 (-74d) | 2027-09-30 → 2027-07-16 (-76d) |  | 95.8d → 200.3d |
| SEKCJA 11 | **Sekcja 11** |  | 2027-09-22 → 2027-07-09 (-75d) |  |  |
| 28AM31-076 | Monta¿ ruroci¹gów – Sekcja 11 | 2027-08-18 → 2027-06-04 (-75d) | 2027-08-30 → 2027-06-16 (-75d) |  | 101d → 205.5d |
| 28AM31-077 | Próba ciœnieniowa – Sekcja 11 | 2027-08-31 → 2027-06-17 (-75d) | 2027-09-06 → 2027-06-23 (-75d) |  | 101d → 205.5d |
| 28AM31-078 | Izolacje – Sekcja 11 | 2027-09-07 → 2027-06-24 (-75d) | 2027-09-20 → 2027-07-07 (-75d) |  | 101d → 205.5d |
| 28AM31-079 | Malowanie i oznakowanie – Sekcja 11 | 2027-09-17 → 2027-07-06 (-73d) | 2027-09-22 → 2027-07-09 (-75d) |  | 101d → 205.5d |
| SEKCJA 12 | **Sekcja 12** |  | 2027-10-05 → 2027-07-21 (-76d) |  |  |
| PODSEKCJA | **Podsekcja 12.A** |  | 2027-10-05 → 2027-07-21 (-76d) |  |  |
| 28AM31-081 | Monta¿ ruroci¹gów – Sekcja 12 | 2027-08-24 → 2027-06-10 (-75d) | 2027-09-22 → 2027-07-08 (-76d) |  | 92.2d → 196.7d |
| 28AM31-082 | Próba ciœnieniowa – Sekcja 12 | 2027-09-23 → 2027-07-09 (-76d) | 2027-09-27 → 2027-07-13 (-76d) |  | 92.2d → 196.7d |
| 28AM31-084 | Malowanie i oznakowanie – Sekcja 12 | 2027-09-24 → 2027-07-12 (-74d) | 2027-10-05 → 2027-07-21 (-76d) |  | 92.2d → 196.7d |
| 28AM31-083 | Izolacje – Sekcja 12 | 2027-09-28 → 2027-07-14 (-76d) | 2027-10-01 → 2027-07-19 (-74d) |  | 92.2d → 196.7d |
| SEKCJA 13 | **Sekcja 13** |  | 2027-10-14 → 2027-11-10 (+27d) |  |  |
| 28AM31-088 | Monta¿ ruroci¹gów – Sekcja 13 | 2027-08-23 → 2027-06-09 (-75d) | 2027-09-20 → 2027-07-07 (-75d) |  | 85d → 189.5d |
| 28AM31-089 | Próba ciœnieniowa – Sekcja 13 | 2027-09-21 → 2027-07-08 (-75d) | 2027-09-28 → 2027-07-15 (-75d) |  | 85d → 189.5d |
| 28AM31-090 | Izolacje – Sekcja 13 | 2027-09-29 → 2027-10-26 (+27d) | 2027-10-12 → 2027-11-08 (+27d) |  | 85d → 117.6d |
| 28AM31-091 | Malowanie i oznakowanie – Sekcja 13 | 2027-10-07 → 2027-11-03 (+27d) | 2027-10-14 → 2027-11-10 (+27d) |  | 85d → 117.6d |
| SEKCJA 14 | **Sekcja 14** |  | 2027-09-10 → 2027-06-28 (-74d) |  |  |
| 28AM31-093 | Monta¿ ruroci¹gów – Sekcja 14 | 2027-08-18 → 2027-06-04 (-75d) | 2027-08-30 → 2027-06-15 (-76d) |  | 77.3d → 181.8d |
| 28AM31-094 | Próba ciœnieniowa – Sekcja 14 | 2027-08-31 → 2027-06-16 (-76d) | 2027-09-02 → 2027-06-18 (-76d) |  | 77.3d → 181.8d |
| 28AM31-095 | Izolacje – Sekcja 14 | 2027-09-03 → 2027-06-21 (-74d) | 2027-09-08 → 2027-06-24 (-76d) |  | 77.3d → 181.8d |
| 28AM31-096 | Malowanie i oznakowanie – Sekcja 14 | 2027-09-03 → 2027-06-21 (-74d) | 2027-09-10 → 2027-06-28 (-74d) |  | 77.3d → 181.8d |
| SEKCJA 15 | **Sekcja 15** |  | 2027-09-29 → 2027-07-15 (-76d) |  |  |
| PODSEKCJA | **Podsekcja 15.A** |  | 2027-09-29 → 2027-07-15 (-76d) |  |  |
| 28AM31-100 | Monta¿ ruroci¹gów – Sekcja 15 | 2027-08-17 → 2027-06-03 (-75d) | 2027-09-20 → 2027-07-06 (-76d) |  | 64.6d → 169.1d |
| 28AM31-101 | Próba ciœnieniowa – Sekcja 15 | 2027-09-21 → 2027-07-07 (-76d) | 2027-09-22 → 2027-07-08 (-76d) |  | 64.6d → 169.1d |
| 28AM31-102 | Izolacje – Sekcja 15 | 2027-09-23 → 2027-07-09 (-76d) | 2027-09-27 → 2027-07-13 (-76d) |  | 64.6d → 169.1d |
| 28AM31-103 | Malowanie i oznakowanie – Sekcja 15 | 2027-09-23 → 2027-07-09 (-76d) | 2027-09-29 → 2027-07-15 (-76d) |  | 64.6d → 169.1d |
| ROZR | **Rozruch** | 2027-10-08 → 2027-07-27 (-73d) | 2027-11-09 → 2027-08-26 (-75d) |  |  |
| ROZRUCH | **Rozruch** | 2027-10-08 → 2027-07-27 (-73d) | 2027-11-09 → 2027-08-26 (-75d) |  |  |
| 28AM31-106 | Przegl¹d gotowoœci do rozruchu | 2027-10-08 → 2027-07-27 (-73d) | 2027-10-13 → 2027-07-30 (-75d) |  | 58.1d → 162.6d |
| 28AM31-107 | Rozruch na zimno | 2027-10-14 → 2027-08-02 (-73d) | 2027-10-21 → 2027-08-09 (-73d) |  | 58.1d → 162.6d |
| 28AM31-108 | Rozruch na gor¹co / próby ruchowe | 2027-10-22 → 2027-08-10 (-73d) | 2027-11-08 → 2027-08-25 (-75d) |  | 58.1d → 162.6d |
| 28AM31-109 | KM: Odbiór koñcowy – Drogi i place | 2027-11-09 → 2027-08-26 (-75d) | 2027-11-09 → 2027-08-26 (-75d) |  | 58.1d → 162.6d |
| ZAKU | **Zakupy** |  | 2027-08-11 → 2027-05-28 (-75d) |  |  |
| DOSTAWY | **Dostawy** | 2025-10-08 → 2025-10-09 (+1d) | 2027-08-11 → 2027-05-28 (-75d) |  |  |
| 28AM31-008 | Produkcja u dostawcy | 2025-10-08 A → 2025-10-09 A (+1d) | 2027-06-11 → 2027-03-30 (-73d) | 34% → 55% | 219.9d → 269.6d |
| 28AM31-009 | Testy FAT | 2027-06-14 → 2027-03-31 (-75d) | 2027-06-21 → 2027-04-07 (-75d) |  | 58.1d → 162.6d |
| 28AM31-010 | Transport i dostawa na plac budowy | 2027-06-22 → 2027-04-08 (-75d) | 2027-08-10 → 2027-05-27 (-75d) |  | 58.1d → 162.6d |
| 28AM31-011 | KM: Dostawa na budowê – Drogi i place | 2027-08-11 → 2027-05-28 (-75d) | 2027-08-11 → 2027-05-28 (-75d) |  | 58.1d → 162.6d |
| 28YY90 | **28YY90 – Warsztat** |  | 2026-11-23 → 2026-12-02 (+9d) |  |  |
| BUDO | **Budowa** | 2026-01-20 → 2026-01-15 (-5d) | 2026-11-16 → 2026-12-02 (+16d) |  |  |
| ELEKTRYKA | **Elektryka** | 2026-08-28 → 2026-08-26 (-2d) | 2026-10-13 → 2026-09-29 (-14d) |  |  |
| 28YY90-086 | Pod³¹czenia i pomiary – trasa 12 | 2026-09-30 → 2026-08-26 A (-35d) | 2026-10-13 → 2026-09-09 A (-34d) | 0% → 100% | 347.9d → none |
| 28YY90-049 | Uk³adanie kabli – trasa 06 | 2026-09-09 A → 2026-09-07 A (-2d) | 2026-10-02 → 2026-09-15 A (-17d) | 24% → 100% | 367.9d → none |
| 28YY90-110 | Pod³¹czenia i pomiary – trasa 16 | 2026-09-30 → 2026-09-18 A (-12d) | 2026-10-06 → 2026-09-28 A (-8d) | 0% → 100% | 320.9d → none |
| MONTA¯ | **Monta¿** |  | 2026-10-22 → 2026-10-23 (+1d) |  |  |
| 28YY90-013 | Monta¿ konstrukcji stalowych |  | 2026-10-20 → 2026-04-01 A (-202d) | 38% → 100% | 414.5d → none |
| 28YY90-014 | Monta¿ urz¹dzeñ g³ównych |  | 2026-10-21 → 2026-10-05 A (-16d) | 48% → 100% | 311.5d → none |
| 28YY90-112 | KM: Zakoñczenie monta¿u – Warsztat | 2026-10-22 → 2026-10-23 (+1d) | 2026-10-22 → 2026-10-23 (+1d) |  | 309.2d → 359.2d |
| ROBOTY BUD | **Roboty budowlane** | 2026-01-20 → 2026-01-15 (-5d) | 2026-10-09 → 2026-02-20 (-231d) |  |  |
| 28YY90-012 | Fundamenty i roboty ziemne | 2026-01-20 A → 2026-01-15 A (-5d) | 2026-10-09 → 2026-02-20 A (-231d) | 69% → 100% | 357.2d → none |
| RUROCI¥GI | **Ruroci¹gi** |  | 2026-11-16 → 2026-12-02 (+16d) |  |  |
| SEKCJA 01 | **Sekcja 01** |  | 2026-10-09 → 2026-10-13 (+4d) |  |  |
| 28YY90-017 | Próba ciœnieniowa – Sekcja 01 |  | 2026-09-30 → 2026-10-06 A (+6d) | 78% → 100% | 312.9d → none |
| 28YY90-018 | Izolacje – Sekcja 01 | 2026-10-01 → 2026-10-07 (+6d) | 2026-10-07 → 2026-10-13 (+6d) |  | 317.6d → 364.6d |
| 28YY90-019 | Malowanie i oznakowanie – Sekcja 01 | 2026-09-30 → 2026-10-07 A (+7d) |  | 0% → 57% | 317.6d → 363.6d |
| SEKCJA 04 | **Sekcja 04** |  | 2026-10-14 → 2026-12-02 (+49d) |  |  |
| 28YY90-034 | Próba ciœnieniowa – Sekcja 04 | 2026-09-30 A → 2026-09-28 A (-2d) | 2026-09-30 → 2026-10-05 A (+5d) | 70% → 100% | 343.9d → none |
| 28YY90-035 | Izolacje – Sekcja 04 | 2026-10-01 → 2026-10-07 A (+6d) | 2026-10-12 → 2026-10-09 (-3d) | 0% → 62% | 346.7d → 393.6d |
| 28YY90-036 | Malowanie i oznakowanie – Sekcja 04 | 2026-10-08 → 2026-11-26 (+49d) | 2026-10-14 → 2026-12-02 (+49d) |  | 346.7d → 362.6d |
| SEKCJA 05 | **Sekcja 05** |  | 2026-10-13 → 2026-10-07 (-6d) |  |  |

| ID | Task | Start | Finish | Complete | Total float |
| --- | --- | --- | --- | --- | --- |
| 28YY90-042 | Izolacje – Sekcja 05 | 2026-09-30 → 2026-10-01 A (+1d) | 2026-10-09 → 2026-10-07 (-2d) | 0% → 79% | 347.9d → 397d |
| 28YY90-043 | Malowanie i oznakowanie – Sekcja 05 | 2026-10-05 A | 2026-10-13 → 2026-10-07 (-6d) | 0% → 79% | 347.9d → 398d |
| SEKCJA 06 | **Sekcja 06** |  | 2026-10-06 → 2026-10-07 (+1d) |  |  |
| PODSEKCJA | **Podsekcja 06.A** |  | 2026-10-06 → 2026-10-07 (+1d) |  |  |
| 28YY90-047 | Izolacje – Sekcja 06 | 2026-09-28 A → 2026-09-23 A (-5d) | 2026-10-02 → 2026-10-01 A (-1d) | 57% → 100% | 350.7d → none |
| 28YY90-048 | Malowanie i oznakowanie – Sekcja 06 | 2026-09-30 → 2026-10-05 A (+5d) | 2026-10-06 → 2026-10-07 (+1d) | 0% → 68% | 352.9d → 400.4d |
| SEKCJA 08 | **Sekcja 08** |  | 2026-10-21 → 2026-10-16 (-5d) |  |  |
| 28YY90-057 | Monta¿ ruroci¹gów – Sekcja 08 | 2026-08-31 A → 2026-08-27 A (-4d) | 2026-10-01 → 2026-09-24 A (-7d) | 89% → 100% | 340.4d → none |
| 28YY90-058 | Próba ciœnieniowa – Sekcja 08 | 2026-09-28 A → 2026-09-22 A (-6d) | 2026-10-05 → 2026-10-02 A (-3d) | 22% → 100% | 341.4d → none |
| 28YY90-059 | Izolacje – Sekcja 08 | 2026-10-06 → 2026-10-07 A (+1d) | 2026-10-19 → 2026-10-14 (-5d) | 0% → 35% | 341.2d → 391.6d |
| 28YY90-060 | Malowanie i oznakowanie – Sekcja 08 | 2026-10-13 → 2026-10-08 (-5d) | 2026-10-21 → 2026-10-16 (-5d) |  | 341.2d → 395.1d |
| SEKCJA 09 | **Sekcja 09** |  | 2026-10-12 → 2026-10-16 (+4d) |  |  |
| PODSEKCJA | **Podsekcja 09.A** |  | 2026-10-12 → 2026-10-16 (+4d) |  |  |
| 28YY90-065 | Próba ciœnieniowa – Sekcja 09 | 2026-09-30 A → 2026-09-29 A (-1d) | 2026-09-30 → 2026-10-09 (+9d) | 80% → 28% | 344.9d → 396.5d |
| 28YY90-066 | Izolacje – Sekcja 09 | 2026-10-01 → 2026-10-07 A (+6d) | 2026-10-08 → 2026-10-09 (+1d) | 0% → 47% | 348.9d → 395.6d |
| 28YY90-067 | Malowanie i oznakowanie – Sekcja 09 | 2026-10-01 → 2026-10-07 (+6d) | 2026-10-12 → 2026-10-16 (+4d) |  | 348.9d → 395.6d |
| SEKCJA 10 | **Sekcja 10** |  | 2026-10-07 → 2026-10-06 (-1d) |  |  |
| 28YY90-070 | Próba ciœnieniowa – Sekcja 10 | 2026-09-25 A → 2026-09-22 A (-3d) | 2026-10-01 → 2026-09-29 A (-2d) | 32% → 100% | 350.2d → none |
| 28YY90-072 | Malowanie i oznakowanie – Sekcja 10 | 2026-09-30 A → 2026-09-28 A (-2d) | 2026-10-07 → 2026-10-06 A (-1d) | 14% → 100% | 350.9d → none |
| 28YY90-071 | Izolacje – Sekcja 10 | 2026-09-28 A → 2026-10-01 A (+3d) | 2026-09-30 → 2026-10-06 A (+6d) | 75% → 100% | 353.2d → none |
| 28YY90-077 | Próba ciœnieniowa – Sekcja 11 | 2026-09-30 A → 2026-09-28 A (-2d) | 2026-09-30 → 2026-10-09 (+9d) | 80% → 36% | 338.9d → 391.4d |
| 28YY90-078 | Izolacje – Sekcja 11 | 2026-10-01 → 2026-10-05 A (+4d) |  | 0% → 29% | 342.9d → 391.4d |
| SEKCJA 12 | **Sekcja 12** |  | 2026-10-06 → 2026-10-08 (+2d) |  |  |
| PODSEKCJA | **Podsekcja 12.A** |  | 2026-10-06 → 2026-10-08 (+2d) |  |  |
| 28YY90-081 | Monta¿ ruroci¹gów – Sekcja 12 | 2026-08-21 A → 2026-08-25 A (+4d) | 2026-10-02 → 2026-09-23 A (-9d) | 82% → 100% | 349.8d → none |
| 28YY90-083 | Izolacje – Sekcja 12 | 2026-09-25 A → 2026-09-30 A (+5d) | 2026-10-02 → 2026-10-06 A (+4d) | 61% → 100% | 349.8d → none |
| 28YY90-084 | Malowanie i oznakowanie – Sekcja 12 | 2026-10-05 → 2026-10-07 (+2d) | 2026-10-06 → 2026-10-08 (+2d) |  | 352.4d → 401.6d |
| SEKCJA 13 | **Sekcja 13** |  | 2026-11-16 → 2026-10-15 (-32d) |  |  |
| 28YY90-088 | Monta¿ ruroci¹gów – Sekcja 13 | 2026-09-30 → 2026-09-01 A (-29d) | 2026-10-27 → 2026-10-01 A (-26d) | 0% → 100% | 323.6d → none |
| 28YY90-089 | Próba ciœnieniowa – Sekcja 13 | 2026-10-28 → 2026-10-06 A (-22d) | 2026-11-02 → 2026-10-09 (-24d) | 0% → 18% | 323.6d → 390.3d |
| 28YY90-090 | Izolacje – Sekcja 13 | 2026-11-03 → 2026-10-06 A (-28d) | 2026-11-12 → 2026-10-13 (-30d) | 0% → 30% | 323.6d → 394.3d |
| 28YY90-091 | Malowanie i oznakowanie – Sekcja 13 | 2026-11-12 → 2026-10-13 (-30d) | 2026-11-16 → 2026-10-15 (-32d) |  | 323.6d → 396d |
| SEKCJA 14 | **Sekcja 14** |  | 2026-09-30 → 2026-09-22 (-8d) |  |  |
| 28YY90-096 | Malowanie i oznakowanie – Sekcja 14 | 2026-09-11 A → 2026-09-10 A (-1d) | 2026-09-30 → 2026-09-22 A (-8d) | 81% → 100% | 363.2d → none |
| SEKCJA 15 | **Sekcja 15** |  | 2026-10-21 → 2026-10-22 (+1d) |  |  |
| PODSEKCJA | **Podsekcja 15.A** |  | 2026-10-21 → 2026-10-22 (+1d) |  |  |
| 28YY90-101 | Próba ciœnieniowa – Sekcja 15 | 2026-09-29 A → 2026-09-25 A (-4d) | 2026-10-01 → 2026-10-02 A (+1d) | 35% → 100% | 308.5d → none |
| 28YY90-102 | Izolacje – Sekcja 15 | 2026-10-02 → 2026-10-01 A (-1d) | 2026-10-19 → 2026-10-20 (+1d) | 0% → 13% | 309.3d → 361.2d |
| 28YY90-103 | Malowanie i oznakowanie – Sekcja 15 | 2026-10-13 → 2026-10-14 (+1d) | 2026-10-21 → 2026-10-22 (+1d) |  | 309.3d → 359.2d |
| PROJ | **Projektowanie** |  | 2026-09-30 → 2025-11-27 (-307d) |  |  |
| DOKUMENTAC | **Dokumentacja** |  | 2026-09-30 → 2025-11-27 (-307d) |  |  |
| 28YY90-004 | KM: Dokumentacja zatwierdzona – Warsztat | 2026-09-30 → 2025-11-27 A (-307d) | 2026-09-30 → 2025-11-27 (-307d) | 0% → 100% | 114.5d → none |
| ROZR | **Rozruch** | 2026-10-22 → 2026-10-23 (+1d) | 2026-11-23 → 2026-11-24 (+1d) |  |  |
| ROZRUCH | **Rozruch** | 2026-10-22 → 2026-10-23 (+1d) | 2026-11-23 → 2026-11-24 (+1d) |  |  |
| 28YY90-113 | Przegl¹d gotowoœci do rozruchu | 2026-10-22 → 2026-10-23 (+1d) | 2026-10-29 → 2026-10-30 (+1d) |  | 309.2d → 359.2d |
| 28YY90-114 | Rozruch na zimno | 2026-10-30 → 2026-11-02 (+3d) | 2026-11-06 → 2026-11-09 (+3d) |  | 309.2d → 359.2d |
| 28YY90-115 | Rozruch na gor¹co / próby ruchowe | 2026-11-09 → 2026-11-10 (+1d) | 2026-11-20 → 2026-11-23 (+3d) |  | 309.2d → 359.2d |
| 28YY90-116 | KM: Odbiór koñcowy – Warsztat | 2026-11-23 → 2026-11-24 (+1d) | 2026-11-23 → 2026-11-24 (+1d) |  | 309.2d → 359.2d |
| 29XB26 | **29XB26 – Magazyn** |  | 2026-11-04 → 2026-10-16 (-19d) |  |  |
| BUDO | **Budowa** |  | 2026-10-19 → 2026-09-16 (-33d) |  |  |
| ELEKTRYKA | **Elektryka** |  | 2026-10-02 → 2026-09-01 (-31d) |  |  |
| 29XB26-049 | Uk³adanie kabli – trasa 06 | 2026-08-03 A → 2026-07-29 A (-5d) | 2026-10-01 → 2026-08-04 A (-58d) | 58% → 100% | 394.9d → none |
| 29XB26-026 | Pod³¹czenia i pomiary – trasa 02 | 2026-08-19 A → 2026-08-13 A (-6d) | 2026-10-02 → 2026-08-18 A (-45d) | 12% → 100% | 340.9d → none |
| RUROCI¥GI | **Ruroci¹gi** |  | 2026-10-19 → 2026-09-14 (-35d) |  |  |
| SEKCJA 01 | **Sekcja 01** |  | 2026-10-19 → 2026-08-21 (-59d) |  |  |
| 29XB26-016 | Monta¿ ruroci¹gów – Sekcja 01 | 2026-09-30 → 2026-07-16 A (-76d) | 2026-10-19 → 2026-08-05 A (-75d) | 0% → 100% | 289.7d → none |
| SEKCJA 12 | **Sekcja 12** |  | 2026-10-01 → 2026-08-12 (-50d) |  |  |
| PODSEKCJA | **Podsekcja 12.A** |  | 2026-10-01 → 2026-08-12 (-50d) |  |  |
| 29XB26-081 | Monta¿ ruroci¹gów – Sekcja 12 | 2026-07-17 A → 2026-07-21 A (+4d) | 2026-10-01 → 2026-08-03 A (-59d) | 71% → 100% | 349.1d → none |
| ROZR | **Rozruch** |  | 2026-11-04 → 2026-10-16 (-19d) |  |  |
| ROZRUCH | **Rozruch** |  | 2026-11-04 → 2026-10-16 (-19d) |  |  |
| 29XB26-090 | Rozruch na zimno | 2026-09-18 A → 2026-09-21 A (+3d) | 2026-10-12 → 2026-10-16 (+4d) | 18% → 28% | 327.2d → 376.9d |
| 29XB26-091 | Rozruch na gor¹co / próby ruchowe | 2026-10-13 → 2026-10-06 A (-7d) | 2026-11-03 → 2026-10-08 (-26d) | 0% → 87% | 322.1d → 377.9d |
| 29XB26-092 | KM: Odbiór koñcowy – Magazyn | 2026-11-04 → 2026-10-09 (-26d) | 2026-11-04 → 2026-10-09 (-26d) |  | 322.1d → 391.5d |
| ZAKU | **Zakupy** |  | 2026-09-30 → 2026-07-15 (-77d) |  |  |
| DOSTAWY | **Dostawy** |  | 2026-09-30 → 2026-07-15 (-77d) |  |  |
| 29XB26-009 | Testy FAT | 2026-06-16 A → 2026-06-12 A (-4d) | 2026-09-30 → 2026-06-29 A (-93d) | 80% → 100% | 325.2d → none |
| 29YB32 | **29YB32 – Budynek administracyjny** |  | 2026-10-09 → 2026-09-29 (-10d) |  |  |
| BUDO | **Budowa** |  | 2026-10-02 → 2026-08-14 (-49d) |  |  |
| ELEKTRYKA | **Elektryka** |  | 2026-10-01 → 2026-07-17 (-76d) |  |  |

| ID | Task | Start | Finish | Complete | Total float |
| --- | --- | --- | --- | --- | --- |
| 29YB32-086 | Pod³¹czenia i pomiary – trasa 12 | 2026-06-26 A → 2026-06-24 A (-2d) | 2026-10-01 → 2026-07-02 A (-91d) | 58% → 100% | 375.9d → none |
| RUROCI¥GI | **Ruroci¹gi** |  | 2026-10-02 → 2026-08-13 (-50d) |  |  |
| SEKCJA 08 | **Sekcja 08** |  | 2026-10-02 → 2026-07-31 (-63d) |  |  |
| 29YB32-060 | Malowanie i oznakowanie – Sekcja 08 | 2026-07-22 A → 2026-07-21 A (-1d) | 2026-10-02 → 2026-07-31 A (-63d) | 54% → 100% | 400.7d → none |
| PROJ | **Projektowanie** |  | 2026-10-09 → 2025-10-27 (-347d) |  |  |
| DOKUMENTAC | **Dokumentacja** |  | 2026-10-09 → 2025-10-27 (-347d) |  |  |
| 29YB32-002 | Uzgodnienie dokumentacji z Inwestorem |  | 2026-10-09 → 2025-10-03 A (-371d) | 70% → 100% | 389.9d → none |
