# PL5001 – Ch³odzenie i elektryka (SE-02)

How a schedule from Primavera P6 changed from version to version. A marks actual dates.

## Version 1 (data date 2026-09-30, saved 2026-09-30, file PL5001_SYNTH_schedule_Rev0G_DD30092026.xer)

Note of the change: M0: szkielet Vite+React+TS, guard, deploy, dane syntetyczne

| ID | WBS | Task | Duration | Start | Finish | Predecessors | Complete | Total float |
| --- | --- | --- | --- | --- | --- | --- | --- | --- |
|  | UK£AD_CH£ODZ | **Uk³ad ch³odzenia** |  | 2025-01-16 | 2027-08-16 |  |  |  |
|  | 11TM31 | **11TM31 – Uk³ad chemicznego uzdatniania** |  | 2025-02-18 | 2026-10-22 |  |  |  |
|  | BUDO | **Budowa** |  | 2025-09-26 | 2026-10-22 |  |  |  |
|  | AKPIA | **AKPiA** |  | 2026-05-01 | 2026-06-24 |  |  |  |
| 11TM31-123 |  | Monta¿ uk³adów AKPiA | 36d | 2026-05-01 A | 2026-06-24 A | 11TM31-014 SS+5d | 100% |  |
|  | ELEKTRYKA | **Elektryka** |  | 2026-05-07 | 2026-06-10 |  |  |  |
| 11TM31-049 |  | Uk³adanie kabli – trasa 06 | 9d | 2026-05-07 A | 2026-05-22 A | 11TM31-014 SS+10d | 100% |  |
| 11TM31-062 |  | Pod³¹czenia i pomiary – trasa 08 | 6d | 2026-05-07 A | 2026-05-18 A | 11TM31-061 FF | 100% |  |
| 11TM31-073 |  | Uk³adanie kabli – trasa 10 | 15d | 2026-05-07 A | 2026-05-29 A | 11TM31-014 SS+10d | 100% |  |
| 11TM31-026 |  | Pod³¹czenia i pomiary – trasa 02 | 10d | 2026-05-08 A | 2026-05-25 A | 11TM31-025 FF | 100% |  |
| 11TM31-037 |  | Uk³adanie kabli – trasa 04 | 16d | 2026-05-08 A | 2026-06-03 A | 11TM31-014 SS+10d | 100% |  |
| 11TM31-109 |  | Uk³adanie kabli – trasa 16 | 16d | 2026-05-08 A | 2026-06-01 A | 11TM31-014 SS+10d | 100% |  |
| 11TM31-025 |  | Uk³adanie kabli – trasa 02 | 12d | 2026-05-11 A | 2026-05-26 A | 11TM31-014 SS+10d | 100% |  |
| 11TM31-050 |  | Pod³¹czenia i pomiary – trasa 06 | 10d | 2026-05-11 A | 2026-05-25 A | 11TM31-049 FF | 100% |  |
| 11TM31-061 |  | Uk³adanie kabli – trasa 08 | 4d | 2026-05-11 A | 2026-05-14 A | 11TM31-014 SS+10d | 100% |  |
| 11TM31-097 |  | Uk³adanie kabli – trasa 14 | 20d | 2026-05-11 A | 2026-06-05 A | 11TM31-014 SS+10d | 100% |  |
| 11TM31-121 |  | Uk³adanie kabli – trasa 18 | 11d | 2026-05-11 A | 2026-05-26 A | 11TM31-014 SS+10d | 100% |  |
| 11TM31-085 |  | Uk³adanie kabli – trasa 12 | 19d | 2026-05-12 A | 2026-06-08 A | 11TM31-014 SS+10d | 100% |  |
| 11TM31-074 |  | Pod³¹czenia i pomiary – trasa 10 | 10d | 2026-05-18 A | 2026-05-29 A | 11TM31-073 FF | 100% |  |
| 11TM31-122 |  | Pod³¹czenia i pomiary – trasa 18 | 6d | 2026-05-19 A | 2026-05-26 A | 11TM31-121 FF | 100% |  |
| 11TM31-110 |  | Pod³¹czenia i pomiary – trasa 16 | 7d | 2026-05-25 A | 2026-06-02 A | 11TM31-109 FF | 100% |  |
| 11TM31-038 |  | Pod³¹czenia i pomiary – trasa 04 | 3d | 2026-05-27 A | 2026-06-02 A | 11TM31-037 FF | 100% |  |
| 11TM31-086 |  | Pod³¹czenia i pomiary – trasa 12 | 4d | 2026-05-27 A | 2026-06-03 A | 11TM31-085 FF | 100% |  |
| 11TM31-098 |  | Pod³¹czenia i pomiary – trasa 14 | 5d | 2026-06-01 A | 2026-06-10 A | 11TM31-097 FF | 100% |  |
|  | MONTA¯ | **Monta¿** |  | 2025-10-29 | 2026-10-07 |  |  |  |
| 11TM31-013 |  | Monta¿ konstrukcji stalowych | 15d | 2025-10-29 A | 2026-10-07 | 11TM31-012 | 58% | 497.9d |
| 11TM31-014 |  | Monta¿ urz¹dzeñ g³ównych | 38d | 2026-04-28 A | 2026-06-23 A | 11TM31-013, 11TM31-011 | 100% |  |
| 11TM31-124 |  | KM: Zakoñczenie monta¿u – Uk³ad chemicznego uzdatniania | 0d | 2026-06-18 A | 2026-06-18 | 11TM31-115, 11TM31-120, 11TM31-122, 11TM31-123, 11TM31-014 | 100% |  |
|  | ROBOTY BUD | **Roboty budowlane** |  | 2025-09-26 | 2025-10-30 |  |  |  |
| 11TM31-012 |  | Fundamenty i roboty ziemne | 23d | 2025-09-26 A | 2025-10-30 A | 11TM31-007 FS+9d | 100% |  |
|  | RUROCI¥GI | **Ruroci¹gi** |  | 2025-10-27 | 2026-10-22 |  |  |  |
|  | SEKCJA 01 | **Sekcja 01** |  | 2025-10-27 | 2026-05-27 |  |  |  |
| 11TM31-015 |  | Prefabrykacja ruroci¹gów – Sekcja 01 | 5.8d | 2025-10-27 A | 2025-11-04 A | 11TM31-012 | 100% |  |
| 11TM31-016 |  | Monta¿ ruroci¹gów – Sekcja 01 | 10.4d | 2026-04-29 A | 2026-05-15 A | 11TM31-015, 11TM31-014 SS+3d | 100% |  |
| 11TM31-017 |  | Próba ciœnieniowa – Sekcja 01 | 2d | 2026-05-14 A | 2026-05-18 A | 11TM31-016 | 100% |  |
| 11TM31-018 |  | Izolacje – Sekcja 01 | 6d | 2026-05-15 A | 2026-05-27 A | 11TM31-017 | 100% |  |
| 11TM31-019 |  | Malowanie i oznakowanie – Sekcja 01 | 3d | 2026-05-20 A | 2026-05-27 A | 11TM31-018 FF+2d | 100% |  |
|  | SEKCJA 02 | **Sekcja 02** |  | 2025-11-03 | 2026-06-17 |  |  |  |
| 11TM31-020 |  | Prefabrykacja ruroci¹gów – Sekcja 02 | 8.3d | 2025-11-03 A | 2025-11-14 A | 11TM31-012, 11TM31-015 SS+5d | 100% |  |
| 11TM31-021 |  | Monta¿ ruroci¹gów – Sekcja 02 | 15.9d | 2026-05-06 A | 2026-05-28 A | 11TM31-020, 11TM31-014 SS+8d | 100% |  |
| 11TM31-022 |  | Próba ciœnieniowa – Sekcja 02 | 6d | 2026-05-27 A | 2026-06-08 A | 11TM31-021 | 100% |  |
| 11TM31-023 |  | Izolacje – Sekcja 02 | 7d | 2026-06-05 A | 2026-06-17 A | 11TM31-022 | 100% |  |
| 11TM31-024 |  | Malowanie i oznakowanie – Sekcja 02 | 4d | 2026-06-09 A | 2026-06-16 A | 11TM31-023 FF+2d | 100% |  |
|  | SEKCJA 03 | **Sekcja 03** |  | 2025-11-11 | 2026-06-23 |  |  |  |
|  | PODSEKCJA | **Podsekcja 03.A** |  | 2025-11-11 | 2026-06-23 |  |  |  |
| 11TM31-027 |  | Prefabrykacja ruroci¹gów – Sekcja 03 | 7.2d | 2025-11-11 A | 2025-11-20 A | 11TM31-012, 11TM31-020 SS+5d | 100% |  |
| 11TM31-028 |  | Monta¿ ruroci¹gów – Sekcja 03 | 22.9d | 2026-04-28 A | 2026-06-01 A | 11TM31-027, 11TM31-014 SS+1d | 100% |  |
| 11TM31-029 |  | Próba ciœnieniowa – Sekcja 03 | 4d | 2026-05-26 A | 2026-06-01 A | 11TM31-028 | 100% |  |
| 11TM31-030 |  | Izolacje – Sekcja 03 | 12d | 2026-06-04 A | 2026-06-23 A | 11TM31-029 | 100% |  |
| 11TM31-031 |  | Malowanie i oznakowanie – Sekcja 03 | 8d | 2026-06-08 A | 2026-06-22 A | 11TM31-030 FF+2d | 100% |  |
|  | SEKCJA 04 | **Sekcja 04** |  | 2025-11-18 | 2026-10-16 |  |  |  |
| 11TM31-032 |  | Prefabrykacja ruroci¹gów – Sekcja 04 | 8.1d | 2025-11-18 A | 2025-12-01 A | 11TM31-012, 11TM31-027 SS+5d | 100% |  |
| 11TM31-033 |  | Monta¿ ruroci¹gów – Sekcja 04 | 16.6d | 2026-05-04 A | 2026-10-16 | 11TM31-032, 11TM31-014 SS+7d | 17% | 433.3d |
| 11TM31-035 |  | Izolacje – Sekcja 04 | 11d | 2026-05-28 A | 2026-06-12 A | 11TM31-034 | 100% |  |
| 11TM31-034 |  | Próba ciœnieniowa – Sekcja 04 | 2d | 2026-05-29 A | 2026-06-01 A | 11TM31-033 | 100% |  |
| 11TM31-036 |  | Malowanie i oznakowanie – Sekcja 04 | 8d | 2026-06-04 A | 2026-06-18 A | 11TM31-035 FF+2d | 100% |  |
|  | SEKCJA 05 | **Sekcja 05** |  | 2025-11-26 | 2026-09-30 |  |  |  |
| 11TM31-039 |  | Prefabrykacja ruroci¹gów – Sekcja 05 | 7.6d | 2025-11-26 A | 2025-12-09 A | 11TM31-012, 11TM31-032 SS+5d | 100% |  |
| 11TM31-040 |  | Monta¿ ruroci¹gów – Sekcja 05 | 6.6d | 2026-05-07 A | 2026-05-14 A | 11TM31-039, 11TM31-014 SS+7d | 100% |  |
| 11TM31-041 |  | Próba ciœnieniowa – Sekcja 05 | 4d | 2026-05-15 A | 2026-05-25 A | 11TM31-040 | 100% |  |
| 11TM31-042 |  | Izolacje – Sekcja 05 | 10d | 2026-05-20 A | 2026-06-02 A | 11TM31-041 | 100% |  |
| 11TM31-043 |  | Malowanie i oznakowanie – Sekcja 05 | 3d | 2026-06-01 A | 2026-09-30 | 11TM31-042 FF+2d | 43% | 441.3d |
|  | SEKCJA 06 | **Sekcja 06** |  | 2025-12-03 | 2026-06-15 |  |  |  |
|  | PODSEKCJA | **Podsekcja 06.A** |  | 2025-12-03 | 2026-06-15 |  |  |  |
| 11TM31-044 |  | Prefabrykacja ruroci¹gów – Sekcja 06 | 12.1d | 2025-12-03 A | 2025-12-19 A | 11TM31-012, 11TM31-039 SS+5d | 100% |  |
| 11TM31-045 |  | Monta¿ ruroci¹gów – Sekcja 06 | 17.5d | 2026-05-05 A | 2026-05-27 A | 11TM31-044, 11TM31-014 SS+7d | 100% |  |
| 11TM31-046 |  | Próba ciœnieniowa – Sekcja 06 | 5d | 2026-05-26 A | 2026-06-03 A | 11TM31-045 | 100% |  |
| 11TM31-047 |  | Izolacje – Sekcja 06 | 3d | 2026-06-02 A | 2026-06-04 A | 11TM31-046 | 100% |  |
| 11TM31-048 |  | Malowanie i oznakowanie – Sekcja 06 | 2d | 2026-06-10 A | 2026-06-15 A | 11TM31-047 FF+2d | 100% |  |
|  | SEKCJA 07 | **Sekcja 07** |  | 2025-12-11 | 2026-10-22 |  |  |  |

| ID | WBS | Task | Duration | Start | Finish | Predecessors | Complete | Total float |
| --- | --- | --- | --- | --- | --- | --- | --- | --- |
| 11TM31-051 |  | Prefabrykacja ruroci¹gów – Sekcja 07 | 8.4d | 2025-12-11 A | 2026-10-01 | 11TM31-012, 11TM31-044 SS+5d | 76% | 423.9d |
| 11TM31-053 |  | Próba ciœnieniowa – Sekcja 07 | 3d | 2026-05-21 A | 2026-05-25 A | 11TM31-052 | 100% |  |
| 11TM31-054 |  | Izolacje – Sekcja 07 | 10d | 2026-05-25 A | 2026-06-10 A | 11TM31-053 | 100% |  |
| 11TM31-055 |  | Malowanie i oznakowanie – Sekcja 07 | 7d | 2026-05-27 A | 2026-06-04 A | 11TM31-054 FF+2d | 100% |  |
| 11TM31-052 |  | Monta¿ ruroci¹gów – Sekcja 07 | 15.9d | 2026-10-02 | 2026-10-22 | 11TM31-051, 11TM31-014 SS+2d |  | 325d |
|  | SEKCJA 08 | **Sekcja 08** |  | 2025-12-15 | 2026-06-16 |  |  |  |
| 11TM31-056 |  | Prefabrykacja ruroci¹gów – Sekcja 08 | 9.3d | 2025-12-15 A | 2025-12-29 A | 11TM31-012, 11TM31-051 SS+5d | 100% |  |
| 11TM31-057 |  | Monta¿ ruroci¹gów – Sekcja 08 | 11.9d | 2026-05-05 A | 2026-05-20 A | 11TM31-056, 11TM31-014 SS+5d | 100% |  |
| 11TM31-058 |  | Próba ciœnieniowa – Sekcja 08 | 6d | 2026-05-19 A | 2026-05-26 A | 11TM31-057 | 100% |  |
| 11TM31-059 |  | Izolacje – Sekcja 08 | 12d | 2026-05-27 A | 2026-06-16 A | 11TM31-058 | 100% |  |
| 11TM31-060 |  | Malowanie i oznakowanie – Sekcja 08 | 6d | 2026-06-04 A | 2026-06-11 A | 11TM31-059 FF+2d | 100% |  |
|  | SEKCJA 09 | **Sekcja 09** |  | 2025-12-23 | 2026-05-21 |  |  |  |
|  | PODSEKCJA | **Podsekcja 09.A** |  | 2025-12-23 | 2026-05-21 |  |  |  |
| 11TM31-063 |  | Prefabrykacja ruroci¹gów – Sekcja 09 | 3.5d | 2025-12-23 A | 2025-12-30 A | 11TM31-012, 11TM31-056 SS+5d | 100% |  |
| 11TM31-064 |  | Monta¿ ruroci¹gów – Sekcja 09 | 6.2d | 2026-04-27 A | 2026-05-04 A | 11TM31-063, 11TM31-014 SS+3d | 100% |  |
| 11TM31-065 |  | Próba ciœnieniowa – Sekcja 09 | 2d | 2026-05-05 A | 2026-05-11 A | 11TM31-064 | 100% |  |
| 11TM31-067 |  | Malowanie i oznakowanie – Sekcja 09 | 6d | 2026-05-12 A | 2026-05-21 A | 11TM31-066 FF+2d | 100% |  |
| 11TM31-066 |  | Izolacje – Sekcja 09 | 6d | 2026-05-13 A | 2026-05-20 A | 11TM31-065 | 100% |  |
|  | SEKCJA 10 | **Sekcja 10** |  | 2026-01-02 | 2026-05-28 |  |  |  |
| 11TM31-068 |  | Prefabrykacja ruroci¹gów – Sekcja 10 | 10d | 2026-01-02 A | 2026-01-20 A | 11TM31-012, 11TM31-063 SS+5d | 100% |  |
| 11TM31-069 |  | Monta¿ ruroci¹gów – Sekcja 10 | 8.9d | 2026-04-27 A | 2026-05-06 A | 11TM31-068, 11TM31-014 SS+3d | 100% |  |
| 11TM31-070 |  | Próba ciœnieniowa – Sekcja 10 | 4d | 2026-05-13 A | 2026-05-19 A | 11TM31-069 | 100% |  |
| 11TM31-071 |  | Izolacje – Sekcja 10 | 9d | 2026-05-13 A | 2026-05-25 A | 11TM31-070 | 100% |  |
| 11TM31-072 |  | Malowanie i oznakowanie – Sekcja 10 | 3d | 2026-05-25 A | 2026-05-28 A | 11TM31-071 FF+2d | 100% |  |
|  | SEKCJA 11 | **Sekcja 11** |  | 2026-01-06 | 2026-10-02 |  |  |  |
| 11TM31-075 |  | Prefabrykacja ruroci¹gów – Sekcja 11 | 3.9d | 2026-01-06 A | 2026-01-13 A | 11TM31-012, 11TM31-068 SS+5d | 100% |  |
| 11TM31-076 |  | Monta¿ ruroci¹gów – Sekcja 11 | 20.2d | 2026-04-27 A | 2026-05-22 A | 11TM31-075, 11TM31-014 SS | 100% |  |
| 11TM31-077 |  | Próba ciœnieniowa – Sekcja 11 | 5d | 2026-05-25 A | 2026-06-01 A | 11TM31-076 | 100% |  |
| 11TM31-079 |  | Malowanie i oznakowanie – Sekcja 11 | 6d | 2026-05-26 A | 2026-06-02 A | 11TM31-078 FF+2d | 100% |  |
| 11TM31-078 |  | Izolacje – Sekcja 11 | 3d | 2026-09-30 | 2026-10-02 | 11TM31-077 |  | 352.9d |
|  | SEKCJA 12 | **Sekcja 12** |  | 2026-01-15 | 2026-06-05 |  |  |  |
|  | PODSEKCJA | **Podsekcja 12.A** |  | 2026-01-15 | 2026-06-05 |  |  |  |
| 11TM31-080 |  | Prefabrykacja ruroci¹gów – Sekcja 12 | 12.1d | 2026-01-15 A | 2026-02-02 A | 11TM31-012, 11TM31-075 SS+5d | 100% |  |
| 11TM31-081 |  | Monta¿ ruroci¹gów – Sekcja 12 | 21.3d | 2026-04-29 A | 2026-06-01 A | 11TM31-080, 11TM31-014 SS+1d | 100% |  |
| 11TM31-082 |  | Próba ciœnieniowa – Sekcja 12 | 2d | 2026-05-22 A | 2026-05-26 A | 11TM31-081 | 100% |  |
| 11TM31-083 |  | Izolacje – Sekcja 12 | 4d | 2026-05-27 A | 2026-06-02 A | 11TM31-082 | 100% |  |
| 11TM31-084 |  | Malowanie i oznakowanie – Sekcja 12 | 4d | 2026-05-29 A | 2026-06-05 A | 11TM31-083 FF+2d | 100% |  |
|  | SEKCJA 13 | **Sekcja 13** |  | 2026-01-20 | 2026-05-26 |  |  |  |
| 11TM31-087 |  | Prefabrykacja ruroci¹gów – Sekcja 13 | 3.9d | 2026-01-20 A | 2026-01-26 A | 11TM31-012, 11TM31-080 SS+5d | 100% |  |
| 11TM31-088 |  | Monta¿ ruroci¹gów – Sekcja 13 | 5.2d | 2026-04-24 A | 2026-04-30 A | 11TM31-087, 11TM31-014 SS+2d | 100% |  |
| 11TM31-089 |  | Próba ciœnieniowa – Sekcja 13 | 4d | 2026-05-05 A | 2026-05-08 A | 11TM31-088 | 100% |  |
| 11TM31-090 |  | Izolacje – Sekcja 13 | 7d | 2026-05-11 A | 2026-05-20 A | 11TM31-089 | 100% |  |
| 11TM31-091 |  | Malowanie i oznakowanie – Sekcja 13 | 3d | 2026-05-20 A | 2026-05-26 A | 11TM31-090 FF+2d | 100% |  |
|  | SEKCJA 14 | **Sekcja 14** |  | 2026-01-28 | 2026-06-19 |  |  |  |
| 11TM31-092 |  | Prefabrykacja ruroci¹gów – Sekcja 14 | 4.9d | 2026-01-28 A | 2026-02-03 A | 11TM31-012, 11TM31-087 SS+5d | 100% |  |
| 11TM31-093 |  | Monta¿ ruroci¹gów – Sekcja 14 | 11.7d | 2026-05-12 A | 2026-05-27 A | 11TM31-092, 11TM31-014 SS+10d | 100% |  |
| 11TM31-094 |  | Próba ciœnieniowa – Sekcja 14 | 5d | 2026-05-21 A | 2026-05-29 A | 11TM31-093 | 100% |  |
| 11TM31-095 |  | Izolacje – Sekcja 14 | 11d | 2026-06-03 A | 2026-06-19 A | 11TM31-094 | 100% |  |
| 11TM31-096 |  | Malowanie i oznakowanie – Sekcja 14 | 6d | 2026-06-10 A | 2026-06-17 A | 11TM31-095 FF+2d | 100% |  |
|  | SEKCJA 15 | **Sekcja 15** |  | 2026-02-05 | 2026-10-12 |  |  |  |
|  | PODSEKCJA | **Podsekcja 15.A** |  | 2026-02-05 | 2026-10-12 |  |  |  |
| 11TM31-099 |  | Prefabrykacja ruroci¹gów – Sekcja 15 | 13.2d | 2026-02-05 A | 2026-02-24 A | 11TM31-012, 11TM31-092 SS+5d | 100% |  |
| 11TM31-100 |  | Monta¿ ruroci¹gów – Sekcja 15 | 5.7d | 2026-04-29 A | 2026-05-05 A | 11TM31-099, 11TM31-014 SS+5d | 100% |  |
| 11TM31-101 |  | Próba ciœnieniowa – Sekcja 15 | 3d | 2026-05-07 A | 2026-05-11 A | 11TM31-100 | 100% |  |
| 11TM31-102 |  | Izolacje – Sekcja 15 | 12d | 2026-05-14 A | 2026-10-12 | 11TM31-101 | 22% | 442.2d |
| 11TM31-103 |  | Malowanie i oznakowanie – Sekcja 15 | 6d | 2026-05-27 A | 2026-06-05 A | 11TM31-102 FF+2d | 100% |  |
|  | SEKCJA 16 | **Sekcja 16** |  | 2026-02-10 | 2026-06-26 |  |  |  |
| 11TM31-104 |  | Prefabrykacja ruroci¹gów – Sekcja 16 | 14.8d | 2026-02-10 A | 2026-03-02 A | 11TM31-012, 11TM31-099 SS+5d | 100% |  |
| 11TM31-105 |  | Monta¿ ruroci¹gów – Sekcja 16 | 24.3d | 2026-05-04 A | 2026-06-09 A | 11TM31-104, 11TM31-014 SS+6d | 100% |  |
| 11TM31-106 |  | Próba ciœnieniowa – Sekcja 16 | 3d | 2026-06-08 A | 2026-06-10 A | 11TM31-105 | 100% |  |
| 11TM31-107 |  | Izolacje – Sekcja 16 | 7d | 2026-06-10 A | 2026-06-19 A | 11TM31-106 | 100% |  |
| 11TM31-108 |  | Malowanie i oznakowanie – Sekcja 16 | 2d | 2026-06-22 A | 2026-06-26 A | 11TM31-107 FF+2d | 100% |  |
|  | SEKCJA 17 | **Sekcja 17** |  | 2026-02-18 | 2026-10-22 |  |  |  |
| 11TM31-111 |  | Prefabrykacja ruroci¹gów – Sekcja 17 | 14.9d | 2026-02-18 A | 2026-10-06 | 11TM31-012, 11TM31-104 SS+5d | 62% | 424.9d |
| 11TM31-112 |  | Monta¿ ruroci¹gów – Sekcja 17 | 22.1d | 2026-04-24 A | 2026-10-22 | 11TM31-111, 11TM31-014 SS+1d | 22% | 392.8d |
| 11TM31-113 |  | Próba ciœnieniowa – Sekcja 17 | 4d | 2026-05-29 A | 2026-06-08 A | 11TM31-112 | 100% |  |
| 11TM31-114 |  | Izolacje – Sekcja 17 | 6d | 2026-06-04 A | 2026-06-15 A | 11TM31-113 | 100% |  |
| 11TM31-115 |  | Malowanie i oznakowanie – Sekcja 17 | 4d | 2026-06-04 A | 2026-06-10 A | 11TM31-114 FF+2d | 100% |  |
|  | SEKCJA 18 | **Sekcja 18** |  | 2026-02-27 | 2026-06-10 |  |  |  |
|  | PODSEKCJA | **Podsekcja 18.A** |  | 2026-02-27 | 2026-06-10 |  |  |  |

| ID | WBS | Task | Duration | Start | Finish | Predecessors | Complete | Total float |
| --- | --- | --- | --- | --- | --- | --- | --- | --- |
| 11TM31-116 |  | Prefabrykacja ruroci¹gów – Sekcja 18 | 11.8d | 2026-02-27 A | 2026-03-17 A | 11TM31-012, 11TM31-111 SS+5d | 100% |  |
| 11TM31-117 |  | Monta¿ ruroci¹gów – Sekcja 18 | 9.4d | 2026-05-05 A | 2026-05-19 A | 11TM31-116, 11TM31-014 SS+8d | 100% |  |
| 11TM31-118 |  | Próba ciœnieniowa – Sekcja 18 | 3d | 2026-05-20 A | 2026-05-27 A | 11TM31-117 | 100% |  |
| 11TM31-119 |  | Izolacje – Sekcja 18 | 10d | 2026-05-26 A | 2026-06-10 A | 11TM31-118 | 100% |  |
| 11TM31-120 |  | Malowanie i oznakowanie – Sekcja 18 | 7d | 2026-05-29 A | 2026-06-08 A | 11TM31-119 FF+2d | 100% |  |
|  | PROJ | **Projektowanie** |  | 2025-02-18 | 2026-09-30 |  |  |  |
|  | DOKUMENTAC | **Dokumentacja** |  | 2025-02-18 | 2026-09-30 |  |  |  |
| 11TM31-001 |  | Projekt wykonawczy – Uk³ad chemicznego uzdatniania | 102d | 2025-02-18 A | 2025-07-09 A |  | 100% |  |
| 11TM31-002 |  | Uzgodnienie dokumentacji z Inwestorem | 12d | 2025-07-08 A | 2025-07-28 A | 11TM31-001 | 100% |  |
| 11TM31-003 |  | Zatwierdzenie dokumentacji do realizacji | 14d | 2025-07-25 A | 2025-08-13 A | 11TM31-002 | 100% |  |
| 11TM31-004 |  | KM: Dokumentacja zatwierdzona – Uk³ad chemicznego uzdatniania | 0d | 2026-09-30 | 2026-09-30 | 11TM31-003 |  | 106.9d |
|  | ROZR | **Rozruch** |  | 2026-06-23 | 2026-08-13 |  |  |  |
|  | ROZRUCH | **Rozruch** |  | 2026-06-23 | 2026-08-13 |  |  |  |
| 11TM31-125 |  | Przegl¹d gotowoœci do rozruchu | 8d | 2026-06-23 A | 2026-07-06 A | 11TM31-124, 11TM31-019, 11TM31-024, 11TM31-026 | 100% |  |
| 11TM31-126 |  | Rozruch na zimno | 9d | 2026-06-30 A | 2026-07-14 A | 11TM31-125 | 100% |  |
| 11TM31-127 |  | Rozruch na gor¹co / próby ruchowe | 17d | 2026-07-17 A | 2026-08-13 A | 11TM31-126 | 100% |  |
| 11TM31-128 |  | KM: Odbiór koñcowy – Uk³ad chemicznego uzdatniania | 0d | 2026-08-04 | 2026-08-04 A | 11TM31-127 | 100% |  |
|  | ZAKU | **Zakupy** |  | 2025-03-14 | 2026-04-24 |  |  |  |
|  | DOSTAWY | **Dostawy** |  | 2025-09-16 | 2026-04-24 |  |  |  |
| 11TM31-008 |  | Produkcja u dostawcy | 134d | 2025-09-16 A | 2026-03-20 A | 11TM31-007 | 100% |  |
| 11TM31-009 |  | Testy FAT | 4d | 2026-03-24 A | 2026-03-31 A | 11TM31-008 | 100% |  |
| 11TM31-010 |  | Transport i dostawa na plac budowy | 21d | 2026-03-25 A | 2026-04-24 A | 11TM31-009 | 100% |  |
| 11TM31-011 |  | KM: Dostawa na budowê – Uk³ad chemicznego uzdatniania | 0d | 2026-04-24 A | 2026-04-24 | 11TM31-010 | 100% |  |
|  | ZAMÓWIENIA | **Zamówienia** |  | 2025-03-14 | 2025-09-10 |  |  |  |
| 11TM31-005 |  | Zapytanie ofertowe | 27d | 2025-03-14 A | 2025-04-22 A | 11TM31-001 SS+20d | 100% |  |
| 11TM31-006 |  | Analiza i wybór ofert | 16d | 2025-04-28 A | 2025-05-21 A | 11TM31-005 | 100% |  |
| 11TM31-007 |  | Zawarcie umowy / zamówienie | 7d | 2025-09-02 A | 2025-09-10 A | 11TM31-006, 11TM31-004 SS, 10YD43-004 SF+11d, 28BW90-004 SF | 100% |  |
|  | 12NW18 | **12NW18 – Ujêcie wody** |  | 2025-04-16 | 2026-10-28 |  |  |  |
|  | BUDO | **Budowa** |  | 2025-11-20 | 2026-10-06 |  |  |  |
|  | AKPIA | **AKPiA** |  | 2026-06-12 | 2026-07-24 |  |  |  |
| 12NW18-075 |  | Monta¿ uk³adów AKPiA | 30d | 2026-06-12 A | 2026-07-24 A | 12NW18-014 SS+5d | 100% |  |
|  | ELEKTRYKA | **Elektryka** |  | 2026-06-08 | 2026-07-21 |  |  |  |
| 12NW18-062 |  | Pod³¹czenia i pomiary – trasa 08 | 10d | 2026-06-08 A | 2026-06-22 A | 12NW18-061 FF | 100% |  |
| 12NW18-073 |  | Uk³adanie kabli – trasa 10 | 12d | 2026-06-16 A | 2026-07-03 A | 12NW18-014 SS+10d | 100% |  |
| 12NW18-061 |  | Uk³adanie kabli – trasa 08 | 5d | 2026-06-18 A | 2026-06-29 A | 12NW18-014 SS+10d | 100% |  |
| 12NW18-025 |  | Uk³adanie kabli – trasa 02 | 10d | 2026-06-19 A | 2026-07-02 A | 12NW18-014 SS+10d | 100% |  |
| 12NW18-037 |  | Uk³adanie kabli – trasa 04 | 15d | 2026-06-19 A | 2026-07-14 A | 12NW18-014 SS+10d | 100% |  |
| 12NW18-049 |  | Uk³adanie kabli – trasa 06 | 20d | 2026-06-19 A | 2026-07-21 A | 12NW18-014 SS+10d | 100% |  |
| 12NW18-038 |  | Pod³¹czenia i pomiary – trasa 04 | 9d | 2026-06-23 A | 2026-07-07 A | 12NW18-037 FF | 100% |  |
| 12NW18-074 |  | Pod³¹czenia i pomiary – trasa 10 | 5d | 2026-06-24 A | 2026-07-03 A | 12NW18-073 FF | 100% |  |
| 12NW18-026 |  | Pod³¹czenia i pomiary – trasa 02 | 5d | 2026-06-26 A | 2026-07-02 A | 12NW18-025 FF | 100% |  |
| 12NW18-050 |  | Pod³¹czenia i pomiary – trasa 06 | 7d | 2026-07-08 A | 2026-07-16 A | 12NW18-049 FF | 100% |  |
|  | MONTA¯ | **Monta¿** |  | 2026-01-08 | 2026-08-25 |  |  |  |
| 12NW18-013 |  | Monta¿ konstrukcji stalowych | 22d | 2026-01-08 A | 2026-02-09 A | 12NW18-012 | 100% |  |
| 12NW18-014 |  | Monta¿ urz¹dzeñ g³ównych | 58d | 2026-06-05 A | 2026-08-25 A | 12NW18-013, 12NW18-011 | 100% |  |
| 12NW18-076 |  | KM: Zakoñczenie monta¿u – Ujêcie wody | 0d | 2026-08-24 A | 2026-08-24 | 12NW18-067, 12NW18-072, 12NW18-074, 12NW18-075, 12NW18-014 | 100% |  |
|  | ROBOTY BUD | **Roboty budowlane** |  | 2025-11-20 | 2026-01-07 |  |  |  |
| 12NW18-012 |  | Fundamenty i roboty ziemne | 34d | 2025-11-20 A | 2026-01-07 A | 12NW18-007 FS+3d | 100% |  |
|  | RUROCI¥GI | **Ruroci¹gi** |  | 2026-01-09 | 2026-10-06 |  |  |  |
|  | SEKCJA 01 | **Sekcja 01** |  | 2026-01-09 | 2026-07-14 |  |  |  |
| 12NW18-015 |  | Prefabrykacja ruroci¹gów – Sekcja 01 | 10.7d | 2026-01-09 A | 2026-01-27 A | 12NW18-012 | 100% |  |
| 12NW18-016 |  | Monta¿ ruroci¹gów – Sekcja 01 | 9.7d | 2026-06-10 A | 2026-06-23 A | 12NW18-015, 12NW18-014 SS+3d | 100% |  |
| 12NW18-017 |  | Próba ciœnieniowa – Sekcja 01 | 6d | 2026-06-22 A | 2026-07-01 A | 12NW18-016 | 100% |  |
| 12NW18-018 |  | Izolacje – Sekcja 01 | 7d | 2026-06-26 A | 2026-07-08 A | 12NW18-017 | 100% |  |
| 12NW18-019 |  | Malowanie i oznakowanie – Sekcja 01 | 5d | 2026-07-03 A | 2026-07-14 A | 12NW18-018 FF+2d | 100% |  |
|  | SEKCJA 02 | **Sekcja 02** |  | 2026-01-15 | 2026-07-10 |  |  |  |
| 12NW18-020 |  | Prefabrykacja ruroci¹gów – Sekcja 02 | 10.1d | 2026-01-15 A | 2026-01-28 A | 12NW18-012, 12NW18-015 SS+5d | 100% |  |
| 12NW18-021 |  | Monta¿ ruroci¹gów – Sekcja 02 | 12.9d | 2026-06-11 A | 2026-06-26 A | 12NW18-020, 12NW18-014 SS+4d | 100% |  |
| 12NW18-022 |  | Próba ciœnieniowa – Sekcja 02 | 5d | 2026-06-24 A | 2026-07-01 A | 12NW18-021 | 100% |  |
| 12NW18-023 |  | Izolacje – Sekcja 02 | 3d | 2026-07-03 A | 2026-07-10 A | 12NW18-022 | 100% |  |
| 12NW18-024 |  | Malowanie i oznakowanie – Sekcja 02 | 3d | 2026-07-03 A | 2026-07-08 A | 12NW18-023 FF+2d | 100% |  |
|  | SEKCJA 03 | **Sekcja 03** |  | 2026-06-12 | 2026-10-02 |  |  |  |
|  | PODSEKCJA | **Podsekcja 03.A** |  | 2026-06-12 | 2026-10-02 |  |  |  |
| 12NW18-028 |  | Monta¿ ruroci¹gów – Sekcja 03 | 6.3d | 2026-06-12 A | 2026-06-19 A | 12NW18-027, 12NW18-014 SS+7d | 100% |  |
| 12NW18-029 |  | Próba ciœnieniowa – Sekcja 03 | 5d | 2026-06-22 A | 2026-06-30 A | 12NW18-028 | 100% |  |
| 12NW18-030 |  | Izolacje – Sekcja 03 | 8d | 2026-06-25 A | 2026-07-07 A | 12NW18-029 | 100% |  |
| 12NW18-031 |  | Malowanie i oznakowanie – Sekcja 03 | 2d | 2026-07-07 A | 2026-07-10 A | 12NW18-030 FF+2d | 100% |  |
| 12NW18-027 |  | Prefabrykacja ruroci¹gów – Sekcja 03 | 3d | 2026-09-30 | 2026-10-02 | 12NW18-012, 12NW18-020 SS+5d |  | 227.4d |
|  | SEKCJA 04 | **Sekcja 04** |  | 2026-01-28 | 2026-10-02 |  |  |  |
| 12NW18-032 |  | Prefabrykacja ruroci¹gów – Sekcja 04 | 9d | 2026-01-28 A | 2026-10-02 | 12NW18-012, 12NW18-027 SS+5d | 59% | 407.4d |

| ID | WBS | Task | Duration | Start | Finish | Predecessors | Complete | Total float |
| --- | --- | --- | --- | --- | --- | --- | --- | --- |
| 12NW18-033 |  | Monta¿ ruroci¹gów – Sekcja 04 | 5.2d | 2026-06-04 A | 2026-06-12 A | 12NW18-032, 12NW18-014 SS | 100% |  |
| 12NW18-034 |  | Próba ciœnieniowa – Sekcja 04 | 5d | 2026-06-10 A | 2026-06-19 A | 12NW18-033 | 100% |  |
| 12NW18-035 |  | Izolacje – Sekcja 04 | 10d | 2026-06-15 A | 2026-06-30 A | 12NW18-034 | 100% |  |
| 12NW18-036 |  | Malowanie i oznakowanie – Sekcja 04 | 2d | 2026-07-03 A | 2026-07-06 A | 12NW18-035 FF+2d | 100% |  |
|  | SEKCJA 05 | **Sekcja 05** |  | 2026-02-03 | 2026-07-07 |  |  |  |
| 12NW18-039 |  | Prefabrykacja ruroci¹gów – Sekcja 05 | 14d | 2026-02-03 A | 2026-02-20 A | 12NW18-012, 12NW18-032 SS+5d | 100% |  |
| 12NW18-040 |  | Monta¿ ruroci¹gów – Sekcja 05 | 10.4d | 2026-06-01 A | 2026-06-16 A | 12NW18-039, 12NW18-014 SS | 100% |  |
| 12NW18-041 |  | Próba ciœnieniowa – Sekcja 05 | 2d | 2026-06-16 A | 2026-06-17 A | 12NW18-040 | 100% |  |
| 12NW18-042 |  | Izolacje – Sekcja 05 | 8d | 2026-06-22 A | 2026-07-01 A | 12NW18-041 | 100% |  |
| 12NW18-043 |  | Malowanie i oznakowanie – Sekcja 05 | 7d | 2026-06-25 A | 2026-07-07 A | 12NW18-042 FF+2d | 100% |  |
|  | SEKCJA 06 | **Sekcja 06** |  | 2026-02-11 | 2026-07-16 |  |  |  |
|  | PODSEKCJA | **Podsekcja 06.A** |  | 2026-02-11 | 2026-07-16 |  |  |  |
| 12NW18-044 |  | Prefabrykacja ruroci¹gów – Sekcja 06 | 8d | 2026-02-11 A | 2026-02-25 A | 12NW18-012, 12NW18-039 SS+5d | 100% |  |
| 12NW18-045 |  | Monta¿ ruroci¹gów – Sekcja 06 | 8.6d | 2026-06-16 A | 2026-06-25 A | 12NW18-044, 12NW18-014 SS+7d | 100% |  |
| 12NW18-046 |  | Próba ciœnieniowa – Sekcja 06 | 5d | 2026-06-23 A | 2026-06-29 A | 12NW18-045 | 100% |  |
| 12NW18-047 |  | Izolacje – Sekcja 06 | 10d | 2026-06-29 A | 2026-07-13 A | 12NW18-046 | 100% |  |
| 12NW18-048 |  | Malowanie i oznakowanie – Sekcja 06 | 3d | 2026-07-10 A | 2026-07-16 A | 12NW18-047 FF+2d | 100% |  |
|  | SEKCJA 07 | **Sekcja 07** |  | 2026-02-17 | 2026-07-20 |  |  |  |
| 12NW18-051 |  | Prefabrykacja ruroci¹gów – Sekcja 07 | 5.3d | 2026-02-17 A | 2026-02-26 A | 12NW18-012, 12NW18-044 SS+5d | 100% |  |
| 12NW18-052 |  | Monta¿ ruroci¹gów – Sekcja 07 | 12.7d | 2026-06-11 A | 2026-07-01 A | 12NW18-051, 12NW18-014 SS+5d | 100% |  |
| 12NW18-053 |  | Próba ciœnieniowa – Sekcja 07 | 2d | 2026-06-25 A | 2026-06-26 A | 12NW18-052 | 100% |  |
| 12NW18-054 |  | Izolacje – Sekcja 07 | 8d | 2026-06-30 A | 2026-07-10 A | 12NW18-053 | 100% |  |
| 12NW18-055 |  | Malowanie i oznakowanie – Sekcja 07 | 3d | 2026-07-13 A | 2026-07-20 A | 12NW18-054 FF+2d | 100% |  |
|  | SEKCJA 08 | **Sekcja 08** |  | 2026-02-23 | 2026-08-03 |  |  |  |
| 12NW18-056 |  | Prefabrykacja ruroci¹gów – Sekcja 08 | 9.8d | 2026-02-23 A | 2026-03-09 A | 12NW18-012, 12NW18-051 SS+5d | 100% |  |
| 12NW18-057 |  | Monta¿ ruroci¹gów – Sekcja 08 | 20.4d | 2026-06-17 A | 2026-07-17 A | 12NW18-056, 12NW18-014 SS+10d | 100% |  |
| 12NW18-058 |  | Próba ciœnieniowa – Sekcja 08 | 6d | 2026-07-15 A | 2026-07-27 A | 12NW18-057 | 100% |  |
| 12NW18-060 |  | Malowanie i oznakowanie – Sekcja 08 | 8d | 2026-07-20 A | 2026-08-03 A | 12NW18-059 FF+2d | 100% |  |
| 12NW18-059 |  | Izolacje – Sekcja 08 | 5d | 2026-07-23 A | 2026-07-29 A | 12NW18-058 | 100% |  |
|  | SEKCJA 09 | **Sekcja 09** |  | 2026-03-06 | 2026-10-06 |  |  |  |
|  | PODSEKCJA | **Podsekcja 09.A** |  | 2026-03-06 | 2026-10-06 |  |  |  |
| 12NW18-063 |  | Prefabrykacja ruroci¹gów – Sekcja 09 | 13.5d | 2026-03-06 A | 2026-10-06 | 12NW18-012, 12NW18-056 SS+5d | 56% | 405.4d |
| 12NW18-064 |  | Monta¿ ruroci¹gów – Sekcja 09 | 16.8d | 2026-06-11 A | 2026-07-06 A | 12NW18-063, 12NW18-014 SS+8d | 100% |  |
| 12NW18-065 |  | Próba ciœnieniowa – Sekcja 09 | 4d | 2026-07-07 A | 2026-07-10 A | 12NW18-064 | 100% |  |
| 12NW18-066 |  | Izolacje – Sekcja 09 | 6d | 2026-07-09 A | 2026-07-20 A | 12NW18-065 | 100% |  |
| 12NW18-067 |  | Malowanie i oznakowanie – Sekcja 09 | 2d | 2026-07-20 A | 2026-07-21 A | 12NW18-066 FF+2d | 100% |  |
|  | SEKCJA 10 | **Sekcja 10** |  | 2026-03-13 | 2026-09-30 |  |  |  |
| 12NW18-068 |  | Prefabrykacja ruroci¹gów – Sekcja 10 | 13.7d | 2026-03-13 A | 2026-04-03 A | 12NW18-012, 12NW18-063 SS+5d | 100% |  |
| 12NW18-069 |  | Monta¿ ruroci¹gów – Sekcja 10 | 7.8d | 2026-06-05 A | 2026-09-30 | 12NW18-068, 12NW18-014 SS+1d | 81% | 359.1d |
| 12NW18-070 |  | Próba ciœnieniowa – Sekcja 10 | 6d | 2026-06-11 A | 2026-06-23 A | 12NW18-069 | 100% |  |
| 12NW18-071 |  | Izolacje – Sekcja 10 | 11d | 2026-06-19 A | 2026-07-06 A | 12NW18-070 | 100% |  |
| 12NW18-072 |  | Malowanie i oznakowanie – Sekcja 10 | 5d | 2026-07-03 A | 2026-07-14 A | 12NW18-071 FF+2d | 100% |  |
|  | PROJ | **Projektowanie** |  | 2025-04-16 | 2026-09-30 |  |  |  |
|  | DOKUMENTAC | **Dokumentacja** |  | 2025-04-16 | 2026-09-30 |  |  |  |
| 12NW18-001 |  | Projekt wykonawczy – Ujêcie wody | 118d | 2025-04-16 A | 2025-09-30 A |  | 100% |  |
| 12NW18-002 |  | Uzgodnienie dokumentacji z Inwestorem | 13d | 2025-09-26 A | 2025-10-15 A | 12NW18-001 | 100% |  |
| 12NW18-003 |  | Zatwierdzenie dokumentacji do realizacji | 12d | 2025-10-14 A | 2025-10-29 A | 12NW18-002 | 100% |  |
| 12NW18-004 |  | KM: Dokumentacja zatwierdzona – Ujêcie wody | 0d | 2026-09-30 | 2026-09-30 | 12NW18-003 |  | 92.9d |
|  | ROZR | **Rozruch** |  | 2026-08-24 | 2026-10-28 |  |  |  |
|  | ROZRUCH | **Rozruch** |  | 2026-08-24 | 2026-10-28 |  |  |  |
| 12NW18-077 |  | Przegl¹d gotowoœci do rozruchu | 7d | 2026-08-24 A | 2026-09-03 A | 12NW18-076, 12NW18-019, 12NW18-024, 12NW18-026 | 100% |  |
| 12NW18-078 |  | Rozruch na zimno | 15d | 2026-09-04 A | 2026-09-24 A | 12NW18-077 | 100% |  |
| 12NW18-079 |  | Rozruch na gor¹co / próby ruchowe | 23d | 2026-09-28 A | 2026-10-27 | 12NW18-078 | 10% | 326.9d |
| 12NW18-080 |  | KM: Odbiór koñcowy – Ujêcie wody | 0d | 2026-10-28 | 2026-10-28 | 12NW18-079 |  | 327.3d |
|  | ZAKU | **Zakupy** |  | 2025-05-14 | 2026-06-05 |  |  |  |
|  | DOSTAWY | **Dostawy** |  | 2025-11-17 | 2026-06-05 |  |  |  |
| 12NW18-008 |  | Produkcja u dostawcy | 105d | 2025-11-17 A | 2026-04-14 A | 12NW18-007 | 100% |  |
| 12NW18-009 |  | Testy FAT | 9d | 2026-04-10 A | 2026-04-22 A | 12NW18-008 | 100% |  |
| 12NW18-010 |  | Transport i dostawa na plac budowy | 28d | 2026-04-28 A | 2026-06-05 A | 12NW18-009 | 100% |  |
| 12NW18-011 |  | KM: Dostawa na budowê – Ujêcie wody | 0d | 2026-06-04 A | 2026-06-04 | 12NW18-010 | 100% |  |
|  | ZAMÓWIENIA | **Zamówienia** |  | 2025-05-14 | 2025-11-13 |  |  |  |
| 12NW18-005 |  | Zapytanie ofertowe | 22d | 2025-05-14 A | 2025-06-17 A | 12NW18-001 SS+20d | 100% |  |
| 12NW18-006 |  | Analiza i wybór ofert | 19d | 2025-06-17 A | 2025-07-14 A | 12NW18-005 | 100% |  |
| 12NW18-007 |  | Zawarcie umowy / zamówienie | 10d | 2025-10-30 A | 2025-11-13 A | 12NW18-006, 12NW18-004 SS, 10BW45-004 FS+11d | 100% |  |
|  | 13RW88 | **13RW88 – Oczyszczalnia œcieków technologicznych** |  | 2025-03-20 | 2026-11-06 |  |  |  |
|  | BUDO | **Budowa** |  | 2025-12-04 | 2026-11-06 |  |  |  |
|  | AKPIA | **AKPiA** |  | 2026-06-12 | 2026-07-01 |  |  |  |
| 13RW88-087 |  | Monta¿ uk³adów AKPiA | 11d | 2026-06-12 A | 2026-07-01 A | 13RW88-014 SS+5d | 100% |  |
|  | ELEKTRYKA | **Elektryka** |  | 2026-06-19 | 2026-10-20 |  |  |  |
| 13RW88-025 |  | Uk³adanie kabli – trasa 02 | 20d | 2026-06-19 A | 2026-07-16 A | 13RW88-014 SS+10d | 100% |  |

| ID | WBS | Task | Duration | Start | Finish | Predecessors | Complete | Total float |
| --- | --- | --- | --- | --- | --- | --- | --- | --- |
| 13RW88-049 |  | Uk³adanie kabli – trasa 06 | 14d | 2026-06-22 A | 2026-07-14 A | 13RW88-014 SS+10d | 100% |  |
| 13RW88-061 |  | Uk³adanie kabli – trasa 08 | 14d | 2026-06-22 A | 2026-10-14 | 13RW88-014 SS+10d | 18% | 415.9d |
| 13RW88-038 |  | Pod³¹czenia i pomiary – trasa 04 | 4d | 2026-06-23 A | 2026-06-26 A | 13RW88-037 FF | 100% |  |
| 13RW88-085 |  | Uk³adanie kabli – trasa 12 | 11d | 2026-06-23 A | 2026-07-08 A | 13RW88-014 SS+10d | 100% |  |
| 13RW88-037 |  | Uk³adanie kabli – trasa 04 | 4d | 2026-06-24 A | 2026-06-29 A | 13RW88-014 SS+10d | 100% |  |
| 13RW88-073 |  | Uk³adanie kabli – trasa 10 | 17d | 2026-06-25 A | 2026-10-20 | 13RW88-014 SS+10d | 11% | 409.9d |
| 13RW88-086 |  | Pod³¹czenia i pomiary – trasa 12 | 8d | 2026-06-26 A | 2026-07-10 A | 13RW88-085 FF | 100% |  |
| 13RW88-050 |  | Pod³¹czenia i pomiary – trasa 06 | 4d | 2026-07-03 A | 2026-07-10 A | 13RW88-049 FF | 100% |  |
| 13RW88-062 |  | Pod³¹czenia i pomiary – trasa 08 | 4d | 2026-07-07 A | 2026-07-13 A | 13RW88-061 FF | 100% |  |
| 13RW88-074 |  | Pod³¹czenia i pomiary – trasa 10 | 5d | 2026-07-07 A | 2026-07-13 A | 13RW88-073 FF | 100% |  |
| 13RW88-026 |  | Pod³¹czenia i pomiary – trasa 02 | 10d | 2026-07-09 A | 2026-07-23 A | 13RW88-025 FF | 100% |  |
|  | MONTA¯ | **Monta¿** |  | 2026-01-22 | 2026-11-06 |  |  |  |
| 13RW88-013 |  | Monta¿ konstrukcji stalowych | 37d | 2026-01-22 A | 2026-03-13 A | 13RW88-012 | 100% |  |
| 13RW88-014 |  | Monta¿ urz¹dzeñ g³ównych | 59d | 2026-06-11 A | 2026-11-06 | 13RW88-013, 13RW88-011 | 51% | 338.9d |
| 13RW88-088 |  | KM: Zakoñczenie monta¿u – Oczyszczalnia œcieków technologicznych | 0d | 2026-08-27 A | 2026-08-27 | 13RW88-079, 13RW88-084, 13RW88-086, 13RW88-087, 13RW88-014 | 100% |  |
|  | ROBOTY BUD | **Roboty budowlane** |  | 2025-12-04 | 2026-01-28 |  |  |  |
| 13RW88-012 |  | Fundamenty i roboty ziemne | 37d | 2025-12-04 A | 2026-01-28 A | 13RW88-007 FS+4d | 100% |  |
|  | RUROCI¥GI | **Ruroci¹gi** |  | 2026-01-22 | 2026-10-12 |  |  |  |
|  | SEKCJA 01 | **Sekcja 01** |  | 2026-01-22 | 2026-10-05 |  |  |  |
| 13RW88-015 |  | Prefabrykacja ruroci¹gów – Sekcja 01 | 4.6d | 2026-01-22 A | 2026-01-27 A | 13RW88-012 | 100% |  |
| 13RW88-016 |  | Monta¿ ruroci¹gów – Sekcja 01 | 5.7d | 2026-06-22 A | 2026-06-26 A | 13RW88-015, 13RW88-014 SS+7d | 100% |  |
| 13RW88-017 |  | Próba ciœnieniowa – Sekcja 01 | 2d | 2026-06-24 A | 2026-06-25 A | 13RW88-016 | 100% |  |
| 13RW88-018 |  | Izolacje – Sekcja 01 | 10d | 2026-06-30 A | 2026-10-05 | 13RW88-017 | 53% | 372.2d |
| 13RW88-019 |  | Malowanie i oznakowanie – Sekcja 01 | 8d | 2026-07-07 A | 2026-07-17 A | 13RW88-018 FF+2d | 100% |  |
|  | SEKCJA 02 | **Sekcja 02** |  | 2026-01-29 | 2026-09-30 |  |  |  |
| 13RW88-020 |  | Prefabrykacja ruroci¹gów – Sekcja 02 | 14.3d | 2026-01-29 A | 2026-02-19 A | 13RW88-012, 13RW88-015 SS+5d | 100% |  |
| 13RW88-021 |  | Monta¿ ruroci¹gów – Sekcja 02 | 9.2d | 2026-06-17 A | 2026-07-01 A | 13RW88-020, 13RW88-014 SS+5d | 100% |  |
| 13RW88-022 |  | Próba ciœnieniowa – Sekcja 02 | 4d | 2026-06-30 A | 2026-07-08 A | 13RW88-021 | 100% |  |
| 13RW88-023 |  | Izolacje – Sekcja 02 | 4d | 2026-07-02 A | 2026-09-30 | 13RW88-022 | 65% | 376.7d |
| 13RW88-024 |  | Malowanie i oznakowanie – Sekcja 02 | 4d | 2026-07-06 A | 2026-07-09 A | 13RW88-023 FF+2d | 100% |  |
|  | SEKCJA 03 | **Sekcja 03** |  | 2026-02-09 | 2026-10-02 |  |  |  |
|  | PODSEKCJA | **Podsekcja 03.A** |  | 2026-02-09 | 2026-10-02 |  |  |  |
| 13RW88-027 |  | Prefabrykacja ruroci¹gów – Sekcja 03 | 11.4d | 2026-02-09 A | 2026-02-24 A | 13RW88-012, 13RW88-020 SS+5d | 100% |  |
| 13RW88-028 |  | Monta¿ ruroci¹gów – Sekcja 03 | 18.3d | 2026-06-12 A | 2026-07-08 A | 13RW88-027, 13RW88-014 SS+5d | 100% |  |
| 13RW88-029 |  | Próba ciœnieniowa – Sekcja 03 | 5d | 2026-07-15 A | 2026-10-02 | 13RW88-028 | 40% | 401.6d |
| 13RW88-030 |  | Izolacje – Sekcja 03 | 4d | 2026-07-16 A | 2026-07-22 A | 13RW88-029 | 100% |  |
| 13RW88-031 |  | Malowanie i oznakowanie – Sekcja 03 | 2d | 2026-07-27 A | 2026-07-28 A | 13RW88-030 FF+2d | 100% |  |
|  | SEKCJA 04 | **Sekcja 04** |  | 2026-02-16 | 2026-10-08 |  |  |  |
| 13RW88-032 |  | Prefabrykacja ruroci¹gów – Sekcja 04 | 7.5d | 2026-02-16 A | 2026-02-24 A | 13RW88-012, 13RW88-027 SS+5d | 100% |  |
| 13RW88-033 |  | Monta¿ ruroci¹gów – Sekcja 04 | 24.6d | 2026-06-17 A | 2026-07-21 A | 13RW88-032, 13RW88-014 SS+7d | 100% |  |
| 13RW88-034 |  | Próba ciœnieniowa – Sekcja 04 | 5d | 2026-07-23 A | 2026-07-31 A | 13RW88-033 | 100% |  |
| 13RW88-035 |  | Izolacje – Sekcja 04 | 12d | 2026-07-28 A | 2026-10-08 | 13RW88-034 | 38% | 389.3d |
| 13RW88-036 |  | Malowanie i oznakowanie – Sekcja 04 | 3d | 2026-08-17 A | 2026-08-20 A | 13RW88-035 FF+2d | 100% |  |
|  | SEKCJA 05 | **Sekcja 05** |  | 2026-02-20 | 2026-08-18 |  |  |  |
| 13RW88-039 |  | Prefabrykacja ruroci¹gów – Sekcja 05 | 6.3d | 2026-02-20 A | 2026-02-27 A | 13RW88-012, 13RW88-032 SS+5d | 100% |  |
| 13RW88-040 |  | Monta¿ ruroci¹gów – Sekcja 05 | 23.6d | 2026-06-24 A | 2026-07-24 A | 13RW88-039, 13RW88-014 SS+9d | 100% |  |
| 13RW88-041 |  | Próba ciœnieniowa – Sekcja 05 | 4d | 2026-07-24 A | 2026-07-30 A | 13RW88-040 | 100% |  |
| 13RW88-042 |  | Izolacje – Sekcja 05 | 12d | 2026-07-30 A | 2026-08-17 A | 13RW88-041 | 100% |  |
| 13RW88-043 |  | Malowanie i oznakowanie – Sekcja 05 | 7d | 2026-08-07 A | 2026-08-18 A | 13RW88-042 FF+2d | 100% |  |
|  | SEKCJA 06 | **Sekcja 06** |  | 2026-03-03 | 2026-07-16 |  |  |  |
|  | PODSEKCJA | **Podsekcja 06.A** |  | 2026-03-03 | 2026-07-16 |  |  |  |
| 13RW88-044 |  | Prefabrykacja ruroci¹gów – Sekcja 06 | 7.8d | 2026-03-03 A | 2026-03-11 A | 13RW88-012, 13RW88-039 SS+5d | 100% |  |
| 13RW88-045 |  | Monta¿ ruroci¹gów – Sekcja 06 | 10.7d | 2026-06-15 A | 2026-06-30 A | 13RW88-044, 13RW88-014 SS+2d | 100% |  |
| 13RW88-046 |  | Próba ciœnieniowa – Sekcja 06 | 3d | 2026-06-26 A | 2026-07-01 A | 13RW88-045 | 100% |  |
| 13RW88-047 |  | Izolacje – Sekcja 06 | 9d | 2026-07-01 A | 2026-07-16 A | 13RW88-046 | 100% |  |
| 13RW88-048 |  | Malowanie i oznakowanie – Sekcja 06 | 7d | 2026-07-02 A | 2026-07-15 A | 13RW88-047 FF+2d | 100% |  |
|  | SEKCJA 07 | **Sekcja 07** |  | 2026-03-06 | 2026-07-23 |  |  |  |
| 13RW88-051 |  | Prefabrykacja ruroci¹gów – Sekcja 07 | 7.1d | 2026-03-06 A | 2026-03-17 A | 13RW88-012, 13RW88-044 SS+5d | 100% |  |
| 13RW88-052 |  | Monta¿ ruroci¹gów – Sekcja 07 | 12.7d | 2026-06-10 A | 2026-06-29 A | 13RW88-051, 13RW88-014 SS+3d | 100% |  |
| 13RW88-053 |  | Próba ciœnieniowa – Sekcja 07 | 4d | 2026-07-02 A | 2026-07-07 A | 13RW88-052 | 100% |  |
| 13RW88-054 |  | Izolacje – Sekcja 07 | 11d | 2026-07-08 A | 2026-07-22 A | 13RW88-053 | 100% |  |
| 13RW88-055 |  | Malowanie i oznakowanie – Sekcja 07 | 3d | 2026-07-17 A | 2026-07-23 A | 13RW88-054 FF+2d | 100% |  |
|  | SEKCJA 08 | **Sekcja 08** |  | 2026-03-16 | 2026-10-12 |  |  |  |
| 13RW88-056 |  | Prefabrykacja ruroci¹gów – Sekcja 08 | 3.6d | 2026-03-16 A | 2026-03-18 A | 13RW88-012, 13RW88-051 SS+5d | 100% |  |
| 13RW88-057 |  | Monta¿ ruroci¹gów – Sekcja 08 | 10.2d | 2026-06-18 A | 2026-10-12 | 13RW88-056, 13RW88-014 SS+6d | 11% | 408.7d |
| 13RW88-058 |  | Próba ciœnieniowa – Sekcja 08 | 5d | 2026-07-01 A | 2026-07-07 A | 13RW88-057 | 100% |  |
| 13RW88-059 |  | Izolacje – Sekcja 08 | 6d | 2026-07-06 A | 2026-07-16 A | 13RW88-058 | 100% |  |
| 13RW88-060 |  | Malowanie i oznakowanie – Sekcja 08 | 4d | 2026-07-14 A | 2026-07-22 A | 13RW88-059 FF+2d | 100% |  |
|  | SEKCJA 09 | **Sekcja 09** |  | 2026-03-24 | 2026-07-22 |  |  |  |
|  | PODSEKCJA | **Podsekcja 09.A** |  | 2026-03-24 | 2026-07-22 |  |  |  |

| ID | WBS | Task | Duration | Start | Finish | Predecessors | Complete | Total float |
| --- | --- | --- | --- | --- | --- | --- | --- | --- |
| 13RW88-063 |  | Prefabrykacja ruroci¹gów – Sekcja 09 | 4.9d | 2026-03-24 A | 2026-03-30 A | 13RW88-012, 13RW88-056 SS+5d | 100% |  |
| 13RW88-064 |  | Monta¿ ruroci¹gów – Sekcja 09 | 12.7d | 2026-06-15 A | 2026-07-03 A | 13RW88-063, 13RW88-014 SS+6d | 100% |  |
| 13RW88-065 |  | Próba ciœnieniowa – Sekcja 09 | 2d | 2026-07-02 A | 2026-07-08 A | 13RW88-064 | 100% |  |
| 13RW88-066 |  | Izolacje – Sekcja 09 | 8d | 2026-07-09 A | 2026-07-21 A | 13RW88-065 | 100% |  |
| 13RW88-067 |  | Malowanie i oznakowanie – Sekcja 09 | 8d | 2026-07-09 A | 2026-07-22 A | 13RW88-066 FF+2d | 100% |  |
|  | SEKCJA 10 | **Sekcja 10** |  | 2026-04-01 | 2026-07-06 |  |  |  |
| 13RW88-068 |  | Prefabrykacja ruroci¹gów – Sekcja 10 | 4.2d | 2026-04-01 A | 2026-04-07 A | 13RW88-012, 13RW88-063 SS+5d | 100% |  |
| 13RW88-069 |  | Monta¿ ruroci¹gów – Sekcja 10 | 6.3d | 2026-06-11 A | 2026-06-23 A | 13RW88-068, 13RW88-014 SS | 100% |  |
| 13RW88-070 |  | Próba ciœnieniowa – Sekcja 10 | 5d | 2026-06-18 A | 2026-06-25 A | 13RW88-069 | 100% |  |
| 13RW88-071 |  | Izolacje – Sekcja 10 | 4d | 2026-06-26 A | 2026-07-02 A | 13RW88-070 | 100% |  |
| 13RW88-072 |  | Malowanie i oznakowanie – Sekcja 10 | 2d | 2026-07-02 A | 2026-07-06 A | 13RW88-071 FF+2d | 100% |  |
|  | SEKCJA 11 | **Sekcja 11** |  | 2026-04-02 | 2026-07-30 |  |  |  |
| 13RW88-075 |  | Prefabrykacja ruroci¹gów – Sekcja 11 | 14.7d | 2026-04-02 A | 2026-04-21 A | 13RW88-012, 13RW88-068 SS+5d | 100% |  |
| 13RW88-076 |  | Monta¿ ruroci¹gów – Sekcja 11 | 17.8d | 2026-06-10 A | 2026-07-02 A | 13RW88-075, 13RW88-014 SS+3d | 100% |  |
| 13RW88-077 |  | Próba ciœnieniowa – Sekcja 11 | 6d | 2026-07-08 A | 2026-07-17 A | 13RW88-076 | 100% |  |
| 13RW88-078 |  | Izolacje – Sekcja 11 | 9d | 2026-07-15 A | 2026-07-29 A | 13RW88-077 | 100% |  |
| 13RW88-079 |  | Malowanie i oznakowanie – Sekcja 11 | 6d | 2026-07-23 A | 2026-07-30 A | 13RW88-078 FF+2d | 100% |  |
|  | SEKCJA 12 | **Sekcja 12** |  | 2026-04-09 | 2026-10-01 |  |  |  |
|  | PODSEKCJA | **Podsekcja 12.A** |  | 2026-04-09 | 2026-10-01 |  |  |  |
| 13RW88-080 |  | Prefabrykacja ruroci¹gów – Sekcja 12 | 7.5d | 2026-04-09 A | 2026-04-22 A | 13RW88-012, 13RW88-075 SS+5d | 100% |  |
| 13RW88-081 |  | Monta¿ ruroci¹gów – Sekcja 12 | 22.4d | 2026-06-08 A | 2026-07-09 A | 13RW88-080, 13RW88-014 SS | 100% |  |
| 13RW88-082 |  | Próba ciœnieniowa – Sekcja 12 | 5d | 2026-07-10 A | 2026-10-01 | 13RW88-081 | 48% | 366.5d |
| 13RW88-083 |  | Izolacje – Sekcja 12 | 3d | 2026-07-15 A | 2026-07-20 A | 13RW88-082 | 100% |  |
| 13RW88-084 |  | Malowanie i oznakowanie – Sekcja 12 | 4d | 2026-07-16 A | 2026-07-21 A | 13RW88-083 FF+2d | 100% |  |
|  | PROJ | **Projektowanie** |  | 2025-03-20 | 2025-08-21 |  |  |  |
|  | DOKUMENTAC | **Dokumentacja** |  | 2025-03-20 | 2025-08-21 |  |  |  |
| 13RW88-001 |  | Projekt wykonawczy – Oczyszczalnia œcieków technologicznych | 86d | 2025-03-20 A | 2025-07-18 A |  | 100% |  |
| 13RW88-002 |  | Uzgodnienie dokumentacji z Inwestorem | 10d | 2025-07-21 A | 2025-08-04 A | 13RW88-001 | 100% |  |
| 13RW88-003 |  | Zatwierdzenie dokumentacji do realizacji | 10d | 2025-08-07 A | 2025-08-21 A | 13RW88-002 | 100% |  |
| 13RW88-004 |  | KM: Dokumentacja zatwierdzona – Oczyszczalnia œcieków technologicznych | 0d | 2025-08-20 A | 2025-08-20 | 13RW88-003 | 100% |  |
|  | ROZR | **Rozruch** |  | 2026-08-28 | 2026-10-13 |  |  |  |
|  | ROZRUCH | **Rozruch** |  | 2026-08-28 | 2026-10-13 |  |  |  |
| 13RW88-089 |  | Przegl¹d gotowoœci do rozruchu | 6d | 2026-08-28 A | 2026-09-09 A | 13RW88-088, 13RW88-019, 13RW88-024, 13RW88-026 | 100% |  |
| 13RW88-090 |  | Rozruch na zimno | 12d | 2026-09-04 A | 2026-09-21 A | 13RW88-089 | 100% |  |
| 13RW88-091 |  | Rozruch na gor¹co / próby ruchowe | 11d | 2026-09-24 A | 2026-10-12 | 13RW88-090 | 11% | 340.9d |
| 13RW88-092 |  | KM: Odbiór koñcowy – Oczyszczalnia œcieków technologicznych | 0d | 2026-10-13 | 2026-10-13 | 13RW88-091 |  | 338.1d |
|  | ZAKU | **Zakupy** |  | 2025-04-18 | 2026-10-01 |  |  |  |
|  | DOSTAWY | **Dostawy** |  | 2025-11-27 | 2026-10-01 |  |  |  |
| 13RW88-008 |  | Produkcja u dostawcy | 108d | 2025-11-27 A | 2026-04-30 A | 13RW88-007 | 100% |  |
| 13RW88-009 |  | Testy FAT | 10d | 2026-04-28 A | 2026-05-12 A | 13RW88-008 | 100% |  |
| 13RW88-010 |  | Transport i dostawa na plac budowy | 19d | 2026-05-12 A | 2026-10-01 | 13RW88-009 | 88% | 341.9d |
| 13RW88-011 |  | KM: Dostawa na budowê – Oczyszczalnia œcieków technologicznych | 0d | 2026-06-08 A | 2026-06-08 | 13RW88-010 | 100% |  |
|  | ZAMÓWIENIA | **Zamówienia** |  | 2025-04-18 | 2025-12-02 |  |  |  |
| 13RW88-005 |  | Zapytanie ofertowe | 21d | 2025-04-18 A | 2025-05-21 A | 13RW88-001 SS+20d | 100% |  |
| 13RW88-006 |  | Analiza i wybór ofert | 12d | 2025-05-19 A | 2025-06-06 A | 13RW88-005 | 100% |  |
| 13RW88-007 |  | Zawarcie umowy / zamówienie | 9d | 2025-11-18 A | 2025-12-02 A | 13RW88-006, 13RW88-004 SS, 12NW18-004 SS+10d | 100% |  |
|  | 18TY85 | **18TY85 – Wie¿a ch³odnicza** |  | 2025-03-13 | 2027-08-16 |  |  |  |
|  | BUDO | **Budowa** |  | 2025-10-15 | 2026-10-08 |  |  |  |
|  | AKPIA | **AKPiA** |  | 2026-03-27 | 2026-05-07 |  |  |  |
| 18TY85-068 |  | Monta¿ uk³adów AKPiA | 29d | 2026-03-27 A | 2026-05-07 A | 18TY85-014 SS+5d | 100% |  |
|  | ELEKTRYKA | **Elektryka** |  | 2026-04-03 | 2026-09-30 |  |  |  |
| 18TY85-025 |  | Uk³adanie kabli – trasa 02 | 9d | 2026-04-03 A | 2026-04-20 A | 18TY85-014 SS+10d | 100% |  |
| 18TY85-037 |  | Uk³adanie kabli – trasa 04 | 13d | 2026-04-03 A | 2026-04-22 A | 18TY85-014 SS+10d | 100% |  |
| 18TY85-026 |  | Pod³¹czenia i pomiary – trasa 02 | 10d | 2026-04-07 A | 2026-04-23 A | 18TY85-025 FF | 100% |  |
| 18TY85-061 |  | Uk³adanie kabli – trasa 08 | 19d | 2026-04-08 A | 2026-05-07 A | 18TY85-014 SS+10d | 100% |  |
| 18TY85-049 |  | Uk³adanie kabli – trasa 06 | 20d | 2026-04-09 A | 2026-05-07 A | 18TY85-014 SS+10d | 100% |  |
| 18TY85-038 |  | Pod³¹czenia i pomiary – trasa 04 | 10d | 2026-04-14 A | 2026-04-28 A | 18TY85-037 FF | 100% |  |
| 18TY85-062 |  | Pod³¹czenia i pomiary – trasa 08 | 5d | 2026-04-28 A | 2026-05-05 A | 18TY85-061 FF | 100% |  |
| 18TY85-050 |  | Pod³¹czenia i pomiary – trasa 06 | 4d | 2026-05-04 A | 2026-09-30 | 18TY85-049 FF | 75% | 460.9d |
|  | MONTA¯ | **Monta¿** |  | 2025-12-05 | 2026-05-13 |  |  |  |
| 18TY85-013 |  | Monta¿ konstrukcji stalowych | 24d | 2025-12-05 A | 2026-01-07 A | 18TY85-012 | 100% |  |
| 18TY85-014 |  | Monta¿ urz¹dzeñ g³ównych | 30d | 2026-03-25 A | 2026-05-05 A | 18TY85-013, 18TY85-011 | 100% |  |
| 18TY85-069 |  | KM: Zakoñczenie monta¿u – Wie¿a ch³odnicza | 0d | 2026-05-13 A | 2026-05-13 | 18TY85-060, 18TY85-062, 18TY85-067, 18TY85-068, 18TY85-014 | 100% |  |
|  | ROBOTY BUD | **Roboty budowlane** |  | 2025-10-15 | 2025-12-04 |  |  |  |
| 18TY85-012 |  | Fundamenty i roboty ziemne | 37d | 2025-10-15 A | 2025-12-04 A | 18TY85-007 FS+12d | 100% |  |
|  | RUROCI¥GI | **Ruroci¹gi** |  | 2025-12-05 | 2026-10-08 |  |  |  |
|  | SEKCJA 01 | **Sekcja 01** |  | 2025-12-05 | 2026-10-01 |  |  |  |
| 18TY85-015 |  | Prefabrykacja ruroci¹gów – Sekcja 01 | 4.2d | 2025-12-05 A | 2025-12-10 A | 18TY85-012 | 100% |  |
| 18TY85-016 |  | Monta¿ ruroci¹gów – Sekcja 01 | 22.2d | 2026-03-24 A | 2026-04-24 A | 18TY85-015, 18TY85-014 SS+1d | 100% |  |
| 18TY85-017 |  | Próba ciœnieniowa – Sekcja 01 | 6d | 2026-04-24 A | 2026-10-01 | 18TY85-016 | 63% | 411.7d |

| ID | WBS | Task | Duration | Start | Finish | Predecessors | Complete | Total float |
| --- | --- | --- | --- | --- | --- | --- | --- | --- |
| 18TY85-018 |  | Izolacje – Sekcja 01 | 12d | 2026-04-30 A | 2026-05-18 A | 18TY85-017 | 100% |  |
| 18TY85-019 |  | Malowanie i oznakowanie – Sekcja 01 | 8d | 2026-05-13 A | 2026-05-22 A | 18TY85-018 FF+2d | 100% |  |
|  | SEKCJA 02 | **Sekcja 02** |  | 2025-12-18 | 2026-10-06 |  |  |  |
| 18TY85-020 |  | Prefabrykacja ruroci¹gów – Sekcja 02 | 8.4d | 2025-12-18 A | 2026-10-06 | 18TY85-012, 18TY85-015 SS+5d | 32% | 460.4d |
| 18TY85-021 |  | Monta¿ ruroci¹gów – Sekcja 02 | 8.5d | 2026-04-08 A | 2026-04-20 A | 18TY85-020, 18TY85-014 SS+10d | 100% |  |
| 18TY85-022 |  | Próba ciœnieniowa – Sekcja 02 | 4d | 2026-04-21 A | 2026-04-29 A | 18TY85-021 | 100% |  |
| 18TY85-024 |  | Malowanie i oznakowanie – Sekcja 02 | 7d | 2026-04-22 A | 2026-05-01 A | 18TY85-023 FF+2d | 100% |  |
| 18TY85-023 |  | Izolacje – Sekcja 02 | 6d | 2026-04-27 A | 2026-05-04 A | 18TY85-022 | 100% |  |
|  | SEKCJA 03 | **Sekcja 03** |  | 2025-12-22 | 2026-05-14 |  |  |  |
|  | PODSEKCJA | **Podsekcja 03.A** |  | 2025-12-22 | 2026-05-14 |  |  |  |
| 18TY85-027 |  | Prefabrykacja ruroci¹gów – Sekcja 03 | 13.3d | 2025-12-22 A | 2026-01-12 A | 18TY85-012, 18TY85-020 SS+5d | 100% |  |
| 18TY85-028 |  | Monta¿ ruroci¹gów – Sekcja 03 | 14.9d | 2026-03-31 A | 2026-04-22 A | 18TY85-027, 18TY85-014 SS+7d | 100% |  |
| 18TY85-029 |  | Próba ciœnieniowa – Sekcja 03 | 5d | 2026-04-23 A | 2026-05-01 A | 18TY85-028 | 100% |  |
| 18TY85-030 |  | Izolacje – Sekcja 03 | 9d | 2026-04-29 A | 2026-05-12 A | 18TY85-029 | 100% |  |
| 18TY85-031 |  | Malowanie i oznakowanie – Sekcja 03 | 8d | 2026-04-30 A | 2026-05-14 A | 18TY85-030 FF+2d | 100% |  |
|  | SEKCJA 04 | **Sekcja 04** |  | 2026-01-01 | 2026-05-14 |  |  |  |
| 18TY85-032 |  | Prefabrykacja ruroci¹gów – Sekcja 04 | 4d | 2026-01-01 A | 2026-01-06 A | 18TY85-012, 18TY85-027 SS+5d | 100% |  |
| 18TY85-033 |  | Monta¿ ruroci¹gów – Sekcja 04 | 23.1d | 2026-03-24 A | 2026-04-27 A | 18TY85-032, 18TY85-014 SS+2d | 100% |  |
| 18TY85-034 |  | Próba ciœnieniowa – Sekcja 04 | 5d | 2026-04-27 A | 2026-05-06 A | 18TY85-033 | 100% |  |
| 18TY85-036 |  | Malowanie i oznakowanie – Sekcja 04 | 6d | 2026-05-01 A | 2026-05-12 A | 18TY85-035 FF+2d | 100% |  |
| 18TY85-035 |  | Izolacje – Sekcja 04 | 3d | 2026-05-07 A | 2026-05-14 A | 18TY85-034 | 100% |  |
|  | SEKCJA 05 | **Sekcja 05** |  | 2026-01-06 | 2026-10-08 |  |  |  |
| 18TY85-039 |  | Prefabrykacja ruroci¹gów – Sekcja 05 | 10.8d | 2026-01-06 A | 2026-01-22 A | 18TY85-012, 18TY85-032 SS+5d | 100% |  |
| 18TY85-040 |  | Monta¿ ruroci¹gów – Sekcja 05 | 21.9d | 2026-03-31 A | 2026-04-29 A | 18TY85-039, 18TY85-014 SS+6d | 100% |  |
| 18TY85-041 |  | Próba ciœnieniowa – Sekcja 05 | 6d | 2026-05-04 A | 2026-05-14 A | 18TY85-040 | 100% |  |
| 18TY85-042 |  | Izolacje – Sekcja 05 | 10d | 2026-05-06 A | 2026-05-21 A | 18TY85-041 | 100% |  |
| 18TY85-043 |  | Malowanie i oznakowanie – Sekcja 05 | 7d | 2026-09-30 | 2026-10-08 | 18TY85-042 FF+2d |  | 350.9d |
|  | SEKCJA 06 | **Sekcja 06** |  | 2026-01-13 | 2026-10-01 |  |  |  |
|  | PODSEKCJA | **Podsekcja 06.A** |  | 2026-01-13 | 2026-10-01 |  |  |  |
| 18TY85-044 |  | Prefabrykacja ruroci¹gów – Sekcja 06 | 11d | 2026-01-13 A | 2026-01-27 A | 18TY85-012, 18TY85-039 SS+5d | 100% |  |
| 18TY85-045 |  | Monta¿ ruroci¹gów – Sekcja 06 | 18.4d | 2026-04-01 A | 2026-04-28 A | 18TY85-044, 18TY85-014 SS+4d | 100% |  |
| 18TY85-046 |  | Próba ciœnieniowa – Sekcja 06 | 3d | 2026-04-23 A | 2026-10-01 | 18TY85-045 | 23% | 462.5d |
| 18TY85-047 |  | Izolacje – Sekcja 06 | 4d | 2026-04-28 A | 2026-09-30 | 18TY85-046 | 68% | 462.5d |
| 18TY85-048 |  | Malowanie i oznakowanie – Sekcja 06 | 6d | 2026-04-29 A | 2026-05-07 A | 18TY85-047 FF+2d | 100% |  |
|  | SEKCJA 07 | **Sekcja 07** |  | 2026-01-21 | 2026-05-01 |  |  |  |
| 18TY85-051 |  | Prefabrykacja ruroci¹gów – Sekcja 07 | 7.5d | 2026-01-21 A | 2026-01-30 A | 18TY85-012, 18TY85-044 SS+5d | 100% |  |
| 18TY85-052 |  | Monta¿ ruroci¹gów – Sekcja 07 | 10.4d | 2026-04-01 A | 2026-04-17 A | 18TY85-051, 18TY85-014 SS+7d | 100% |  |
| 18TY85-053 |  | Próba ciœnieniowa – Sekcja 07 | 5d | 2026-04-16 A | 2026-04-23 A | 18TY85-052 | 100% |  |
| 18TY85-054 |  | Izolacje – Sekcja 07 | 4d | 2026-04-21 A | 2026-04-27 A | 18TY85-053 | 100% |  |
| 18TY85-055 |  | Malowanie i oznakowanie – Sekcja 07 | 8d | 2026-04-22 A | 2026-05-01 A | 18TY85-054 FF+2d | 100% |  |
|  | SEKCJA 08 | **Sekcja 08** |  | 2026-01-29 | 2026-04-29 |  |  |  |
| 18TY85-056 |  | Prefabrykacja ruroci¹gów – Sekcja 08 | 5d | 2026-01-29 A | 2026-02-05 A | 18TY85-012, 18TY85-051 SS+5d | 100% |  |
| 18TY85-057 |  | Monta¿ ruroci¹gów – Sekcja 08 | 17.5d | 2026-03-24 A | 2026-04-20 A | 18TY85-056, 18TY85-014 SS | 100% |  |
| 18TY85-058 |  | Próba ciœnieniowa – Sekcja 08 | 2d | 2026-04-16 A | 2026-04-21 A | 18TY85-057 | 100% |  |
| 18TY85-060 |  | Malowanie i oznakowanie – Sekcja 08 | 8d | 2026-04-17 A | 2026-04-29 A | 18TY85-059 FF+2d | 100% |  |
| 18TY85-059 |  | Izolacje – Sekcja 08 | 6d | 2026-04-20 A | 2026-04-29 A | 18TY85-058 | 100% |  |
|  | SEKCJA 09 | **Sekcja 09** |  | 2026-02-04 | 2026-05-11 |  |  |  |
|  | PODSEKCJA | **Podsekcja 09.A** |  | 2026-02-04 | 2026-05-11 |  |  |  |
| 18TY85-063 |  | Prefabrykacja ruroci¹gów – Sekcja 09 | 3.7d | 2026-02-04 A | 2026-02-11 A | 18TY85-012, 18TY85-056 SS+5d | 100% |  |
| 18TY85-064 |  | Monta¿ ruroci¹gów – Sekcja 09 | 5.9d | 2026-04-07 A | 2026-04-15 A | 18TY85-063, 18TY85-014 SS+10d | 100% |  |
| 18TY85-065 |  | Próba ciœnieniowa – Sekcja 09 | 5d | 2026-04-10 A | 2026-04-20 A | 18TY85-064 | 100% |  |
| 18TY85-066 |  | Izolacje – Sekcja 09 | 10d | 2026-04-20 A | 2026-05-04 A | 18TY85-065 | 100% |  |
| 18TY85-067 |  | Malowanie i oznakowanie – Sekcja 09 | 5d | 2026-05-04 A | 2026-05-11 A | 18TY85-066 FF+2d | 100% |  |
|  | PROJ | **Projektowanie** |  | 2025-03-13 | 2025-08-26 |  |  |  |
|  | DOKUMENTAC | **Dokumentacja** |  | 2025-03-13 | 2025-08-26 |  |  |  |
| 18TY85-001 |  | Projekt wykonawczy – Wie¿a ch³odnicza | 86d | 2025-03-13 A | 2025-07-15 A |  | 100% |  |
| 18TY85-002 |  | Uzgodnienie dokumentacji z Inwestorem | 21d | 2025-07-09 A | 2025-08-06 A | 18TY85-001 | 100% |  |
| 18TY85-003 |  | Zatwierdzenie dokumentacji do realizacji | 11d | 2025-08-12 A | 2025-08-26 A | 18TY85-002 | 100% |  |
| 18TY85-004 |  | KM: Dokumentacja zatwierdzona – Wie¿a ch³odnicza | 0d | 2025-08-21 A | 2025-08-21 | 18TY85-003 | 100% |  |
|  | ROZR | **Rozruch** |  | 2026-05-21 | 2027-08-16 |  |  |  |
|  | KAMIENIE M | **Kamienie milowe** |  | 2027-08-16 | 2027-08-16 |  |  |  |
| 18TY85-074 |  | KM: Zakoñczenie rozruchu – PL5001-SE-02 | 0d | 2027-08-16 | 2027-08-16 | 18TY85-073, 28BP20-080, 12NW18-080, 11TM31-128, 23QX91-176, 13RW88-092, 27FW94-164, 10SN54-169, 16TC84-164, 26NP30-157, 11XQ69-092, 14WE74-116, 17DY74-121 |  | 119.4d |
|  | ROZRUCH | **Rozruch** |  | 2026-05-21 | 2026-07-03 |  |  |  |
| 18TY85-070 |  | Przegl¹d gotowoœci do rozruchu | 6d | 2026-05-21 A | 2026-05-28 A | 18TY85-069, 18TY85-019, 18TY85-024, 18TY85-026 | 100% |  |
| 18TY85-071 |  | Rozruch na zimno | 7d | 2026-05-28 A | 2026-06-10 A | 18TY85-070 | 100% |  |
| 18TY85-072 |  | Rozruch na gor¹co / próby ruchowe | 16d | 2026-06-11 A | 2026-07-03 A | 18TY85-071 | 100% |  |
| 18TY85-073 |  | KM: Odbiór koñcowy – Wie¿a ch³odnicza | 0d | 2026-06-29 | 2026-06-29 A | 18TY85-072 | 100% |  |
|  | ZAKU | **Zakupy** |  | 2025-04-08 | 2026-03-26 |  |  |  |
|  | DOSTAWY | **Dostawy** |  | 2025-10-01 | 2026-03-26 |  |  |  |
| 18TY85-008 |  | Produkcja u dostawcy | 108d | 2025-10-01 A | 2026-02-27 A | 18TY85-007 | 100% |  |

| ID | WBS | Task | Duration | Start | Finish | Predecessors | Complete | Total float |
| --- | --- | --- | --- | --- | --- | --- | --- | --- |
| 18TY85-009 |  | Testy FAT | 4d | 2026-03-04 A | 2026-03-11 A | 18TY85-008 | 100% |  |
| 18TY85-010 |  | Transport i dostawa na plac budowy | 12d | 2026-03-09 A | 2026-03-26 A | 18TY85-009 | 100% |  |
| 18TY85-011 |  | KM: Dostawa na budowê – Wie¿a ch³odnicza | 0d | 2026-03-24 A | 2026-03-24 | 18TY85-010 | 100% |  |
|  | ZAMÓWIENIA | **Zamówienia** |  | 2025-04-08 | 2025-10-01 |  |  |  |
| 18TY85-005 |  | Zapytanie ofertowe | 28d | 2025-04-08 A | 2025-05-20 A | 18TY85-001 SS+20d | 100% |  |
| 18TY85-006 |  | Analiza i wybór ofert | 20d | 2025-05-21 A | 2025-06-20 A | 18TY85-005 | 100% |  |
| 18TY85-007 |  | Zawarcie umowy / zamówienie | 10d | 2025-09-17 A | 2025-10-01 A | 18TY85-006, 18TY85-004 SS, 28BW90-004 FS+2d | 100% |  |
|  | 23QX91 | **23QX91 – Stacja demineralizacji** |  | 2025-02-10 | 2026-10-19 |  |  |  |
|  | BUDO | **Budowa** |  | 2025-09-08 | 2026-10-19 |  |  |  |
|  | AKPIA | **AKPiA** |  | 2026-05-21 | 2026-06-04 |  |  |  |
| 23QX91-171 |  | Monta¿ uk³adów AKPiA | 10d | 2026-05-21 A | 2026-06-04 A | 23QX91-014 SS+5d | 100% |  |
|  | ELEKTRYKA | **Elektryka** |  | 2026-05-18 | 2026-10-01 |  |  |  |
| 23QX91-074 |  | Pod³¹czenia i pomiary – trasa 10 | 9d | 2026-05-18 A | 2026-05-28 A | 23QX91-073 FF | 100% |  |
| 23QX91-098 |  | Pod³¹czenia i pomiary – trasa 14 | 10d | 2026-05-19 A | 2026-06-02 A | 23QX91-097 FF | 100% |  |
| 23QX91-170 |  | Pod³¹czenia i pomiary – trasa 26 | 9d | 2026-05-20 A | 2026-06-04 A | 23QX91-169 FF | 100% |  |
| 23QX91-121 |  | Uk³adanie kabli – trasa 18 | 12d | 2026-05-22 A | 2026-06-08 A | 23QX91-014 SS+10d | 100% |  |
| 23QX91-145 |  | Uk³adanie kabli – trasa 22 | 9d | 2026-05-22 A | 2026-06-08 A | 23QX91-014 SS+10d | 100% |  |
| 23QX91-157 |  | Uk³adanie kabli – trasa 24 | 9d | 2026-05-22 A | 2026-06-03 A | 23QX91-014 SS+10d | 100% |  |
| 23QX91-169 |  | Uk³adanie kabli – trasa 26 | 6d | 2026-05-22 A | 2026-06-01 A | 23QX91-014 SS+10d | 100% |  |
| 23QX91-037 |  | Uk³adanie kabli – trasa 04 | 15d | 2026-05-25 A | 2026-06-12 A | 23QX91-014 SS+10d | 100% |  |
| 23QX91-110 |  | Pod³¹czenia i pomiary – trasa 16 | 7d | 2026-05-25 A | 2026-06-05 A | 23QX91-109 FF | 100% |  |
| 23QX91-061 |  | Uk³adanie kabli – trasa 08 | 14d | 2026-05-26 A | 2026-06-17 A | 23QX91-014 SS+10d | 100% |  |
| 23QX91-025 |  | Uk³adanie kabli – trasa 02 | 20d | 2026-05-27 A | 2026-06-25 A | 23QX91-014 SS+10d | 100% |  |
| 23QX91-085 |  | Uk³adanie kabli – trasa 12 | 11d | 2026-05-27 A | 2026-06-11 A | 23QX91-014 SS+10d | 100% |  |
| 23QX91-097 |  | Uk³adanie kabli – trasa 14 | 6d | 2026-05-27 A | 2026-06-04 A | 23QX91-014 SS+10d | 100% |  |
| 23QX91-109 |  | Uk³adanie kabli – trasa 16 | 6d | 2026-05-27 A | 2026-06-03 A | 23QX91-014 SS+10d | 100% |  |
| 23QX91-133 |  | Uk³adanie kabli – trasa 20 | 11d | 2026-05-27 A | 2026-06-10 A | 23QX91-014 SS+10d | 100% |  |
| 23QX91-049 |  | Uk³adanie kabli – trasa 06 | 17d | 2026-05-28 A | 2026-10-01 | 23QX91-014 SS+10d | 84% | 429.9d |
| 23QX91-073 |  | Uk³adanie kabli – trasa 10 | 5d | 2026-05-28 A | 2026-06-08 A | 23QX91-014 SS+10d | 100% |  |
| 23QX91-122 |  | Pod³¹czenia i pomiary – trasa 18 | 6d | 2026-06-02 A | 2026-06-12 A | 23QX91-121 FF | 100% |  |
| 23QX91-134 |  | Pod³¹czenia i pomiary – trasa 20 | 8d | 2026-06-02 A | 2026-06-15 A | 23QX91-133 FF | 100% |  |
| 23QX91-158 |  | Pod³¹czenia i pomiary – trasa 24 | 3d | 2026-06-03 A | 2026-06-09 A | 23QX91-157 FF | 100% |  |
| 23QX91-146 |  | Pod³¹czenia i pomiary – trasa 22 | 3d | 2026-06-04 A | 2026-06-08 A | 23QX91-145 FF | 100% |  |
| 23QX91-050 |  | Pod³¹czenia i pomiary – trasa 06 | 9d | 2026-06-05 A | 2026-06-17 A | 23QX91-049 FF | 100% |  |
| 23QX91-062 |  | Pod³¹czenia i pomiary – trasa 08 | 4d | 2026-06-05 A | 2026-06-12 A | 23QX91-061 FF | 100% |  |
| 23QX91-086 |  | Pod³¹czenia i pomiary – trasa 12 | 3d | 2026-06-05 A | 2026-06-10 A | 23QX91-085 FF | 100% |  |
| 23QX91-038 |  | Pod³¹czenia i pomiary – trasa 04 | 6d | 2026-06-10 A | 2026-06-18 A | 23QX91-037 FF | 100% |  |
| 23QX91-026 |  | Pod³¹czenia i pomiary – trasa 02 | 7d | 2026-06-12 A | 2026-06-23 A | 23QX91-025 FF | 100% |  |
|  | MONTA¯ | **Monta¿** |  | 2025-11-17 | 2026-07-16 |  |  |  |
| 23QX91-013 |  | Monta¿ konstrukcji stalowych | 33d | 2025-11-17 A | 2026-01-02 A | 23QX91-012 | 100% |  |
| 23QX91-014 |  | Monta¿ urz¹dzeñ g³ównych | 40d | 2026-05-12 A | 2026-07-07 A | 23QX91-013, 23QX91-011 | 100% |  |
| 23QX91-172 |  | KM: Zakoñczenie monta¿u – Stacja demineralizacji | 0d | 2026-07-16 A | 2026-07-16 | 23QX91-163, 23QX91-168, 23QX91-170, 23QX91-171, 23QX91-014 | 100% |  |
|  | ROBOTY BUD | **Roboty budowlane** |  | 2025-09-08 | 2025-11-19 |  |  |  |
| 23QX91-012 |  | Fundamenty i roboty ziemne | 51d | 2025-09-08 A | 2025-11-19 A | 23QX91-007 | 100% |  |
|  | RUROCI¥GI | **Ruroci¹gi** |  | 2025-11-19 | 2026-10-19 |  |  |  |
|  | SEKCJA 01 | **Sekcja 01** |  | 2025-11-19 | 2026-07-13 |  |  |  |
| 23QX91-015 |  | Prefabrykacja ruroci¹gów – Sekcja 01 | 8.3d | 2025-11-19 A | 2025-11-28 A | 23QX91-012 | 100% |  |
| 23QX91-016 |  | Monta¿ ruroci¹gów – Sekcja 01 | 20.4d | 2026-05-19 A | 2026-06-16 A | 23QX91-015, 23QX91-014 SS+7d | 100% |  |
| 23QX91-017 |  | Próba ciœnieniowa – Sekcja 01 | 4d | 2026-06-19 A | 2026-06-29 A | 23QX91-016 | 100% |  |
| 23QX91-018 |  | Izolacje – Sekcja 01 | 10d | 2026-06-24 A | 2026-07-07 A | 23QX91-017 | 100% |  |
| 23QX91-019 |  | Malowanie i oznakowanie – Sekcja 01 | 6d | 2026-07-01 A | 2026-07-13 A | 23QX91-018 FF+2d | 100% |  |
|  | SEKCJA 02 | **Sekcja 02** |  | 2025-11-26 | 2026-10-05 |  |  |  |
| 23QX91-020 |  | Prefabrykacja ruroci¹gów – Sekcja 02 | 6.7d | 2025-11-26 A | 2026-10-05 | 23QX91-012, 23QX91-015 SS+5d | 37% | 379.7d |
| 23QX91-021 |  | Monta¿ ruroci¹gów – Sekcja 02 | 9.6d | 2026-05-15 A | 2026-06-01 A | 23QX91-020, 23QX91-014 SS+1d | 100% |  |
| 23QX91-023 |  | Izolacje – Sekcja 02 | 5d | 2026-05-27 A | 2026-06-02 A | 23QX91-022 | 100% |  |
| 23QX91-022 |  | Próba ciœnieniowa – Sekcja 02 | 2d | 2026-05-28 A | 2026-06-01 A | 23QX91-021 | 100% |  |
| 23QX91-024 |  | Malowanie i oznakowanie – Sekcja 02 | 6d | 2026-05-29 A | 2026-06-08 A | 23QX91-023 FF+2d | 100% |  |
|  | SEKCJA 03 | **Sekcja 03** |  | 2025-12-03 | 2026-07-06 |  |  |  |
|  | PODSEKCJA | **Podsekcja 03.A** |  | 2025-12-03 | 2026-07-06 |  |  |  |
| 23QX91-027 |  | Prefabrykacja ruroci¹gów – Sekcja 03 | 10.3d | 2025-12-03 A | 2025-12-18 A | 23QX91-012, 23QX91-020 SS+5d | 100% |  |
| 23QX91-028 |  | Monta¿ ruroci¹gów – Sekcja 03 | 20.6d | 2026-05-18 A | 2026-06-16 A | 23QX91-027, 23QX91-014 SS+6d | 100% |  |
| 23QX91-029 |  | Próba ciœnieniowa – Sekcja 03 | 4d | 2026-06-15 A | 2026-06-22 A | 23QX91-028 | 100% |  |
| 23QX91-030 |  | Izolacje – Sekcja 03 | 7d | 2026-06-23 A | 2026-07-06 A | 23QX91-029 | 100% |  |
| 23QX91-031 |  | Malowanie i oznakowanie – Sekcja 03 | 4d | 2026-06-26 A | 2026-07-02 A | 23QX91-030 FF+2d | 100% |  |
|  | SEKCJA 04 | **Sekcja 04** |  | 2025-12-12 | 2026-07-02 |  |  |  |
| 23QX91-032 |  | Prefabrykacja ruroci¹gów – Sekcja 04 | 4.1d | 2025-12-12 A | 2025-12-17 A | 23QX91-012, 23QX91-027 SS+5d | 100% |  |
| 23QX91-033 |  | Monta¿ ruroci¹gów – Sekcja 04 | 16.2d | 2026-05-21 A | 2026-06-12 A | 23QX91-032, 23QX91-014 SS+9d | 100% |  |
| 23QX91-034 |  | Próba ciœnieniowa – Sekcja 04 | 6d | 2026-06-18 A | 2026-06-25 A | 23QX91-033 | 100% |  |
| 23QX91-035 |  | Izolacje – Sekcja 04 | 4d | 2026-06-24 A | 2026-06-29 A | 23QX91-034 | 100% |  |
| 23QX91-036 |  | Malowanie i oznakowanie – Sekcja 04 | 4d | 2026-06-25 A | 2026-07-02 A | 23QX91-035 FF+2d | 100% |  |

| ID | WBS | Task | Duration | Start | Finish | Predecessors | Complete | Total float |
| --- | --- | --- | --- | --- | --- | --- | --- | --- |
|  | SEKCJA 05 | **Sekcja 05** |  | 2025-12-16 | 2026-10-02 |  |  |  |
| 23QX91-039 |  | Prefabrykacja ruroci¹gów – Sekcja 05 | 14.3d | 2025-12-16 A | 2026-01-06 A | 23QX91-012, 23QX91-032 SS+5d | 100% |  |
| 23QX91-040 |  | Monta¿ ruroci¹gów – Sekcja 05 | 13.2d | 2026-05-18 A | 2026-06-08 A | 23QX91-039, 23QX91-014 SS+3d | 100% |  |
| 23QX91-041 |  | Próba ciœnieniowa – Sekcja 05 | 4d | 2026-06-02 A | 2026-10-02 | 23QX91-040 | 22% | 426.7d |
| 23QX91-042 |  | Izolacje – Sekcja 05 | 11d | 2026-06-10 A | 2026-06-29 A | 23QX91-041 | 100% |  |
| 23QX91-043 |  | Malowanie i oznakowanie – Sekcja 05 | 8d | 2026-06-16 A | 2026-06-25 A | 23QX91-042 FF+2d | 100% |  |
|  | SEKCJA 06 | **Sekcja 06** |  | 2025-12-25 | 2026-06-23 |  |  |  |
|  | PODSEKCJA | **Podsekcja 06.A** |  | 2025-12-25 | 2026-06-23 |  |  |  |
| 23QX91-044 |  | Prefabrykacja ruroci¹gów – Sekcja 06 | 5.6d | 2025-12-25 A | 2025-12-31 A | 23QX91-012, 23QX91-039 SS+5d | 100% |  |
| 23QX91-045 |  | Monta¿ ruroci¹gów – Sekcja 06 | 16d | 2026-05-19 A | 2026-06-12 A | 23QX91-044, 23QX91-014 SS+4d | 100% |  |
| 23QX91-046 |  | Próba ciœnieniowa – Sekcja 06 | 2d | 2026-06-11 A | 2026-06-15 A | 23QX91-045 | 100% |  |
| 23QX91-047 |  | Izolacje – Sekcja 06 | 5d | 2026-06-11 A | 2026-06-17 A | 23QX91-046 | 100% |  |
| 23QX91-048 |  | Malowanie i oznakowanie – Sekcja 06 | 2d | 2026-06-22 A | 2026-06-23 A | 23QX91-047 FF+2d | 100% |  |
|  | SEKCJA 07 | **Sekcja 07** |  | 2025-12-31 | 2026-07-01 |  |  |  |
| 23QX91-051 |  | Prefabrykacja ruroci¹gów – Sekcja 07 | 14d | 2025-12-31 A | 2026-01-22 A | 23QX91-012, 23QX91-044 SS+5d | 100% |  |
| 23QX91-052 |  | Monta¿ ruroci¹gów – Sekcja 07 | 22.5d | 2026-05-18 A | 2026-06-16 A | 23QX91-051, 23QX91-014 SS+5d | 100% |  |
| 23QX91-053 |  | Próba ciœnieniowa – Sekcja 07 | 4d | 2026-06-16 A | 2026-06-22 A | 23QX91-052 | 100% |  |
| 23QX91-055 |  | Malowanie i oznakowanie – Sekcja 07 | 6d | 2026-06-23 A | 2026-07-01 A | 23QX91-054 FF+2d | 100% |  |
| 23QX91-054 |  | Izolacje – Sekcja 07 | 3d | 2026-06-24 A | 2026-06-30 A | 23QX91-053 | 100% |  |
|  | SEKCJA 08 | **Sekcja 08** |  | 2026-01-07 | 2026-07-09 |  |  |  |
| 23QX91-056 |  | Prefabrykacja ruroci¹gów – Sekcja 08 | 4.1d | 2026-01-07 A | 2026-01-12 A | 23QX91-012, 23QX91-051 SS+5d | 100% |  |
| 23QX91-057 |  | Monta¿ ruroci¹gów – Sekcja 08 | 16.4d | 2026-05-15 A | 2026-06-05 A | 23QX91-056, 23QX91-014 SS+5d | 100% |  |
| 23QX91-058 |  | Próba ciœnieniowa – Sekcja 08 | 5d | 2026-06-11 A | 2026-06-17 A | 23QX91-057 | 100% |  |
| 23QX91-059 |  | Izolacje – Sekcja 08 | 12d | 2026-06-16 A | 2026-07-01 A | 23QX91-058 | 100% |  |
| 23QX91-060 |  | Malowanie i oznakowanie – Sekcja 08 | 7d | 2026-06-30 A | 2026-07-09 A | 23QX91-059 FF+2d | 100% |  |
|  | SEKCJA 09 | **Sekcja 09** |  | 2026-01-14 | 2026-07-20 |  |  |  |
|  | PODSEKCJA | **Podsekcja 09.A** |  | 2026-01-14 | 2026-07-20 |  |  |  |
| 23QX91-063 |  | Prefabrykacja ruroci¹gów – Sekcja 09 | 9.2d | 2026-01-14 A | 2026-01-29 A | 23QX91-012, 23QX91-056 SS+5d | 100% |  |
| 23QX91-064 |  | Monta¿ ruroci¹gów – Sekcja 09 | 24.3d | 2026-05-27 A | 2026-07-02 A | 23QX91-063, 23QX91-014 SS+10d | 100% |  |
| 23QX91-065 |  | Próba ciœnieniowa – Sekcja 09 | 5d | 2026-06-30 A | 2026-07-07 A | 23QX91-064 | 100% |  |
| 23QX91-066 |  | Izolacje – Sekcja 09 | 7d | 2026-07-06 A | 2026-07-16 A | 23QX91-065 | 100% |  |
| 23QX91-067 |  | Malowanie i oznakowanie – Sekcja 09 | 8d | 2026-07-06 A | 2026-07-20 A | 23QX91-066 FF+2d | 100% |  |
|  | SEKCJA 10 | **Sekcja 10** |  | 2026-01-19 | 2026-06-24 |  |  |  |
| 23QX91-068 |  | Prefabrykacja ruroci¹gów – Sekcja 10 | 11.5d | 2026-01-19 A | 2026-02-05 A | 23QX91-012, 23QX91-063 SS+5d | 100% |  |
| 23QX91-069 |  | Monta¿ ruroci¹gów – Sekcja 10 | 9d | 2026-05-20 A | 2026-06-01 A | 23QX91-068, 23QX91-014 SS+7d | 100% |  |
| 23QX91-070 |  | Próba ciœnieniowa – Sekcja 10 | 3d | 2026-06-03 A | 2026-06-09 A | 23QX91-069 | 100% |  |
| 23QX91-071 |  | Izolacje – Sekcja 10 | 10d | 2026-06-04 A | 2026-06-22 A | 23QX91-070 | 100% |  |
| 23QX91-072 |  | Malowanie i oznakowanie – Sekcja 10 | 7d | 2026-06-12 A | 2026-06-24 A | 23QX91-071 FF+2d | 100% |  |
|  | SEKCJA 11 | **Sekcja 11** |  | 2026-01-26 | 2026-06-12 |  |  |  |
| 23QX91-075 |  | Prefabrykacja ruroci¹gów – Sekcja 11 | 3.3d | 2026-01-26 A | 2026-02-02 A | 23QX91-012, 23QX91-068 SS+5d | 100% |  |
| 23QX91-076 |  | Monta¿ ruroci¹gów – Sekcja 11 | 6.4d | 2026-05-27 A | 2026-06-04 A | 23QX91-075, 23QX91-014 SS+10d | 100% |  |
| 23QX91-077 |  | Próba ciœnieniowa – Sekcja 11 | 2d | 2026-06-01 A | 2026-06-04 A | 23QX91-076 | 100% |  |
| 23QX91-079 |  | Malowanie i oznakowanie – Sekcja 11 | 8d | 2026-06-02 A | 2026-06-12 A | 23QX91-078 FF+2d | 100% |  |
| 23QX91-078 |  | Izolacje – Sekcja 11 | 4d | 2026-06-08 A | 2026-06-11 A | 23QX91-077 | 100% |  |
|  | SEKCJA 12 | **Sekcja 12** |  | 2026-02-02 | 2026-06-29 |  |  |  |
|  | PODSEKCJA | **Podsekcja 12.A** |  | 2026-02-02 | 2026-06-29 |  |  |  |
| 23QX91-080 |  | Prefabrykacja ruroci¹gów – Sekcja 12 | 9.4d | 2026-02-02 A | 2026-02-13 A | 23QX91-012, 23QX91-075 SS+5d | 100% |  |
| 23QX91-081 |  | Monta¿ ruroci¹gów – Sekcja 12 | 19.6d | 2026-05-11 A | 2026-06-09 A | 23QX91-080, 23QX91-014 SS | 100% |  |
| 23QX91-082 |  | Próba ciœnieniowa – Sekcja 12 | 5d | 2026-06-04 A | 2026-06-11 A | 23QX91-081 | 100% |  |
| 23QX91-083 |  | Izolacje – Sekcja 12 | 7d | 2026-06-17 A | 2026-06-25 A | 23QX91-082 | 100% |  |
| 23QX91-084 |  | Malowanie i oznakowanie – Sekcja 12 | 6d | 2026-06-22 A | 2026-06-29 A | 23QX91-083 FF+2d | 100% |  |
|  | SEKCJA 13 | **Sekcja 13** |  | 2026-02-12 | 2026-06-25 |  |  |  |
| 23QX91-087 |  | Prefabrykacja ruroci¹gów – Sekcja 13 | 8.1d | 2026-02-12 A | 2026-02-26 A | 23QX91-012, 23QX91-080 SS+5d | 100% |  |
| 23QX91-088 |  | Monta¿ ruroci¹gów – Sekcja 13 | 18.7d | 2026-05-12 A | 2026-06-05 A | 23QX91-087, 23QX91-014 SS | 100% |  |
| 23QX91-089 |  | Próba ciœnieniowa – Sekcja 13 | 3d | 2026-06-05 A | 2026-06-12 A | 23QX91-088 | 100% |  |
| 23QX91-090 |  | Izolacje – Sekcja 13 | 9d | 2026-06-10 A | 2026-06-25 A | 23QX91-089 | 100% |  |
| 23QX91-091 |  | Malowanie i oznakowanie – Sekcja 13 | 8d | 2026-06-11 A | 2026-06-23 A | 23QX91-090 FF+2d | 100% |  |
|  | SEKCJA 14 | **Sekcja 14** |  | 2026-02-20 | 2026-06-12 |  |  |  |
| 23QX91-092 |  | Prefabrykacja ruroci¹gów – Sekcja 14 | 14.5d | 2026-02-20 A | 2026-03-12 A | 23QX91-012, 23QX91-087 SS+5d | 100% |  |
| 23QX91-093 |  | Monta¿ ruroci¹gów – Sekcja 14 | 9.8d | 2026-05-19 A | 2026-05-29 A | 23QX91-092, 23QX91-014 SS+5d | 100% |  |
| 23QX91-094 |  | Próba ciœnieniowa – Sekcja 14 | 2d | 2026-05-28 A | 2026-06-03 A | 23QX91-093 | 100% |  |
| 23QX91-095 |  | Izolacje – Sekcja 14 | 7d | 2026-06-01 A | 2026-06-12 A | 23QX91-094 | 100% |  |
| 23QX91-096 |  | Malowanie i oznakowanie – Sekcja 14 | 3d | 2026-06-10 A | 2026-06-12 A | 23QX91-095 FF+2d | 100% |  |
|  | SEKCJA 15 | **Sekcja 15** |  | 2026-02-27 | 2026-10-01 |  |  |  |
|  | PODSEKCJA | **Podsekcja 15.A** |  | 2026-02-27 | 2026-10-01 |  |  |  |
| 23QX91-099 |  | Prefabrykacja ruroci¹gów – Sekcja 15 | 3.1d | 2026-02-27 A | 2026-03-04 A | 23QX91-012, 23QX91-092 SS+5d | 100% |  |
| 23QX91-100 |  | Monta¿ ruroci¹gów – Sekcja 15 | 15.8d | 2026-05-15 A | 2026-06-04 A | 23QX91-099, 23QX91-014 SS+3d | 100% |  |
| 23QX91-101 |  | Próba ciœnieniowa – Sekcja 15 | 5d | 2026-06-09 A | 2026-06-17 A | 23QX91-100 | 100% |  |
| 23QX91-102 |  | Izolacje – Sekcja 15 | 7d | 2026-06-11 A | 2026-06-23 A | 23QX91-101 | 100% |  |
| 23QX91-103 |  | Malowanie i oznakowanie – Sekcja 15 | 2d | 2026-09-30 | 2026-10-01 | 23QX91-102 FF+2d |  | 355.9d |

| ID | WBS | Task | Duration | Start | Finish | Predecessors | Complete | Total float |
| --- | --- | --- | --- | --- | --- | --- | --- | --- |
|  | SEKCJA 16 | **Sekcja 16** |  | 2026-03-05 | 2026-10-19 |  |  |  |
| 23QX91-104 |  | Prefabrykacja ruroci¹gów – Sekcja 16 | 13.5d | 2026-03-05 A | 2026-03-25 A | 23QX91-012, 23QX91-099 SS+5d | 100% |  |
| 23QX91-105 |  | Monta¿ ruroci¹gów – Sekcja 16 | 24.5d | 2026-05-25 A | 2026-10-19 | 23QX91-104, 23QX91-014 SS+9d | 40% | 412.4d |
| 23QX91-106 |  | Próba ciœnieniowa – Sekcja 16 | 3d | 2026-06-29 A | 2026-09-30 | 23QX91-105 | 50% | 411.4d |
| 23QX91-107 |  | Izolacje – Sekcja 16 | 8d | 2026-07-01 A | 2026-07-10 A | 23QX91-106 | 100% |  |
| 23QX91-108 |  | Malowanie i oznakowanie – Sekcja 16 | 7d | 2026-07-06 A | 2026-07-16 A | 23QX91-107 FF+2d | 100% |  |
|  | SEKCJA 17 | **Sekcja 17** |  | 2026-03-12 | 2026-07-03 |  |  |  |
| 23QX91-111 |  | Prefabrykacja ruroci¹gów – Sekcja 17 | 12.5d | 2026-03-12 A | 2026-03-27 A | 23QX91-012, 23QX91-104 SS+5d | 100% |  |
| 23QX91-112 |  | Monta¿ ruroci¹gów – Sekcja 17 | 21d | 2026-05-15 A | 2026-06-12 A | 23QX91-111, 23QX91-014 SS+5d | 100% |  |
| 23QX91-113 |  | Próba ciœnieniowa – Sekcja 17 | 6d | 2026-06-16 A | 2026-06-26 A | 23QX91-112 | 100% |  |
| 23QX91-114 |  | Izolacje – Sekcja 17 | 5d | 2026-06-23 A | 2026-06-29 A | 23QX91-113 | 100% |  |
| 23QX91-115 |  | Malowanie i oznakowanie – Sekcja 17 | 7d | 2026-06-24 A | 2026-07-03 A | 23QX91-114 FF+2d | 100% |  |
|  | SEKCJA 18 | **Sekcja 18** |  | 2026-03-19 | 2026-06-11 |  |  |  |
|  | PODSEKCJA | **Podsekcja 18.A** |  | 2026-03-19 | 2026-06-11 |  |  |  |
| 23QX91-116 |  | Prefabrykacja ruroci¹gów – Sekcja 18 | 3.4d | 2026-03-19 A | 2026-03-23 A | 23QX91-012, 23QX91-111 SS+5d | 100% |  |
| 23QX91-117 |  | Monta¿ ruroci¹gów – Sekcja 18 | 6.9d | 2026-05-08 A | 2026-05-15 A | 23QX91-116, 23QX91-014 SS | 100% |  |
| 23QX91-118 |  | Próba ciœnieniowa – Sekcja 18 | 5d | 2026-05-20 A | 2026-05-29 A | 23QX91-117 | 100% |  |
| 23QX91-119 |  | Izolacje – Sekcja 18 | 10d | 2026-05-27 A | 2026-06-09 A | 23QX91-118 | 100% |  |
| 23QX91-120 |  | Malowanie i oznakowanie – Sekcja 18 | 7d | 2026-06-03 A | 2026-06-11 A | 23QX91-119 FF+2d | 100% |  |
|  | SEKCJA 19 | **Sekcja 19** |  | 2026-03-27 | 2026-10-13 |  |  |  |
| 23QX91-123 |  | Prefabrykacja ruroci¹gów – Sekcja 19 | 13d | 2026-03-27 A | 2026-10-13 | 23QX91-012, 23QX91-116 SS+5d | 17% | 377.7d |
| 23QX91-124 |  | Monta¿ ruroci¹gów – Sekcja 19 | 10.3d | 2026-05-14 A | 2026-05-27 A | 23QX91-123, 23QX91-014 SS+4d | 100% |  |
| 23QX91-125 |  | Próba ciœnieniowa – Sekcja 19 | 2d | 2026-06-02 A | 2026-06-05 A | 23QX91-124 | 100% |  |
| 23QX91-126 |  | Izolacje – Sekcja 19 | 10d | 2026-06-05 A | 2026-06-19 A | 23QX91-125 | 100% |  |
| 23QX91-127 |  | Malowanie i oznakowanie – Sekcja 19 | 3d | 2026-06-15 A | 2026-06-18 A | 23QX91-126 FF+2d | 100% |  |
|  | SEKCJA 20 | **Sekcja 20** |  | 2026-04-01 | 2026-07-10 |  |  |  |
| 23QX91-128 |  | Prefabrykacja ruroci¹gów – Sekcja 20 | 8.2d | 2026-04-01 A | 2026-04-14 A | 23QX91-012, 23QX91-123 SS+5d | 100% |  |
| 23QX91-129 |  | Monta¿ ruroci¹gów – Sekcja 20 | 24.6d | 2026-05-19 A | 2026-06-23 A | 23QX91-128, 23QX91-014 SS+6d | 100% |  |
| 23QX91-130 |  | Próba ciœnieniowa – Sekcja 20 | 5d | 2026-06-25 A | 2026-07-06 A | 23QX91-129 | 100% |  |
| 23QX91-131 |  | Izolacje – Sekcja 20 | 4d | 2026-07-02 A | 2026-07-09 A | 23QX91-130 | 100% |  |
| 23QX91-132 |  | Malowanie i oznakowanie – Sekcja 20 | 2d | 2026-07-08 A | 2026-07-10 A | 23QX91-131 FF+2d | 100% |  |
|  | SEKCJA 21 | **Sekcja 21** |  | 2026-04-07 | 2026-07-01 |  |  |  |
|  | PODSEKCJA | **Podsekcja 21.A** |  | 2026-04-07 | 2026-07-01 |  |  |  |
| 23QX91-135 |  | Prefabrykacja ruroci¹gów – Sekcja 21 | 8.4d | 2026-04-07 A | 2026-04-16 A | 23QX91-012, 23QX91-128 SS+5d | 100% |  |
| 23QX91-136 |  | Monta¿ ruroci¹gów – Sekcja 21 | 10.1d | 2026-05-26 A | 2026-06-10 A | 23QX91-135, 23QX91-014 SS+10d | 100% |  |
| 23QX91-137 |  | Próba ciœnieniowa – Sekcja 21 | 4d | 2026-06-08 A | 2026-06-12 A | 23QX91-136 | 100% |  |
| 23QX91-138 |  | Izolacje – Sekcja 21 | 8d | 2026-06-17 A | 2026-07-01 A | 23QX91-137 | 100% |  |
| 23QX91-139 |  | Malowanie i oznakowanie – Sekcja 21 | 2d | 2026-06-25 A | 2026-06-30 A | 23QX91-138 FF+2d | 100% |  |
|  | SEKCJA 22 | **Sekcja 22** |  | 2026-04-15 | 2026-07-08 |  |  |  |
| 23QX91-140 |  | Prefabrykacja ruroci¹gów – Sekcja 22 | 13.7d | 2026-04-15 A | 2026-05-04 A | 23QX91-012, 23QX91-135 SS+5d | 100% |  |
| 23QX91-141 |  | Monta¿ ruroci¹gów – Sekcja 22 | 19.6d | 2026-05-21 A | 2026-06-19 A | 23QX91-140, 23QX91-014 SS+7d | 100% |  |
| 23QX91-142 |  | Próba ciœnieniowa – Sekcja 22 | 3d | 2026-06-16 A | 2026-06-23 A | 23QX91-141 | 100% |  |
| 23QX91-143 |  | Izolacje – Sekcja 22 | 8d | 2026-06-23 A | 2026-07-02 A | 23QX91-142 | 100% |  |
| 23QX91-144 |  | Malowanie i oznakowanie – Sekcja 22 | 5d | 2026-06-30 A | 2026-07-08 A | 23QX91-143 FF+2d | 100% |  |
|  | SEKCJA 23 | **Sekcja 23** |  | 2026-04-24 | 2026-09-30 |  |  |  |
| 23QX91-147 |  | Prefabrykacja ruroci¹gów – Sekcja 23 | 13.4d | 2026-04-24 A | 2026-05-15 A | 23QX91-012, 23QX91-140 SS+5d | 100% |  |
| 23QX91-148 |  | Monta¿ ruroci¹gów – Sekcja 23 | 14.6d | 2026-05-14 A | 2026-06-03 A | 23QX91-147, 23QX91-014 SS+2d | 100% |  |
| 23QX91-149 |  | Próba ciœnieniowa – Sekcja 23 | 6d | 2026-06-02 A | 2026-06-12 A | 23QX91-148 | 100% |  |
| 23QX91-150 |  | Izolacje – Sekcja 23 | 10d | 2026-06-15 A | 2026-06-30 A | 23QX91-149 | 100% |  |
| 23QX91-151 |  | Malowanie i oznakowanie – Sekcja 23 | 6d | 2026-06-23 A | 2026-09-30 | 23QX91-150 FF+2d | 75% | 422.3d |
|  | SEKCJA 24 | **Sekcja 24** |  | 2026-04-28 | 2026-10-01 |  |  |  |
|  | PODSEKCJA | **Podsekcja 24.A** |  | 2026-04-28 | 2026-10-01 |  |  |  |
| 23QX91-152 |  | Prefabrykacja ruroci¹gów – Sekcja 24 | 5d | 2026-04-28 A | 2026-05-04 A | 23QX91-012, 23QX91-147 SS+5d | 100% |  |
| 23QX91-153 |  | Monta¿ ruroci¹gów – Sekcja 24 | 22.8d | 2026-05-14 A | 2026-06-12 A | 23QX91-152, 23QX91-014 SS+2d | 100% |  |
| 23QX91-154 |  | Próba ciœnieniowa – Sekcja 24 | 6d | 2026-06-12 A | 2026-06-19 A | 23QX91-153 | 100% |  |
| 23QX91-155 |  | Izolacje – Sekcja 24 | 5d | 2026-06-24 A | 2026-07-02 A | 23QX91-154 | 100% |  |
| 23QX91-156 |  | Malowanie i oznakowanie – Sekcja 24 | 6d | 2026-06-29 A | 2026-10-01 | 23QX91-155 FF+2d | 53% | 418.1d |
|  | SEKCJA 25 | **Sekcja 25** |  | 2026-05-07 | 2026-07-17 |  |  |  |
| 23QX91-159 |  | Prefabrykacja ruroci¹gów – Sekcja 25 | 12.5d | 2026-05-07 A | 2026-05-27 A | 23QX91-012, 23QX91-152 SS+5d | 100% |  |
| 23QX91-160 |  | Monta¿ ruroci¹gów – Sekcja 25 | 23.7d | 2026-05-22 A | 2026-06-26 A | 23QX91-159, 23QX91-014 SS+3d | 100% |  |
| 23QX91-161 |  | Próba ciœnieniowa – Sekcja 25 | 2d | 2026-06-26 A | 2026-07-01 A | 23QX91-160 | 100% |  |
| 23QX91-162 |  | Izolacje – Sekcja 25 | 10d | 2026-07-01 A | 2026-07-17 A | 23QX91-161 | 100% |  |
| 23QX91-163 |  | Malowanie i oznakowanie – Sekcja 25 | 3d | 2026-07-10 A | 2026-07-17 A | 23QX91-162 FF+2d | 100% |  |
|  | SEKCJA 26 | **Sekcja 26** |  | 2026-05-14 | 2026-09-30 |  |  |  |
| 23QX91-164 |  | Prefabrykacja ruroci¹gów – Sekcja 26 | 6.4d | 2026-05-14 A | 2026-05-22 A | 23QX91-012, 23QX91-159 SS+5d | 100% |  |
| 23QX91-165 |  | Monta¿ ruroci¹gów – Sekcja 26 | 20.6d | 2026-05-22 A | 2026-06-19 A | 23QX91-164, 23QX91-014 SS+5d | 100% |  |
| 23QX91-166 |  | Próba ciœnieniowa – Sekcja 26 | 5d | 2026-06-24 A | 2026-09-30 | 23QX91-165 | 80% | 376.9d |
| 23QX91-167 |  | Izolacje – Sekcja 26 | 11d | 2026-06-30 A | 2026-07-16 A | 23QX91-166 | 100% |  |
| 23QX91-168 |  | Malowanie i oznakowanie – Sekcja 26 | 6d | 2026-07-07 A | 2026-07-16 A | 23QX91-167 FF+2d | 100% |  |
|  | PROJ | **Projektowanie** |  | 2025-02-10 | 2026-10-12 |  |  |  |

| ID | WBS | Task | Duration | Start | Finish | Predecessors | Complete | Total float |
| --- | --- | --- | --- | --- | --- | --- | --- | --- |
|  | DOKUMENTAC | **Dokumentacja** |  | 2025-02-10 | 2026-10-12 |  |  |  |
| 23QX91-001 |  | Projekt wykonawczy – Stacja demineralizacji | 63d | 2025-02-10 A | 2025-05-12 A |  | 100% |  |
| 23QX91-002 |  | Uzgodnienie dokumentacji z Inwestorem | 18d | 2025-05-07 A | 2026-10-12 | 23QX91-001 | 48% | 436.7d |
| 23QX91-003 |  | Zatwierdzenie dokumentacji do realizacji | 6d | 2025-05-30 A | 2025-06-06 A | 23QX91-002 | 100% |  |
| 23QX91-004 |  | KM: Dokumentacja zatwierdzona – Stacja demineralizacji | 0d | 2025-06-06 A | 2025-06-06 | 23QX91-003 | 100% |  |
|  | ROZR | **Rozruch** |  | 2026-07-16 | 2026-08-13 |  |  |  |
|  | ROZRUCH | **Rozruch** |  | 2026-07-16 | 2026-08-13 |  |  |  |
| 23QX91-173 |  | Przegl¹d gotowoœci do rozruchu | 5d | 2026-07-16 A | 2026-07-24 A | 23QX91-172, 23QX91-019, 23QX91-024, 23QX91-026 | 100% |  |
| 23QX91-174 |  | Rozruch na zimno | 5d | 2026-07-22 A | 2026-07-28 A | 23QX91-173 | 100% |  |
| 23QX91-175 |  | Rozruch na gor¹co / próby ruchowe | 13d | 2026-07-27 A | 2026-08-13 A | 23QX91-174 | 100% |  |
| 23QX91-176 |  | KM: Odbiór koñcowy – Stacja demineralizacji | 0d | 2026-08-12 | 2026-08-12 A | 23QX91-175 | 100% |  |
|  | ZAKU | **Zakupy** |  | 2025-03-07 | 2026-10-16 |  |  |  |
|  | DOSTAWY | **Dostawy** |  | 2025-09-08 | 2026-10-16 |  |  |  |
| 23QX91-008 |  | Produkcja u dostawcy | 146d | 2025-09-08 A | 2026-03-30 A | 23QX91-007 | 100% |  |
| 23QX91-009 |  | Testy FAT | 10d | 2026-04-02 A | 2026-04-15 A | 23QX91-008 | 100% |  |
| 23QX91-010 |  | Transport i dostawa na plac budowy | 19d | 2026-04-15 A | 2026-10-16 | 23QX91-009 | 31% | 382.3d |
| 23QX91-011 |  | KM: Dostawa na budowê – Stacja demineralizacji | 0d | 2026-05-14 A | 2026-05-14 | 23QX91-010 | 100% |  |
|  | ZAMÓWIENIA | **Zamówienia** |  | 2025-03-07 | 2025-09-11 |  |  |  |
| 23QX91-005 |  | Zapytanie ofertowe | 23d | 2025-03-07 A | 2025-04-10 A | 23QX91-001 SS+20d | 100% |  |
| 23QX91-006 |  | Analiza i wybór ofert | 16d | 2025-04-07 A | 2025-05-01 A | 23QX91-005 | 100% |  |
| 23QX91-007 |  | Zawarcie umowy / zamówienie | 8d | 2025-08-29 A | 2025-09-11 A | 23QX91-006, 23QX91-004 SS, 28BP20-004 SS+15d, 18TY85-004 FS+3d | 100% |  |
|  | 28BP20 | **28BP20 – Pompy wody ch³odz¹cej** |  | 2025-01-16 | 2026-10-02 |  |  |  |
|  | BUDO | **Budowa** |  | 2025-10-30 | 2026-10-02 |  |  |  |
|  | AKPIA | **AKPiA** |  | 2026-04-09 | 2026-05-13 |  |  |  |
| 28BP20-075 |  | Monta¿ uk³adów AKPiA | 23d | 2026-04-09 A | 2026-05-13 A | 28BP20-014 SS+5d | 100% |  |
|  | ELEKTRYKA | **Elektryka** |  | 2026-04-10 | 2026-10-02 |  |  |  |
| 28BP20-062 |  | Pod³¹czenia i pomiary – trasa 08 | 7d | 2026-04-10 A | 2026-04-21 A | 28BP20-061 FF | 100% |  |
| 28BP20-061 |  | Uk³adanie kabli – trasa 08 | 4d | 2026-04-16 A | 2026-10-02 | 28BP20-014 SS+10d | 12% | 472.9d |
| 28BP20-038 |  | Pod³¹czenia i pomiary – trasa 04 | 7d | 2026-04-17 A | 2026-04-30 A | 28BP20-037 FF | 100% |  |
| 28BP20-073 |  | Uk³adanie kabli – trasa 10 | 10d | 2026-04-17 A | 2026-05-01 A | 28BP20-014 SS+10d | 100% |  |
| 28BP20-037 |  | Uk³adanie kabli – trasa 04 | 6d | 2026-04-20 A | 2026-04-27 A | 28BP20-014 SS+10d | 100% |  |
| 28BP20-049 |  | Uk³adanie kabli – trasa 06 | 16d | 2026-04-20 A | 2026-05-14 A | 28BP20-014 SS+10d | 100% |  |
| 28BP20-074 |  | Pod³¹czenia i pomiary – trasa 10 | 7d | 2026-04-20 A | 2026-04-29 A | 28BP20-073 FF | 100% |  |
| 28BP20-025 |  | Uk³adanie kabli – trasa 02 | 15d | 2026-04-21 A | 2026-05-13 A | 28BP20-014 SS+10d | 100% |  |
| 28BP20-026 |  | Pod³¹czenia i pomiary – trasa 02 | 4d | 2026-04-30 A | 2026-05-06 A | 28BP20-025 FF | 100% |  |
| 28BP20-050 |  | Pod³¹czenia i pomiary – trasa 06 | 6d | 2026-04-30 A | 2026-05-08 A | 28BP20-049 FF | 100% |  |
|  | MONTA¯ | **Monta¿** |  | 2026-01-07 | 2026-06-04 |  |  |  |
| 28BP20-013 |  | Monta¿ konstrukcji stalowych | 46d | 2026-01-07 A | 2026-03-12 A | 28BP20-012 | 100% |  |
| 28BP20-014 |  | Monta¿ urz¹dzeñ g³ównych | 30d | 2026-04-06 A | 2026-05-20 A | 28BP20-013, 28BP20-011 | 100% |  |
| 28BP20-076 |  | KM: Zakoñczenie monta¿u – Pompy wody ch³odz¹cej | 0d | 2026-06-04 A | 2026-06-04 | 28BP20-067, 28BP20-072, 28BP20-074, 28BP20-075, 28BP20-014 | 100% |  |
|  | ROBOTY BUD | **Roboty budowlane** |  | 2025-10-30 | 2026-01-08 |  |  |  |
| 28BP20-012 |  | Fundamenty i roboty ziemne | 51d | 2025-10-30 A | 2026-01-08 A | 28BP20-007 FS+15d | 100% |  |
|  | RUROCI¥GI | **Ruroci¹gi** |  | 2026-01-07 | 2026-10-02 |  |  |  |
|  | SEKCJA 01 | **Sekcja 01** |  | 2026-01-07 | 2026-05-18 |  |  |  |
| 28BP20-015 |  | Prefabrykacja ruroci¹gów – Sekcja 01 | 6.2d | 2026-01-07 A | 2026-01-16 A | 28BP20-012 | 100% |  |
| 28BP20-016 |  | Monta¿ ruroci¹gów – Sekcja 01 | 13.7d | 2026-04-14 A | 2026-05-05 A | 28BP20-015, 28BP20-014 SS+7d | 100% |  |
| 28BP20-017 |  | Próba ciœnieniowa – Sekcja 01 | 3d | 2026-04-30 A | 2026-05-07 A | 28BP20-016 | 100% |  |
| 28BP20-018 |  | Izolacje – Sekcja 01 | 6d | 2026-05-05 A | 2026-05-15 A | 28BP20-017 | 100% |  |
| 28BP20-019 |  | Malowanie i oznakowanie – Sekcja 01 | 7d | 2026-05-08 A | 2026-05-18 A | 28BP20-018 FF+2d | 100% |  |
|  | SEKCJA 02 | **Sekcja 02** |  | 2026-01-15 | 2026-05-19 |  |  |  |
| 28BP20-020 |  | Prefabrykacja ruroci¹gów – Sekcja 02 | 9.9d | 2026-01-15 A | 2026-01-28 A | 28BP20-012, 28BP20-015 SS+5d | 100% |  |
| 28BP20-021 |  | Monta¿ ruroci¹gów – Sekcja 02 | 16.6d | 2026-04-09 A | 2026-05-05 A | 28BP20-020, 28BP20-014 SS+2d | 100% |  |
| 28BP20-022 |  | Próba ciœnieniowa – Sekcja 02 | 3d | 2026-04-27 A | 2026-04-30 A | 28BP20-021 | 100% |  |
| 28BP20-023 |  | Izolacje – Sekcja 02 | 9d | 2026-05-04 A | 2026-05-18 A | 28BP20-022 | 100% |  |
| 28BP20-024 |  | Malowanie i oznakowanie – Sekcja 02 | 6d | 2026-05-12 A | 2026-05-19 A | 28BP20-023 FF+2d | 100% |  |
|  | SEKCJA 03 | **Sekcja 03** |  | 2026-01-20 | 2026-10-02 |  |  |  |
|  | PODSEKCJA | **Podsekcja 03.A** |  | 2026-01-20 | 2026-10-02 |  |  |  |
| 28BP20-027 |  | Prefabrykacja ruroci¹gów – Sekcja 03 | 10.7d | 2026-01-20 A | 2026-02-02 A | 28BP20-012, 28BP20-020 SS+5d | 100% |  |
| 28BP20-028 |  | Monta¿ ruroci¹gów – Sekcja 03 | 6.6d | 2026-04-13 A | 2026-04-20 A | 28BP20-027, 28BP20-014 SS+6d | 100% |  |
| 28BP20-029 |  | Próba ciœnieniowa – Sekcja 03 | 6d | 2026-04-17 A | 2026-04-28 A | 28BP20-028 | 100% |  |
| 28BP20-030 |  | Izolacje – Sekcja 03 | 6d | 2026-04-29 A | 2026-05-06 A | 28BP20-029 | 100% |  |
| 28BP20-031 |  | Malowanie i oznakowanie – Sekcja 03 | 3d | 2026-09-30 | 2026-10-02 | 28BP20-030 FF+2d |  | 354.9d |
|  | SEKCJA 04 | **Sekcja 04** |  | 2026-01-28 | 2026-05-25 |  |  |  |
| 28BP20-032 |  | Prefabrykacja ruroci¹gów – Sekcja 04 | 5.9d | 2026-01-28 A | 2026-02-04 A | 28BP20-012, 28BP20-027 SS+5d | 100% |  |
| 28BP20-033 |  | Monta¿ ruroci¹gów – Sekcja 04 | 20.8d | 2026-04-14 A | 2026-05-14 A | 28BP20-032, 28BP20-014 SS+5d | 100% |  |
| 28BP20-034 |  | Próba ciœnieniowa – Sekcja 04 | 6d | 2026-05-06 A | 2026-05-18 A | 28BP20-033 | 100% |  |
| 28BP20-036 |  | Malowanie i oznakowanie – Sekcja 04 | 8d | 2026-05-14 A | 2026-05-25 A | 28BP20-035 FF+2d | 100% |  |
| 28BP20-035 |  | Izolacje – Sekcja 04 | 5d | 2026-05-15 A | 2026-05-22 A | 28BP20-034 | 100% |  |
|  | SEKCJA 05 | **Sekcja 05** |  | 2026-02-03 | 2026-10-01 |  |  |  |
| 28BP20-039 |  | Prefabrykacja ruroci¹gów – Sekcja 05 | 13.3d | 2026-02-03 A | 2026-02-23 A | 28BP20-012, 28BP20-032 SS+5d | 100% |  |

| ID | WBS | Task | Duration | Start | Finish | Predecessors | Complete | Total float |
| --- | --- | --- | --- | --- | --- | --- | --- | --- |
| 28BP20-040 |  | Monta¿ ruroci¹gów – Sekcja 05 | 6.5d | 2026-04-08 A | 2026-04-17 A | 28BP20-039, 28BP20-014 SS+1d | 100% |  |
| 28BP20-041 |  | Próba ciœnieniowa – Sekcja 05 | 3d | 2026-04-13 A | 2026-10-01 | 28BP20-040 | 13% | 469.4d |
| 28BP20-043 |  | Malowanie i oznakowanie – Sekcja 05 | 7d | 2026-04-20 A | 2026-04-30 A | 28BP20-042 FF+2d | 100% |  |
| 28BP20-042 |  | Izolacje – Sekcja 05 | 5d | 2026-04-21 A | 2026-04-29 A | 28BP20-041 | 100% |  |
|  | SEKCJA 06 | **Sekcja 06** |  | 2026-02-12 | 2026-05-29 |  |  |  |
|  | PODSEKCJA | **Podsekcja 06.A** |  | 2026-02-12 | 2026-05-29 |  |  |  |
| 28BP20-044 |  | Prefabrykacja ruroci¹gów – Sekcja 06 | 11.6d | 2026-02-12 A | 2026-02-26 A | 28BP20-012, 28BP20-039 SS+5d | 100% |  |
| 28BP20-045 |  | Monta¿ ruroci¹gów – Sekcja 06 | 17.6d | 2026-04-13 A | 2026-05-05 A | 28BP20-044, 28BP20-014 SS+8d | 100% |  |
| 28BP20-046 |  | Próba ciœnieniowa – Sekcja 06 | 5d | 2026-05-11 A | 2026-05-20 A | 28BP20-045 | 100% |  |
| 28BP20-047 |  | Izolacje – Sekcja 06 | 9d | 2026-05-18 A | 2026-05-29 A | 28BP20-046 | 100% |  |
| 28BP20-048 |  | Malowanie i oznakowanie – Sekcja 06 | 2d | 2026-05-27 A | 2026-05-29 A | 28BP20-047 FF+2d | 100% |  |
|  | SEKCJA 07 | **Sekcja 07** |  | 2026-02-17 | 2026-05-14 |  |  |  |
| 28BP20-051 |  | Prefabrykacja ruroci¹gów – Sekcja 07 | 4.2d | 2026-02-17 A | 2026-02-24 A | 28BP20-012, 28BP20-044 SS+5d | 100% |  |
| 28BP20-052 |  | Monta¿ ruroci¹gów – Sekcja 07 | 6.5d | 2026-04-20 A | 2026-04-28 A | 28BP20-051, 28BP20-014 SS+10d | 100% |  |
| 28BP20-053 |  | Próba ciœnieniowa – Sekcja 07 | 6d | 2026-04-24 A | 2026-05-04 A | 28BP20-052 | 100% |  |
| 28BP20-055 |  | Malowanie i oznakowanie – Sekcja 07 | 8d | 2026-05-04 A | 2026-05-13 A | 28BP20-054 FF+2d | 100% |  |
| 28BP20-054 |  | Izolacje – Sekcja 07 | 4d | 2026-05-06 A | 2026-05-14 A | 28BP20-053 | 100% |  |
|  | SEKCJA 08 | **Sekcja 08** |  | 2026-02-27 | 2026-09-30 |  |  |  |
| 28BP20-056 |  | Prefabrykacja ruroci¹gów – Sekcja 08 | 12.5d | 2026-02-27 A | 2026-03-18 A | 28BP20-012, 28BP20-051 SS+5d | 100% |  |
| 28BP20-057 |  | Monta¿ ruroci¹gów – Sekcja 08 | 5.2d | 2026-04-16 A | 2026-09-30 | 28BP20-056, 28BP20-014 SS+10d | 71% | 455.7d |
| 28BP20-058 |  | Próba ciœnieniowa – Sekcja 08 | 4d | 2026-04-28 A | 2026-05-05 A | 28BP20-057 | 100% |  |
| 28BP20-059 |  | Izolacje – Sekcja 08 | 10d | 2026-04-29 A | 2026-05-12 A | 28BP20-058 | 100% |  |
| 28BP20-060 |  | Malowanie i oznakowanie – Sekcja 08 | 2d | 2026-05-19 A | 2026-09-30 | 28BP20-059 FF+2d | 35% | 451.7d |
|  | SEKCJA 09 | **Sekcja 09** |  | 2026-03-09 | 2026-05-26 |  |  |  |
|  | PODSEKCJA | **Podsekcja 09.A** |  | 2026-03-09 | 2026-05-26 |  |  |  |
| 28BP20-063 |  | Prefabrykacja ruroci¹gów – Sekcja 09 | 12.1d | 2026-03-09 A | 2026-03-26 A | 28BP20-012, 28BP20-056 SS+5d | 100% |  |
| 28BP20-064 |  | Monta¿ ruroci¹gów – Sekcja 09 | 17.7d | 2026-04-10 A | 2026-05-04 A | 28BP20-063, 28BP20-014 SS+5d | 100% |  |
| 28BP20-065 |  | Próba ciœnieniowa – Sekcja 09 | 4d | 2026-05-01 A | 2026-05-11 A | 28BP20-064 | 100% |  |
| 28BP20-066 |  | Izolacje – Sekcja 09 | 9d | 2026-05-12 A | 2026-05-22 A | 28BP20-065 | 100% |  |
| 28BP20-067 |  | Malowanie i oznakowanie – Sekcja 09 | 2d | 2026-05-25 A | 2026-05-26 A | 28BP20-066 FF+2d | 100% |  |
|  | SEKCJA 10 | **Sekcja 10** |  | 2026-03-13 | 2026-06-05 |  |  |  |
| 28BP20-068 |  | Prefabrykacja ruroci¹gów – Sekcja 10 | 10.6d | 2026-03-13 A | 2026-03-27 A | 28BP20-012, 28BP20-063 SS+5d | 100% |  |
| 28BP20-069 |  | Monta¿ ruroci¹gów – Sekcja 10 | 17d | 2026-04-20 A | 2026-05-14 A | 28BP20-068, 28BP20-014 SS+9d | 100% |  |
| 28BP20-070 |  | Próba ciœnieniowa – Sekcja 10 | 6d | 2026-05-08 A | 2026-05-18 A | 28BP20-069 | 100% |  |
| 28BP20-071 |  | Izolacje – Sekcja 10 | 10d | 2026-05-21 A | 2026-06-04 A | 28BP20-070 | 100% |  |
| 28BP20-072 |  | Malowanie i oznakowanie – Sekcja 10 | 5d | 2026-05-27 A | 2026-06-05 A | 28BP20-071 FF+2d | 100% |  |
|  | PROJ | **Projektowanie** |  | 2025-01-16 | 2025-07-11 |  |  |  |
|  | DOKUMENTAC | **Dokumentacja** |  | 2025-01-16 | 2025-07-11 |  |  |  |
| 28BP20-001 |  | Projekt wykonawczy – Pompy wody ch³odz¹cej | 96d | 2025-01-16 A | 2025-06-02 A |  | 100% |  |
| 28BP20-002 |  | Uzgodnienie dokumentacji z Inwestorem | 23d | 2025-05-28 A | 2025-07-02 A | 28BP20-001 | 100% |  |
| 28BP20-003 |  | Zatwierdzenie dokumentacji do realizacji | 7d | 2025-06-27 A | 2025-07-07 A | 28BP20-002 | 100% |  |
| 28BP20-004 |  | KM: Dokumentacja zatwierdzona – Pompy wody ch³odz¹cej | 0d | 2025-07-11 A | 2025-07-11 | 28BP20-003 | 100% |  |
|  | ROZR | **Rozruch** |  | 2026-06-04 | 2026-07-23 |  |  |  |
|  | ROZRUCH | **Rozruch** |  | 2026-06-04 | 2026-07-23 |  |  |  |
| 28BP20-077 |  | Przegl¹d gotowoœci do rozruchu | 6d | 2026-06-04 A | 2026-06-16 A | 28BP20-076, 28BP20-019, 28BP20-024, 28BP20-026 | 100% |  |
| 28BP20-078 |  | Rozruch na zimno | 7d | 2026-06-11 A | 2026-06-24 A | 28BP20-077 | 100% |  |
| 28BP20-079 |  | Rozruch na gor¹co / próby ruchowe | 23d | 2026-06-19 A | 2026-07-23 A | 28BP20-078 | 100% |  |
| 28BP20-080 |  | KM: Odbiór koñcowy – Pompy wody ch³odz¹cej | 0d | 2026-07-23 | 2026-07-23 A | 28BP20-079 | 100% |  |
|  | ZAKU | **Zakupy** |  | 2025-02-14 | 2026-04-03 |  |  |  |
|  | DOSTAWY | **Dostawy** |  | 2025-10-08 | 2026-04-03 |  |  |  |
| 28BP20-008 |  | Produkcja u dostawcy | 91d | 2025-10-08 A | 2026-02-12 A | 28BP20-007 | 100% |  |
| 28BP20-009 |  | Testy FAT | 4d | 2026-02-11 A | 2026-02-18 A | 28BP20-008 | 100% |  |
| 28BP20-010 |  | Transport i dostawa na plac budowy | 32d | 2026-02-18 A | 2026-04-03 A | 28BP20-009 | 100% |  |
| 28BP20-011 |  | KM: Dostawa na budowê – Pompy wody ch³odz¹cej | 0d | 2026-04-02 A | 2026-04-02 | 28BP20-010 | 100% |  |
|  | ZAMÓWIENIA | **Zamówienia** |  | 2025-02-14 | 2025-10-14 |  |  |  |
| 28BP20-005 |  | Zapytanie ofertowe | 30d | 2025-02-14 A | 2025-03-31 A | 28BP20-001 SS+20d | 100% |  |
| 28BP20-006 |  | Analiza i wybór ofert | 11d | 2025-03-24 A | 2025-04-09 A | 28BP20-005 | 100% |  |
| 28BP20-007 |  | Zawarcie umowy / zamówienie | 8d | 2025-09-30 A | 2025-10-14 A | 28BP20-006, 28BP20-004 SS, 29UF44-004 SF+1d, 28BW90-004 FS+9d | 100% |  |
|  | UK£AD_ELEKTR | **Uk³ad elektryczny** |  | 2025-01-15 | 2027-08-16 |  |  |  |
|  | 10SN54 | **10SN54 – Rozdzielnia 110 kV** |  | 2025-06-20 | 2027-08-13 |  |  |  |
|  | BUDO | **Budowa** |  | 2026-01-26 | 2027-07-29 |  |  |  |
|  | AKPIA | **AKPiA** |  | 2027-05-26 | 2027-06-17 |  |  |  |
| 10SN54-164 |  | Monta¿ uk³adów AKPiA | 17d | 2027-05-26 | 2027-06-17 | 10SN54-014 SS+5d |  | 138.1d |
|  | ELEKTRYKA | **Elektryka** |  | 2027-05-31 | 2027-06-29 |  |  |  |
| 10SN54-074 |  | Pod³¹czenia i pomiary – trasa 10 | 9d | 2027-05-31 | 2027-06-10 | 10SN54-073 FF |  | 175.1d |
| 10SN54-025 |  | Uk³adanie kabli – trasa 02 | 6d | 2027-06-02 | 2027-06-09 | 10SN54-014 SS+10d |  | 144.1d |
| 10SN54-037 |  | Uk³adanie kabli – trasa 04 | 11d | 2027-06-02 | 2027-06-16 | 10SN54-014 SS+10d |  | 171.1d |
| 10SN54-049 |  | Uk³adanie kabli – trasa 06 | 18d | 2027-06-02 | 2027-06-25 | 10SN54-014 SS+10d |  | 164.1d |
| 10SN54-061 |  | Uk³adanie kabli – trasa 08 | 11d | 2027-06-02 | 2027-06-16 | 10SN54-014 SS+10d |  | 171.1d |
| 10SN54-073 |  | Uk³adanie kabli – trasa 10 | 7d | 2027-06-02 | 2027-06-10 | 10SN54-014 SS+10d |  | 175.1d |

| ID | WBS | Task | Duration | Start | Finish | Predecessors | Complete | Total float |
| --- | --- | --- | --- | --- | --- | --- | --- | --- |
| 10SN54-085 |  | Uk³adanie kabli – trasa 12 | 13d | 2027-06-02 | 2027-06-18 | 10SN54-014 SS+10d |  | 169.1d |
| 10SN54-097 |  | Uk³adanie kabli – trasa 14 | 16d | 2027-06-02 | 2027-06-23 | 10SN54-014 SS+10d |  | 166.1d |
| 10SN54-109 |  | Uk³adanie kabli – trasa 16 | 20d | 2027-06-02 | 2027-06-29 | 10SN54-014 SS+10d |  | 162.1d |
| 10SN54-121 |  | Uk³adanie kabli – trasa 18 | 5d | 2027-06-02 | 2027-06-08 | 10SN54-014 SS+10d |  | 177.1d |
| 10SN54-122 |  | Pod³¹czenia i pomiary – trasa 18 | 5d | 2027-06-02 | 2027-06-08 | 10SN54-121 FF |  | 177.1d |
| 10SN54-133 |  | Uk³adanie kabli – trasa 20 | 17d | 2027-06-02 | 2027-06-24 | 10SN54-014 SS+10d |  | 165.1d |
| 10SN54-145 |  | Uk³adanie kabli – trasa 22 | 20d | 2027-06-02 | 2027-06-29 | 10SN54-014 SS+10d |  | 162.1d |
| 10SN54-157 |  | Uk³adanie kabli – trasa 24 | 12d | 2027-06-02 | 2027-06-17 | 10SN54-014 SS+10d |  | 138.1d |
| 10SN54-026 |  | Pod³¹czenia i pomiary – trasa 02 | 4d | 2027-06-04 | 2027-06-09 | 10SN54-025 FF |  | 144.1d |
| 10SN54-038 |  | Pod³¹czenia i pomiary – trasa 04 | 9d | 2027-06-04 | 2027-06-16 | 10SN54-037 FF |  | 171.1d |
| 10SN54-086 |  | Pod³¹czenia i pomiary – trasa 12 | 10d | 2027-06-07 | 2027-06-18 | 10SN54-085 FF |  | 169.1d |
| 10SN54-062 |  | Pod³¹czenia i pomiary – trasa 08 | 7d | 2027-06-08 | 2027-06-16 | 10SN54-061 FF |  | 171.1d |
| 10SN54-158 |  | Pod³¹czenia i pomiary – trasa 24 | 7d | 2027-06-09 | 2027-06-17 | 10SN54-157 FF |  | 138.1d |
| 10SN54-098 |  | Pod³¹czenia i pomiary – trasa 14 | 7d | 2027-06-15 | 2027-06-23 | 10SN54-097 FF |  | 166.1d |
| 10SN54-134 |  | Pod³¹czenia i pomiary – trasa 20 | 8d | 2027-06-15 | 2027-06-24 | 10SN54-133 FF |  | 165.1d |
| 10SN54-050 |  | Pod³¹czenia i pomiary – trasa 06 | 8d | 2027-06-16 | 2027-06-25 | 10SN54-049 FF |  | 164.1d |
| 10SN54-110 |  | Pod³¹czenia i pomiary – trasa 16 | 3d | 2027-06-25 | 2027-06-29 | 10SN54-109 FF |  | 162.1d |
| 10SN54-146 |  | Pod³¹czenia i pomiary – trasa 22 | 3d | 2027-06-25 | 2027-06-29 | 10SN54-145 FF |  | 162.1d |
|  | MONTA¯ | **Monta¿** |  | 2026-03-26 | 2027-07-14 |  |  |  |
| 10SN54-013 |  | Monta¿ konstrukcji stalowych | 23d | 2026-03-26 A | 2026-04-28 A | 10SN54-012 | 100% |  |
| 10SN54-014 |  | Monta¿ urz¹dzeñ g³ównych | 22d | 2027-05-19 | 2027-06-17 | 10SN54-013, 10SN54-011 |  | 120.5d |
| 10SN54-165 |  | KM: Zakoñczenie monta¿u – Rozdzielnia 110 kV | 0d | 2027-07-14 | 2027-07-14 | 10SN54-156, 10SN54-158, 10SN54-163, 10SN54-164, 10SN54-014 |  | 120.5d |
|  | ROBOTY BUD | **Roboty budowlane** |  | 2026-01-26 | 2026-03-27 |  |  |  |
| 10SN54-012 |  | Fundamenty i roboty ziemne | 44d | 2026-01-26 A | 2026-03-27 A | 10SN54-007 FS+20d | 100% |  |
|  | RUROCI¥GI | **Ruroci¹gi** |  | 2026-03-30 | 2027-07-29 |  |  |  |
|  | SEKCJA 01 | **Sekcja 01** |  | 2026-03-30 | 2027-06-24 |  |  |  |
| 10SN54-015 |  | Prefabrykacja ruroci¹gów – Sekcja 01 | 3.2d | 2026-03-30 A | 2026-04-02 A | 10SN54-012 | 100% |  |
| 10SN54-016 |  | Monta¿ ruroci¹gów – Sekcja 01 | 13d | 2027-05-20 | 2027-06-07 | 10SN54-015, 10SN54-014 SS+1d |  | 133.1d |
| 10SN54-017 |  | Próba ciœnieniowa – Sekcja 01 | 4d | 2027-06-08 | 2027-06-11 | 10SN54-016 |  | 133.1d |
| 10SN54-018 |  | Izolacje – Sekcja 01 | 7d | 2027-06-14 | 2027-06-22 | 10SN54-017 |  | 133.1d |
| 10SN54-019 |  | Malowanie i oznakowanie – Sekcja 01 | 2d | 2027-06-23 | 2027-06-24 | 10SN54-018 FF+2d |  | 133.1d |
|  | SEKCJA 02 | **Sekcja 02** |  | 2026-04-07 | 2027-06-30 |  |  |  |
| 10SN54-020 |  | Prefabrykacja ruroci¹gów – Sekcja 02 | 6.4d | 2026-04-07 A | 2026-04-16 A | 10SN54-012, 10SN54-015 SS+5d | 100% |  |
| 10SN54-021 |  | Monta¿ ruroci¹gów – Sekcja 02 | 6.3d | 2027-05-27 | 2027-06-04 | 10SN54-020, 10SN54-014 SS+6d |  | 129.8d |
| 10SN54-022 |  | Próba ciœnieniowa – Sekcja 02 | 5d | 2027-06-07 | 2027-06-11 | 10SN54-021 |  | 129.8d |
| 10SN54-023 |  | Izolacje – Sekcja 02 | 11d | 2027-06-14 | 2027-06-28 | 10SN54-022 |  | 129.8d |
| 10SN54-024 |  | Malowanie i oznakowanie – Sekcja 02 | 3d | 2027-06-28 | 2027-06-30 | 10SN54-023 FF+2d |  | 129.8d |
|  | SEKCJA 03 | **Sekcja 03** |  | 2026-04-10 | 2027-06-24 |  |  |  |
|  | PODSEKCJA | **Podsekcja 03.A** |  | 2026-04-10 | 2027-06-24 |  |  |  |
| 10SN54-027 |  | Prefabrykacja ruroci¹gów – Sekcja 03 | 9.7d | 2026-04-10 A | 2026-04-23 A | 10SN54-012, 10SN54-020 SS+5d | 100% |  |
| 10SN54-028 |  | Monta¿ ruroci¹gów – Sekcja 03 | 13.5d | 2027-05-21 | 2027-06-09 | 10SN54-027, 10SN54-014 SS+2d |  | 165.6d |
| 10SN54-029 |  | Próba ciœnieniowa – Sekcja 03 | 5d | 2027-06-10 | 2027-06-16 | 10SN54-028 |  | 165.6d |
| 10SN54-030 |  | Izolacje – Sekcja 03 | 4d | 2027-06-17 | 2027-06-22 | 10SN54-029 |  | 165.6d |
| 10SN54-031 |  | Malowanie i oznakowanie – Sekcja 03 | 6d | 2027-06-17 | 2027-06-24 | 10SN54-030 FF+2d |  | 165.6d |
|  | SEKCJA 04 | **Sekcja 04** |  | 2026-04-20 | 2027-07-02 |  |  |  |
| 10SN54-032 |  | Prefabrykacja ruroci¹gów – Sekcja 04 | 14.5d | 2026-04-20 A | 2026-05-11 A | 10SN54-012, 10SN54-027 SS+5d | 100% |  |
| 10SN54-033 |  | Monta¿ ruroci¹gów – Sekcja 04 | 16.1d | 2027-05-28 | 2027-06-18 | 10SN54-032, 10SN54-014 SS+7d |  | 159d |
| 10SN54-034 |  | Próba ciœnieniowa – Sekcja 04 | 5d | 2027-06-21 | 2027-06-25 | 10SN54-033 |  | 159d |
| 10SN54-035 |  | Izolacje – Sekcja 04 | 3d | 2027-06-28 | 2027-06-30 | 10SN54-034 |  | 159d |
| 10SN54-036 |  | Malowanie i oznakowanie – Sekcja 04 | 4d | 2027-06-29 | 2027-07-02 | 10SN54-035 FF+2d |  | 159d |
|  | SEKCJA 05 | **Sekcja 05** |  | 2026-04-27 | 2027-06-24 |  |  |  |
| 10SN54-039 |  | Prefabrykacja ruroci¹gów – Sekcja 05 | 14.6d | 2026-04-27 A | 2026-05-18 A | 10SN54-012, 10SN54-032 SS+5d | 100% |  |
| 10SN54-040 |  | Monta¿ ruroci¹gów – Sekcja 05 | 12.9d | 2027-05-25 | 2027-06-10 | 10SN54-039, 10SN54-014 SS+4d |  | 165.2d |
| 10SN54-041 |  | Próba ciœnieniowa – Sekcja 05 | 4d | 2027-06-11 | 2027-06-16 | 10SN54-040 |  | 165.2d |
| 10SN54-042 |  | Izolacje – Sekcja 05 | 4d | 2027-06-17 | 2027-06-22 | 10SN54-041 |  | 165.2d |
| 10SN54-043 |  | Malowanie i oznakowanie – Sekcja 05 | 2d | 2027-06-23 | 2027-06-24 | 10SN54-042 FF+2d |  | 165.2d |
|  | SEKCJA 06 | **Sekcja 06** |  | 2026-04-30 | 2027-07-29 |  |  |  |
|  | PODSEKCJA | **Podsekcja 06.A** |  | 2026-04-30 | 2027-07-29 |  |  |  |
| 10SN54-044 |  | Prefabrykacja ruroci¹gów – Sekcja 06 | 4.5d | 2026-04-30 A | 2026-05-05 A | 10SN54-012, 10SN54-039 SS+5d | 100% |  |
| 10SN54-045 |  | Monta¿ ruroci¹gów – Sekcja 06 | 23.7d | 2027-06-02 | 2027-07-05 | 10SN54-044, 10SN54-014 SS+10d |  | 140.4d |
| 10SN54-046 |  | Próba ciœnieniowa – Sekcja 06 | 4d | 2027-07-06 | 2027-07-09 | 10SN54-045 |  | 140.4d |
| 10SN54-047 |  | Izolacje – Sekcja 06 | 12d | 2027-07-12 | 2027-07-27 | 10SN54-046 |  | 140.4d |
| 10SN54-048 |  | Malowanie i oznakowanie – Sekcja 06 | 8d | 2027-07-20 | 2027-07-29 | 10SN54-047 FF+2d |  | 140.4d |
|  | SEKCJA 07 | **Sekcja 07** |  | 2026-05-12 | 2027-07-01 |  |  |  |
| 10SN54-051 |  | Prefabrykacja ruroci¹gów – Sekcja 07 | 8.6d | 2026-05-12 A | 2026-05-26 A | 10SN54-012, 10SN54-044 SS+5d | 100% |  |
| 10SN54-052 |  | Monta¿ ruroci¹gów – Sekcja 07 | 14.7d | 2027-05-26 | 2027-06-15 | 10SN54-051, 10SN54-014 SS+5d |  | 160.4d |
| 10SN54-053 |  | Próba ciœnieniowa – Sekcja 07 | 4d | 2027-06-16 | 2027-06-21 | 10SN54-052 |  | 160.4d |
| 10SN54-054 |  | Izolacje – Sekcja 07 | 6d | 2027-06-22 | 2027-06-29 | 10SN54-053 |  | 160.4d |
| 10SN54-055 |  | Malowanie i oznakowanie – Sekcja 07 | 6d | 2027-06-24 | 2027-07-01 | 10SN54-054 FF+2d |  | 160.4d |
|  | SEKCJA 08 | **Sekcja 08** |  | 2026-05-19 | 2027-07-28 |  |  |  |

| ID | WBS | Task | Duration | Start | Finish | Predecessors | Complete | Total float |
| --- | --- | --- | --- | --- | --- | --- | --- | --- |
| 10SN54-056 |  | Prefabrykacja ruroci¹gów – Sekcja 08 | 9d | 2026-05-19 A | 2026-06-02 A | 10SN54-012, 10SN54-051 SS+5d | 100% |  |
| 10SN54-057 |  | Monta¿ ruroci¹gów – Sekcja 08 | 24.4d | 2027-06-01 | 2027-07-05 | 10SN54-056, 10SN54-014 SS+9d |  | 141.7d |
| 10SN54-058 |  | Próba ciœnieniowa – Sekcja 08 | 3d | 2027-07-06 | 2027-07-08 | 10SN54-057 |  | 141.7d |
| 10SN54-059 |  | Izolacje – Sekcja 08 | 12d | 2027-07-09 | 2027-07-26 | 10SN54-058 |  | 141.7d |
| 10SN54-060 |  | Malowanie i oznakowanie – Sekcja 08 | 3d | 2027-07-26 | 2027-07-28 | 10SN54-059 FF+2d |  | 141.7d |
|  | SEKCJA 09 | **Sekcja 09** |  | 2026-05-26 | 2027-06-22 |  |  |  |
|  | PODSEKCJA | **Podsekcja 09.A** |  | 2026-05-26 | 2027-06-22 |  |  |  |
| 10SN54-063 |  | Prefabrykacja ruroci¹gów – Sekcja 09 | 8.5d | 2026-05-26 A | 2026-06-08 A | 10SN54-012, 10SN54-056 SS+5d | 100% |  |
| 10SN54-064 |  | Monta¿ ruroci¹gów – Sekcja 09 | 8.9d | 2027-05-28 | 2027-06-09 | 10SN54-063, 10SN54-014 SS+7d |  | 167.2d |
| 10SN54-065 |  | Próba ciœnieniowa – Sekcja 09 | 4d | 2027-06-10 | 2027-06-15 | 10SN54-064 |  | 167.2d |
| 10SN54-067 |  | Malowanie i oznakowanie – Sekcja 09 | 6d | 2027-06-15 | 2027-06-22 | 10SN54-066 FF+2d |  | 167.2d |
| 10SN54-066 |  | Izolacje – Sekcja 09 | 3d | 2027-06-16 | 2027-06-18 | 10SN54-065 |  | 167.2d |
|  | SEKCJA 10 | **Sekcja 10** |  | 2026-06-03 | 2027-07-08 |  |  |  |
| 10SN54-068 |  | Prefabrykacja ruroci¹gów – Sekcja 10 | 12.4d | 2026-06-03 A | 2026-06-22 A | 10SN54-012, 10SN54-063 SS+5d | 100% |  |
| 10SN54-069 |  | Monta¿ ruroci¹gów – Sekcja 10 | 15.1d | 2027-05-24 | 2027-06-11 | 10SN54-068, 10SN54-014 SS+3d |  | 155d |
| 10SN54-070 |  | Próba ciœnieniowa – Sekcja 10 | 6d | 2027-06-14 | 2027-06-21 | 10SN54-069 |  | 155d |
| 10SN54-071 |  | Izolacje – Sekcja 10 | 11d | 2027-06-22 | 2027-07-06 | 10SN54-070 |  | 155d |
| 10SN54-072 |  | Malowanie i oznakowanie – Sekcja 10 | 2d | 2027-07-07 | 2027-07-08 | 10SN54-071 FF+2d |  | 155d |
|  | SEKCJA 11 | **Sekcja 11** |  | 2026-06-05 | 2027-06-23 |  |  |  |
| 10SN54-075 |  | Prefabrykacja ruroci¹gów – Sekcja 11 | 8.9d | 2026-06-05 A | 2026-06-16 A | 10SN54-012, 10SN54-068 SS+5d | 100% |  |
| 10SN54-076 |  | Monta¿ ruroci¹gów – Sekcja 11 | 10.7d | 2027-05-19 | 2027-06-02 | 10SN54-075, 10SN54-014 SS |  | 166.4d |
| 10SN54-077 |  | Próba ciœnieniowa – Sekcja 11 | 5d | 2027-06-03 | 2027-06-09 | 10SN54-076 |  | 166.4d |
| 10SN54-078 |  | Izolacje – Sekcja 11 | 8d | 2027-06-10 | 2027-06-21 | 10SN54-077 |  | 166.4d |
| 10SN54-079 |  | Malowanie i oznakowanie – Sekcja 11 | 7d | 2027-06-15 | 2027-06-23 | 10SN54-078 FF+2d |  | 166.4d |
|  | SEKCJA 12 | **Sekcja 12** |  | 2026-06-11 | 2027-07-16 |  |  |  |
|  | PODSEKCJA | **Podsekcja 12.A** |  | 2026-06-11 | 2027-07-16 |  |  |  |
| 10SN54-080 |  | Prefabrykacja ruroci¹gów – Sekcja 12 | 12d | 2026-06-11 A | 2026-06-29 A | 10SN54-012, 10SN54-075 SS+5d | 100% |  |
| 10SN54-081 |  | Monta¿ ruroci¹gów – Sekcja 12 | 18d | 2027-06-02 | 2027-06-25 | 10SN54-080, 10SN54-014 SS+10d |  | 149.1d |
| 10SN54-082 |  | Próba ciœnieniowa – Sekcja 12 | 4d | 2027-06-28 | 2027-07-01 | 10SN54-081 |  | 149.1d |
| 10SN54-083 |  | Izolacje – Sekcja 12 | 9d | 2027-07-02 | 2027-07-14 | 10SN54-082 |  | 149.1d |
| 10SN54-084 |  | Malowanie i oznakowanie – Sekcja 12 | 4d | 2027-07-13 | 2027-07-16 | 10SN54-083 FF+2d |  | 149.1d |
|  | SEKCJA 13 | **Sekcja 13** |  | 2026-06-22 | 2027-07-21 |  |  |  |
| 10SN54-087 |  | Prefabrykacja ruroci¹gów – Sekcja 13 | 10.1d | 2026-06-22 A | 2026-07-06 A | 10SN54-012, 10SN54-080 SS+5d | 100% |  |
| 10SN54-088 |  | Monta¿ ruroci¹gów – Sekcja 13 | 23.4d | 2027-05-31 | 2027-07-01 | 10SN54-087, 10SN54-014 SS+8d |  | 146.7d |
| 10SN54-089 |  | Próba ciœnieniowa – Sekcja 13 | 2d | 2027-07-02 | 2027-07-05 | 10SN54-088 |  | 146.7d |
| 10SN54-090 |  | Izolacje – Sekcja 13 | 10d | 2027-07-06 | 2027-07-19 | 10SN54-089 |  | 146.7d |
| 10SN54-091 |  | Malowanie i oznakowanie – Sekcja 13 | 5d | 2027-07-15 | 2027-07-21 | 10SN54-090 FF+2d |  | 146.7d |
|  | SEKCJA 14 | **Sekcja 14** |  | 2026-06-26 | 2027-07-06 |  |  |  |
| 10SN54-092 |  | Prefabrykacja ruroci¹gów – Sekcja 14 | 9.4d | 2026-06-26 A | 2026-07-10 A | 10SN54-012, 10SN54-087 SS+5d | 100% |  |
| 10SN54-093 |  | Monta¿ ruroci¹gów – Sekcja 14 | 13.9d | 2027-05-27 | 2027-06-15 | 10SN54-092, 10SN54-014 SS+6d |  | 157.2d |
| 10SN54-094 |  | Próba ciœnieniowa – Sekcja 14 | 2d | 2027-06-16 | 2027-06-17 | 10SN54-093 |  | 157.2d |
| 10SN54-095 |  | Izolacje – Sekcja 14 | 11d | 2027-06-18 | 2027-07-02 | 10SN54-094 |  | 157.2d |
| 10SN54-096 |  | Malowanie i oznakowanie – Sekcja 14 | 3d | 2027-07-02 | 2027-07-06 | 10SN54-095 FF+2d |  | 157.2d |
|  | SEKCJA 15 | **Sekcja 15** |  | 2026-07-07 | 2027-06-29 |  |  |  |
|  | PODSEKCJA | **Podsekcja 15.A** |  | 2026-07-07 | 2027-06-29 |  |  |  |
| 10SN54-099 |  | Prefabrykacja ruroci¹gów – Sekcja 15 | 6d | 2026-07-07 A | 2026-07-16 A | 10SN54-012, 10SN54-092 SS+5d | 100% |  |
| 10SN54-100 |  | Monta¿ ruroci¹gów – Sekcja 15 | 12d | 2027-05-26 | 2027-06-10 | 10SN54-099, 10SN54-014 SS+5d |  | 162.1d |
| 10SN54-101 |  | Próba ciœnieniowa – Sekcja 15 | 2d | 2027-06-11 | 2027-06-14 | 10SN54-100 |  | 162.1d |
| 10SN54-102 |  | Izolacje – Sekcja 15 | 9d | 2027-06-15 | 2027-06-25 | 10SN54-101 |  | 162.1d |
| 10SN54-103 |  | Malowanie i oznakowanie – Sekcja 15 | 5d | 2027-06-23 | 2027-06-29 | 10SN54-102 FF+2d |  | 162.1d |
|  | SEKCJA 16 | **Sekcja 16** |  | 2026-07-15 | 2027-07-05 |  |  |  |
| 10SN54-104 |  | Prefabrykacja ruroci¹gów – Sekcja 16 | 12.6d | 2026-07-15 A | 2026-07-30 A | 10SN54-012, 10SN54-099 SS+5d | 100% |  |
| 10SN54-105 |  | Monta¿ ruroci¹gów – Sekcja 16 | 17.6d | 2027-05-31 | 2027-06-23 | 10SN54-104, 10SN54-014 SS+8d |  | 158.5d |
| 10SN54-106 |  | Próba ciœnieniowa – Sekcja 16 | 2d | 2027-06-24 | 2027-06-25 | 10SN54-105 |  | 158.5d |
| 10SN54-108 |  | Malowanie i oznakowanie – Sekcja 16 | 8d | 2027-06-24 | 2027-07-05 | 10SN54-107 FF+2d |  | 158.5d |
| 10SN54-107 |  | Izolacje – Sekcja 16 | 4d | 2027-06-28 | 2027-07-01 | 10SN54-106 |  | 158.5d |
|  | SEKCJA 17 | **Sekcja 17** |  | 2026-07-21 | 2027-07-20 |  |  |  |
| 10SN54-111 |  | Prefabrykacja ruroci¹gów – Sekcja 17 | 8.5d | 2026-07-21 A | 2026-07-31 A | 10SN54-012, 10SN54-104 SS+5d | 100% |  |
| 10SN54-112 |  | Monta¿ ruroci¹gów – Sekcja 17 | 24.2d | 2027-05-20 | 2027-06-23 | 10SN54-111, 10SN54-014 SS+1d |  | 147.9d |
| 10SN54-113 |  | Próba ciœnieniowa – Sekcja 17 | 6d | 2027-06-24 | 2027-07-01 | 10SN54-112 |  | 147.9d |
| 10SN54-114 |  | Izolacje – Sekcja 17 | 11d | 2027-07-02 | 2027-07-16 | 10SN54-113 |  | 147.9d |
| 10SN54-115 |  | Malowanie i oznakowanie – Sekcja 17 | 4d | 2027-07-15 | 2027-07-20 | 10SN54-114 FF+2d |  | 147.9d |
|  | SEKCJA 18 | **Sekcja 18** |  | 2026-07-28 | 2027-06-30 |  |  |  |
|  | PODSEKCJA | **Podsekcja 18.A** |  | 2026-07-28 | 2027-06-30 |  |  |  |
| 10SN54-116 |  | Prefabrykacja ruroci¹gów – Sekcja 18 | 13.4d | 2026-07-28 A | 2026-10-07 | 10SN54-012, 10SN54-111 SS+5d | 51% | 290.3d |
| 10SN54-117 |  | Monta¿ ruroci¹gów – Sekcja 18 | 14.9d | 2027-05-25 | 2027-06-14 | 10SN54-116, 10SN54-014 SS+4d |  | 161.2d |
| 10SN54-118 |  | Próba ciœnieniowa – Sekcja 18 | 6d | 2027-06-15 | 2027-06-22 | 10SN54-117 |  | 161.2d |
| 10SN54-119 |  | Izolacje – Sekcja 18 | 4d | 2027-06-23 | 2027-06-28 | 10SN54-118 |  | 161.2d |
| 10SN54-120 |  | Malowanie i oznakowanie – Sekcja 18 | 4d | 2027-06-25 | 2027-06-30 | 10SN54-119 FF+2d |  | 161.2d |
|  | SEKCJA 19 | **Sekcja 19** |  | 2026-08-04 | 2027-07-02 |  |  |  |

| ID | WBS | Task | Duration | Start | Finish | Predecessors | Complete | Total float |
| --- | --- | --- | --- | --- | --- | --- | --- | --- |
| 10SN54-123 |  | Prefabrykacja ruroci¹gów – Sekcja 19 | 12d | 2026-08-04 A | 2026-08-20 A | 10SN54-012, 10SN54-116 SS+5d | 100% |  |
| 10SN54-124 |  | Monta¿ ruroci¹gów – Sekcja 19 | 23.7d | 2027-05-20 | 2027-06-22 | 10SN54-123, 10SN54-014 SS+1d |  | 159.4d |
| 10SN54-125 |  | Próba ciœnieniowa – Sekcja 19 | 2d | 2027-06-23 | 2027-06-24 | 10SN54-124 |  | 159.4d |
| 10SN54-126 |  | Izolacje – Sekcja 19 | 4d | 2027-06-25 | 2027-06-30 | 10SN54-125 |  | 159.4d |
| 10SN54-127 |  | Malowanie i oznakowanie – Sekcja 19 | 2d | 2027-07-01 | 2027-07-02 | 10SN54-126 FF+2d |  | 159.4d |
|  | SEKCJA 20 | **Sekcja 20** |  | 2026-08-12 | 2027-07-06 |  |  |  |
| 10SN54-128 |  | Prefabrykacja ruroci¹gów – Sekcja 20 | 10.1d | 2026-08-12 A | 2026-08-28 A | 10SN54-012, 10SN54-123 SS+5d | 100% |  |
| 10SN54-129 |  | Monta¿ ruroci¹gów – Sekcja 20 | 15.1d | 2027-05-26 | 2027-06-15 | 10SN54-128, 10SN54-014 SS+5d |  | 157d |
| 10SN54-130 |  | Próba ciœnieniowa – Sekcja 20 | 4d | 2027-06-16 | 2027-06-21 | 10SN54-129 |  | 157d |
| 10SN54-131 |  | Izolacje – Sekcja 20 | 9d | 2027-06-22 | 2027-07-02 | 10SN54-130 |  | 157d |
| 10SN54-132 |  | Malowanie i oznakowanie – Sekcja 20 | 7d | 2027-06-28 | 2027-07-06 | 10SN54-131 FF+2d |  | 157d |
|  | SEKCJA 21 | **Sekcja 21** |  | 2026-08-14 | 2027-06-28 |  |  |  |
|  | PODSEKCJA | **Podsekcja 21.A** |  | 2026-08-14 | 2027-06-28 |  |  |  |
| 10SN54-135 |  | Prefabrykacja ruroci¹gów – Sekcja 21 | 5d | 2026-08-14 A | 2026-08-20 A | 10SN54-012, 10SN54-128 SS+5d | 100% |  |
| 10SN54-136 |  | Monta¿ ruroci¹gów – Sekcja 21 | 7.3d | 2027-06-02 | 2027-06-11 | 10SN54-135, 10SN54-014 SS+10d |  | 163.8d |
| 10SN54-137 |  | Próba ciœnieniowa – Sekcja 21 | 5d | 2027-06-14 | 2027-06-18 | 10SN54-136 |  | 163.8d |
| 10SN54-138 |  | Izolacje – Sekcja 21 | 4d | 2027-06-21 | 2027-06-24 | 10SN54-137 |  | 163.8d |
| 10SN54-139 |  | Malowanie i oznakowanie – Sekcja 21 | 6d | 2027-06-21 | 2027-06-28 | 10SN54-138 FF+2d |  | 163.8d |
|  | SEKCJA 22 | **Sekcja 22** |  | 2026-08-20 | 2027-07-06 |  |  |  |
| 10SN54-140 |  | Prefabrykacja ruroci¹gów – Sekcja 22 | 7.1d | 2026-08-20 A | 2026-09-02 A | 10SN54-012, 10SN54-135 SS+5d | 100% |  |
| 10SN54-141 |  | Monta¿ ruroci¹gów – Sekcja 22 | 20.2d | 2027-05-21 | 2027-06-18 | 10SN54-140, 10SN54-014 SS+2d |  | 157.9d |
| 10SN54-142 |  | Próba ciœnieniowa – Sekcja 22 | 5d | 2027-06-21 | 2027-06-25 | 10SN54-141 |  | 157.9d |
| 10SN54-143 |  | Izolacje – Sekcja 22 | 5d | 2027-06-28 | 2027-07-02 | 10SN54-142 |  | 157.9d |
| 10SN54-144 |  | Malowanie i oznakowanie – Sekcja 22 | 3d | 2027-07-02 | 2027-07-06 | 10SN54-143 FF+2d |  | 157.9d |
|  | SEKCJA 23 | **Sekcja 23** |  | 2026-08-28 | 2027-07-16 |  |  |  |
| 10SN54-147 |  | Prefabrykacja ruroci¹gów – Sekcja 23 | 11.6d | 2026-08-28 A | 2026-09-14 A | 10SN54-012, 10SN54-140 SS+5d | 100% |  |
| 10SN54-148 |  | Monta¿ ruroci¹gów – Sekcja 23 | 21.5d | 2027-05-20 | 2027-06-18 | 10SN54-147, 10SN54-014 SS+1d |  | 149.6d |
| 10SN54-149 |  | Próba ciœnieniowa – Sekcja 23 | 6d | 2027-06-21 | 2027-06-28 | 10SN54-148 |  | 149.6d |
| 10SN54-150 |  | Izolacje – Sekcja 23 | 12d | 2027-06-29 | 2027-07-14 | 10SN54-149 |  | 149.6d |
| 10SN54-151 |  | Malowanie i oznakowanie – Sekcja 23 | 2d | 2027-07-15 | 2027-07-16 | 10SN54-150 FF+2d |  | 149.6d |
|  | SEKCJA 24 | **Sekcja 24** |  | 2026-09-04 | 2027-07-13 |  |  |  |
|  | PODSEKCJA | **Podsekcja 24.A** |  | 2026-09-04 | 2027-07-13 |  |  |  |
| 10SN54-152 |  | Prefabrykacja ruroci¹gów – Sekcja 24 | 10.4d | 2026-09-04 A | 2026-09-17 A | 10SN54-012, 10SN54-147 SS+5d | 100% |  |
| 10SN54-153 |  | Monta¿ ruroci¹gów – Sekcja 24 | 22.6d | 2027-05-19 | 2027-06-18 | 10SN54-152, 10SN54-014 SS |  | 120.5d |
| 10SN54-154 |  | Próba ciœnieniowa – Sekcja 24 | 6d | 2027-06-21 | 2027-06-28 | 10SN54-153 |  | 120.5d |
| 10SN54-155 |  | Izolacje – Sekcja 24 | 9d | 2027-06-29 | 2027-07-09 | 10SN54-154 |  | 120.5d |
| 10SN54-156 |  | Malowanie i oznakowanie – Sekcja 24 | 4d | 2027-07-08 | 2027-07-13 | 10SN54-155 FF+2d |  | 120.5d |
|  | SEKCJA 25 | **Sekcja 25** |  | 2026-09-14 | 2027-07-05 |  |  |  |
| 10SN54-159 |  | Prefabrykacja ruroci¹gów – Sekcja 25 | 13.9d | 2026-09-14 A | 2026-10-07 | 10SN54-012, 10SN54-152 SS+5d | 53% | 291.3d |
| 10SN54-160 |  | Monta¿ ruroci¹gów – Sekcja 25 | 20.7d | 2027-05-20 | 2027-06-17 | 10SN54-159, 10SN54-014 SS+1d |  | 126.4d |
| 10SN54-161 |  | Próba ciœnieniowa – Sekcja 25 | 4d | 2027-06-18 | 2027-06-23 | 10SN54-160 |  | 126.4d |
| 10SN54-162 |  | Izolacje – Sekcja 25 | 6d | 2027-06-24 | 2027-07-01 | 10SN54-161 |  | 126.4d |
| 10SN54-163 |  | Malowanie i oznakowanie – Sekcja 25 | 4d | 2027-06-30 | 2027-07-05 | 10SN54-162 FF+2d |  | 126.4d |
|  | PROJ | **Projektowanie** |  | 2025-06-20 | 2025-12-22 |  |  |  |
|  | DOKUMENTAC | **Dokumentacja** |  | 2025-06-20 | 2025-12-22 |  |  |  |
| 10SN54-001 |  | Projekt wykonawczy – Rozdzielnia 110 kV | 100d | 2025-06-20 A | 2025-11-07 A |  | 100% |  |
| 10SN54-002 |  | Uzgodnienie dokumentacji z Inwestorem | 24d | 2025-11-10 A | 2025-12-11 A | 10SN54-001 | 100% |  |
| 10SN54-003 |  | Zatwierdzenie dokumentacji do realizacji | 7d | 2025-12-09 A | 2025-12-17 A | 10SN54-002 | 100% |  |
| 10SN54-004 |  | KM: Dokumentacja zatwierdzona – Rozdzielnia 110 kV | 0d | 2025-12-22 A | 2025-12-22 | 10SN54-003 | 100% |  |
|  | ROZR | **Rozruch** |  | 2027-07-14 | 2027-08-13 |  |  |  |
|  | ROZRUCH | **Rozruch** |  | 2027-07-14 | 2027-08-13 |  |  |  |
| 10SN54-166 |  | Przegl¹d gotowoœci do rozruchu | 4d | 2027-07-14 | 2027-07-19 | 10SN54-165, 10SN54-019, 10SN54-024, 10SN54-026 |  | 120.5d |
| 10SN54-167 |  | Rozruch na zimno | 5d | 2027-07-20 | 2027-07-26 | 10SN54-166 |  | 120.5d |
| 10SN54-168 |  | Rozruch na gor¹co / próby ruchowe | 13d | 2027-07-27 | 2027-08-12 | 10SN54-167 |  | 120.5d |
| 10SN54-169 |  | KM: Odbiór koñcowy – Rozdzielnia 110 kV | 0d | 2027-08-13 | 2027-08-13 | 10SN54-168 |  | 120.5d |
|  | ZAKU | **Zakupy** |  | 2025-07-18 | 2027-05-19 |  |  |  |
|  | DOSTAWY | **Dostawy** |  | 2026-01-01 | 2027-05-19 |  |  |  |
| 10SN54-008 |  | Produkcja u dostawcy | 300d | 2026-01-01 A | 2027-04-02 | 10SN54-007 | 55% | 148.3d |
| 10SN54-009 |  | Testy FAT | 6d | 2027-04-05 | 2027-04-12 | 10SN54-008 |  | 120.5d |
| 10SN54-010 |  | Transport i dostawa na plac budowy | 26d | 2027-04-13 | 2027-05-18 | 10SN54-009 |  | 120.5d |
| 10SN54-011 |  | KM: Dostawa na budowê – Rozdzielnia 110 kV | 0d | 2027-05-19 | 2027-05-19 | 10SN54-010 |  | 120.5d |
|  | ZAMÓWIENIA | **Zamówienia** |  | 2025-07-18 | 2026-01-02 |  |  |  |
| 10SN54-005 |  | Zapytanie ofertowe | 29d | 2025-07-18 A | 2025-08-27 A | 10SN54-001 SS+20d | 100% |  |
| 10SN54-006 |  | Analiza i wybór ofert | 11d | 2025-08-29 A | 2025-09-16 A | 10SN54-005 | 100% |  |
| 10SN54-007 |  | Zawarcie umowy / zamówienie | 6d | 2025-12-24 A | 2026-01-02 A | 10SN54-006, 10SN54-004 SS, 28BW90-004 FS+12d | 100% |  |
|  | 11XQ69 | **11XQ69 – Zasilanie awaryjne** |  | 2025-06-18 | 2027-02-11 |  |  |  |
|  | BUDO | **Budowa** |  | 2025-11-24 | 2026-12-16 |  |  |  |
|  | AKPIA | **AKPiA** |  | 2026-10-23 | 2026-11-25 |  |  |  |
| 11XQ69-087 |  | Monta¿ uk³adów AKPiA | 24d | 2026-10-23 | 2026-11-25 | 11XQ69-014 SS+5d |  | 263.2d |
|  | ELEKTRYKA | **Elektryka** |  | 2026-10-27 | 2026-11-24 |  |  |  |

| ID | WBS | Task | Duration | Start | Finish | Predecessors | Complete | Total float |
| --- | --- | --- | --- | --- | --- | --- | --- | --- |
| 11XQ69-026 |  | Pod³¹czenia i pomiary – trasa 02 | 7d | 2026-10-27 | 2026-11-04 | 11XQ69-025 FF |  | 278.2d |
| 11XQ69-025 |  | Uk³adanie kabli – trasa 02 | 4d | 2026-10-30 | 2026-11-04 | 11XQ69-014 SS+10d |  | 278.2d |
| 11XQ69-037 |  | Uk³adanie kabli – trasa 04 | 9d | 2026-10-30 | 2026-11-11 | 11XQ69-014 SS+10d |  | 326.2d |
| 11XQ69-049 |  | Uk³adanie kabli – trasa 06 | 18d | 2026-10-30 | 2026-11-24 | 11XQ69-014 SS+10d |  | 317.2d |
| 11XQ69-061 |  | Uk³adanie kabli – trasa 08 | 16d | 2026-10-30 | 2026-11-20 | 11XQ69-014 SS+10d |  | 319.2d |
| 11XQ69-073 |  | Uk³adanie kabli – trasa 10 | 18d | 2026-10-30 | 2026-11-24 | 11XQ69-014 SS+10d |  | 317.2d |
| 11XQ69-085 |  | Uk³adanie kabli – trasa 12 | 4d | 2026-10-30 | 2026-11-04 | 11XQ69-014 SS+10d |  | 278.2d |
| 11XQ69-086 |  | Pod³¹czenia i pomiary – trasa 12 | 3d | 2026-11-04 | 2026-11-06 | 11XQ69-085 FF |  | 276.9d |
| 11XQ69-038 |  | Pod³¹czenia i pomiary – trasa 04 | 4d | 2026-11-06 | 2026-11-11 | 11XQ69-037 FF |  | 326.2d |
| 11XQ69-050 |  | Pod³¹czenia i pomiary – trasa 06 | 10d | 2026-11-11 | 2026-11-24 | 11XQ69-049 FF |  | 317.2d |
| 11XQ69-062 |  | Pod³¹czenia i pomiary – trasa 08 | 4d | 2026-11-17 | 2026-11-20 | 11XQ69-061 FF |  | 319.2d |
| 11XQ69-074 |  | Pod³¹czenia i pomiary – trasa 10 | 4d | 2026-11-19 | 2026-11-24 | 11XQ69-073 FF |  | 317.2d |
|  | MONTA¯ | **Monta¿** |  | 2026-02-09 | 2026-12-14 |  |  |  |
| 11XQ69-013 |  | Monta¿ konstrukcji stalowych | 23d | 2026-02-09 A | 2026-03-13 A | 11XQ69-012 | 100% |  |
| 11XQ69-014 |  | Monta¿ urz¹dzeñ g³ównych | 35d | 2026-10-16 | 2026-12-03 | 11XQ69-013, 11XQ69-011 |  | 251d |
| 11XQ69-088 |  | KM: Zakoñczenie monta¿u – Zasilanie awaryjne | 0d | 2026-12-14 | 2026-12-14 | 11XQ69-079, 11XQ69-084, 11XQ69-086, 11XQ69-087, 11XQ69-014 |  | 251d |
|  | ROBOTY BUD | **Roboty budowlane** |  | 2025-11-24 | 2026-02-09 |  |  |  |
| 11XQ69-012 |  | Fundamenty i roboty ziemne | 56d | 2025-11-24 A | 2026-02-09 A | 11XQ69-007 FS+10d | 100% |  |
|  | RUROCI¥GI | **Ruroci¹gi** |  | 2026-02-09 | 2026-12-16 |  |  |  |
|  | SEKCJA 01 | **Sekcja 01** |  | 2026-02-09 | 2026-12-10 |  |  |  |
| 11XQ69-015 |  | Prefabrykacja ruroci¹gów – Sekcja 01 | 10.1d | 2026-02-09 A | 2026-02-20 A | 11XQ69-012 | 100% |  |
| 11XQ69-016 |  | Monta¿ ruroci¹gów – Sekcja 01 | 13.8d | 2026-10-29 | 2026-11-17 | 11XQ69-015, 11XQ69-014 SS+9d |  | 252.4d |
| 11XQ69-017 |  | Próba ciœnieniowa – Sekcja 01 | 3d | 2026-11-18 | 2026-11-20 | 11XQ69-016 |  | 252.4d |
| 11XQ69-018 |  | Izolacje – Sekcja 01 | 12d | 2026-11-23 | 2026-12-08 | 11XQ69-017 |  | 252.4d |
| 11XQ69-019 |  | Malowanie i oznakowanie – Sekcja 01 | 6d | 2026-12-03 | 2026-12-10 | 11XQ69-018 FF+2d |  | 252.4d |
|  | SEKCJA 02 | **Sekcja 02** |  | 2026-02-16 | 2026-12-07 |  |  |  |
| 11XQ69-020 |  | Prefabrykacja ruroci¹gów – Sekcja 02 | 9.6d | 2026-02-16 A | 2026-03-02 A | 11XQ69-012, 11XQ69-015 SS+5d | 100% |  |
| 11XQ69-021 |  | Monta¿ ruroci¹gów – Sekcja 02 | 21.7d | 2026-10-16 | 2026-11-16 | 11XQ69-020, 11XQ69-014 SS |  | 255.5d |
| 11XQ69-022 |  | Próba ciœnieniowa – Sekcja 02 | 4d | 2026-11-17 | 2026-11-20 | 11XQ69-021 |  | 255.5d |
| 11XQ69-023 |  | Izolacje – Sekcja 02 | 9d | 2026-11-23 | 2026-12-03 | 11XQ69-022 |  | 255.5d |
| 11XQ69-024 |  | Malowanie i oznakowanie – Sekcja 02 | 7d | 2026-11-27 | 2026-12-07 | 11XQ69-023 FF+2d |  | 255.5d |
|  | SEKCJA 03 | **Sekcja 03** |  | 2026-02-24 | 2026-12-01 |  |  |  |
|  | PODSEKCJA | **Podsekcja 03.A** |  | 2026-02-24 | 2026-12-01 |  |  |  |
| 11XQ69-027 |  | Prefabrykacja ruroci¹gów – Sekcja 03 | 12.2d | 2026-02-24 A | 2026-03-13 A | 11XQ69-012, 11XQ69-020 SS+5d | 100% |  |
| 11XQ69-028 |  | Monta¿ ruroci¹gów – Sekcja 03 | 10.8d | 2026-10-28 | 2026-11-11 | 11XQ69-027, 11XQ69-014 SS+8d |  | 312.4d |
| 11XQ69-029 |  | Próba ciœnieniowa – Sekcja 03 | 2d | 2026-11-12 | 2026-11-13 | 11XQ69-028 |  | 312.4d |
| 11XQ69-030 |  | Izolacje – Sekcja 03 | 10d | 2026-11-16 | 2026-11-27 | 11XQ69-029 |  | 312.4d |
| 11XQ69-031 |  | Malowanie i oznakowanie – Sekcja 03 | 5d | 2026-11-25 | 2026-12-01 | 11XQ69-030 FF+2d |  | 312.4d |
|  | SEKCJA 04 | **Sekcja 04** |  | 2026-03-05 | 2026-11-27 |  |  |  |
| 11XQ69-032 |  | Prefabrykacja ruroci¹gów – Sekcja 04 | 4.3d | 2026-03-05 A | 2026-03-12 A | 11XQ69-012, 11XQ69-027 SS+5d | 100% |  |
| 11XQ69-033 |  | Monta¿ ruroci¹gów – Sekcja 04 | 13.8d | 2026-10-27 | 2026-11-13 | 11XQ69-032, 11XQ69-014 SS+7d |  | 314.4d |
| 11XQ69-034 |  | Próba ciœnieniowa – Sekcja 04 | 5d | 2026-11-16 | 2026-11-20 | 11XQ69-033 |  | 314.4d |
| 11XQ69-036 |  | Malowanie i oznakowanie – Sekcja 04 | 6d | 2026-11-20 | 2026-11-27 | 11XQ69-035 FF+2d |  | 314.4d |
| 11XQ69-035 |  | Izolacje – Sekcja 04 | 3d | 2026-11-23 | 2026-11-25 | 11XQ69-034 |  | 314.4d |
|  | SEKCJA 05 | **Sekcja 05** |  | 2026-03-12 | 2026-12-03 |  |  |  |
| 11XQ69-039 |  | Prefabrykacja ruroci¹gów – Sekcja 05 | 13.4d | 2026-03-12 A | 2026-03-30 A | 11XQ69-012, 11XQ69-032 SS+5d | 100% |  |
| 11XQ69-040 |  | Monta¿ ruroci¹gów – Sekcja 05 | 20.9d | 2026-10-19 | 2026-11-16 | 11XQ69-039, 11XQ69-014 SS+1d |  | 310.3d |
| 11XQ69-041 |  | Próba ciœnieniowa – Sekcja 05 | 3d | 2026-11-17 | 2026-11-19 | 11XQ69-040 |  | 310.3d |
| 11XQ69-042 |  | Izolacje – Sekcja 05 | 8d | 2026-11-20 | 2026-12-01 | 11XQ69-041 |  | 310.3d |
| 11XQ69-043 |  | Malowanie i oznakowanie – Sekcja 05 | 4d | 2026-11-30 | 2026-12-03 | 11XQ69-042 FF+2d |  | 310.3d |
|  | SEKCJA 06 | **Sekcja 06** |  | 2026-03-20 | 2026-12-08 |  |  |  |
|  | PODSEKCJA | **Podsekcja 06.A** |  | 2026-03-20 | 2026-12-08 |  |  |  |
| 11XQ69-044 |  | Prefabrykacja ruroci¹gów – Sekcja 06 | 8d | 2026-03-20 A | 2026-04-02 A | 11XQ69-012, 11XQ69-039 SS+5d | 100% |  |
| 11XQ69-045 |  | Monta¿ ruroci¹gów – Sekcja 06 | 23.8d | 2026-10-22 | 2026-11-24 | 11XQ69-044, 11XQ69-014 SS+4d |  | 307.4d |
| 11XQ69-046 |  | Próba ciœnieniowa – Sekcja 06 | 4d | 2026-11-25 | 2026-11-30 | 11XQ69-045 |  | 307.4d |
| 11XQ69-047 |  | Izolacje – Sekcja 06 | 4d | 2026-12-01 | 2026-12-04 | 11XQ69-046 |  | 307.4d |
| 11XQ69-048 |  | Malowanie i oznakowanie – Sekcja 06 | 4d | 2026-12-03 | 2026-12-08 | 11XQ69-047 FF+2d |  | 307.4d |
|  | SEKCJA 07 | **Sekcja 07** |  | 2026-03-25 | 2026-12-08 |  |  |  |
| 11XQ69-051 |  | Prefabrykacja ruroci¹gów – Sekcja 07 | 8.6d | 2026-03-25 A | 2026-04-03 A | 11XQ69-012, 11XQ69-044 SS+5d | 100% |  |
| 11XQ69-052 |  | Monta¿ ruroci¹gów – Sekcja 07 | 17.7d | 2026-10-30 | 2026-11-24 | 11XQ69-051, 11XQ69-014 SS+10d |  | 307.5d |
| 11XQ69-053 |  | Próba ciœnieniowa – Sekcja 07 | 3d | 2026-11-25 | 2026-11-27 | 11XQ69-052 |  | 307.5d |
| 11XQ69-054 |  | Izolacje – Sekcja 07 | 5d | 2026-11-30 | 2026-12-04 | 11XQ69-053 |  | 307.5d |
| 11XQ69-055 |  | Malowanie i oznakowanie – Sekcja 07 | 6d | 2026-12-01 | 2026-12-08 | 11XQ69-054 FF+2d |  | 307.5d |
|  | SEKCJA 08 | **Sekcja 08** |  | 2026-04-01 | 2026-11-19 |  |  |  |
| 11XQ69-056 |  | Prefabrykacja ruroci¹gów – Sekcja 08 | 14.4d | 2026-04-01 A | 2026-04-20 A | 11XQ69-012, 11XQ69-051 SS+5d | 100% |  |
| 11XQ69-057 |  | Monta¿ ruroci¹gów – Sekcja 08 | 6.1d | 2026-10-23 | 2026-10-30 | 11XQ69-056, 11XQ69-014 SS+5d |  | 320.1d |
| 11XQ69-058 |  | Próba ciœnieniowa – Sekcja 08 | 5d | 2026-11-02 | 2026-11-06 | 11XQ69-057 |  | 320.1d |
| 11XQ69-059 |  | Izolacje – Sekcja 08 | 7d | 2026-11-09 | 2026-11-17 | 11XQ69-058 |  | 320.1d |
| 11XQ69-060 |  | Malowanie i oznakowanie – Sekcja 08 | 5d | 2026-11-13 | 2026-11-19 | 11XQ69-059 FF+2d |  | 320.1d |
|  | SEKCJA 09 | **Sekcja 09** |  | 2026-04-09 | 2026-12-16 |  |  |  |

| ID | WBS | Task | Duration | Start | Finish | Predecessors | Complete | Total float |
| --- | --- | --- | --- | --- | --- | --- | --- | --- |
|  | PODSEKCJA | **Podsekcja 09.A** |  | 2026-04-09 | 2026-12-16 |  |  |  |
| 11XQ69-063 |  | Prefabrykacja ruroci¹gów – Sekcja 09 | 14.6d | 2026-04-09 A | 2026-04-28 A | 11XQ69-012, 11XQ69-056 SS+5d | 100% |  |
| 11XQ69-064 |  | Monta¿ ruroci¹gów – Sekcja 09 | 17.6d | 2026-10-30 | 2026-11-24 | 11XQ69-063, 11XQ69-014 SS+10d |  | 301.6d |
| 11XQ69-065 |  | Próba ciœnieniowa – Sekcja 09 | 6d | 2026-11-25 | 2026-12-02 | 11XQ69-064 |  | 301.6d |
| 11XQ69-066 |  | Izolacje – Sekcja 09 | 8d | 2026-12-03 | 2026-12-14 | 11XQ69-065 |  | 301.6d |
| 11XQ69-067 |  | Malowanie i oznakowanie – Sekcja 09 | 2d | 2026-12-15 | 2026-12-16 | 11XQ69-066 FF+2d |  | 301.6d |
|  | SEKCJA 10 | **Sekcja 10** |  | 2026-04-13 | 2026-11-11 |  |  |  |
| 11XQ69-068 |  | Prefabrykacja ruroci¹gów – Sekcja 10 | 13d | 2026-04-13 A | 2026-04-30 A | 11XQ69-012, 11XQ69-063 SS+5d | 100% |  |
| 11XQ69-069 |  | Monta¿ ruroci¹gów – Sekcja 10 | 5.9d | 2026-10-19 | 2026-10-26 | 11XQ69-068, 11XQ69-014 SS+1d |  | 326.3d |
| 11XQ69-070 |  | Próba ciœnieniowa – Sekcja 10 | 5d | 2026-10-27 | 2026-11-02 | 11XQ69-069 |  | 326.3d |
| 11XQ69-071 |  | Izolacje – Sekcja 10 | 5d | 2026-11-03 | 2026-11-09 | 11XQ69-070 |  | 326.3d |
| 11XQ69-072 |  | Malowanie i oznakowanie – Sekcja 10 | 4d | 2026-11-06 | 2026-11-11 | 11XQ69-071 FF+2d |  | 326.3d |
|  | SEKCJA 11 | **Sekcja 11** |  | 2026-04-27 | 2026-11-23 |  |  |  |
| 11XQ69-075 |  | Prefabrykacja ruroci¹gów – Sekcja 11 | 12.5d | 2026-04-27 A | 2026-10-13 | 11XQ69-012, 11XQ69-068 SS+5d | 20% | 361.5d |
| 11XQ69-076 |  | Monta¿ ruroci¹gów – Sekcja 11 | 13.4d | 2026-10-22 | 2026-11-10 | 11XQ69-075, 11XQ69-014 SS+4d |  | 265.8d |
| 11XQ69-077 |  | Próba ciœnieniowa – Sekcja 11 | 4d | 2026-11-11 | 2026-11-16 | 11XQ69-076 |  | 265.8d |
| 11XQ69-079 |  | Malowanie i oznakowanie – Sekcja 11 | 7d | 2026-11-13 | 2026-11-23 | 11XQ69-078 FF+2d |  | 265.8d |
| 11XQ69-078 |  | Izolacje – Sekcja 11 | 3d | 2026-11-17 | 2026-11-19 | 11XQ69-077 |  | 265.8d |
|  | SEKCJA 12 | **Sekcja 12** |  | 2026-04-29 | 2026-12-11 |  |  |  |
|  | PODSEKCJA | **Podsekcja 12.A** |  | 2026-04-29 | 2026-12-11 |  |  |  |
| 11XQ69-080 |  | Prefabrykacja ruroci¹gów – Sekcja 12 | 14.2d | 2026-04-29 A | 2026-05-19 A | 11XQ69-012, 11XQ69-075 SS+5d | 100% |  |
| 11XQ69-081 |  | Monta¿ ruroci¹gów – Sekcja 12 | 18.2d | 2026-10-23 | 2026-11-17 | 11XQ69-080, 11XQ69-014 SS+5d |  | 251d |
| 11XQ69-082 |  | Próba ciœnieniowa – Sekcja 12 | 6d | 2026-11-18 | 2026-11-25 | 11XQ69-081 |  | 251d |
| 11XQ69-083 |  | Izolacje – Sekcja 12 | 10d | 2026-11-26 | 2026-12-09 | 11XQ69-082 |  | 251d |
| 11XQ69-084 |  | Malowanie i oznakowanie – Sekcja 12 | 5d | 2026-12-07 | 2026-12-11 | 11XQ69-083 FF+2d |  | 251d |
|  | PROJ | **Projektowanie** |  | 2025-06-18 | 2025-10-31 |  |  |  |
|  | DOKUMENTAC | **Dokumentacja** |  | 2025-06-18 | 2025-10-31 |  |  |  |
| 11XQ69-001 |  | Projekt wykonawczy – Zasilanie awaryjne | 65d | 2025-06-18 A | 2025-09-16 A |  | 100% |  |
| 11XQ69-002 |  | Uzgodnienie dokumentacji z Inwestorem | 21d | 2025-09-22 A | 2025-10-21 A | 11XQ69-001 | 100% |  |
| 11XQ69-003 |  | Zatwierdzenie dokumentacji do realizacji | 9d | 2025-10-21 A | 2025-10-31 A | 11XQ69-002 | 100% |  |
| 11XQ69-004 |  | KM: Dokumentacja zatwierdzona – Zasilanie awaryjne | 0d | 2025-10-30 A | 2025-10-30 | 11XQ69-003 | 100% |  |
|  | ROZR | **Rozruch** |  | 2026-12-14 | 2027-02-11 |  |  |  |
|  | ROZRUCH | **Rozruch** |  | 2026-12-14 | 2027-02-11 |  |  |  |
| 11XQ69-089 |  | Przegl¹d gotowoœci do rozruchu | 8d | 2026-12-14 | 2026-12-23 | 11XQ69-088, 11XQ69-019, 11XQ69-024, 11XQ69-026 |  | 251d |
| 11XQ69-090 |  | Rozruch na zimno | 13d | 2026-12-24 | 2027-01-11 | 11XQ69-089 |  | 251d |
| 11XQ69-091 |  | Rozruch na gor¹co / próby ruchowe | 22d | 2027-01-12 | 2027-02-10 | 11XQ69-090 |  | 251d |
| 11XQ69-092 |  | KM: Odbiór koñcowy – Zasilanie awaryjne | 0d | 2027-02-11 | 2027-02-11 | 11XQ69-091 |  | 251d |
|  | ZAKU | **Zakupy** |  | 2025-07-22 | 2026-10-16 |  |  |  |
|  | DOSTAWY | **Dostawy** |  | 2025-11-12 | 2026-10-16 |  |  |  |
| 11XQ69-008 |  | Produkcja u dostawcy | 216d | 2025-11-12 A | 2026-09-11 A | 11XQ69-007 | 100% |  |
| 11XQ69-009 |  | Testy FAT | 8d | 2026-09-07 A | 2026-09-18 A | 11XQ69-008 | 100% |  |
| 11XQ69-010 |  | Transport i dostawa na plac budowy | 33d | 2026-09-24 A | 2026-10-15 | 11XQ69-009 | 62% | 234.7d |
| 11XQ69-011 |  | KM: Dostawa na budowê – Zasilanie awaryjne | 0d | 2026-10-16 | 2026-10-16 | 11XQ69-010 |  | 251d |
|  | ZAMÓWIENIA | **Zamówienia** |  | 2025-07-22 | 2025-11-12 |  |  |  |
| 11XQ69-005 |  | Zapytanie ofertowe | 17d | 2025-07-22 A | 2025-08-18 A | 11XQ69-001 SS+20d | 100% |  |
| 11XQ69-006 |  | Analiza i wybór ofert | 20d | 2025-08-11 A | 2025-09-10 A | 11XQ69-005 | 100% |  |
| 11XQ69-007 |  | Zawarcie umowy / zamówienie | 7d | 2025-10-30 A | 2025-11-12 A | 11XQ69-006, 11XQ69-004 SS, 10TM34-004 FS+4d | 100% |  |
|  | 14WE74 | **14WE74 – Uk³ady wyprowadzenia mocy** |  | 2025-01-31 | 2027-08-16 |  |  |  |
|  | BUDO | **Budowa** |  | 2025-10-03 | 2027-07-21 |  |  |  |
|  | AKPIA | **AKPiA** |  | 2027-05-24 | 2027-06-17 |  |  |  |
| 14WE74-111 |  | Monta¿ uk³adów AKPiA | 19d | 2027-05-24 | 2027-06-17 | 14WE74-014 SS+5d |  | 137.3d |
|  | ELEKTRYKA | **Elektryka** |  | 2027-05-28 | 2027-06-24 |  |  |  |
| 14WE74-026 |  | Pod³¹czenia i pomiary – trasa 02 | 7d | 2027-05-28 | 2027-06-07 | 14WE74-025 FF |  | 145.3d |
| 14WE74-025 |  | Uk³adanie kabli – trasa 02 | 6d | 2027-05-31 | 2027-06-07 | 14WE74-014 SS+10d |  | 145.3d |
| 14WE74-037 |  | Uk³adanie kabli – trasa 04 | 19d | 2027-05-31 | 2027-06-24 | 14WE74-014 SS+10d |  | 165.3d |
| 14WE74-049 |  | Uk³adanie kabli – trasa 06 | 12d | 2027-05-31 | 2027-06-15 | 14WE74-014 SS+10d |  | 172.3d |
| 14WE74-061 |  | Uk³adanie kabli – trasa 08 | 11d | 2027-05-31 | 2027-06-14 | 14WE74-014 SS+10d |  | 173.3d |
| 14WE74-073 |  | Uk³adanie kabli – trasa 10 | 18d | 2027-05-31 | 2027-06-23 | 14WE74-014 SS+10d |  | 166.3d |
| 14WE74-085 |  | Uk³adanie kabli – trasa 12 | 12d | 2027-05-31 | 2027-06-15 | 14WE74-014 SS+10d |  | 172.3d |
| 14WE74-097 |  | Uk³adanie kabli – trasa 14 | 8d | 2027-05-31 | 2027-06-09 | 14WE74-014 SS+10d |  | 176.3d |
| 14WE74-109 |  | Uk³adanie kabli – trasa 16 | 7d | 2027-05-31 | 2027-06-08 | 14WE74-014 SS+10d |  | 144.3d |
| 14WE74-110 |  | Pod³¹czenia i pomiary – trasa 16 | 4d | 2027-06-03 | 2027-06-08 | 14WE74-109 FF |  | 144.3d |
| 14WE74-050 |  | Pod³¹czenia i pomiary – trasa 06 | 7d | 2027-06-07 | 2027-06-15 | 14WE74-049 FF |  | 172.3d |
| 14WE74-098 |  | Pod³¹czenia i pomiary – trasa 14 | 3d | 2027-06-07 | 2027-06-09 | 14WE74-097 FF |  | 176.3d |
| 14WE74-062 |  | Pod³¹czenia i pomiary – trasa 08 | 3d | 2027-06-10 | 2027-06-14 | 14WE74-061 FF |  | 173.3d |
| 14WE74-086 |  | Pod³¹czenia i pomiary – trasa 12 | 4d | 2027-06-10 | 2027-06-15 | 14WE74-085 FF |  | 172.3d |
| 14WE74-074 |  | Pod³¹czenia i pomiary – trasa 10 | 7d | 2027-06-15 | 2027-06-23 | 14WE74-073 FF |  | 166.3d |
| 14WE74-038 |  | Pod³¹czenia i pomiary – trasa 04 | 7d | 2027-06-16 | 2027-06-24 | 14WE74-037 FF |  | 165.3d |
|  | MONTA¯ | **Monta¿** |  | 2025-11-14 | 2027-07-01 |  |  |  |
| 14WE74-013 |  | Monta¿ konstrukcji stalowych | 41d | 2025-11-14 A | 2026-01-12 A | 14WE74-012 | 100% |  |

| ID | WBS | Task | Duration | Start | Finish | Predecessors | Complete | Total float |
| --- | --- | --- | --- | --- | --- | --- | --- | --- |
| 14WE74-014 |  | Monta¿ urz¹dzeñ g³ównych | 33d | 2027-05-17 | 2027-06-30 | 14WE74-013, 14WE74-011 |  | 119.4d |
| 14WE74-112 |  | KM: Zakoñczenie monta¿u – Uk³ady wyprowadzenia mocy | 0d | 2027-07-01 | 2027-07-01 | 14WE74-103, 14WE74-108, 14WE74-110, 14WE74-111, 14WE74-014 |  | 128.3d |
|  | ROBOTY BUD | **Roboty budowlane** |  | 2025-10-03 | 2025-11-20 |  |  |  |
| 14WE74-012 |  | Fundamenty i roboty ziemne | 33d | 2025-10-03 A | 2025-11-20 A | 14WE74-007 FS+11d | 100% |  |
|  | RUROCI¥GI | **Ruroci¹gi** |  | 2025-11-14 | 2027-07-21 |  |  |  |
|  | SEKCJA 01 | **Sekcja 01** |  | 2025-11-14 | 2027-07-13 |  |  |  |
| 14WE74-015 |  | Prefabrykacja ruroci¹gów – Sekcja 01 | 10.9d | 2025-11-14 A | 2025-11-27 A | 14WE74-012 | 100% |  |
| 14WE74-016 |  | Monta¿ ruroci¹gów – Sekcja 01 | 22.9d | 2027-05-20 | 2027-06-21 | 14WE74-015, 14WE74-014 SS+3d |  | 119.4d |
| 14WE74-017 |  | Próba ciœnieniowa – Sekcja 01 | 4d | 2027-06-22 | 2027-06-25 | 14WE74-016 |  | 119.4d |
| 14WE74-018 |  | Izolacje – Sekcja 01 | 10d | 2027-06-28 | 2027-07-09 | 14WE74-017 |  | 119.4d |
| 14WE74-019 |  | Malowanie i oznakowanie – Sekcja 01 | 7d | 2027-07-05 | 2027-07-13 | 14WE74-018 FF+2d |  | 119.4d |
|  | SEKCJA 02 | **Sekcja 02** |  | 2025-11-21 | 2027-06-30 |  |  |  |
| 14WE74-020 |  | Prefabrykacja ruroci¹gów – Sekcja 02 | 9.7d | 2025-11-21 A | 2025-12-08 A | 14WE74-012, 14WE74-015 SS+5d | 100% |  |
| 14WE74-021 |  | Monta¿ ruroci¹gów – Sekcja 02 | 19.1d | 2027-05-19 | 2027-06-14 | 14WE74-020, 14WE74-014 SS+2d |  | 128.2d |
| 14WE74-022 |  | Próba ciœnieniowa – Sekcja 02 | 3d | 2027-06-15 | 2027-06-17 | 14WE74-021 |  | 128.2d |
| 14WE74-023 |  | Izolacje – Sekcja 02 | 7d | 2027-06-18 | 2027-06-28 | 14WE74-022 |  | 128.2d |
| 14WE74-024 |  | Malowanie i oznakowanie – Sekcja 02 | 4d | 2027-06-25 | 2027-06-30 | 14WE74-023 FF+2d |  | 128.2d |
|  | SEKCJA 03 | **Sekcja 03** |  | 2025-12-04 | 2027-06-22 |  |  |  |
|  | PODSEKCJA | **Podsekcja 03.A** |  | 2025-12-04 | 2027-06-22 |  |  |  |
| 14WE74-027 |  | Prefabrykacja ruroci¹gów – Sekcja 03 | 7.2d | 2025-12-04 A | 2025-12-17 A | 14WE74-012, 14WE74-020 SS+5d | 100% |  |
| 14WE74-028 |  | Monta¿ ruroci¹gów – Sekcja 03 | 7.5d | 2027-05-24 | 2027-06-02 | 14WE74-027, 14WE74-014 SS+5d |  | 167.8d |
| 14WE74-029 |  | Próba ciœnieniowa – Sekcja 03 | 6d | 2027-06-03 | 2027-06-10 | 14WE74-028 |  | 167.8d |
| 14WE74-030 |  | Izolacje – Sekcja 03 | 6d | 2027-06-11 | 2027-06-18 | 14WE74-029 |  | 167.8d |
| 14WE74-031 |  | Malowanie i oznakowanie – Sekcja 03 | 5d | 2027-06-16 | 2027-06-22 | 14WE74-030 FF+2d |  | 167.8d |
|  | SEKCJA 04 | **Sekcja 04** |  | 2025-12-09 | 2027-07-13 |  |  |  |
| 14WE74-032 |  | Prefabrykacja ruroci¹gów – Sekcja 04 | 10.9d | 2025-12-09 A | 2025-12-22 A | 14WE74-012, 14WE74-027 SS+5d | 100% |  |
| 14WE74-033 |  | Monta¿ ruroci¹gów – Sekcja 04 | 22.1d | 2027-05-31 | 2027-06-29 | 14WE74-032, 14WE74-014 SS+10d |  | 152.2d |
| 14WE74-034 |  | Próba ciœnieniowa – Sekcja 04 | 2d | 2027-06-30 | 2027-07-01 | 14WE74-033 |  | 152.2d |
| 14WE74-035 |  | Izolacje – Sekcja 04 | 6d | 2027-07-02 | 2027-07-09 | 14WE74-034 |  | 152.2d |
| 14WE74-036 |  | Malowanie i oznakowanie – Sekcja 04 | 3d | 2027-07-09 | 2027-07-13 | 14WE74-035 FF+2d |  | 152.2d |
|  | SEKCJA 05 | **Sekcja 05** |  | 2025-12-15 | 2027-07-08 |  |  |  |
| 14WE74-039 |  | Prefabrykacja ruroci¹gów – Sekcja 05 | 13.9d | 2025-12-15 A | 2026-01-02 A | 14WE74-012, 14WE74-032 SS+5d | 100% |  |
| 14WE74-040 |  | Monta¿ ruroci¹gów – Sekcja 05 | 19.7d | 2027-05-20 | 2027-06-16 | 14WE74-039, 14WE74-014 SS+3d |  | 155.6d |
| 14WE74-041 |  | Próba ciœnieniowa – Sekcja 05 | 2d | 2027-06-17 | 2027-06-18 | 14WE74-040 |  | 155.6d |
| 14WE74-042 |  | Izolacje – Sekcja 05 | 12d | 2027-06-21 | 2027-07-06 | 14WE74-041 |  | 155.6d |
| 14WE74-043 |  | Malowanie i oznakowanie – Sekcja 05 | 6d | 2027-07-01 | 2027-07-08 | 14WE74-042 FF+2d |  | 155.6d |
|  | SEKCJA 06 | **Sekcja 06** |  | 2025-12-24 | 2027-07-09 |  |  |  |
|  | PODSEKCJA | **Podsekcja 06.A** |  | 2025-12-24 | 2027-07-09 |  |  |  |
| 14WE74-044 |  | Prefabrykacja ruroci¹gów – Sekcja 06 | 14.3d | 2025-12-24 A | 2026-01-14 A | 14WE74-012, 14WE74-039 SS+5d | 100% |  |
| 14WE74-045 |  | Monta¿ ruroci¹gów – Sekcja 06 | 16.1d | 2027-05-31 | 2027-06-21 | 14WE74-044, 14WE74-014 SS+10d |  | 154.2d |
| 14WE74-046 |  | Próba ciœnieniowa – Sekcja 06 | 2d | 2027-06-22 | 2027-06-23 | 14WE74-045 |  | 154.2d |
| 14WE74-047 |  | Izolacje – Sekcja 06 | 10d | 2027-06-24 | 2027-07-07 | 14WE74-046 |  | 154.2d |
| 14WE74-048 |  | Malowanie i oznakowanie – Sekcja 06 | 5d | 2027-07-05 | 2027-07-09 | 14WE74-047 FF+2d |  | 154.2d |
|  | SEKCJA 07 | **Sekcja 07** |  | 2025-12-31 | 2027-06-24 |  |  |  |
| 14WE74-051 |  | Prefabrykacja ruroci¹gów – Sekcja 07 | 10.3d | 2025-12-31 A | 2026-01-15 A | 14WE74-012, 14WE74-044 SS+5d | 100% |  |
| 14WE74-052 |  | Monta¿ ruroci¹gów – Sekcja 07 | 12.3d | 2027-05-27 | 2027-06-11 | 14WE74-051, 14WE74-014 SS+8d |  | 165d |
| 14WE74-053 |  | Próba ciœnieniowa – Sekcja 07 | 2d | 2027-06-14 | 2027-06-15 | 14WE74-052 |  | 165d |
| 14WE74-055 |  | Malowanie i oznakowanie – Sekcja 07 | 8d | 2027-06-15 | 2027-06-24 | 14WE74-054 FF+2d |  | 165d |
| 14WE74-054 |  | Izolacje – Sekcja 07 | 5d | 2027-06-16 | 2027-06-22 | 14WE74-053 |  | 165d |
|  | SEKCJA 08 | **Sekcja 08** |  | 2026-01-08 | 2027-07-19 |  |  |  |
| 14WE74-056 |  | Prefabrykacja ruroci¹gów – Sekcja 08 | 5.7d | 2026-01-08 A | 2026-01-19 A | 14WE74-012, 14WE74-051 SS+5d | 100% |  |
| 14WE74-057 |  | Monta¿ ruroci¹gów – Sekcja 08 | 24.3d | 2027-05-31 | 2027-07-01 | 14WE74-056, 14WE74-014 SS+10d |  | 148d |
| 14WE74-058 |  | Próba ciœnieniowa – Sekcja 08 | 2d | 2027-07-02 | 2027-07-05 | 14WE74-057 |  | 148d |
| 14WE74-059 |  | Izolacje – Sekcja 08 | 8d | 2027-07-06 | 2027-07-15 | 14WE74-058 |  | 148d |
| 14WE74-060 |  | Malowanie i oznakowanie – Sekcja 08 | 2d | 2027-07-16 | 2027-07-19 | 14WE74-059 FF+2d |  | 148d |
|  | SEKCJA 09 | **Sekcja 09** |  | 2026-01-14 | 2027-07-21 |  |  |  |
|  | PODSEKCJA | **Podsekcja 09.A** |  | 2026-01-14 | 2027-07-21 |  |  |  |
| 14WE74-063 |  | Prefabrykacja ruroci¹gów – Sekcja 09 | 11.6d | 2026-01-14 A | 2026-01-29 A | 14WE74-012, 14WE74-056 SS+5d | 100% |  |
| 14WE74-064 |  | Monta¿ ruroci¹gów – Sekcja 09 | 24.6d | 2027-05-25 | 2027-06-28 | 14WE74-063, 14WE74-014 SS+6d |  | 146.7d |
| 14WE74-065 |  | Próba ciœnieniowa – Sekcja 09 | 5d | 2027-06-29 | 2027-07-05 | 14WE74-064 |  | 146.7d |
| 14WE74-066 |  | Izolacje – Sekcja 09 | 10d | 2027-07-06 | 2027-07-19 | 14WE74-065 |  | 146.7d |
| 14WE74-067 |  | Malowanie i oznakowanie – Sekcja 09 | 3d | 2027-07-19 | 2027-07-21 | 14WE74-066 FF+2d |  | 146.7d |
|  | SEKCJA 10 | **Sekcja 10** |  | 2026-01-21 | 2027-07-01 |  |  |  |
| 14WE74-068 |  | Prefabrykacja ruroci¹gów – Sekcja 10 | 5.2d | 2026-01-21 A | 2026-01-30 A | 14WE74-012, 14WE74-063 SS+5d | 100% |  |
| 14WE74-069 |  | Monta¿ ruroci¹gów – Sekcja 10 | 13.1d | 2027-05-28 | 2027-06-15 | 14WE74-068, 14WE74-014 SS+9d |  | 160.2d |
| 14WE74-070 |  | Próba ciœnieniowa – Sekcja 10 | 6d | 2027-06-16 | 2027-06-23 | 14WE74-069 |  | 160.2d |
| 14WE74-071 |  | Izolacje – Sekcja 10 | 4d | 2027-06-24 | 2027-06-29 | 14WE74-070 |  | 160.2d |
| 14WE74-072 |  | Malowanie i oznakowanie – Sekcja 10 | 5d | 2027-06-25 | 2027-07-01 | 14WE74-071 FF+2d |  | 160.2d |
|  | SEKCJA 11 | **Sekcja 11** |  | 2026-01-23 | 2027-07-13 |  |  |  |
| 14WE74-075 |  | Prefabrykacja ruroci¹gów – Sekcja 11 | 15d | 2026-01-23 A | 2026-02-17 A | 14WE74-012, 14WE74-068 SS+5d | 100% |  |

| ID | WBS | Task | Duration | Start | Finish | Predecessors | Complete | Total float |
| --- | --- | --- | --- | --- | --- | --- | --- | --- |
| 14WE74-076 |  | Monta¿ ruroci¹gów – Sekcja 11 | 18.3d | 2027-05-31 | 2027-06-23 | 14WE74-075, 14WE74-014 SS+10d |  | 152d |
| 14WE74-077 |  | Próba ciœnieniowa – Sekcja 11 | 2d | 2027-06-24 | 2027-06-25 | 14WE74-076 |  | 152d |
| 14WE74-078 |  | Izolacje – Sekcja 11 | 10d | 2027-06-28 | 2027-07-09 | 14WE74-077 |  | 152d |
| 14WE74-079 |  | Malowanie i oznakowanie – Sekcja 11 | 4d | 2027-07-08 | 2027-07-13 | 14WE74-078 FF+2d |  | 152d |
|  | SEKCJA 12 | **Sekcja 12** |  | 2026-02-03 | 2027-07-02 |  |  |  |
|  | PODSEKCJA | **Podsekcja 12.A** |  | 2026-02-03 | 2027-07-02 |  |  |  |
| 14WE74-080 |  | Prefabrykacja ruroci¹gów – Sekcja 12 | 10.4d | 2026-02-03 A | 2026-02-16 A | 14WE74-012, 14WE74-075 SS+5d | 100% |  |
| 14WE74-081 |  | Monta¿ ruroci¹gów – Sekcja 12 | 9.3d | 2027-05-31 | 2027-06-10 | 14WE74-080, 14WE74-014 SS+10d |  | 159d |
| 14WE74-082 |  | Próba ciœnieniowa – Sekcja 12 | 2d | 2027-06-11 | 2027-06-14 | 14WE74-081 |  | 159d |
| 14WE74-083 |  | Izolacje – Sekcja 12 | 12d | 2027-06-15 | 2027-06-30 | 14WE74-082 |  | 159d |
| 14WE74-084 |  | Malowanie i oznakowanie – Sekcja 12 | 5d | 2027-06-28 | 2027-07-02 | 14WE74-083 FF+2d |  | 159d |
|  | SEKCJA 13 | **Sekcja 13** |  | 2026-02-11 | 2027-06-29 |  |  |  |
| 14WE74-087 |  | Prefabrykacja ruroci¹gów – Sekcja 13 | 7.8d | 2026-02-11 A | 2026-02-20 A | 14WE74-012, 14WE74-080 SS+5d | 100% |  |
| 14WE74-088 |  | Monta¿ ruroci¹gów – Sekcja 13 | 17.8d | 2027-05-18 | 2027-06-10 | 14WE74-087, 14WE74-014 SS+1d |  | 162.5d |
| 14WE74-089 |  | Próba ciœnieniowa – Sekcja 13 | 5d | 2027-06-11 | 2027-06-17 | 14WE74-088 |  | 162.5d |
| 14WE74-090 |  | Izolacje – Sekcja 13 | 6d | 2027-06-18 | 2027-06-25 | 14WE74-089 |  | 162.5d |
| 14WE74-091 |  | Malowanie i oznakowanie – Sekcja 13 | 5d | 2027-06-23 | 2027-06-29 | 14WE74-090 FF+2d |  | 162.5d |
|  | SEKCJA 14 | **Sekcja 14** |  | 2026-02-17 | 2027-06-23 |  |  |  |
| 14WE74-092 |  | Prefabrykacja ruroci¹gów – Sekcja 14 | 4.2d | 2026-02-17 A | 2026-02-25 A | 14WE74-012, 14WE74-087 SS+5d | 100% |  |
| 14WE74-093 |  | Monta¿ ruroci¹gów – Sekcja 14 | 8.7d | 2027-05-21 | 2027-06-02 | 14WE74-092, 14WE74-014 SS+4d |  | 166.6d |
| 14WE74-094 |  | Próba ciœnieniowa – Sekcja 14 | 3d | 2027-06-03 | 2027-06-07 | 14WE74-093 |  | 166.6d |
| 14WE74-095 |  | Izolacje – Sekcja 14 | 10d | 2027-06-08 | 2027-06-21 | 14WE74-094 |  | 166.6d |
| 14WE74-096 |  | Malowanie i oznakowanie – Sekcja 14 | 2d | 2027-06-22 | 2027-06-23 | 14WE74-095 FF+2d |  | 166.6d |
|  | SEKCJA 15 | **Sekcja 15** |  | 2026-02-26 | 2027-06-11 |  |  |  |
|  | PODSEKCJA | **Podsekcja 15.A** |  | 2026-02-26 | 2027-06-11 |  |  |  |
| 14WE74-099 |  | Prefabrykacja ruroci¹gów – Sekcja 15 | 9.6d | 2026-02-26 A | 2026-03-10 A | 14WE74-012, 14WE74-092 SS+5d | 100% |  |
| 14WE74-100 |  | Monta¿ ruroci¹gów – Sekcja 15 | 6.4d | 2027-05-24 | 2027-06-01 | 14WE74-099, 14WE74-014 SS+5d |  | 141.9d |
| 14WE74-101 |  | Próba ciœnieniowa – Sekcja 15 | 3d | 2027-06-02 | 2027-06-04 | 14WE74-100 |  | 141.9d |
| 14WE74-102 |  | Izolacje – Sekcja 15 | 3d | 2027-06-07 | 2027-06-09 | 14WE74-101 |  | 141.9d |
| 14WE74-103 |  | Malowanie i oznakowanie – Sekcja 15 | 5d | 2027-06-07 | 2027-06-11 | 14WE74-102 FF+2d |  | 141.9d |
|  | SEKCJA 16 | **Sekcja 16** |  | 2026-03-02 | 2027-06-22 |  |  |  |
| 14WE74-104 |  | Prefabrykacja ruroci¹gów – Sekcja 16 | 13d | 2026-03-02 A | 2026-10-12 | 14WE74-012, 14WE74-099 SS+5d | 30% | 442.4d |
| 14WE74-105 |  | Monta¿ ruroci¹gów – Sekcja 16 | 6.5d | 2027-05-24 | 2027-06-01 | 14WE74-104, 14WE74-014 SS+5d |  | 134.8d |
| 14WE74-106 |  | Próba ciœnieniowa – Sekcja 16 | 3d | 2027-06-02 | 2027-06-04 | 14WE74-105 |  | 134.8d |
| 14WE74-107 |  | Izolacje – Sekcja 16 | 10d | 2027-06-07 | 2027-06-18 | 14WE74-106 |  | 134.8d |
| 14WE74-108 |  | Malowanie i oznakowanie – Sekcja 16 | 3d | 2027-06-18 | 2027-06-22 | 14WE74-107 FF+2d |  | 134.8d |
|  | PROJ | **Projektowanie** |  | 2025-01-31 | 2026-09-30 |  |  |  |
|  | DOKUMENTAC | **Dokumentacja** |  | 2025-01-31 | 2026-09-30 |  |  |  |
| 14WE74-001 |  | Projekt wykonawczy – Uk³ady wyprowadzenia mocy | 59d | 2025-01-31 A | 2025-04-23 A |  | 100% |  |
| 14WE74-002 |  | Uzgodnienie dokumentacji z Inwestorem | 26d | 2025-04-22 A | 2025-05-30 A | 14WE74-001 | 100% |  |
| 14WE74-003 |  | Zatwierdzenie dokumentacji do realizacji | 10d | 2025-06-03 A | 2025-06-16 A | 14WE74-002 | 100% |  |
| 14WE74-004 |  | KM: Dokumentacja zatwierdzona – Uk³ady wyprowadzenia mocy | 0d | 2026-09-30 | 2026-09-30 | 14WE74-003 |  | -16d |
|  | ROZR | **Rozruch** |  | 2027-07-14 | 2027-08-16 |  |  |  |
|  | ROZRUCH | **Rozruch** |  | 2027-07-14 | 2027-08-16 |  |  |  |
| 14WE74-113 |  | Przegl¹d gotowoœci do rozruchu | 3d | 2027-07-14 | 2027-07-16 | 14WE74-112, 14WE74-019, 14WE74-024, 14WE74-026 |  | 119.4d |
| 14WE74-114 |  | Rozruch na zimno | 7d | 2027-07-19 | 2027-07-27 | 14WE74-113 |  | 119.4d |
| 14WE74-115 |  | Rozruch na gor¹co / próby ruchowe | 13d | 2027-07-28 | 2027-08-13 | 14WE74-114 |  | 119.4d |
| 14WE74-116 |  | KM: Odbiór koñcowy – Uk³ady wyprowadzenia mocy | 0d | 2027-08-16 | 2027-08-16 | 14WE74-115 |  | 119.4d |
|  | ZAKU | **Zakupy** |  | 2025-02-26 | 2027-05-17 |  |  |  |
|  | DOSTAWY | **Dostawy** |  | 2025-09-22 | 2027-05-17 |  |  |  |
| 14WE74-008 |  | Produkcja u dostawcy | 273d | 2025-09-22 A | 2027-04-21 | 14WE74-007 | 46% | 260d |
| 14WE74-009 |  | Testy FAT | 4d | 2027-04-22 | 2027-04-27 | 14WE74-008 |  | 119.4d |
| 14WE74-010 |  | Transport i dostawa na plac budowy | 13d | 2027-04-28 | 2027-05-14 | 14WE74-009 |  | 119.4d |
| 14WE74-011 |  | KM: Dostawa na budowê – Uk³ady wyprowadzenia mocy | 0d | 2027-05-17 | 2027-05-17 | 14WE74-010 |  | 119.4d |
|  | ZAMÓWIENIA | **Zamówienia** |  | 2025-02-26 | 2025-09-16 |  |  |  |
| 14WE74-005 |  | Zapytanie ofertowe | 30d | 2025-02-26 A | 2025-04-11 A | 14WE74-001 SS+20d | 100% |  |
| 14WE74-006 |  | Analiza i wybór ofert | 16d | 2025-04-11 A | 2025-05-07 A | 14WE74-005 | 100% |  |
| 14WE74-007 |  | Zawarcie umowy / zamówienie | 9d | 2025-09-02 A | 2025-09-16 A | 14WE74-006, 14WE74-004 SS, 15BP15-004 FS+5d | 100% |  |
|  | 16TC84 | **16TC84 – Rozdzielnia SN** |  | 2025-01-15 | 2026-10-26 |  |  |  |
|  | BUDO | **Budowa** |  | 2025-10-20 | 2026-10-13 |  |  |  |
|  | AKPIA | **AKPiA** |  | 2026-03-04 | 2026-04-16 |  |  |  |
| 16TC84-159 |  | Monta¿ uk³adów AKPiA | 32d | 2026-03-04 A | 2026-04-16 A | 16TC84-014 SS+5d | 100% |  |
|  | ELEKTRYKA | **Elektryka** |  | 2026-03-09 | 2026-10-05 |  |  |  |
| 16TC84-061 |  | Uk³adanie kabli – trasa 08 | 13d | 2026-03-09 A | 2026-03-25 A | 16TC84-014 SS+10d | 100% |  |
| 16TC84-085 |  | Uk³adanie kabli – trasa 12 | 15d | 2026-03-09 A | 2026-03-30 A | 16TC84-014 SS+10d | 100% |  |
| 16TC84-097 |  | Uk³adanie kabli – trasa 14 | 8d | 2026-03-09 A | 2026-03-20 A | 16TC84-014 SS+10d | 100% |  |
| 16TC84-110 |  | Pod³¹czenia i pomiary – trasa 16 | 8d | 2026-03-09 A | 2026-03-19 A | 16TC84-109 FF | 100% |  |
| 16TC84-121 |  | Uk³adanie kabli – trasa 18 | 12d | 2026-03-09 A | 2026-03-25 A | 16TC84-014 SS+10d | 100% |  |
| 16TC84-038 |  | Pod³¹czenia i pomiary – trasa 04 | 8d | 2026-03-11 A | 2026-10-05 | 16TC84-037 FF | 44% | 494.9d |
| 16TC84-073 |  | Uk³adanie kabli – trasa 10 | 8d | 2026-03-11 A | 2026-03-20 A | 16TC84-014 SS+10d | 100% |  |

| ID | WBS | Task | Duration | Start | Finish | Predecessors | Complete | Total float |
| --- | --- | --- | --- | --- | --- | --- | --- | --- |
| 16TC84-109 |  | Uk³adanie kabli – trasa 16 | 5d | 2026-03-11 A | 2026-03-18 A | 16TC84-014 SS+10d | 100% |  |
| 16TC84-133 |  | Uk³adanie kabli – trasa 20 | 17d | 2026-03-11 A | 2026-04-03 A | 16TC84-014 SS+10d | 100% |  |
| 16TC84-037 |  | Uk³adanie kabli – trasa 04 | 5d | 2026-03-12 A | 2026-03-19 A | 16TC84-014 SS+10d | 100% |  |
| 16TC84-049 |  | Uk³adanie kabli – trasa 06 | 5d | 2026-03-12 A | 2026-03-18 A | 16TC84-014 SS+10d | 100% |  |
| 16TC84-050 |  | Pod³¹czenia i pomiary – trasa 06 | 6d | 2026-03-12 A | 2026-03-20 A | 16TC84-049 FF | 100% |  |
| 16TC84-122 |  | Pod³¹czenia i pomiary – trasa 18 | 9d | 2026-03-12 A | 2026-03-26 A | 16TC84-121 FF | 100% |  |
| 16TC84-145 |  | Uk³adanie kabli – trasa 22 | 9d | 2026-03-12 A | 2026-03-27 A | 16TC84-014 SS+10d | 100% |  |
| 16TC84-146 |  | Pod³¹czenia i pomiary – trasa 22 | 6d | 2026-03-12 A | 2026-03-19 A | 16TC84-145 FF | 100% |  |
| 16TC84-157 |  | Uk³adanie kabli – trasa 24 | 20d | 2026-03-12 A | 2026-04-09 A | 16TC84-014 SS+10d | 100% |  |
| 16TC84-025 |  | Uk³adanie kabli – trasa 02 | 17d | 2026-03-13 A | 2026-04-07 A | 16TC84-014 SS+10d | 100% |  |
| 16TC84-074 |  | Pod³¹czenia i pomiary – trasa 10 | 3d | 2026-03-17 A | 2026-09-30 | 16TC84-073 FF | 67% | 495.9d |
| 16TC84-098 |  | Pod³¹czenia i pomiary – trasa 14 | 5d | 2026-03-17 A | 2026-03-23 A | 16TC84-097 FF | 100% |  |
| 16TC84-026 |  | Pod³¹czenia i pomiary – trasa 02 | 10d | 2026-03-19 A | 2026-04-06 A | 16TC84-025 FF | 100% |  |
| 16TC84-062 |  | Pod³¹czenia i pomiary – trasa 08 | 4d | 2026-03-26 A | 2026-04-02 A | 16TC84-061 FF | 100% |  |
| 16TC84-158 |  | Pod³¹czenia i pomiary – trasa 24 | 9d | 2026-03-26 A | 2026-04-08 A | 16TC84-157 FF | 100% |  |
| 16TC84-086 |  | Pod³¹czenia i pomiary – trasa 12 | 6d | 2026-03-27 A | 2026-10-01 | 16TC84-085 FF | 55% | 484.9d |
| 16TC84-134 |  | Pod³¹czenia i pomiary – trasa 20 | 4d | 2026-03-30 A | 2026-04-02 A | 16TC84-133 FF | 100% |  |
|  | MONTA¯ | **Monta¿** |  | 2025-12-31 | 2026-09-30 |  |  |  |
| 16TC84-013 |  | Monta¿ konstrukcji stalowych | 27d | 2025-12-31 A | 2026-02-09 A | 16TC84-012 | 100% |  |
| 16TC84-014 |  | Monta¿ urz¹dzeñ g³ównych | 70d | 2026-02-27 A | 2026-06-05 A | 16TC84-013, 16TC84-011 | 100% |  |
| 16TC84-160 |  | KM: Zakoñczenie monta¿u – Rozdzielnia SN | 0d | 2026-09-30 | 2026-09-30 | 16TC84-151, 16TC84-156, 16TC84-158, 16TC84-159, 16TC84-014 |  | 307.9d |
|  | ROBOTY BUD | **Roboty budowlane** |  | 2025-10-20 | 2026-01-07 |  |  |  |
| 16TC84-012 |  | Fundamenty i roboty ziemne | 56d | 2025-10-20 A | 2026-01-07 A | 16TC84-007 FS+8d | 100% |  |
|  | RUROCI¥GI | **Ruroci¹gi** |  | 2025-12-31 | 2026-10-13 |  |  |  |
|  | SEKCJA 01 | **Sekcja 01** |  | 2025-12-31 | 2026-04-13 |  |  |  |
| 16TC84-015 |  | Prefabrykacja ruroci¹gów – Sekcja 01 | 13.6d | 2025-12-31 A | 2026-01-19 A | 16TC84-012 | 100% |  |
| 16TC84-016 |  | Monta¿ ruroci¹gów – Sekcja 01 | 16.1d | 2026-02-27 A | 2026-03-24 A | 16TC84-015, 16TC84-014 SS+1d | 100% |  |
| 16TC84-017 |  | Próba ciœnieniowa – Sekcja 01 | 4d | 2026-03-19 A | 2026-03-25 A | 16TC84-016 | 100% |  |
| 16TC84-018 |  | Izolacje – Sekcja 01 | 6d | 2026-03-27 A | 2026-04-07 A | 16TC84-017 | 100% |  |
| 16TC84-019 |  | Malowanie i oznakowanie – Sekcja 01 | 2d | 2026-04-07 A | 2026-04-13 A | 16TC84-018 FF+2d | 100% |  |
|  | SEKCJA 02 | **Sekcja 02** |  | 2026-01-07 | 2026-09-30 |  |  |  |
| 16TC84-020 |  | Prefabrykacja ruroci¹gów – Sekcja 02 | 13.4d | 2026-01-07 A | 2026-01-23 A | 16TC84-012, 16TC84-015 SS+5d | 100% |  |
| 16TC84-021 |  | Monta¿ ruroci¹gów – Sekcja 02 | 17.8d | 2026-03-06 A | 2026-03-31 A | 16TC84-020, 16TC84-014 SS+9d | 100% |  |
| 16TC84-022 |  | Próba ciœnieniowa – Sekcja 02 | 4d | 2026-04-06 A | 2026-04-13 A | 16TC84-021 | 100% |  |
| 16TC84-023 |  | Izolacje – Sekcja 02 | 6d | 2026-04-13 A | 2026-09-30 | 16TC84-022 | 82% | 421.1d |
| 16TC84-024 |  | Malowanie i oznakowanie – Sekcja 02 | 3d | 2026-04-13 A | 2026-04-17 A | 16TC84-023 FF+2d | 100% |  |
|  | SEKCJA 03 | **Sekcja 03** |  | 2026-01-19 | 2026-04-09 |  |  |  |
|  | PODSEKCJA | **Podsekcja 03.A** |  | 2026-01-19 | 2026-04-09 |  |  |  |
| 16TC84-027 |  | Prefabrykacja ruroci¹gów – Sekcja 03 | 4.6d | 2026-01-19 A | 2026-01-27 A | 16TC84-012, 16TC84-020 SS+5d | 100% |  |
| 16TC84-028 |  | Monta¿ ruroci¹gów – Sekcja 03 | 16d | 2026-03-02 A | 2026-03-26 A | 16TC84-027, 16TC84-014 SS+4d | 100% |  |
| 16TC84-029 |  | Próba ciœnieniowa – Sekcja 03 | 6d | 2026-03-27 A | 2026-04-07 A | 16TC84-028 | 100% |  |
| 16TC84-031 |  | Malowanie i oznakowanie – Sekcja 03 | 4d | 2026-04-02 A | 2026-04-08 A | 16TC84-030 FF+2d | 100% |  |
| 16TC84-030 |  | Izolacje – Sekcja 03 | 3d | 2026-04-06 A | 2026-04-09 A | 16TC84-029 | 100% |  |
|  | SEKCJA 04 | **Sekcja 04** |  | 2026-01-23 | 2026-04-27 |  |  |  |
| 16TC84-032 |  | Prefabrykacja ruroci¹gów – Sekcja 04 | 7.2d | 2026-01-23 A | 2026-02-04 A | 16TC84-012, 16TC84-027 SS+5d | 100% |  |
| 16TC84-033 |  | Monta¿ ruroci¹gów – Sekcja 04 | 11.7d | 2026-03-09 A | 2026-03-23 A | 16TC84-032, 16TC84-014 SS+9d | 100% |  |
| 16TC84-034 |  | Próba ciœnieniowa – Sekcja 04 | 6d | 2026-03-23 A | 2026-03-31 A | 16TC84-033 | 100% |  |
| 16TC84-035 |  | Izolacje – Sekcja 04 | 12d | 2026-03-31 A | 2026-04-15 A | 16TC84-034 | 100% |  |
| 16TC84-036 |  | Malowanie i oznakowanie – Sekcja 04 | 8d | 2026-04-13 A | 2026-04-27 A | 16TC84-035 FF+2d | 100% |  |
|  | SEKCJA 05 | **Sekcja 05** |  | 2026-01-28 | 2026-03-26 |  |  |  |
| 16TC84-039 |  | Prefabrykacja ruroci¹gów – Sekcja 05 | 11d | 2026-01-28 A | 2026-02-12 A | 16TC84-012, 16TC84-032 SS+5d | 100% |  |
| 16TC84-040 |  | Monta¿ ruroci¹gów – Sekcja 05 | 5.3d | 2026-03-03 A | 2026-03-11 A | 16TC84-039, 16TC84-014 SS+4d | 100% |  |
| 16TC84-041 |  | Próba ciœnieniowa – Sekcja 05 | 6d | 2026-03-06 A | 2026-03-13 A | 16TC84-040 | 100% |  |
| 16TC84-043 |  | Malowanie i oznakowanie – Sekcja 05 | 8d | 2026-03-13 A | 2026-03-26 A | 16TC84-042 FF+2d | 100% |  |
| 16TC84-042 |  | Izolacje – Sekcja 05 | 5d | 2026-03-17 A | 2026-03-23 A | 16TC84-041 | 100% |  |
|  | SEKCJA 06 | **Sekcja 06** |  | 2026-02-10 | 2026-04-13 |  |  |  |
|  | PODSEKCJA | **Podsekcja 06.A** |  | 2026-02-10 | 2026-04-13 |  |  |  |
| 16TC84-044 |  | Prefabrykacja ruroci¹gów – Sekcja 06 | 10d | 2026-02-10 A | 2026-02-25 A | 16TC84-012, 16TC84-039 SS+5d | 100% |  |
| 16TC84-045 |  | Monta¿ ruroci¹gów – Sekcja 06 | 17.9d | 2026-03-02 A | 2026-03-26 A | 16TC84-044, 16TC84-014 SS+4d | 100% |  |
| 16TC84-046 |  | Próba ciœnieniowa – Sekcja 06 | 5d | 2026-03-25 A | 2026-04-01 A | 16TC84-045 | 100% |  |
| 16TC84-047 |  | Izolacje – Sekcja 06 | 7d | 2026-03-31 A | 2026-04-09 A | 16TC84-046 | 100% |  |
| 16TC84-048 |  | Malowanie i oznakowanie – Sekcja 06 | 2d | 2026-04-09 A | 2026-04-13 A | 16TC84-047 FF+2d | 100% |  |
|  | SEKCJA 07 | **Sekcja 07** |  | 2026-02-13 | 2026-10-01 |  |  |  |
| 16TC84-051 |  | Prefabrykacja ruroci¹gów – Sekcja 07 | 12.5d | 2026-02-13 A | 2026-03-05 A | 16TC84-012, 16TC84-044 SS+5d | 100% |  |
| 16TC84-052 |  | Monta¿ ruroci¹gów – Sekcja 07 | 24.6d | 2026-03-02 A | 2026-04-07 A | 16TC84-051, 16TC84-014 SS+4d | 100% |  |
| 16TC84-053 |  | Próba ciœnieniowa – Sekcja 07 | 5d | 2026-04-09 A | 2026-10-01 | 16TC84-052 | 48% | 462.8d |
| 16TC84-054 |  | Izolacje – Sekcja 07 | 12d | 2026-04-15 A | 2026-09-30 | 16TC84-053 | 88% | 463.8d |
| 16TC84-055 |  | Malowanie i oznakowanie – Sekcja 07 | 4d | 2026-04-29 A | 2026-05-04 A | 16TC84-054 FF+2d | 100% |  |
|  | SEKCJA 08 | **Sekcja 08** |  | 2026-02-24 | 2026-09-30 |  |  |  |
| 16TC84-056 |  | Prefabrykacja ruroci¹gów – Sekcja 08 | 3.4d | 2026-02-24 A | 2026-03-02 A | 16TC84-012, 16TC84-051 SS+5d | 100% |  |

| ID | WBS | Task | Duration | Start | Finish | Predecessors | Complete | Total float |
| --- | --- | --- | --- | --- | --- | --- | --- | --- |
| 16TC84-057 |  | Monta¿ ruroci¹gów – Sekcja 08 | 5.5d | 2026-03-06 A | 2026-03-12 A | 16TC84-056, 16TC84-014 SS+7d | 100% |  |
| 16TC84-058 |  | Próba ciœnieniowa – Sekcja 08 | 6d | 2026-03-12 A | 2026-03-23 A | 16TC84-057 | 100% |  |
| 16TC84-059 |  | Izolacje – Sekcja 08 | 7d | 2026-03-23 A | 2026-04-02 A | 16TC84-058 | 100% |  |
| 16TC84-060 |  | Malowanie i oznakowanie – Sekcja 08 | 4d | 2026-04-02 A | 2026-09-30 | 16TC84-059 FF+2d | 65% | 482.4d |
|  | SEKCJA 09 | **Sekcja 09** |  | 2026-02-25 | 2026-09-30 |  |  |  |
|  | PODSEKCJA | **Podsekcja 09.A** |  | 2026-02-25 | 2026-09-30 |  |  |  |
| 16TC84-063 |  | Prefabrykacja ruroci¹gów – Sekcja 09 | 3.3d | 2026-02-25 A | 2026-02-27 A | 16TC84-012, 16TC84-056 SS+5d | 100% |  |
| 16TC84-064 |  | Monta¿ ruroci¹gów – Sekcja 09 | 14.9d | 2026-03-05 A | 2026-03-30 A | 16TC84-063, 16TC84-014 SS+5d | 100% |  |
| 16TC84-065 |  | Próba ciœnieniowa – Sekcja 09 | 5d | 2026-03-25 A | 2026-04-02 A | 16TC84-064 | 100% |  |
| 16TC84-066 |  | Izolacje – Sekcja 09 | 5d | 2026-04-01 A | 2026-09-30 | 16TC84-065 | 80% | 480.7d |
| 16TC84-067 |  | Malowanie i oznakowanie – Sekcja 09 | 2d | 2026-04-09 A | 2026-04-10 A | 16TC84-066 FF+2d | 100% |  |
|  | SEKCJA 10 | **Sekcja 10** |  | 2026-03-06 | 2026-10-02 |  |  |  |
| 16TC84-068 |  | Prefabrykacja ruroci¹gów – Sekcja 10 | 7.1d | 2026-03-06 A | 2026-10-02 | 16TC84-012, 16TC84-063 SS+5d | 56% | 332.4d |
| 16TC84-069 |  | Monta¿ ruroci¹gów – Sekcja 10 | 19.6d | 2026-03-17 A | 2026-04-14 A | 16TC84-068, 16TC84-014 SS+5d | 100% |  |
| 16TC84-070 |  | Próba ciœnieniowa – Sekcja 10 | 3d | 2026-04-10 A | 2026-04-17 A | 16TC84-069 | 100% |  |
| 16TC84-071 |  | Izolacje – Sekcja 10 | 3d | 2026-04-15 A | 2026-04-20 A | 16TC84-070 | 100% |  |
| 16TC84-072 |  | Malowanie i oznakowanie – Sekcja 10 | 8d | 2026-04-15 A | 2026-04-29 A | 16TC84-071 FF+2d | 100% |  |
|  | SEKCJA 11 | **Sekcja 11** |  | 2026-03-13 | 2026-09-30 |  |  |  |
| 16TC84-075 |  | Prefabrykacja ruroci¹gów – Sekcja 11 | 6.4d | 2026-03-13 A | 2026-03-23 A | 16TC84-012, 16TC84-068 SS+5d | 100% |  |
| 16TC84-076 |  | Monta¿ ruroci¹gów – Sekcja 11 | 10.6d | 2026-03-20 A | 2026-04-07 A | 16TC84-075, 16TC84-014 SS+8d | 100% |  |
| 16TC84-077 |  | Próba ciœnieniowa – Sekcja 11 | 5d | 2026-04-07 A | 2026-04-15 A | 16TC84-076 | 100% |  |
| 16TC84-078 |  | Izolacje – Sekcja 11 | 5d | 2026-04-13 A | 2026-09-30 | 16TC84-077 | 76% | 472.9d |
| 16TC84-079 |  | Malowanie i oznakowanie – Sekcja 11 | 2d | 2026-04-21 A | 2026-04-24 A | 16TC84-078 FF+2d | 100% |  |
|  | SEKCJA 12 | **Sekcja 12** |  | 2026-03-19 | 2026-09-30 |  |  |  |
|  | PODSEKCJA | **Podsekcja 12.A** |  | 2026-03-19 | 2026-09-30 |  |  |  |
| 16TC84-080 |  | Prefabrykacja ruroci¹gów – Sekcja 12 | 10.3d | 2026-03-19 A | 2026-04-06 A | 16TC84-012, 16TC84-075 SS+5d | 100% |  |
| 16TC84-081 |  | Monta¿ ruroci¹gów – Sekcja 12 | 11.3d | 2026-04-01 A | 2026-04-17 A | 16TC84-080, 16TC84-014 SS+6d | 100% |  |
| 16TC84-082 |  | Próba ciœnieniowa – Sekcja 12 | 2d | 2026-04-17 A | 2026-04-20 A | 16TC84-081 | 100% |  |
| 16TC84-083 |  | Izolacje – Sekcja 12 | 12d | 2026-04-23 A | 2026-05-12 A | 16TC84-082 | 100% |  |
| 16TC84-084 |  | Malowanie i oznakowanie – Sekcja 12 | 4d | 2026-05-06 A | 2026-09-30 | 16TC84-083 FF+2d | 62% | 458.3d |
|  | SEKCJA 13 | **Sekcja 13** |  | 2026-03-27 | 2026-10-09 |  |  |  |
| 16TC84-087 |  | Prefabrykacja ruroci¹gów – Sekcja 13 | 11.3d | 2026-03-27 A | 2026-04-14 A | 16TC84-012, 16TC84-080 SS+5d | 100% |  |
| 16TC84-088 |  | Monta¿ ruroci¹gów – Sekcja 13 | 22.4d | 2026-04-09 A | 2026-05-13 A | 16TC84-087, 16TC84-014 SS+8d | 100% |  |
| 16TC84-089 |  | Próba ciœnieniowa – Sekcja 13 | 4d | 2026-05-11 A | 2026-05-14 A | 16TC84-088 | 100% |  |
| 16TC84-090 |  | Izolacje – Sekcja 13 | 10d | 2026-05-21 A | 2026-10-09 | 16TC84-089 | 11% | 439.2d |
| 16TC84-091 |  | Malowanie i oznakowanie – Sekcja 13 | 7d | 2026-05-27 A | 2026-10-07 | 16TC84-090 FF+2d | 11% | 440.2d |
|  | SEKCJA 14 | **Sekcja 14** |  | 2026-04-03 | 2026-06-12 |  |  |  |
| 16TC84-092 |  | Prefabrykacja ruroci¹gów – Sekcja 14 | 12.4d | 2026-04-03 A | 2026-04-20 A | 16TC84-012, 16TC84-087 SS+5d | 100% |  |
| 16TC84-093 |  | Monta¿ ruroci¹gów – Sekcja 14 | 20.6d | 2026-04-22 A | 2026-05-25 A | 16TC84-092, 16TC84-014 SS | 100% |  |
| 16TC84-094 |  | Próba ciœnieniowa – Sekcja 14 | 2d | 2026-05-19 A | 2026-05-21 A | 16TC84-093 | 100% |  |
| 16TC84-095 |  | Izolacje – Sekcja 14 | 11d | 2026-05-21 A | 2026-06-05 A | 16TC84-094 | 100% |  |
| 16TC84-096 |  | Malowanie i oznakowanie – Sekcja 14 | 7d | 2026-06-03 A | 2026-06-12 A | 16TC84-095 FF+2d | 100% |  |
|  | SEKCJA 15 | **Sekcja 15** |  | 2026-04-13 | 2026-05-25 |  |  |  |
|  | PODSEKCJA | **Podsekcja 15.A** |  | 2026-04-13 | 2026-05-25 |  |  |  |
| 16TC84-099 |  | Prefabrykacja ruroci¹gów – Sekcja 15 | 12d | 2026-04-13 A | 2026-04-30 A | 16TC84-012, 16TC84-092 SS+5d | 100% |  |
| 16TC84-100 |  | Monta¿ ruroci¹gów – Sekcja 15 | 7.1d | 2026-04-30 A | 2026-05-12 A | 16TC84-099, 16TC84-014 SS+8d | 100% |  |
| 16TC84-101 |  | Próba ciœnieniowa – Sekcja 15 | 5d | 2026-05-11 A | 2026-05-18 A | 16TC84-100 | 100% |  |
| 16TC84-103 |  | Malowanie i oznakowanie – Sekcja 15 | 8d | 2026-05-14 A | 2026-05-25 A | 16TC84-102 FF+2d | 100% |  |
| 16TC84-102 |  | Izolacje – Sekcja 15 | 6d | 2026-05-18 A | 2026-05-25 A | 16TC84-101 | 100% |  |
|  | SEKCJA 16 | **Sekcja 16** |  | 2026-04-21 | 2026-10-07 |  |  |  |
| 16TC84-104 |  | Prefabrykacja ruroci¹gów – Sekcja 16 | 9.6d | 2026-04-21 A | 2026-05-04 A | 16TC84-012, 16TC84-099 SS+5d | 100% |  |
| 16TC84-105 |  | Monta¿ ruroci¹gów – Sekcja 16 | 6.9d | 2026-04-29 A | 2026-05-07 A | 16TC84-104, 16TC84-014 SS+3d | 100% |  |
| 16TC84-106 |  | Próba ciœnieniowa – Sekcja 16 | 3d | 2026-05-08 A | 2026-05-13 A | 16TC84-105 | 100% |  |
| 16TC84-107 |  | Izolacje – Sekcja 16 | 8d | 2026-05-15 A | 2026-10-07 | 16TC84-106 | 19% | 445.4d |
| 16TC84-108 |  | Malowanie i oznakowanie – Sekcja 16 | 4d | 2026-05-22 A | 2026-05-28 A | 16TC84-107 FF+2d | 100% |  |
|  | SEKCJA 17 | **Sekcja 17** |  | 2026-04-24 | 2026-10-13 |  |  |  |
| 16TC84-111 |  | Prefabrykacja ruroci¹gów – Sekcja 17 | 13.8d | 2026-04-24 A | 2026-10-13 | 16TC84-012, 16TC84-104 SS+5d | 22% | 332.4d |
| 16TC84-112 |  | Monta¿ ruroci¹gów – Sekcja 17 | 17.7d | 2026-05-11 A | 2026-06-08 A | 16TC84-111, 16TC84-014 SS+9d | 100% |  |
| 16TC84-113 |  | Próba ciœnieniowa – Sekcja 17 | 6d | 2026-06-10 A | 2026-06-18 A | 16TC84-112 | 100% |  |
| 16TC84-114 |  | Izolacje – Sekcja 17 | 10d | 2026-06-16 A | 2026-07-02 A | 16TC84-113 | 100% |  |
| 16TC84-115 |  | Malowanie i oznakowanie – Sekcja 17 | 3d | 2026-07-01 A | 2026-09-30 | 16TC84-114 FF+2d | 57% | 419.4d |
|  | SEKCJA 18 | **Sekcja 18** |  | 2026-04-30 | 2026-06-19 |  |  |  |
|  | PODSEKCJA | **Podsekcja 18.A** |  | 2026-04-30 | 2026-06-19 |  |  |  |
| 16TC84-116 |  | Prefabrykacja ruroci¹gów – Sekcja 18 | 7.1d | 2026-04-30 A | 2026-05-08 A | 16TC84-012, 16TC84-111 SS+5d | 100% |  |
| 16TC84-117 |  | Monta¿ ruroci¹gów – Sekcja 18 | 14.8d | 2026-05-14 A | 2026-06-02 A | 16TC84-116, 16TC84-014 SS+4d | 100% |  |
| 16TC84-118 |  | Próba ciœnieniowa – Sekcja 18 | 2d | 2026-06-03 A | 2026-06-09 A | 16TC84-117 | 100% |  |
| 16TC84-119 |  | Izolacje – Sekcja 18 | 8d | 2026-06-03 A | 2026-06-16 A | 16TC84-118 | 100% |  |
| 16TC84-120 |  | Malowanie i oznakowanie – Sekcja 18 | 6d | 2026-06-11 A | 2026-06-19 A | 16TC84-119 FF+2d | 100% |  |
|  | SEKCJA 19 | **Sekcja 19** |  | 2026-05-11 | 2026-06-24 |  |  |  |
| 16TC84-123 |  | Prefabrykacja ruroci¹gów – Sekcja 19 | 6.3d | 2026-05-11 A | 2026-05-18 A | 16TC84-012, 16TC84-116 SS+5d | 100% |  |

| ID | WBS | Task | Duration | Start | Finish | Predecessors | Complete | Total float |
| --- | --- | --- | --- | --- | --- | --- | --- | --- |
| 16TC84-124 |  | Monta¿ ruroci¹gów – Sekcja 19 | 14.8d | 2026-05-14 A | 2026-06-04 A | 16TC84-123, 16TC84-014 SS+7d | 100% |  |
| 16TC84-125 |  | Próba ciœnieniowa – Sekcja 19 | 4d | 2026-06-05 A | 2026-06-12 A | 16TC84-124 | 100% |  |
| 16TC84-126 |  | Izolacje – Sekcja 19 | 6d | 2026-06-10 A | 2026-06-22 A | 16TC84-125 | 100% |  |
| 16TC84-127 |  | Malowanie i oznakowanie – Sekcja 19 | 8d | 2026-06-11 A | 2026-06-24 A | 16TC84-126 FF+2d | 100% |  |
|  | SEKCJA 20 | **Sekcja 20** |  | 2026-05-19 | 2026-10-01 |  |  |  |
| 16TC84-128 |  | Prefabrykacja ruroci¹gów – Sekcja 20 | 6.5d | 2026-05-19 A | 2026-05-26 A | 16TC84-012, 16TC84-123 SS+5d | 100% |  |
| 16TC84-129 |  | Monta¿ ruroci¹gów – Sekcja 20 | 22.5d | 2026-05-21 A | 2026-06-23 A | 16TC84-128, 16TC84-014 SS+9d | 100% |  |
| 16TC84-130 |  | Próba ciœnieniowa – Sekcja 20 | 6d | 2026-06-29 A | 2026-07-09 A | 16TC84-129 | 100% |  |
| 16TC84-131 |  | Izolacje – Sekcja 20 | 5d | 2026-07-07 A | 2026-07-16 A | 16TC84-130 | 100% |  |
| 16TC84-132 |  | Malowanie i oznakowanie – Sekcja 20 | 3d | 2026-07-13 A | 2026-10-01 | 16TC84-131 FF+2d | 13% | 411.9d |
|  | SEKCJA 21 | **Sekcja 21** |  | 2026-05-22 | 2026-10-01 |  |  |  |
|  | PODSEKCJA | **Podsekcja 21.A** |  | 2026-05-22 | 2026-10-01 |  |  |  |
| 16TC84-135 |  | Prefabrykacja ruroci¹gów – Sekcja 21 | 6.7d | 2026-05-22 A | 2026-05-29 A | 16TC84-012, 16TC84-128 SS+5d | 100% |  |
| 16TC84-136 |  | Monta¿ ruroci¹gów – Sekcja 21 | 18.8d | 2026-06-01 A | 2026-06-29 A | 16TC84-135, 16TC84-014 SS | 100% |  |
| 16TC84-137 |  | Próba ciœnieniowa – Sekcja 21 | 3d | 2026-06-29 A | 2026-07-02 A | 16TC84-136 | 100% |  |
| 16TC84-138 |  | Izolacje – Sekcja 21 | 10d | 2026-07-02 A | 2026-07-15 A | 16TC84-137 | 100% |  |
| 16TC84-139 |  | Malowanie i oznakowanie – Sekcja 21 | 8d | 2026-07-06 A | 2026-10-01 | 16TC84-138 FF+2d | 75% | 411.4d |
|  | SEKCJA 22 | **Sekcja 22** |  | 2026-06-02 | 2026-07-21 |  |  |  |
| 16TC84-140 |  | Prefabrykacja ruroci¹gów – Sekcja 22 | 13.2d | 2026-06-02 A | 2026-06-19 A | 16TC84-012, 16TC84-135 SS+5d | 100% |  |
| 16TC84-141 |  | Monta¿ ruroci¹gów – Sekcja 22 | 8.6d | 2026-06-17 A | 2026-06-29 A | 16TC84-140, 16TC84-014 SS | 100% |  |
| 16TC84-142 |  | Próba ciœnieniowa – Sekcja 22 | 3d | 2026-06-26 A | 2026-07-03 A | 16TC84-141 | 100% |  |
| 16TC84-143 |  | Izolacje – Sekcja 22 | 10d | 2026-07-01 A | 2026-07-14 A | 16TC84-142 | 100% |  |
| 16TC84-144 |  | Malowanie i oznakowanie – Sekcja 22 | 3d | 2026-07-16 A | 2026-07-21 A | 16TC84-143 FF+2d | 100% |  |
|  | SEKCJA 23 | **Sekcja 23** |  | 2026-06-03 | 2026-07-23 |  |  |  |
| 16TC84-147 |  | Prefabrykacja ruroci¹gów – Sekcja 23 | 12.4d | 2026-06-03 A | 2026-06-22 A | 16TC84-012, 16TC84-140 SS+5d | 100% |  |
| 16TC84-148 |  | Monta¿ ruroci¹gów – Sekcja 23 | 8d | 2026-06-19 A | 2026-07-03 A | 16TC84-147, 16TC84-014 SS | 100% |  |
| 16TC84-149 |  | Próba ciœnieniowa – Sekcja 23 | 5d | 2026-07-01 A | 2026-07-07 A | 16TC84-148 | 100% |  |
| 16TC84-150 |  | Izolacje – Sekcja 23 | 4d | 2026-07-10 A | 2026-07-15 A | 16TC84-149 | 100% |  |
| 16TC84-151 |  | Malowanie i oznakowanie – Sekcja 23 | 7d | 2026-07-13 A | 2026-07-23 A | 16TC84-150 FF+2d | 100% |  |
|  | SEKCJA 24 | **Sekcja 24** |  | 2026-06-12 | 2026-08-26 |  |  |  |
|  | PODSEKCJA | **Podsekcja 24.A** |  | 2026-06-12 | 2026-08-26 |  |  |  |
| 16TC84-152 |  | Prefabrykacja ruroci¹gów – Sekcja 24 | 8.6d | 2026-06-12 A | 2026-06-23 A | 16TC84-012, 16TC84-147 SS+5d | 100% |  |
| 16TC84-153 |  | Monta¿ ruroci¹gów – Sekcja 24 | 24.9d | 2026-06-25 A | 2026-07-31 A | 16TC84-152, 16TC84-014 SS+9d | 100% |  |
| 16TC84-154 |  | Próba ciœnieniowa – Sekcja 24 | 6d | 2026-07-27 A | 2026-08-05 A | 16TC84-153 | 100% |  |
| 16TC84-155 |  | Izolacje – Sekcja 24 | 12d | 2026-08-05 A | 2026-08-25 A | 16TC84-154 | 100% |  |
| 16TC84-156 |  | Malowanie i oznakowanie – Sekcja 24 | 6d | 2026-08-17 A | 2026-08-26 A | 16TC84-155 FF+2d | 100% |  |
|  | PROJ | **Projektowanie** |  | 2025-01-15 | 2025-05-21 |  |  |  |
|  | DOKUMENTAC | **Dokumentacja** |  | 2025-01-15 | 2025-05-21 |  |  |  |
| 16TC84-001 |  | Projekt wykonawczy – Rozdzielnia SN | 57d | 2025-01-15 A | 2025-04-03 A |  | 100% |  |
| 16TC84-002 |  | Uzgodnienie dokumentacji z Inwestorem | 21d | 2025-04-09 A | 2025-05-12 A | 16TC84-001 | 100% |  |
| 16TC84-003 |  | Zatwierdzenie dokumentacji do realizacji | 7d | 2025-05-08 A | 2025-05-21 A | 16TC84-002 | 100% |  |
| 16TC84-004 |  | KM: Dokumentacja zatwierdzona – Rozdzielnia SN | 0d | 2025-05-15 A | 2025-05-15 | 16TC84-003 | 100% |  |
|  | ROZR | **Rozruch** |  | 2026-08-25 | 2026-10-26 |  |  |  |
|  | ROZRUCH | **Rozruch** |  | 2026-08-25 | 2026-10-26 |  |  |  |
| 16TC84-161 |  | Przegl¹d gotowoœci do rozruchu | 5d | 2026-08-25 A | 2026-09-01 A | 16TC84-160, 16TC84-019, 16TC84-024, 16TC84-026 | 100% |  |
| 16TC84-162 |  | Rozruch na zimno | 13d | 2026-09-01 A | 2026-09-22 A | 16TC84-161 | 100% |  |
| 16TC84-163 |  | Rozruch na gor¹co / próby ruchowe | 22d | 2026-09-23 A | 2026-10-23 | 16TC84-162 | 16% | 330.4d |
| 16TC84-164 |  | KM: Odbiór koñcowy – Rozdzielnia SN | 0d | 2026-10-26 | 2026-10-26 | 16TC84-163 |  | 329.4d |
|  | ZAKU | **Zakupy** |  | 2025-02-12 | 2026-10-01 |  |  |  |
|  | DOSTAWY | **Dostawy** |  | 2025-10-03 | 2026-02-27 |  |  |  |
| 16TC84-008 |  | Produkcja u dostawcy | 71d | 2025-10-03 A | 2026-01-09 A | 16TC84-007 | 100% |  |
| 16TC84-009 |  | Testy FAT | 3d | 2026-01-15 A | 2026-01-22 A | 16TC84-008 | 100% |  |
| 16TC84-010 |  | Transport i dostawa na plac budowy | 28d | 2026-01-19 A | 2026-02-27 A | 16TC84-009 | 100% |  |
| 16TC84-011 |  | KM: Dostawa na budowê – Rozdzielnia SN | 0d | 2026-02-25 A | 2026-02-25 | 16TC84-010 | 100% |  |
|  | ZAMÓWIENIA | **Zamówienia** |  | 2025-02-12 | 2026-10-01 |  |  |  |
| 16TC84-005 |  | Zapytanie ofertowe | 30d | 2025-02-12 A | 2025-03-27 A | 16TC84-001 SS+20d | 100% |  |
| 16TC84-006 |  | Analiza i wybór ofert | 11d | 2025-03-31 A | 2025-04-14 A | 16TC84-005 | 100% |  |
| 16TC84-007 |  | Zawarcie umowy / zamówienie | 5d | 2025-09-29 A | 2026-10-01 | 16TC84-006, 16TC84-004 SS, 27FW94-004 FS+9d, 28BP20-004 FS+10d | 42% | 332.4d |
|  | 17DY74 | **17DY74 – Uziemienia i ochrona odgromowa** |  | 2025-03-05 | 2026-12-28 |  |  |  |
|  | BUDO | **Budowa** |  | 2025-09-26 | 2026-11-17 |  |  |  |
|  | AKPIA | **AKPiA** |  | 2026-09-29 | 2026-10-08 |  |  |  |
| 17DY74-116 |  | Monta¿ uk³adów AKPiA | 17d | 2026-09-29 A | 2026-10-08 | 17DY74-014 SS+5d | 54% | 298.9d |
|  | ELEKTRYKA | **Elektryka** |  | 2026-09-30 | 2026-11-06 |  |  |  |
| 17DY74-086 |  | Pod³¹czenia i pomiary – trasa 12 | 8d | 2026-09-30 A | 2026-10-06 | 17DY74-085 FF | 34% | 349.9d |
| 17DY74-098 |  | Pod³¹czenia i pomiary – trasa 14 | 10d | 2026-10-01 | 2026-10-14 | 17DY74-097 FF |  | 346.9d |
| 17DY74-025 |  | Uk³adanie kabli – trasa 02 | 18d | 2026-10-05 | 2026-10-28 | 17DY74-014 SS+10d |  | 293.9d |
| 17DY74-037 |  | Uk³adanie kabli – trasa 04 | 14d | 2026-10-05 | 2026-10-22 | 17DY74-014 SS+10d |  | 340.9d |
| 17DY74-049 |  | Uk³adanie kabli – trasa 06 | 12d | 2026-10-05 | 2026-10-20 | 17DY74-014 SS+10d |  | 342.9d |
| 17DY74-061 |  | Uk³adanie kabli – trasa 08 | 16d | 2026-10-05 | 2026-10-26 | 17DY74-014 SS+10d |  | 338.9d |
| 17DY74-073 |  | Uk³adanie kabli – trasa 10 | 16d | 2026-10-05 | 2026-10-26 | 17DY74-014 SS+10d |  | 338.9d |

| ID | WBS | Task | Duration | Start | Finish | Predecessors | Complete | Total float |
| --- | --- | --- | --- | --- | --- | --- | --- | --- |
| 17DY74-085 |  | Uk³adanie kabli – trasa 12 | 6d | 2026-10-05 | 2026-10-12 | 17DY74-014 SS+10d |  | 348.9d |
| 17DY74-097 |  | Uk³adanie kabli – trasa 14 | 8d | 2026-10-05 | 2026-10-14 | 17DY74-014 SS+10d |  | 346.9d |
| 17DY74-109 |  | Uk³adanie kabli – trasa 16 | 17d | 2026-10-05 | 2026-10-27 | 17DY74-014 SS+10d |  | 294.9d |
| 17DY74-050 |  | Pod³¹czenia i pomiary – trasa 06 | 9d | 2026-10-08 | 2026-10-20 | 17DY74-049 FF |  | 342.9d |
| 17DY74-038 |  | Pod³¹czenia i pomiary – trasa 04 | 6d | 2026-10-15 | 2026-10-22 | 17DY74-037 FF |  | 340.9d |
| 17DY74-074 |  | Pod³¹czenia i pomiary – trasa 10 | 7d | 2026-10-16 | 2026-10-26 | 17DY74-073 FF |  | 338.9d |
| 17DY74-110 |  | Pod³¹czenia i pomiary – trasa 16 | 8d | 2026-10-16 | 2026-10-27 | 17DY74-109 FF |  | 294.9d |
| 17DY74-026 |  | Pod³¹czenia i pomiary – trasa 02 | 7d | 2026-10-20 | 2026-10-28 | 17DY74-025 FF |  | 293.9d |
| 17DY74-062 |  | Pod³¹czenia i pomiary – trasa 08 | 6d | 2026-10-30 | 2026-11-06 | 17DY74-061 FF |  | 329.9d |
|  | MONTA¯ | **Monta¿** |  | 2025-11-03 | 2026-10-29 |  |  |  |
| 17DY74-013 |  | Monta¿ konstrukcji stalowych | 23d | 2025-11-03 A | 2025-12-05 A | 17DY74-012 | 100% |  |
| 17DY74-014 |  | Monta¿ urz¹dzeñ g³ównych | 24d | 2026-09-21 A | 2026-10-23 | 17DY74-013, 17DY74-011 | 21% | 271.1d |
| 17DY74-117 |  | KM: Zakoñczenie monta¿u – Uziemienia i ochrona odgromowa | 0d | 2026-10-29 | 2026-10-29 | 17DY74-108, 17DY74-110, 17DY74-115, 17DY74-116, 17DY74-014 |  | 293.6d |
|  | ROBOTY BUD | **Roboty budowlane** |  | 2025-09-26 | 2025-10-31 |  |  |  |
| 17DY74-012 |  | Fundamenty i roboty ziemne | 23d | 2025-09-26 A | 2025-10-31 A | 17DY74-007 FS+9d | 100% |  |
|  | RUROCI¥GI | **Ruroci¹gi** |  | 2025-10-31 | 2026-11-17 |  |  |  |
|  | SEKCJA 01 | **Sekcja 01** |  | 2025-10-31 | 2026-11-10 |  |  |  |
| 17DY74-015 |  | Prefabrykacja ruroci¹gów – Sekcja 01 | 8.6d | 2025-10-31 A | 2025-11-14 A | 17DY74-012 | 100% |  |
| 17DY74-016 |  | Monta¿ ruroci¹gów – Sekcja 01 | 23.8d | 2026-09-30 A | 2026-10-15 | 17DY74-015, 17DY74-014 SS+9d | 46% | 273.1d |
| 17DY74-017 |  | Próba ciœnieniowa – Sekcja 01 | 6d | 2026-10-16 | 2026-10-23 | 17DY74-016 |  | 284d |
| 17DY74-018 |  | Izolacje – Sekcja 01 | 10d | 2026-10-26 | 2026-11-06 | 17DY74-017 |  | 284d |
| 17DY74-019 |  | Malowanie i oznakowanie – Sekcja 01 | 5d | 2026-11-04 | 2026-11-10 | 17DY74-018 FF+2d |  | 284d |
|  | SEKCJA 02 | **Sekcja 02** |  | 2025-11-06 | 2026-11-03 |  |  |  |
| 17DY74-020 |  | Prefabrykacja ruroci¹gów – Sekcja 02 | 9.1d | 2025-11-06 A | 2025-11-20 A | 17DY74-012, 17DY74-015 SS+5d | 100% |  |
| 17DY74-021 |  | Monta¿ ruroci¹gów – Sekcja 02 | 10d | 2026-10-05 | 2026-10-16 | 17DY74-020, 17DY74-014 SS+10d |  | 289.9d |
| 17DY74-022 |  | Próba ciœnieniowa – Sekcja 02 | 3d | 2026-10-19 | 2026-10-21 | 17DY74-021 |  | 289.9d |
| 17DY74-023 |  | Izolacje – Sekcja 02 | 7d | 2026-10-22 | 2026-10-30 | 17DY74-022 |  | 289.9d |
| 17DY74-024 |  | Malowanie i oznakowanie – Sekcja 02 | 2d | 2026-11-02 | 2026-11-03 | 17DY74-023 FF+2d |  | 289.9d |
|  | SEKCJA 03 | **Sekcja 03** |  | 2025-11-18 | 2026-10-16 |  |  |  |
|  | PODSEKCJA | **Podsekcja 03.A** |  | 2025-11-18 | 2026-10-16 |  |  |  |
| 17DY74-027 |  | Prefabrykacja ruroci¹gów – Sekcja 03 | 5.5d | 2025-11-18 A | 2025-11-25 A | 17DY74-012, 17DY74-020 SS+5d | 100% |  |
| 17DY74-028 |  | Monta¿ ruroci¹gów – Sekcja 03 | 13.8d | 2026-09-17 A | 2026-10-01 | 17DY74-027, 17DY74-014 SS | 82% | 342.1d |
| 17DY74-029 |  | Próba ciœnieniowa – Sekcja 03 | 2d | 2026-10-02 | 2026-10-05 | 17DY74-028 |  | 344.4d |
| 17DY74-030 |  | Izolacje – Sekcja 03 | 7d | 2026-10-06 | 2026-10-14 | 17DY74-029 |  | 344.4d |
| 17DY74-031 |  | Malowanie i oznakowanie – Sekcja 03 | 4d | 2026-10-13 | 2026-10-16 | 17DY74-030 FF+2d |  | 344.4d |
|  | SEKCJA 04 | **Sekcja 04** |  | 2025-11-25 | 2026-11-17 |  |  |  |
| 17DY74-032 |  | Prefabrykacja ruroci¹gów – Sekcja 04 | 8.4d | 2025-11-25 A | 2025-12-05 A | 17DY74-012, 17DY74-027 SS+5d | 100% |  |
| 17DY74-033 |  | Monta¿ ruroci¹gów – Sekcja 04 | 6.6d | 2026-09-28 A | 2026-10-06 | 17DY74-032, 17DY74-014 SS+7d | 24% | 338.3d |
| 17DY74-034 |  | Próba ciœnieniowa – Sekcja 04 | 2d | 2026-10-07 | 2026-10-08 | 17DY74-033 |  | 337.9d |
| 17DY74-035 |  | Izolacje – Sekcja 04 | 11d | 2026-10-30 | 2026-11-13 | 17DY74-034 |  | 322.9d |
| 17DY74-036 |  | Malowanie i oznakowanie – Sekcja 04 | 7d | 2026-11-09 | 2026-11-17 | 17DY74-035 FF+2d |  | 322.9d |
|  | SEKCJA 05 | **Sekcja 05** |  | 2025-11-27 | 2026-11-11 |  |  |  |
| 17DY74-039 |  | Prefabrykacja ruroci¹gów – Sekcja 05 | 12.6d | 2025-11-27 A | 2025-12-16 A | 17DY74-012, 17DY74-032 SS+5d | 100% |  |
| 17DY74-040 |  | Monta¿ ruroci¹gów – Sekcja 05 | 19.5d | 2026-09-18 A | 2026-10-20 | 17DY74-039, 17DY74-014 SS | 21% | 330.4d |
| 17DY74-041 |  | Próba ciœnieniowa – Sekcja 05 | 5d | 2026-10-21 | 2026-10-27 | 17DY74-040 |  | 326.5d |
| 17DY74-042 |  | Izolacje – Sekcja 05 | 9d | 2026-10-28 | 2026-11-09 | 17DY74-041 |  | 326.5d |
| 17DY74-043 |  | Malowanie i oznakowanie – Sekcja 05 | 2d | 2026-11-10 | 2026-11-11 | 17DY74-042 FF+2d |  | 326.5d |
|  | SEKCJA 06 | **Sekcja 06** |  | 2025-12-08 | 2026-10-21 |  |  |  |
|  | PODSEKCJA | **Podsekcja 06.A** |  | 2025-12-08 | 2026-10-21 |  |  |  |
| 17DY74-044 |  | Prefabrykacja ruroci¹gów – Sekcja 06 | 5.7d | 2025-12-08 A | 2025-12-17 A | 17DY74-012, 17DY74-039 SS+5d | 100% |  |
| 17DY74-045 |  | Monta¿ ruroci¹gów – Sekcja 06 | 6.6d | 2026-09-21 A | 2026-09-29 A | 17DY74-044, 17DY74-014 SS | 100% |  |
| 17DY74-046 |  | Próba ciœnieniowa – Sekcja 06 | 5d | 2026-09-29 A | 2026-10-05 | 17DY74-045 | 20% | 341.3d |
| 17DY74-047 |  | Izolacje – Sekcja 06 | 10d | 2026-10-06 | 2026-10-19 | 17DY74-046 |  | 341.9d |
| 17DY74-048 |  | Malowanie i oznakowanie – Sekcja 06 | 3d | 2026-10-19 | 2026-10-21 | 17DY74-047 FF+2d |  | 341.9d |
|  | SEKCJA 07 | **Sekcja 07** |  | 2025-12-11 | 2026-11-05 |  |  |  |
| 17DY74-051 |  | Prefabrykacja ruroci¹gów – Sekcja 07 | 3.2d | 2025-12-11 A | 2025-12-16 A | 17DY74-012, 17DY74-044 SS+5d | 100% |  |
| 17DY74-052 |  | Monta¿ ruroci¹gów – Sekcja 07 | 7.2d | 2026-10-05 | 2026-10-13 | 17DY74-051, 17DY74-014 SS+10d |  | 330.7d |
| 17DY74-053 |  | Próba ciœnieniowa – Sekcja 07 | 5d | 2026-10-14 | 2026-10-20 | 17DY74-052 |  | 330.7d |
| 17DY74-054 |  | Izolacje – Sekcja 07 | 10d | 2026-10-21 | 2026-11-03 | 17DY74-053 |  | 330.7d |
| 17DY74-055 |  | Malowanie i oznakowanie – Sekcja 07 | 4d | 2026-11-02 | 2026-11-05 | 17DY74-054 FF+2d |  | 330.7d |
|  | SEKCJA 08 | **Sekcja 08** |  | 2025-12-18 | 2026-11-03 |  |  |  |
| 17DY74-056 |  | Prefabrykacja ruroci¹gów – Sekcja 08 | 5.6d | 2025-12-18 A | 2025-12-25 A | 17DY74-012, 17DY74-051 SS+5d | 100% |  |
| 17DY74-057 |  | Monta¿ ruroci¹gów – Sekcja 08 | 17.9d | 2026-09-22 A | 2026-10-12 | 17DY74-056, 17DY74-014 SS | 47% | 330d |
| 17DY74-058 |  | Próba ciœnieniowa – Sekcja 08 | 5d | 2026-10-13 | 2026-10-19 | 17DY74-057 |  | 332.4d |
| 17DY74-059 |  | Izolacje – Sekcja 08 | 9d | 2026-10-20 | 2026-10-30 | 17DY74-058 |  | 332.4d |
| 17DY74-060 |  | Malowanie i oznakowanie – Sekcja 08 | 5d | 2026-10-28 | 2026-11-03 | 17DY74-059 FF+2d |  | 332.4d |
|  | SEKCJA 09 | **Sekcja 09** |  | 2025-12-25 | 2026-11-02 |  |  |  |
|  | PODSEKCJA | **Podsekcja 09.A** |  | 2025-12-25 | 2026-11-02 |  |  |  |
| 17DY74-063 |  | Prefabrykacja ruroci¹gów – Sekcja 09 | 4.8d | 2025-12-25 A | 2025-12-30 A | 17DY74-012, 17DY74-056 SS+5d | 100% |  |
| 17DY74-064 |  | Monta¿ ruroci¹gów – Sekcja 09 | 9.5d | 2026-09-23 A | 2026-10-05 | 17DY74-063, 17DY74-014 SS | 51% | 337.4d |

| ID | WBS | Task | Duration | Start | Finish | Predecessors | Complete | Total float |
| --- | --- | --- | --- | --- | --- | --- | --- | --- |
| 17DY74-065 |  | Próba ciœnieniowa – Sekcja 09 | 5d | 2026-10-06 | 2026-10-12 | 17DY74-064 |  | 337.2d |
| 17DY74-066 |  | Izolacje – Sekcja 09 | 9d | 2026-10-13 | 2026-10-23 | 17DY74-065 |  | 337.2d |
| 17DY74-067 |  | Malowanie i oznakowanie – Sekcja 09 | 3d | 2026-10-29 | 2026-11-02 | 17DY74-066 FF+2d |  | 333.9d |
|  | SEKCJA 10 | **Sekcja 10** |  | 2026-01-01 | 2026-11-13 |  |  |  |
| 17DY74-068 |  | Prefabrykacja ruroci¹gów – Sekcja 10 | 6.8d | 2026-01-01 A | 2026-01-12 A | 17DY74-012, 17DY74-063 SS+5d | 100% |  |
| 17DY74-069 |  | Monta¿ ruroci¹gów – Sekcja 10 | 17.2d | 2026-09-24 A | 2026-10-20 | 17DY74-068, 17DY74-014 SS+5d | 12% | 326.7d |
| 17DY74-070 |  | Próba ciœnieniowa – Sekcja 10 | 6d | 2026-10-21 | 2026-10-28 | 17DY74-069 |  | 324.8d |
| 17DY74-071 |  | Izolacje – Sekcja 10 | 10d | 2026-10-29 | 2026-11-11 | 17DY74-070 |  | 324.8d |
| 17DY74-072 |  | Malowanie i oznakowanie – Sekcja 10 | 8d | 2026-11-04 | 2026-11-13 | 17DY74-071 FF+2d |  | 324.8d |
|  | SEKCJA 11 | **Sekcja 11** |  | 2026-01-07 | 2026-10-15 |  |  |  |
| 17DY74-075 |  | Prefabrykacja ruroci¹gów – Sekcja 11 | 3.6d | 2026-01-07 A | 2026-01-14 A | 17DY74-012, 17DY74-068 SS+5d | 100% |  |
| 17DY74-076 |  | Monta¿ ruroci¹gów – Sekcja 11 | 9.9d | 2026-09-25 A | 2026-10-06 | 17DY74-075, 17DY74-014 SS+6d | 49% | 344d |
| 17DY74-077 |  | Próba ciœnieniowa – Sekcja 11 | 2d | 2026-10-07 | 2026-10-08 | 17DY74-076 |  | 345.9d |
| 17DY74-079 |  | Malowanie i oznakowanie – Sekcja 11 | 6d | 2026-10-08 | 2026-10-15 | 17DY74-078 FF+2d |  | 345.9d |
| 17DY74-078 |  | Izolacje – Sekcja 11 | 3d | 2026-10-09 | 2026-10-13 | 17DY74-077 |  | 345.9d |
|  | SEKCJA 12 | **Sekcja 12** |  | 2026-01-15 | 2026-10-30 |  |  |  |
|  | PODSEKCJA | **Podsekcja 12.A** |  | 2026-01-15 | 2026-10-30 |  |  |  |
| 17DY74-080 |  | Prefabrykacja ruroci¹gów – Sekcja 12 | 11.6d | 2026-01-15 A | 2026-02-02 A | 17DY74-012, 17DY74-075 SS+5d | 100% |  |
| 17DY74-081 |  | Monta¿ ruroci¹gów – Sekcja 12 | 7d | 2026-10-05 | 2026-10-13 | 17DY74-080, 17DY74-014 SS+10d |  | 334.9d |
| 17DY74-082 |  | Próba ciœnieniowa – Sekcja 12 | 6d | 2026-10-14 | 2026-10-21 | 17DY74-081 |  | 334.9d |
| 17DY74-083 |  | Izolacje – Sekcja 12 | 5d | 2026-10-22 | 2026-10-28 | 17DY74-082 |  | 334.9d |
| 17DY74-084 |  | Malowanie i oznakowanie – Sekcja 12 | 7d | 2026-10-22 | 2026-10-30 | 17DY74-083 FF+2d |  | 334.9d |
|  | SEKCJA 13 | **Sekcja 13** |  | 2026-01-26 | 2026-10-28 |  |  |  |
| 17DY74-087 |  | Prefabrykacja ruroci¹gów – Sekcja 13 | 3.3d | 2026-01-26 A | 2026-09-30 | 17DY74-012, 17DY74-080 SS+5d | 67% | 435.9d |
| 17DY74-088 |  | Monta¿ ruroci¹gów – Sekcja 13 | 12.6d | 2026-09-29 A | 2026-10-12 | 17DY74-087, 17DY74-014 SS+8d | 29% | 334.3d |
| 17DY74-089 |  | Próba ciœnieniowa – Sekcja 13 | 4d | 2026-10-13 | 2026-10-16 | 17DY74-088 |  | 336.9d |
| 17DY74-090 |  | Izolacje – Sekcja 13 | 6d | 2026-10-19 | 2026-10-26 | 17DY74-089 |  | 336.9d |
| 17DY74-091 |  | Malowanie i oznakowanie – Sekcja 13 | 6d | 2026-10-21 | 2026-10-28 | 17DY74-090 FF+2d |  | 336.9d |
|  | SEKCJA 14 | **Sekcja 14** |  | 2026-02-03 | 2026-11-10 |  |  |  |
| 17DY74-092 |  | Prefabrykacja ruroci¹gów – Sekcja 14 | 8.4d | 2026-02-03 A | 2026-02-17 A | 17DY74-012, 17DY74-087 SS+5d | 100% |  |
| 17DY74-093 |  | Monta¿ ruroci¹gów – Sekcja 14 | 16.3d | 2026-09-21 A | 2026-10-19 | 17DY74-092, 17DY74-014 SS | 12% | 332.6d |
| 17DY74-094 |  | Próba ciœnieniowa – Sekcja 14 | 2d | 2026-10-20 | 2026-10-21 | 17DY74-093 |  | 327.6d |
| 17DY74-095 |  | Izolacje – Sekcja 14 | 12d | 2026-10-22 | 2026-11-06 | 17DY74-094 |  | 327.6d |
| 17DY74-096 |  | Malowanie i oznakowanie – Sekcja 14 | 6d | 2026-11-03 | 2026-11-10 | 17DY74-095 FF+2d |  | 327.6d |
|  | SEKCJA 15 | **Sekcja 15** |  | 2026-09-21 | 2026-10-26 |  |  |  |
|  | PODSEKCJA | **Podsekcja 15.A** |  | 2026-09-21 | 2026-10-26 |  |  |  |
| 17DY74-100 |  | Monta¿ ruroci¹gów – Sekcja 15 | 16.2d | 2026-09-21 A | 2026-10-01 | 17DY74-099, 17DY74-014 SS+2d | 84% | 338.7d |
| 17DY74-099 |  | Prefabrykacja ruroci¹gów – Sekcja 15 | 14d | 2026-09-30 | 2026-10-19 | 17DY74-012, 17DY74-092 SS+5d |  | 268.9d |
| 17DY74-101 |  | Próba ciœnieniowa – Sekcja 15 | 3d | 2026-10-02 | 2026-10-06 | 17DY74-100 |  | 345.3d |
| 17DY74-102 |  | Izolacje – Sekcja 15 | 5d | 2026-10-16 | 2026-10-22 | 17DY74-101 |  | 338.9d |
| 17DY74-103 |  | Malowanie i oznakowanie – Sekcja 15 | 4d | 2026-10-21 | 2026-10-26 | 17DY74-102 FF+2d |  | 338.9d |
|  | SEKCJA 16 | **Sekcja 16** |  | 2026-02-11 | 2026-10-23 |  |  |  |
| 17DY74-104 |  | Prefabrykacja ruroci¹gów – Sekcja 16 | 13.9d | 2026-02-11 A | 2026-03-03 A | 17DY74-012, 17DY74-099 SS+5d | 100% |  |
| 17DY74-105 |  | Monta¿ ruroci¹gów – Sekcja 16 | 18.1d | 2026-09-21 A | 2026-10-12 | 17DY74-104, 17DY74-014 SS+2d | 48% | 294.8d |
| 17DY74-106 |  | Próba ciœnieniowa – Sekcja 16 | 4d | 2026-10-13 | 2026-10-16 | 17DY74-105 |  | 296.4d |
| 17DY74-108 |  | Malowanie i oznakowanie – Sekcja 16 | 6d | 2026-10-16 | 2026-10-23 | 17DY74-107 FF+2d |  | 296.4d |
| 17DY74-107 |  | Izolacje – Sekcja 16 | 3d | 2026-10-19 | 2026-10-21 | 17DY74-106 |  | 296.4d |
|  | SEKCJA 17 | **Sekcja 17** |  | 2026-02-24 | 2026-10-28 |  |  |  |
| 17DY74-111 |  | Prefabrykacja ruroci¹gów – Sekcja 17 | 8.3d | 2026-02-24 A | 2026-03-10 A | 17DY74-012, 17DY74-104 SS+5d | 100% |  |
| 17DY74-112 |  | Monta¿ ruroci¹gów – Sekcja 17 | 6.4d | 2026-09-30 A | 2026-10-06 | 17DY74-111, 17DY74-014 SS+8d | 17% | 292.5d |
| 17DY74-113 |  | Próba ciœnieniowa – Sekcja 17 | 6d | 2026-10-07 | 2026-10-14 | 17DY74-112 |  | 293.6d |
| 17DY74-114 |  | Izolacje – Sekcja 17 | 8d | 2026-10-15 | 2026-10-26 | 17DY74-113 |  | 293.6d |
| 17DY74-115 |  | Malowanie i oznakowanie – Sekcja 17 | 7d | 2026-10-20 | 2026-10-28 | 17DY74-114 FF+2d |  | 293.6d |
|  | PROJ | **Projektowanie** |  | 2025-03-05 | 2026-09-30 |  |  |  |
|  | DOKUMENTAC | **Dokumentacja** |  | 2025-03-05 | 2026-09-30 |  |  |  |
| 17DY74-001 |  | Projekt wykonawczy – Uziemienia i ochrona odgromowa | 88d | 2025-03-05 A | 2025-07-04 A |  | 100% |  |
| 17DY74-002 |  | Uzgodnienie dokumentacji z Inwestorem | 30d | 2025-07-07 A | 2025-08-18 A | 17DY74-001 | 100% |  |
| 17DY74-003 |  | Zatwierdzenie dokumentacji do realizacji | 12d | 2025-08-22 A | 2026-09-30 | 17DY74-002 | 85% | 273.1d |
| 17DY74-004 |  | KM: Dokumentacja zatwierdzona – Uziemienia i ochrona odgromowa | 0d | 2025-09-09 A | 2025-09-09 | 17DY74-003 | 100% |  |
|  | ROZR | **Rozruch** |  | 2026-11-11 | 2026-12-28 |  |  |  |
|  | ROZRUCH | **Rozruch** |  | 2026-11-11 | 2026-12-28 |  |  |  |
| 17DY74-118 |  | Przegl¹d gotowoœci do rozruchu | 7d | 2026-11-11 | 2026-11-19 | 17DY74-117, 17DY74-019, 17DY74-024, 17DY74-026 |  | 284d |
| 17DY74-119 |  | Rozruch na zimno | 6d | 2026-11-20 | 2026-11-27 | 17DY74-118 |  | 284d |
| 17DY74-120 |  | Rozruch na gor¹co / próby ruchowe | 20d | 2026-11-30 | 2026-12-25 | 17DY74-119 |  | 284d |
| 17DY74-121 |  | KM: Odbiór koñcowy – Uziemienia i ochrona odgromowa | 0d | 2026-12-28 | 2026-12-28 | 17DY74-120 |  | 284d |
|  | ZAKU | **Zakupy** |  | 2025-04-04 | 2026-09-30 |  |  |  |
|  | DOSTAWY | **Dostawy** |  | 2025-09-18 | 2026-09-30 |  |  |  |
| 17DY74-008 |  | Produkcja u dostawcy | 238d | 2025-09-18 A | 2026-08-18 A | 17DY74-007 | 100% |  |
| 17DY74-009 |  | Testy FAT | 6d | 2026-08-18 A | 2026-08-27 A | 17DY74-008 | 100% |  |
| 17DY74-010 |  | Transport i dostawa na plac budowy | 18d | 2026-08-24 A | 2026-09-18 A | 17DY74-009 | 100% |  |

| ID | WBS | Task | Duration | Start | Finish | Predecessors | Complete | Total float |
| --- | --- | --- | --- | --- | --- | --- | --- | --- |
| 17DY74-011 |  | KM: Dostawa na budowê – Uziemienia i ochrona odgromowa | 0d | 2026-09-30 | 2026-09-30 | 17DY74-010 |  | 264.1d |
|  | ZAMÓWIENIA | **Zamówienia** |  | 2025-04-04 | 2025-09-16 |  |  |  |
| 17DY74-005 |  | Zapytanie ofertowe | 26d | 2025-04-04 A | 2025-05-14 A | 17DY74-001 SS+20d | 100% |  |
| 17DY74-006 |  | Analiza i wybór ofert | 17d | 2025-05-14 A | 2025-06-10 A | 17DY74-005 | 100% |  |
| 17DY74-007 |  | Zawarcie umowy / zamówienie | 5d | 2025-09-09 A | 2025-09-16 A | 17DY74-006, 17DY74-004 SS, 10YD43-004 FS+12d | 100% |  |
|  | 26NP30 | **26NP30 – Rozdzielnia nN** |  | 2025-04-01 | 2027-03-26 |  |  |  |
|  | BUDO | **Budowa** |  | 2025-11-07 | 2027-02-04 |  |  |  |
|  | AKPIA | **AKPiA** |  | 2026-11-11 | 2026-12-10 |  |  |  |
| 26NP30-152 |  | Monta¿ uk³adów AKPiA | 22d | 2026-11-11 | 2026-12-10 | 26NP30-014 SS+5d |  | 259.7d |
|  | ELEKTRYKA | **Elektryka** |  | 2026-11-16 | 2026-12-15 |  |  |  |
| 26NP30-122 |  | Pod³¹czenia i pomiary – trasa 18 | 6d | 2026-11-16 | 2026-11-23 | 26NP30-121 FF |  | 318.7d |
| 26NP30-026 |  | Pod³¹czenia i pomiary – trasa 02 | 5d | 2026-11-17 | 2026-11-23 | 26NP30-025 FF |  | 272.7d |
| 26NP30-025 |  | Uk³adanie kabli – trasa 02 | 4d | 2026-11-18 | 2026-11-23 | 26NP30-014 SS+10d |  | 272.7d |
| 26NP30-037 |  | Uk³adanie kabli – trasa 04 | 6d | 2026-11-18 | 2026-11-25 | 26NP30-014 SS+10d |  | 316.7d |
| 26NP30-038 |  | Pod³¹czenia i pomiary – trasa 04 | 6d | 2026-11-18 | 2026-11-25 | 26NP30-037 FF |  | 316.7d |
| 26NP30-049 |  | Uk³adanie kabli – trasa 06 | 19d | 2026-11-18 | 2026-12-14 | 26NP30-014 SS+10d |  | 303.7d |
| 26NP30-061 |  | Uk³adanie kabli – trasa 08 | 13d | 2026-11-18 | 2026-12-04 | 26NP30-014 SS+10d |  | 309.7d |
| 26NP30-073 |  | Uk³adanie kabli – trasa 10 | 16d | 2026-11-18 | 2026-12-09 | 26NP30-014 SS+10d |  | 306.7d |
| 26NP30-085 |  | Uk³adanie kabli – trasa 12 | 14d | 2026-11-18 | 2026-12-07 | 26NP30-014 SS+10d |  | 308.7d |
| 26NP30-097 |  | Uk³adanie kabli – trasa 14 | 15d | 2026-11-18 | 2026-12-08 | 26NP30-014 SS+10d |  | 307.7d |
| 26NP30-109 |  | Uk³adanie kabli – trasa 16 | 20d | 2026-11-18 | 2026-12-15 | 26NP30-014 SS+10d |  | 302.7d |
| 26NP30-121 |  | Uk³adanie kabli – trasa 18 | 4d | 2026-11-18 | 2026-11-23 | 26NP30-014 SS+10d |  | 318.7d |
| 26NP30-133 |  | Uk³adanie kabli – trasa 20 | 13d | 2026-11-18 | 2026-12-04 | 26NP30-014 SS+10d |  | 309.7d |
| 26NP30-145 |  | Uk³adanie kabli – trasa 22 | 17d | 2026-11-18 | 2026-12-10 | 26NP30-014 SS+10d |  | 259.7d |
| 26NP30-062 |  | Pod³¹czenia i pomiary – trasa 08 | 9d | 2026-11-24 | 2026-12-04 | 26NP30-061 FF |  | 309.7d |
| 26NP30-134 |  | Pod³¹czenia i pomiary – trasa 20 | 8d | 2026-11-25 | 2026-12-04 | 26NP30-133 FF |  | 309.7d |
| 26NP30-086 |  | Pod³¹czenia i pomiary – trasa 12 | 7d | 2026-11-27 | 2026-12-07 | 26NP30-085 FF |  | 308.7d |
| 26NP30-074 |  | Pod³¹czenia i pomiary – trasa 10 | 7d | 2026-12-01 | 2026-12-09 | 26NP30-073 FF |  | 306.7d |
| 26NP30-146 |  | Pod³¹czenia i pomiary – trasa 22 | 8d | 2026-12-01 | 2026-12-10 | 26NP30-145 FF |  | 259.7d |
| 26NP30-098 |  | Pod³¹czenia i pomiary – trasa 14 | 5d | 2026-12-02 | 2026-12-08 | 26NP30-097 FF |  | 307.7d |
| 26NP30-050 |  | Pod³¹czenia i pomiary – trasa 06 | 3d | 2026-12-10 | 2026-12-14 | 26NP30-049 FF |  | 303.7d |
| 26NP30-110 |  | Pod³¹czenia i pomiary – trasa 16 | 3d | 2026-12-11 | 2026-12-15 | 26NP30-109 FF |  | 302.7d |
|  | MONTA¯ | **Monta¿** |  | 2026-02-02 | 2027-02-04 |  |  |  |
| 26NP30-013 |  | Monta¿ konstrukcji stalowych | 49d | 2026-02-02 A | 2026-04-13 A | 26NP30-012 | 100% |  |
| 26NP30-014 |  | Monta¿ urz¹dzeñ g³ównych | 66d | 2026-11-04 | 2027-02-03 | 26NP30-013, 26NP30-011 |  | 220.7d |
| 26NP30-153 |  | KM: Zakoñczenie monta¿u – Rozdzielnia nN | 0d | 2027-02-04 | 2027-02-04 | 26NP30-144, 26NP30-146, 26NP30-151, 26NP30-152, 26NP30-014 |  | 220.7d |
|  | ROBOTY BUD | **Roboty budowlane** |  | 2025-11-07 | 2026-01-27 |  |  |  |
| 26NP30-012 |  | Fundamenty i roboty ziemne | 58d | 2025-11-07 A | 2026-01-27 A | 26NP30-007 FS+10d | 100% |  |
|  | RUROCI¥GI | **Ruroci¹gi** |  | 2026-02-02 | 2027-01-08 |  |  |  |
|  | SEKCJA 01 | **Sekcja 01** |  | 2026-02-02 | 2026-12-14 |  |  |  |
| 26NP30-015 |  | Prefabrykacja ruroci¹gów – Sekcja 01 | 13.9d | 2026-02-02 A | 2026-02-18 A | 26NP30-012 | 100% |  |
| 26NP30-016 |  | Monta¿ ruroci¹gów – Sekcja 01 | 7.6d | 2026-11-12 | 2026-11-20 | 26NP30-015, 26NP30-014 SS+6d |  | 257.1d |
| 26NP30-017 |  | Próba ciœnieniowa – Sekcja 01 | 2d | 2026-11-23 | 2026-11-24 | 26NP30-016 |  | 257.1d |
| 26NP30-018 |  | Izolacje – Sekcja 01 | 12d | 2026-11-25 | 2026-12-10 | 26NP30-017 |  | 257.1d |
| 26NP30-019 |  | Malowanie i oznakowanie – Sekcja 01 | 4d | 2026-12-09 | 2026-12-14 | 26NP30-018 FF+2d |  | 257.1d |
|  | SEKCJA 02 | **Sekcja 02** |  | 2026-02-09 | 2027-01-08 |  |  |  |
| 26NP30-020 |  | Prefabrykacja ruroci¹gów – Sekcja 02 | 12.6d | 2026-02-09 A | 2026-02-26 A | 26NP30-012, 26NP30-015 SS+5d | 100% |  |
| 26NP30-021 |  | Monta¿ ruroci¹gów – Sekcja 02 | 22.6d | 2026-11-16 | 2026-12-15 | 26NP30-020, 26NP30-014 SS+8d |  | 238.1d |
| 26NP30-022 |  | Próba ciœnieniowa – Sekcja 02 | 4d | 2026-12-16 | 2026-12-21 | 26NP30-021 |  | 238.1d |
| 26NP30-023 |  | Izolacje – Sekcja 02 | 12d | 2026-12-22 | 2027-01-06 | 26NP30-022 |  | 238.1d |
| 26NP30-024 |  | Malowanie i oznakowanie – Sekcja 02 | 6d | 2027-01-01 | 2027-01-08 | 26NP30-023 FF+2d |  | 238.1d |
|  | SEKCJA 03 | **Sekcja 03** |  | 2026-02-11 | 2026-12-14 |  |  |  |
|  | PODSEKCJA | **Podsekcja 03.A** |  | 2026-02-11 | 2026-12-14 |  |  |  |
| 26NP30-027 |  | Prefabrykacja ruroci¹gów – Sekcja 03 | 12.8d | 2026-02-11 A | 2026-03-02 A | 26NP30-012, 26NP30-020 SS+5d | 100% |  |
| 26NP30-028 |  | Monta¿ ruroci¹gów – Sekcja 03 | 13d | 2026-11-09 | 2026-11-25 | 26NP30-027, 26NP30-014 SS+3d |  | 303.7d |
| 26NP30-029 |  | Próba ciœnieniowa – Sekcja 03 | 4d | 2026-11-26 | 2026-12-01 | 26NP30-028 |  | 303.7d |
| 26NP30-030 |  | Izolacje – Sekcja 03 | 7d | 2026-12-02 | 2026-12-10 | 26NP30-029 |  | 303.7d |
| 26NP30-031 |  | Malowanie i oznakowanie – Sekcja 03 | 6d | 2026-12-07 | 2026-12-14 | 26NP30-030 FF+2d |  | 303.7d |
|  | SEKCJA 04 | **Sekcja 04** |  | 2026-02-23 | 2026-12-29 |  |  |  |
| 26NP30-032 |  | Prefabrykacja ruroci¹gów – Sekcja 04 | 13.7d | 2026-02-23 A | 2026-03-11 A | 26NP30-012, 26NP30-027 SS+5d | 100% |  |
| 26NP30-033 |  | Monta¿ ruroci¹gów – Sekcja 04 | 23.4d | 2026-11-06 | 2026-12-08 | 26NP30-032, 26NP30-014 SS+2d |  | 292.3d |
| 26NP30-034 |  | Próba ciœnieniowa – Sekcja 04 | 4d | 2026-12-09 | 2026-12-14 | 26NP30-033 |  | 292.3d |
| 26NP30-035 |  | Izolacje – Sekcja 04 | 9d | 2026-12-15 | 2026-12-25 | 26NP30-034 |  | 292.3d |
| 26NP30-036 |  | Malowanie i oznakowanie – Sekcja 04 | 3d | 2026-12-25 | 2026-12-29 | 26NP30-035 FF+2d |  | 292.3d |
|  | SEKCJA 05 | **Sekcja 05** |  | 2026-03-02 | 2026-12-08 |  |  |  |
| 26NP30-039 |  | Prefabrykacja ruroci¹gów – Sekcja 05 | 9.4d | 2026-03-02 A | 2026-03-13 A | 26NP30-012, 26NP30-032 SS+5d | 100% |  |
| 26NP30-040 |  | Monta¿ ruroci¹gów – Sekcja 05 | 5.5d | 2026-11-13 | 2026-11-19 | 26NP30-039, 26NP30-014 SS+7d |  | 307.2d |
| 26NP30-041 |  | Próba ciœnieniowa – Sekcja 05 | 3d | 2026-11-20 | 2026-11-24 | 26NP30-040 |  | 307.2d |
| 26NP30-042 |  | Izolacje – Sekcja 05 | 8d | 2026-11-25 | 2026-12-04 | 26NP30-041 |  | 307.2d |
| 26NP30-043 |  | Malowanie i oznakowanie – Sekcja 05 | 3d | 2026-12-04 | 2026-12-08 | 26NP30-042 FF+2d |  | 307.2d |

| ID | WBS | Task | Duration | Start | Finish | Predecessors | Complete | Total float |
| --- | --- | --- | --- | --- | --- | --- | --- | --- |
|  | SEKCJA 06 | **Sekcja 06** |  | 2026-03-04 | 2026-12-07 |  |  |  |
|  | PODSEKCJA | **Podsekcja 06.A** |  | 2026-03-04 | 2026-12-07 |  |  |  |
| 26NP30-044 |  | Prefabrykacja ruroci¹gów – Sekcja 06 | 5d | 2026-03-04 A | 2026-03-10 A | 26NP30-012, 26NP30-039 SS+5d | 100% |  |
| 26NP30-045 |  | Monta¿ ruroci¹gów – Sekcja 06 | 5.3d | 2026-11-10 | 2026-11-16 | 26NP30-044, 26NP30-014 SS+4d |  | 308.4d |
| 26NP30-046 |  | Próba ciœnieniowa – Sekcja 06 | 3d | 2026-11-17 | 2026-11-19 | 26NP30-045 |  | 308.4d |
| 26NP30-047 |  | Izolacje – Sekcja 06 | 10d | 2026-11-20 | 2026-12-03 | 26NP30-046 |  | 308.4d |
| 26NP30-048 |  | Malowanie i oznakowanie – Sekcja 06 | 3d | 2026-12-03 | 2026-12-07 | 26NP30-047 FF+2d |  | 308.4d |
|  | SEKCJA 07 | **Sekcja 07** |  | 2026-03-13 | 2026-12-29 |  |  |  |
| 26NP30-051 |  | Prefabrykacja ruroci¹gów – Sekcja 07 | 8.4d | 2026-03-13 A | 2026-03-24 A | 26NP30-012, 26NP30-044 SS+5d | 100% |  |
| 26NP30-052 |  | Monta¿ ruroci¹gów – Sekcja 07 | 24.9d | 2026-11-10 | 2026-12-14 | 26NP30-051, 26NP30-014 SS+4d |  | 292.8d |
| 26NP30-053 |  | Próba ciœnieniowa – Sekcja 07 | 5d | 2026-12-15 | 2026-12-21 | 26NP30-052 |  | 292.8d |
| 26NP30-054 |  | Izolacje – Sekcja 07 | 4d | 2026-12-22 | 2026-12-25 | 26NP30-053 |  | 292.8d |
| 26NP30-055 |  | Malowanie i oznakowanie – Sekcja 07 | 4d | 2026-12-24 | 2026-12-29 | 26NP30-054 FF+2d |  | 292.8d |
|  | SEKCJA 08 | **Sekcja 08** |  | 2026-03-20 | 2026-12-11 |  |  |  |
| 26NP30-056 |  | Prefabrykacja ruroci¹gów – Sekcja 08 | 10.6d | 2026-03-20 A | 2026-04-07 A | 26NP30-012, 26NP30-051 SS+5d | 100% |  |
| 26NP30-057 |  | Monta¿ ruroci¹gów – Sekcja 08 | 13.8d | 2026-11-09 | 2026-11-26 | 26NP30-056, 26NP30-014 SS+3d |  | 304.9d |
| 26NP30-058 |  | Próba ciœnieniowa – Sekcja 08 | 3d | 2026-11-27 | 2026-12-01 | 26NP30-057 |  | 304.9d |
| 26NP30-059 |  | Izolacje – Sekcja 08 | 6d | 2026-12-02 | 2026-12-09 | 26NP30-058 |  | 304.9d |
| 26NP30-060 |  | Malowanie i oznakowanie – Sekcja 08 | 7d | 2026-12-03 | 2026-12-11 | 26NP30-059 FF+2d |  | 304.9d |
|  | SEKCJA 09 | **Sekcja 09** |  | 2026-03-24 | 2026-12-10 |  |  |  |
|  | PODSEKCJA | **Podsekcja 09.A** |  | 2026-03-24 | 2026-12-10 |  |  |  |
| 26NP30-063 |  | Prefabrykacja ruroci¹gów – Sekcja 09 | 14.6d | 2026-03-24 A | 2026-04-10 A | 26NP30-012, 26NP30-056 SS+5d | 100% |  |
| 26NP30-064 |  | Monta¿ ruroci¹gów – Sekcja 09 | 12.2d | 2026-11-05 | 2026-11-20 | 26NP30-063, 26NP30-014 SS+1d |  | 305.5d |
| 26NP30-065 |  | Próba ciœnieniowa – Sekcja 09 | 3d | 2026-11-23 | 2026-11-25 | 26NP30-064 |  | 305.5d |
| 26NP30-066 |  | Izolacje – Sekcja 09 | 9d | 2026-11-26 | 2026-12-08 | 26NP30-065 |  | 305.5d |
| 26NP30-067 |  | Malowanie i oznakowanie – Sekcja 09 | 6d | 2026-12-03 | 2026-12-10 | 26NP30-066 FF+2d |  | 305.5d |
|  | SEKCJA 10 | **Sekcja 10** |  | 2026-04-03 | 2026-12-23 |  |  |  |
| 26NP30-068 |  | Prefabrykacja ruroci¹gów – Sekcja 10 | 12.7d | 2026-04-03 A | 2026-04-23 A | 26NP30-012, 26NP30-063 SS+5d | 100% |  |
| 26NP30-069 |  | Monta¿ ruroci¹gów – Sekcja 10 | 22.2d | 2026-11-06 | 2026-12-07 | 26NP30-068, 26NP30-014 SS+2d |  | 296.5d |
| 26NP30-070 |  | Próba ciœnieniowa – Sekcja 10 | 5d | 2026-12-08 | 2026-12-14 | 26NP30-069 |  | 296.5d |
| 26NP30-071 |  | Izolacje – Sekcja 10 | 5d | 2026-12-15 | 2026-12-21 | 26NP30-070 |  | 296.5d |
| 26NP30-072 |  | Malowanie i oznakowanie – Sekcja 10 | 6d | 2026-12-16 | 2026-12-23 | 26NP30-071 FF+2d |  | 296.5d |
|  | SEKCJA 11 | **Sekcja 11** |  | 2026-04-09 | 2026-12-17 |  |  |  |
| 26NP30-075 |  | Prefabrykacja ruroci¹gów – Sekcja 11 | 12.5d | 2026-04-09 A | 2026-04-29 A | 26NP30-012, 26NP30-068 SS+5d | 100% |  |
| 26NP30-076 |  | Monta¿ ruroci¹gów – Sekcja 11 | 16.6d | 2026-11-04 | 2026-11-25 | 26NP30-075, 26NP30-014 SS |  | 300.1d |
| 26NP30-077 |  | Próba ciœnieniowa – Sekcja 11 | 6d | 2026-11-26 | 2026-12-03 | 26NP30-076 |  | 300.1d |
| 26NP30-078 |  | Izolacje – Sekcja 11 | 8d | 2026-12-04 | 2026-12-15 | 26NP30-077 |  | 300.1d |
| 26NP30-079 |  | Malowanie i oznakowanie – Sekcja 11 | 4d | 2026-12-14 | 2026-12-17 | 26NP30-078 FF+2d |  | 300.1d |
|  | SEKCJA 12 | **Sekcja 12** |  | 2026-04-15 | 2026-11-20 |  |  |  |
|  | PODSEKCJA | **Podsekcja 12.A** |  | 2026-04-15 | 2026-11-20 |  |  |  |
| 26NP30-080 |  | Prefabrykacja ruroci¹gów – Sekcja 12 | 4.7d | 2026-04-15 A | 2026-04-21 A | 26NP30-012, 26NP30-075 SS+5d | 100% |  |
| 26NP30-081 |  | Monta¿ ruroci¹gów – Sekcja 12 | 5.4d | 2026-11-04 | 2026-11-10 | 26NP30-080, 26NP30-014 SS |  | 319.3d |
| 26NP30-082 |  | Próba ciœnieniowa – Sekcja 12 | 2d | 2026-11-11 | 2026-11-12 | 26NP30-081 |  | 319.3d |
| 26NP30-084 |  | Malowanie i oznakowanie – Sekcja 12 | 7d | 2026-11-12 | 2026-11-20 | 26NP30-083 FF+2d |  | 319.3d |
| 26NP30-083 |  | Izolacje – Sekcja 12 | 4d | 2026-11-13 | 2026-11-18 | 26NP30-082 |  | 319.3d |
|  | SEKCJA 13 | **Sekcja 13** |  | 2026-04-21 | 2026-12-18 |  |  |  |
| 26NP30-087 |  | Prefabrykacja ruroci¹gów – Sekcja 13 | 12.9d | 2026-04-21 A | 2026-05-08 A | 26NP30-012, 26NP30-080 SS+5d | 100% |  |
| 26NP30-088 |  | Monta¿ ruroci¹gów – Sekcja 13 | 9.6d | 2026-11-17 | 2026-11-27 | 26NP30-087, 26NP30-014 SS+9d |  | 299.1d |
| 26NP30-089 |  | Próba ciœnieniowa – Sekcja 13 | 6d | 2026-11-30 | 2026-12-07 | 26NP30-088 |  | 299.1d |
| 26NP30-090 |  | Izolacje – Sekcja 13 | 7d | 2026-12-08 | 2026-12-16 | 26NP30-089 |  | 299.1d |
| 26NP30-091 |  | Malowanie i oznakowanie – Sekcja 13 | 5d | 2026-12-14 | 2026-12-18 | 26NP30-090 FF+2d |  | 299.1d |
|  | SEKCJA 14 | **Sekcja 14** |  | 2026-05-01 | 2026-12-17 |  |  |  |
| 26NP30-092 |  | Prefabrykacja ruroci¹gów – Sekcja 14 | 5.5d | 2026-05-01 A | 2026-05-08 A | 26NP30-012, 26NP30-087 SS+5d | 100% |  |
| 26NP30-093 |  | Monta¿ ruroci¹gów – Sekcja 14 | 19.2d | 2026-11-04 | 2026-11-30 | 26NP30-092, 26NP30-014 SS |  | 300.5d |
| 26NP30-094 |  | Próba ciœnieniowa – Sekcja 14 | 4d | 2026-12-01 | 2026-12-04 | 26NP30-093 |  | 300.5d |
| 26NP30-095 |  | Izolacje – Sekcja 14 | 7d | 2026-12-07 | 2026-12-15 | 26NP30-094 |  | 300.5d |
| 26NP30-096 |  | Malowanie i oznakowanie – Sekcja 14 | 7d | 2026-12-09 | 2026-12-17 | 26NP30-095 FF+2d |  | 300.5d |
|  | SEKCJA 15 | **Sekcja 15** |  | 2026-05-05 | 2026-12-24 |  |  |  |
|  | PODSEKCJA | **Podsekcja 15.A** |  | 2026-05-05 | 2026-12-24 |  |  |  |
| 26NP30-099 |  | Prefabrykacja ruroci¹gów – Sekcja 15 | 3.6d | 2026-05-05 A | 2026-05-07 A | 26NP30-012, 26NP30-092 SS+5d | 100% |  |
| 26NP30-100 |  | Monta¿ ruroci¹gów – Sekcja 15 | 11.1d | 2026-11-18 | 2026-12-02 | 26NP30-099, 26NP30-014 SS+10d |  | 295.6d |
| 26NP30-101 |  | Próba ciœnieniowa – Sekcja 15 | 3d | 2026-12-03 | 2026-12-07 | 26NP30-100 |  | 295.6d |
| 26NP30-102 |  | Izolacje – Sekcja 15 | 11d | 2026-12-08 | 2026-12-22 | 26NP30-101 |  | 295.6d |
| 26NP30-103 |  | Malowanie i oznakowanie – Sekcja 15 | 8d | 2026-12-15 | 2026-12-24 | 26NP30-102 FF+2d |  | 295.6d |
|  | SEKCJA 16 | **Sekcja 16** |  | 2026-05-12 | 2026-12-24 |  |  |  |
| 26NP30-104 |  | Prefabrykacja ruroci¹gów – Sekcja 16 | 8.7d | 2026-05-12 A | 2026-05-21 A | 26NP30-012, 26NP30-099 SS+5d | 100% |  |
| 26NP30-105 |  | Monta¿ ruroci¹gów – Sekcja 16 | 17.5d | 2026-11-16 | 2026-12-08 | 26NP30-104, 26NP30-014 SS+8d |  | 295.2d |
| 26NP30-106 |  | Próba ciœnieniowa – Sekcja 16 | 4d | 2026-12-09 | 2026-12-14 | 26NP30-105 |  | 295.2d |
| 26NP30-107 |  | Izolacje – Sekcja 16 | 6d | 2026-12-15 | 2026-12-22 | 26NP30-106 |  | 295.2d |
| 26NP30-108 |  | Malowanie i oznakowanie – Sekcja 16 | 5d | 2026-12-18 | 2026-12-24 | 26NP30-107 FF+2d |  | 295.2d |

| ID | WBS | Task | Duration | Start | Finish | Predecessors | Complete | Total float |
| --- | --- | --- | --- | --- | --- | --- | --- | --- |
|  | SEKCJA 17 | **Sekcja 17** |  | 2026-05-20 | 2026-12-24 |  |  |  |
| 26NP30-111 |  | Prefabrykacja ruroci¹gów – Sekcja 17 | 6.8d | 2026-05-20 A | 2026-06-01 A | 26NP30-012, 26NP30-104 SS+5d | 100% |  |
| 26NP30-112 |  | Monta¿ ruroci¹gów – Sekcja 17 | 12.5d | 2026-11-16 | 2026-12-01 | 26NP30-111, 26NP30-014 SS+8d |  | 295.2d |
| 26NP30-113 |  | Próba ciœnieniowa – Sekcja 17 | 3d | 2026-12-02 | 2026-12-04 | 26NP30-112 |  | 295.2d |
| 26NP30-114 |  | Izolacje – Sekcja 17 | 12d | 2026-12-07 | 2026-12-22 | 26NP30-113 |  | 295.2d |
| 26NP30-115 |  | Malowanie i oznakowanie – Sekcja 17 | 7d | 2026-12-16 | 2026-12-24 | 26NP30-114 FF+2d |  | 295.2d |
|  | SEKCJA 18 | **Sekcja 18** |  | 2026-05-27 | 2027-01-01 |  |  |  |
|  | PODSEKCJA | **Podsekcja 18.A** |  | 2026-05-27 | 2027-01-01 |  |  |  |
| 26NP30-116 |  | Prefabrykacja ruroci¹gów – Sekcja 18 | 6.2d | 2026-05-27 A | 2026-06-05 A | 26NP30-012, 26NP30-111 SS+5d | 100% |  |
| 26NP30-117 |  | Monta¿ ruroci¹gów – Sekcja 18 | 21.4d | 2026-11-09 | 2026-12-07 | 26NP30-116, 26NP30-014 SS+3d |  | 289.3d |
| 26NP30-118 |  | Próba ciœnieniowa – Sekcja 18 | 5d | 2026-12-08 | 2026-12-14 | 26NP30-117 |  | 289.3d |
| 26NP30-119 |  | Izolacje – Sekcja 18 | 12d | 2026-12-15 | 2026-12-30 | 26NP30-118 |  | 289.3d |
| 26NP30-120 |  | Malowanie i oznakowanie – Sekcja 18 | 6d | 2026-12-25 | 2027-01-01 | 26NP30-119 FF+2d |  | 289.3d |
|  | SEKCJA 19 | **Sekcja 19** |  | 2026-06-02 | 2026-12-23 |  |  |  |
| 26NP30-123 |  | Prefabrykacja ruroci¹gów – Sekcja 19 | 13.2d | 2026-06-02 A | 2026-06-18 A | 26NP30-012, 26NP30-116 SS+5d | 100% |  |
| 26NP30-124 |  | Monta¿ ruroci¹gów – Sekcja 19 | 20.9d | 2026-11-12 | 2026-12-10 | 26NP30-123, 26NP30-014 SS+6d |  | 296.8d |
| 26NP30-125 |  | Próba ciœnieniowa – Sekcja 19 | 2d | 2026-12-11 | 2026-12-14 | 26NP30-124 |  | 296.8d |
| 26NP30-126 |  | Izolacje – Sekcja 19 | 5d | 2026-12-15 | 2026-12-21 | 26NP30-125 |  | 296.8d |
| 26NP30-127 |  | Malowanie i oznakowanie – Sekcja 19 | 7d | 2026-12-15 | 2026-12-23 | 26NP30-126 FF+2d |  | 296.8d |
|  | SEKCJA 20 | **Sekcja 20** |  | 2026-06-09 | 2026-12-17 |  |  |  |
| 26NP30-128 |  | Prefabrykacja ruroci¹gów – Sekcja 20 | 14.8d | 2026-06-09 A | 2026-07-01 A | 26NP30-012, 26NP30-123 SS+5d | 100% |  |
| 26NP30-129 |  | Monta¿ ruroci¹gów – Sekcja 20 | 9.9d | 2026-11-12 | 2026-11-25 | 26NP30-128, 26NP30-014 SS+6d |  | 300.8d |
| 26NP30-130 |  | Próba ciœnieniowa – Sekcja 20 | 4d | 2026-11-26 | 2026-12-01 | 26NP30-129 |  | 300.8d |
| 26NP30-131 |  | Izolacje – Sekcja 20 | 10d | 2026-12-02 | 2026-12-15 | 26NP30-130 |  | 300.8d |
| 26NP30-132 |  | Malowanie i oznakowanie – Sekcja 20 | 8d | 2026-12-08 | 2026-12-17 | 26NP30-131 FF+2d |  | 300.8d |
|  | SEKCJA 21 | **Sekcja 21** |  | 2026-06-16 | 2026-12-17 |  |  |  |
|  | PODSEKCJA | **Podsekcja 21.A** |  | 2026-06-16 | 2026-12-17 |  |  |  |
| 26NP30-135 |  | Prefabrykacja ruroci¹gów – Sekcja 21 | 9.3d | 2026-06-16 A | 2026-06-30 A | 26NP30-012, 26NP30-128 SS+5d | 100% |  |
| 26NP30-136 |  | Monta¿ ruroci¹gów – Sekcja 21 | 11.6d | 2026-11-16 | 2026-11-30 | 26NP30-135, 26NP30-014 SS+8d |  | 300.1d |
| 26NP30-137 |  | Próba ciœnieniowa – Sekcja 21 | 6d | 2026-12-01 | 2026-12-08 | 26NP30-136 |  | 300.1d |
| 26NP30-138 |  | Izolacje – Sekcja 21 | 5d | 2026-12-09 | 2026-12-15 | 26NP30-137 |  | 300.1d |
| 26NP30-139 |  | Malowanie i oznakowanie – Sekcja 21 | 3d | 2026-12-15 | 2026-12-17 | 26NP30-138 FF+2d |  | 300.1d |
|  | SEKCJA 22 | **Sekcja 22** |  | 2026-06-29 | 2026-12-25 |  |  |  |
| 26NP30-140 |  | Prefabrykacja ruroci¹gów – Sekcja 22 | 13.7d | 2026-06-29 A | 2026-10-02 | 26NP30-012, 26NP30-135 SS+5d | 74% | 330.3d |
| 26NP30-141 |  | Monta¿ ruroci¹gów – Sekcja 22 | 19.9d | 2026-11-09 | 2026-12-04 | 26NP30-140, 26NP30-014 SS+3d |  | 248.8d |
| 26NP30-142 |  | Próba ciœnieniowa – Sekcja 22 | 4d | 2026-12-07 | 2026-12-10 | 26NP30-141 |  | 248.8d |
| 26NP30-143 |  | Izolacje – Sekcja 22 | 9d | 2026-12-11 | 2026-12-23 | 26NP30-142 |  | 248.8d |
| 26NP30-144 |  | Malowanie i oznakowanie – Sekcja 22 | 7d | 2026-12-17 | 2026-12-25 | 26NP30-143 FF+2d |  | 248.8d |
|  | SEKCJA 23 | **Sekcja 23** |  | 2026-06-30 | 2026-12-08 |  |  |  |
| 26NP30-147 |  | Prefabrykacja ruroci¹gów – Sekcja 23 | 8.3d | 2026-06-30 A | 2026-07-13 A | 26NP30-012, 26NP30-140 SS+5d | 100% |  |
| 26NP30-148 |  | Monta¿ ruroci¹gów – Sekcja 23 | 7.9d | 2026-11-16 | 2026-11-25 | 26NP30-147, 26NP30-014 SS+8d |  | 261.8d |
| 26NP30-149 |  | Próba ciœnieniowa – Sekcja 23 | 4d | 2026-11-26 | 2026-12-01 | 26NP30-148 |  | 261.8d |
| 26NP30-150 |  | Izolacje – Sekcja 23 | 3d | 2026-12-02 | 2026-12-04 | 26NP30-149 |  | 261.8d |
| 26NP30-151 |  | Malowanie i oznakowanie – Sekcja 23 | 5d | 2026-12-02 | 2026-12-08 | 26NP30-150 FF+2d |  | 261.8d |
|  | PROJ | **Projektowanie** |  | 2025-04-01 | 2026-10-13 |  |  |  |
|  | DOKUMENTAC | **Dokumentacja** |  | 2025-04-01 | 2026-10-13 |  |  |  |
| 26NP30-001 |  | Projekt wykonawczy – Rozdzielnia nN | 119d | 2025-04-01 A | 2025-09-17 A |  | 100% |  |
| 26NP30-002 |  | Uzgodnienie dokumentacji z Inwestorem | 12d | 2025-09-17 A | 2026-10-13 | 26NP30-001 | 12% | 214.9d |
| 26NP30-003 |  | Zatwierdzenie dokumentacji do realizacji | 7d | 2025-09-30 A | 2025-10-13 A | 26NP30-002 | 100% |  |
| 26NP30-004 |  | KM: Dokumentacja zatwierdzona – Rozdzielnia nN | 0d | 2025-10-13 A | 2025-10-13 | 26NP30-003 | 100% |  |
|  | ROZR | **Rozruch** |  | 2027-02-04 | 2027-03-26 |  |  |  |
|  | ROZRUCH | **Rozruch** |  | 2027-02-04 | 2027-03-26 |  |  |  |
| 26NP30-154 |  | Przegl¹d gotowoœci do rozruchu | 3d | 2027-02-04 | 2027-02-08 | 26NP30-153, 26NP30-019, 26NP30-024, 26NP30-026 |  | 220.7d |
| 26NP30-155 |  | Rozruch na zimno | 13d | 2027-02-09 | 2027-02-25 | 26NP30-154 |  | 220.7d |
| 26NP30-156 |  | Rozruch na gor¹co / próby ruchowe | 20d | 2027-02-26 | 2027-03-25 | 26NP30-155 |  | 220.7d |
| 26NP30-157 |  | KM: Odbiór koñcowy – Rozdzielnia nN | 0d | 2027-03-26 | 2027-03-26 | 26NP30-156 |  | 220.7d |
|  | ZAKU | **Zakupy** |  | 2025-04-28 | 2026-11-04 |  |  |  |
|  | DOSTAWY | **Dostawy** |  | 2025-10-28 | 2026-11-04 |  |  |  |
| 26NP30-008 |  | Produkcja u dostawcy | 239d | 2025-10-28 A | 2026-09-29 A | 26NP30-007 | 100% |  |
| 26NP30-009 |  | Testy FAT | 9d | 2026-09-25 A | 2026-09-30 | 26NP30-008 | 87% | 215.9d |
| 26NP30-010 |  | Transport i dostawa na plac budowy | 24d | 2026-10-01 | 2026-11-03 | 26NP30-009 |  | 220.7d |
| 26NP30-011 |  | KM: Dostawa na budowê – Rozdzielnia nN | 0d | 2026-11-04 | 2026-11-04 | 26NP30-010 |  | 220.7d |
|  | ZAMÓWIENIA | **Zamówienia** |  | 2025-04-28 | 2025-10-31 |  |  |  |
| 26NP30-005 |  | Zapytanie ofertowe | 18d | 2025-04-28 A | 2025-05-21 A | 26NP30-001 SS+20d | 100% |  |
| 26NP30-006 |  | Analiza i wybór ofert | 19d | 2025-05-28 A | 2025-06-23 A | 26NP30-005 | 100% |  |
| 26NP30-007 |  | Zawarcie umowy / zamówienie | 10d | 2025-10-15 A | 2025-10-31 A | 26NP30-006, 26NP30-004 SS, 15BP15-004 FS+11d, 10YD43-004 SS+5d | 100% |  |
|  | 27FW94 | **27FW94 – Transformator blokowy** |  | 2025-04-04 | 2026-11-02 |  |  |  |
|  | BUDO | **Budowa** |  | 2025-10-15 | 2026-11-02 |  |  |  |
|  | AKPIA | **AKPiA** |  | 2026-04-27 | 2026-05-12 |  |  |  |
| 27FW94-159 |  | Monta¿ uk³adów AKPiA | 10d | 2026-04-27 A | 2026-05-12 A | 27FW94-014 SS+5d | 100% |  |

| ID | WBS | Task | Duration | Start | Finish | Predecessors | Complete | Total float |
| --- | --- | --- | --- | --- | --- | --- | --- | --- |
|  | ELEKTRYKA | **Elektryka** |  | 2026-04-28 | 2026-06-02 |  |  |  |
| 27FW94-050 |  | Pod³¹czenia i pomiary – trasa 06 | 10d | 2026-04-28 A | 2026-05-14 A | 27FW94-049 FF | 100% |  |
| 27FW94-062 |  | Pod³¹czenia i pomiary – trasa 08 | 10d | 2026-04-29 A | 2026-05-13 A | 27FW94-061 FF | 100% |  |
| 27FW94-037 |  | Uk³adanie kabli – trasa 04 | 20d | 2026-04-30 A | 2026-05-29 A | 27FW94-014 SS+10d | 100% |  |
| 27FW94-061 |  | Uk³adanie kabli – trasa 08 | 8d | 2026-04-30 A | 2026-05-13 A | 27FW94-014 SS+10d | 100% |  |
| 27FW94-133 |  | Uk³adanie kabli – trasa 20 | 20d | 2026-04-30 A | 2026-05-28 A | 27FW94-014 SS+10d | 100% |  |
| 27FW94-025 |  | Uk³adanie kabli – trasa 02 | 15d | 2026-05-01 A | 2026-05-26 A | 27FW94-014 SS+10d | 100% |  |
| 27FW94-097 |  | Uk³adanie kabli – trasa 14 | 13d | 2026-05-01 A | 2026-05-22 A | 27FW94-014 SS+10d | 100% |  |
| 27FW94-121 |  | Uk³adanie kabli – trasa 18 | 6d | 2026-05-01 A | 2026-05-11 A | 27FW94-014 SS+10d | 100% |  |
| 27FW94-122 |  | Pod³¹czenia i pomiary – trasa 18 | 8d | 2026-05-01 A | 2026-05-14 A | 27FW94-121 FF | 100% |  |
| 27FW94-049 |  | Uk³adanie kabli – trasa 06 | 5d | 2026-05-04 A | 2026-05-12 A | 27FW94-014 SS+10d | 100% |  |
| 27FW94-109 |  | Uk³adanie kabli – trasa 16 | 10d | 2026-05-04 A | 2026-05-20 A | 27FW94-014 SS+10d | 100% |  |
| 27FW94-073 |  | Uk³adanie kabli – trasa 10 | 15d | 2026-05-05 A | 2026-05-25 A | 27FW94-014 SS+10d | 100% |  |
| 27FW94-157 |  | Uk³adanie kabli – trasa 24 | 11d | 2026-05-05 A | 2026-05-19 A | 27FW94-014 SS+10d | 100% |  |
| 27FW94-085 |  | Uk³adanie kabli – trasa 12 | 13d | 2026-05-06 A | 2026-05-27 A | 27FW94-014 SS+10d | 100% |  |
| 27FW94-145 |  | Uk³adanie kabli – trasa 22 | 12d | 2026-05-06 A | 2026-05-22 A | 27FW94-014 SS+10d | 100% |  |
| 27FW94-098 |  | Pod³¹czenia i pomiary – trasa 14 | 10d | 2026-05-11 A | 2026-05-25 A | 27FW94-097 FF | 100% |  |
| 27FW94-110 |  | Pod³¹czenia i pomiary – trasa 16 | 4d | 2026-05-11 A | 2026-05-15 A | 27FW94-109 FF | 100% |  |
| 27FW94-158 |  | Pod³¹czenia i pomiary – trasa 24 | 3d | 2026-05-13 A | 2026-05-19 A | 27FW94-157 FF | 100% |  |
| 27FW94-074 |  | Pod³¹czenia i pomiary – trasa 10 | 6d | 2026-05-14 A | 2026-05-21 A | 27FW94-073 FF | 100% |  |
| 27FW94-146 |  | Pod³¹czenia i pomiary – trasa 22 | 6d | 2026-05-14 A | 2026-05-26 A | 27FW94-145 FF | 100% |  |
| 27FW94-086 |  | Pod³¹czenia i pomiary – trasa 12 | 3d | 2026-05-18 A | 2026-05-22 A | 27FW94-085 FF | 100% |  |
| 27FW94-038 |  | Pod³¹czenia i pomiary – trasa 04 | 8d | 2026-05-20 A | 2026-06-02 A | 27FW94-037 FF | 100% |  |
| 27FW94-026 |  | Pod³¹czenia i pomiary – trasa 02 | 3d | 2026-05-22 A | 2026-05-26 A | 27FW94-025 FF | 100% |  |
| 27FW94-134 |  | Pod³¹czenia i pomiary – trasa 20 | 4d | 2026-05-25 A | 2026-05-28 A | 27FW94-133 FF | 100% |  |
|  | MONTA¯ | **Monta¿** |  | 2025-11-24 | 2026-07-08 |  |  |  |
| 27FW94-013 |  | Monta¿ konstrukcji stalowych | 46d | 2025-11-24 A | 2026-01-29 A | 27FW94-012 | 100% |  |
| 27FW94-014 |  | Monta¿ urz¹dzeñ g³ównych | 57d | 2026-04-21 A | 2026-07-08 A | 27FW94-013, 27FW94-011 | 100% |  |
| 27FW94-160 |  | KM: Zakoñczenie monta¿u – Transformator blokowy | 0d | 2026-07-07 A | 2026-07-07 | 27FW94-151, 27FW94-156, 27FW94-158, 27FW94-159, 27FW94-014 | 100% |  |
|  | ROBOTY BUD | **Roboty budowlane** |  | 2025-10-15 | 2025-11-19 |  |  |  |
| 27FW94-012 |  | Fundamenty i roboty ziemne | 26d | 2025-10-15 A | 2025-11-19 A | 27FW94-007 FS+15d | 100% |  |
|  | RUROCI¥GI | **Ruroci¹gi** |  | 2025-11-20 | 2026-11-02 |  |  |  |
|  | SEKCJA 01 | **Sekcja 01** |  | 2025-11-20 | 2026-05-21 |  |  |  |
| 27FW94-015 |  | Prefabrykacja ruroci¹gów – Sekcja 01 | 8.1d | 2025-11-20 A | 2025-12-01 A | 27FW94-012 | 100% |  |
| 27FW94-016 |  | Monta¿ ruroci¹gów – Sekcja 01 | 5.6d | 2026-04-28 A | 2026-05-04 A | 27FW94-015, 27FW94-014 SS+5d | 100% |  |
| 27FW94-017 |  | Próba ciœnieniowa – Sekcja 01 | 3d | 2026-04-30 A | 2026-05-04 A | 27FW94-016 | 100% |  |
| 27FW94-018 |  | Izolacje – Sekcja 01 | 9d | 2026-05-05 A | 2026-05-18 A | 27FW94-017 | 100% |  |
| 27FW94-019 |  | Malowanie i oznakowanie – Sekcja 01 | 5d | 2026-05-13 A | 2026-05-21 A | 27FW94-018 FF+2d | 100% |  |
|  | SEKCJA 02 | **Sekcja 02** |  | 2025-11-27 | 2026-09-30 |  |  |  |
| 27FW94-020 |  | Prefabrykacja ruroci¹gów – Sekcja 02 | 3d | 2025-11-27 A | 2025-12-03 A | 27FW94-012, 27FW94-015 SS+5d | 100% |  |
| 27FW94-021 |  | Monta¿ ruroci¹gów – Sekcja 02 | 7.5d | 2026-04-20 A | 2026-09-30 | 27FW94-020, 27FW94-014 SS | 77% | 422.4d |
| 27FW94-022 |  | Próba ciœnieniowa – Sekcja 02 | 5d | 2026-04-28 A | 2026-05-07 A | 27FW94-021 | 100% |  |
| 27FW94-024 |  | Malowanie i oznakowanie – Sekcja 02 | 3d | 2026-05-06 A | 2026-05-08 A | 27FW94-023 FF+2d | 100% |  |
| 27FW94-023 |  | Izolacje – Sekcja 02 | 3d | 2026-05-08 A | 2026-05-12 A | 27FW94-022 | 100% |  |
|  | SEKCJA 03 | **Sekcja 03** |  | 2025-12-03 | 2026-09-30 |  |  |  |
|  | PODSEKCJA | **Podsekcja 03.A** |  | 2025-12-03 | 2026-09-30 |  |  |  |
| 27FW94-027 |  | Prefabrykacja ruroci¹gów – Sekcja 03 | 14.4d | 2025-12-03 A | 2025-12-23 A | 27FW94-012, 27FW94-020 SS+5d | 100% |  |
| 27FW94-028 |  | Monta¿ ruroci¹gów – Sekcja 03 | 10.4d | 2026-05-01 A | 2026-05-14 A | 27FW94-027, 27FW94-014 SS+7d | 100% |  |
| 27FW94-029 |  | Próba ciœnieniowa – Sekcja 03 | 5d | 2026-05-18 A | 2026-09-30 | 27FW94-028 | 78% | 441.5d |
| 27FW94-030 |  | Izolacje – Sekcja 03 | 6d | 2026-05-19 A | 2026-05-28 A | 27FW94-029 | 100% |  |
| 27FW94-031 |  | Malowanie i oznakowanie – Sekcja 03 | 7d | 2026-05-21 A | 2026-05-29 A | 27FW94-030 FF+2d | 100% |  |
|  | SEKCJA 04 | **Sekcja 04** |  | 2025-12-10 | 2026-05-25 |  |  |  |
| 27FW94-032 |  | Prefabrykacja ruroci¹gów – Sekcja 04 | 9.1d | 2025-12-10 A | 2025-12-24 A | 27FW94-012, 27FW94-027 SS+5d | 100% |  |
| 27FW94-033 |  | Monta¿ ruroci¹gów – Sekcja 04 | 6.4d | 2026-04-30 A | 2026-05-12 A | 27FW94-032, 27FW94-014 SS+9d | 100% |  |
| 27FW94-034 |  | Próba ciœnieniowa – Sekcja 04 | 3d | 2026-05-08 A | 2026-05-14 A | 27FW94-033 | 100% |  |
| 27FW94-035 |  | Izolacje – Sekcja 04 | 5d | 2026-05-15 A | 2026-05-21 A | 27FW94-034 | 100% |  |
| 27FW94-036 |  | Malowanie i oznakowanie – Sekcja 04 | 2d | 2026-05-21 A | 2026-05-25 A | 27FW94-035 FF+2d | 100% |  |
|  | SEKCJA 05 | **Sekcja 05** |  | 2025-12-19 | 2026-06-09 |  |  |  |
| 27FW94-039 |  | Prefabrykacja ruroci¹gów – Sekcja 05 | 6.8d | 2025-12-19 A | 2025-12-29 A | 27FW94-012, 27FW94-032 SS+5d | 100% |  |
| 27FW94-040 |  | Monta¿ ruroci¹gów – Sekcja 05 | 17.2d | 2026-05-05 A | 2026-05-29 A | 27FW94-039, 27FW94-014 SS+9d | 100% |  |
| 27FW94-041 |  | Próba ciœnieniowa – Sekcja 05 | 3d | 2026-05-28 A | 2026-06-03 A | 27FW94-040 | 100% |  |
| 27FW94-042 |  | Izolacje – Sekcja 05 | 7d | 2026-05-28 A | 2026-06-05 A | 27FW94-041 | 100% |  |
| 27FW94-043 |  | Malowanie i oznakowanie – Sekcja 05 | 6d | 2026-06-01 A | 2026-06-09 A | 27FW94-042 FF+2d | 100% |  |
|  | SEKCJA 06 | **Sekcja 06** |  | 2025-12-29 | 2026-10-07 |  |  |  |
|  | PODSEKCJA | **Podsekcja 06.A** |  | 2025-12-29 | 2026-10-07 |  |  |  |
| 27FW94-044 |  | Prefabrykacja ruroci¹gów – Sekcja 06 | 14.5d | 2025-12-29 A | 2026-01-19 A | 27FW94-012, 27FW94-039 SS+5d | 100% |  |
| 27FW94-045 |  | Monta¿ ruroci¹gów – Sekcja 06 | 13.3d | 2026-04-20 A | 2026-05-06 A | 27FW94-044, 27FW94-014 SS+2d | 100% |  |
| 27FW94-047 |  | Izolacje – Sekcja 06 | 5d | 2026-05-20 A | 2026-05-28 A | 27FW94-046 | 100% |  |
| 27FW94-048 |  | Malowanie i oznakowanie – Sekcja 06 | 4d | 2026-05-25 A | 2026-06-02 A | 27FW94-047 FF+2d | 100% |  |
| 27FW94-046 |  | Próba ciœnieniowa – Sekcja 06 | 6d | 2026-09-30 | 2026-10-07 | 27FW94-045 |  | 344.9d |

| ID | WBS | Task | Duration | Start | Finish | Predecessors | Complete | Total float |
| --- | --- | --- | --- | --- | --- | --- | --- | --- |
|  | SEKCJA 07 | **Sekcja 07** |  | 2025-12-30 | 2026-10-02 |  |  |  |
| 27FW94-051 |  | Prefabrykacja ruroci¹gów – Sekcja 07 | 4.3d | 2025-12-30 A | 2026-01-06 A | 27FW94-012, 27FW94-044 SS+5d | 100% |  |
| 27FW94-052 |  | Monta¿ ruroci¹gów – Sekcja 07 | 10.7d | 2026-05-04 A | 2026-05-19 A | 27FW94-051, 27FW94-014 SS+10d | 100% |  |
| 27FW94-053 |  | Próba ciœnieniowa – Sekcja 07 | 3d | 2026-05-20 A | 2026-05-22 A | 27FW94-052 | 100% |  |
| 27FW94-054 |  | Izolacje – Sekcja 07 | 4d | 2026-05-21 A | 2026-09-30 | 27FW94-053 | 62% | 445.2d |
| 27FW94-055 |  | Malowanie i oznakowanie – Sekcja 07 | 7d | 2026-05-25 A | 2026-10-02 | 27FW94-054 FF+2d | 57% | 442.2d |
|  | SEKCJA 08 | **Sekcja 08** |  | 2026-01-06 | 2026-10-05 |  |  |  |
| 27FW94-056 |  | Prefabrykacja ruroci¹gów – Sekcja 08 | 7d | 2026-01-06 A | 2026-01-16 A | 27FW94-012, 27FW94-051 SS+5d | 100% |  |
| 27FW94-057 |  | Monta¿ ruroci¹gów – Sekcja 08 | 12.3d | 2026-04-16 A | 2026-05-01 A | 27FW94-056, 27FW94-014 SS | 100% |  |
| 27FW94-058 |  | Próba ciœnieniowa – Sekcja 08 | 6d | 2026-05-08 A | 2026-10-05 | 27FW94-057 | 18% | 441.6d |
| 27FW94-059 |  | Izolacje – Sekcja 08 | 11d | 2026-05-15 A | 2026-06-02 A | 27FW94-058 | 100% |  |
| 27FW94-060 |  | Malowanie i oznakowanie – Sekcja 08 | 7d | 2026-05-26 A | 2026-06-08 A | 27FW94-059 FF+2d | 100% |  |
|  | SEKCJA 09 | **Sekcja 09** |  | 2026-01-19 | 2026-09-30 |  |  |  |
|  | PODSEKCJA | **Podsekcja 09.A** |  | 2026-01-19 | 2026-09-30 |  |  |  |
| 27FW94-063 |  | Prefabrykacja ruroci¹gów – Sekcja 09 | 9.8d | 2026-01-19 A | 2026-09-30 | 27FW94-012, 27FW94-056 SS+5d | 88% | 385.3d |
| 27FW94-064 |  | Monta¿ ruroci¹gów – Sekcja 09 | 15.8d | 2026-05-01 A | 2026-05-22 A | 27FW94-063, 27FW94-014 SS+9d | 100% |  |
| 27FW94-065 |  | Próba ciœnieniowa – Sekcja 09 | 6d | 2026-05-22 A | 2026-06-01 A | 27FW94-064 | 100% |  |
| 27FW94-066 |  | Izolacje – Sekcja 09 | 10d | 2026-06-02 A | 2026-06-17 A | 27FW94-065 | 100% |  |
| 27FW94-067 |  | Malowanie i oznakowanie – Sekcja 09 | 6d | 2026-06-08 A | 2026-06-15 A | 27FW94-066 FF+2d | 100% |  |
|  | SEKCJA 10 | **Sekcja 10** |  | 2026-01-20 | 2026-06-16 |  |  |  |
| 27FW94-068 |  | Prefabrykacja ruroci¹gów – Sekcja 10 | 9.7d | 2026-01-20 A | 2026-02-02 A | 27FW94-012, 27FW94-063 SS+5d | 100% |  |
| 27FW94-069 |  | Monta¿ ruroci¹gów – Sekcja 10 | 21.8d | 2026-04-30 A | 2026-06-01 A | 27FW94-068, 27FW94-014 SS+6d | 100% |  |
| 27FW94-070 |  | Próba ciœnieniowa – Sekcja 10 | 2d | 2026-05-25 A | 2026-05-28 A | 27FW94-069 | 100% |  |
| 27FW94-071 |  | Izolacje – Sekcja 10 | 8d | 2026-05-27 A | 2026-06-09 A | 27FW94-070 | 100% |  |
| 27FW94-072 |  | Malowanie i oznakowanie – Sekcja 10 | 7d | 2026-06-05 A | 2026-06-16 A | 27FW94-071 FF+2d | 100% |  |
|  | SEKCJA 11 | **Sekcja 11** |  | 2026-01-28 | 2026-06-04 |  |  |  |
| 27FW94-075 |  | Prefabrykacja ruroci¹gów – Sekcja 11 | 9.5d | 2026-01-28 A | 2026-02-12 A | 27FW94-012, 27FW94-068 SS+5d | 100% |  |
| 27FW94-076 |  | Monta¿ ruroci¹gów – Sekcja 11 | 9.7d | 2026-04-27 A | 2026-05-12 A | 27FW94-075, 27FW94-014 SS+6d | 100% |  |
| 27FW94-077 |  | Próba ciœnieniowa – Sekcja 11 | 4d | 2026-05-13 A | 2026-05-21 A | 27FW94-076 | 100% |  |
| 27FW94-078 |  | Izolacje – Sekcja 11 | 10d | 2026-05-13 A | 2026-05-29 A | 27FW94-077 | 100% |  |
| 27FW94-079 |  | Malowanie i oznakowanie – Sekcja 11 | 6d | 2026-05-25 A | 2026-06-04 A | 27FW94-078 FF+2d | 100% |  |
|  | SEKCJA 12 | **Sekcja 12** |  | 2026-02-04 | 2026-06-09 |  |  |  |
|  | PODSEKCJA | **Podsekcja 12.A** |  | 2026-02-04 | 2026-06-09 |  |  |  |
| 27FW94-080 |  | Prefabrykacja ruroci¹gów – Sekcja 12 | 3.9d | 2026-02-04 A | 2026-02-06 A | 27FW94-012, 27FW94-075 SS+5d | 100% |  |
| 27FW94-081 |  | Monta¿ ruroci¹gów – Sekcja 12 | 18.6d | 2026-04-29 A | 2026-05-22 A | 27FW94-080, 27FW94-014 SS+7d | 100% |  |
| 27FW94-082 |  | Próba ciœnieniowa – Sekcja 12 | 3d | 2026-05-22 A | 2026-05-26 A | 27FW94-081 | 100% |  |
| 27FW94-083 |  | Izolacje – Sekcja 12 | 5d | 2026-05-28 A | 2026-06-08 A | 27FW94-082 | 100% |  |
| 27FW94-084 |  | Malowanie i oznakowanie – Sekcja 12 | 4d | 2026-06-01 A | 2026-06-09 A | 27FW94-083 FF+2d | 100% |  |
|  | SEKCJA 13 | **Sekcja 13** |  | 2026-02-10 | 2026-06-04 |  |  |  |
| 27FW94-087 |  | Prefabrykacja ruroci¹gów – Sekcja 13 | 14.3d | 2026-02-10 A | 2026-03-03 A | 27FW94-012, 27FW94-080 SS+5d | 100% |  |
| 27FW94-088 |  | Monta¿ ruroci¹gów – Sekcja 13 | 14d | 2026-04-16 A | 2026-05-07 A | 27FW94-087, 27FW94-014 SS | 100% |  |
| 27FW94-089 |  | Próba ciœnieniowa – Sekcja 13 | 6d | 2026-05-06 A | 2026-05-18 A | 27FW94-088 | 100% |  |
| 27FW94-090 |  | Izolacje – Sekcja 13 | 12d | 2026-05-14 A | 2026-06-03 A | 27FW94-089 | 100% |  |
| 27FW94-091 |  | Malowanie i oznakowanie – Sekcja 13 | 2d | 2026-06-03 A | 2026-06-04 A | 27FW94-090 FF+2d | 100% |  |
|  | SEKCJA 14 | **Sekcja 14** |  | 2026-02-23 | 2026-06-03 |  |  |  |
| 27FW94-092 |  | Prefabrykacja ruroci¹gów – Sekcja 14 | 3.7d | 2026-02-23 A | 2026-02-25 A | 27FW94-012, 27FW94-087 SS+5d | 100% |  |
| 27FW94-093 |  | Monta¿ ruroci¹gów – Sekcja 14 | 13.4d | 2026-04-23 A | 2026-05-12 A | 27FW94-092, 27FW94-014 SS+2d | 100% |  |
| 27FW94-094 |  | Próba ciœnieniowa – Sekcja 14 | 3d | 2026-05-12 A | 2026-05-15 A | 27FW94-093 | 100% |  |
| 27FW94-095 |  | Izolacje – Sekcja 14 | 12d | 2026-05-14 A | 2026-06-01 A | 27FW94-094 | 100% |  |
| 27FW94-096 |  | Malowanie i oznakowanie – Sekcja 14 | 2d | 2026-05-28 A | 2026-06-03 A | 27FW94-095 FF+2d | 100% |  |
|  | SEKCJA 15 | **Sekcja 15** |  | 2026-02-24 | 2026-10-07 |  |  |  |
|  | PODSEKCJA | **Podsekcja 15.A** |  | 2026-02-24 | 2026-10-07 |  |  |  |
| 27FW94-099 |  | Prefabrykacja ruroci¹gów – Sekcja 15 | 7.6d | 2026-02-24 A | 2026-03-09 A | 27FW94-012, 27FW94-092 SS+5d | 100% |  |
| 27FW94-100 |  | Monta¿ ruroci¹gów – Sekcja 15 | 20.9d | 2026-04-23 A | 2026-05-22 A | 27FW94-099, 27FW94-014 SS+4d | 100% |  |
| 27FW94-101 |  | Próba ciœnieniowa – Sekcja 15 | 6d | 2026-05-26 A | 2026-06-04 A | 27FW94-100 | 100% |  |
| 27FW94-102 |  | Izolacje – Sekcja 15 | 7d | 2026-06-02 A | 2026-10-07 | 27FW94-101 | 14% | 434d |
| 27FW94-103 |  | Malowanie i oznakowanie – Sekcja 15 | 2d | 2026-06-10 A | 2026-06-12 A | 27FW94-102 FF+2d | 100% |  |
|  | SEKCJA 16 | **Sekcja 16** |  | 2026-03-05 | 2026-06-05 |  |  |  |
| 27FW94-104 |  | Prefabrykacja ruroci¹gów – Sekcja 16 | 14.2d | 2026-03-05 A | 2026-03-25 A | 27FW94-012, 27FW94-099 SS+5d | 100% |  |
| 27FW94-105 |  | Monta¿ ruroci¹gów – Sekcja 16 | 18.2d | 2026-04-24 A | 2026-05-19 A | 27FW94-104, 27FW94-014 SS+5d | 100% |  |
| 27FW94-106 |  | Próba ciœnieniowa – Sekcja 16 | 2d | 2026-05-22 A | 2026-05-25 A | 27FW94-105 | 100% |  |
| 27FW94-107 |  | Izolacje – Sekcja 16 | 5d | 2026-05-25 A | 2026-05-29 A | 27FW94-106 | 100% |  |
| 27FW94-108 |  | Malowanie i oznakowanie – Sekcja 16 | 6d | 2026-05-26 A | 2026-06-05 A | 27FW94-107 FF+2d | 100% |  |
|  | SEKCJA 17 | **Sekcja 17** |  | 2026-03-16 | 2026-05-15 |  |  |  |
| 27FW94-111 |  | Prefabrykacja ruroci¹gów – Sekcja 17 | 10.7d | 2026-03-16 A | 2026-03-27 A | 27FW94-012, 27FW94-104 SS+5d | 100% |  |
| 27FW94-112 |  | Monta¿ ruroci¹gów – Sekcja 17 | 8.3d | 2026-04-23 A | 2026-05-06 A | 27FW94-111, 27FW94-014 SS+2d | 100% |  |
| 27FW94-113 |  | Próba ciœnieniowa – Sekcja 17 | 2d | 2026-05-04 A | 2026-05-08 A | 27FW94-112 | 100% |  |
| 27FW94-115 |  | Malowanie i oznakowanie – Sekcja 17 | 6d | 2026-05-05 A | 2026-05-15 A | 27FW94-114 FF+2d | 100% |  |
| 27FW94-114 |  | Izolacje – Sekcja 17 | 3d | 2026-05-08 A | 2026-05-14 A | 27FW94-113 | 100% |  |
|  | SEKCJA 18 | **Sekcja 18** |  | 2026-03-18 | 2026-10-09 |  |  |  |

| ID | WBS | Task | Duration | Start | Finish | Predecessors | Complete | Total float |
| --- | --- | --- | --- | --- | --- | --- | --- | --- |
|  | PODSEKCJA | **Podsekcja 18.A** |  | 2026-03-18 | 2026-10-09 |  |  |  |
| 27FW94-116 |  | Prefabrykacja ruroci¹gów – Sekcja 18 | 8.9d | 2026-03-18 A | 2026-03-30 A | 27FW94-012, 27FW94-111 SS+5d | 100% |  |
| 27FW94-117 |  | Monta¿ ruroci¹gów – Sekcja 18 | 17.1d | 2026-04-22 A | 2026-10-09 | 27FW94-116, 27FW94-014 SS+3d | 53% | 440.8d |
| 27FW94-118 |  | Próba ciœnieniowa – Sekcja 18 | 2d | 2026-05-14 A | 2026-05-15 A | 27FW94-117 | 100% |  |
| 27FW94-119 |  | Izolacje – Sekcja 18 | 11d | 2026-05-22 A | 2026-06-08 A | 27FW94-118 | 100% |  |
| 27FW94-120 |  | Malowanie i oznakowanie – Sekcja 18 | 7d | 2026-05-26 A | 2026-06-08 A | 27FW94-119 FF+2d | 100% |  |
|  | SEKCJA 19 | **Sekcja 19** |  | 2026-03-27 | 2026-09-30 |  |  |  |
| 27FW94-123 |  | Prefabrykacja ruroci¹gów – Sekcja 19 | 6d | 2026-03-27 A | 2026-04-03 A | 27FW94-012, 27FW94-116 SS+5d | 100% |  |
| 27FW94-124 |  | Monta¿ ruroci¹gów – Sekcja 19 | 10.3d | 2026-04-21 A | 2026-05-04 A | 27FW94-123, 27FW94-014 SS+2d | 100% |  |
| 27FW94-125 |  | Próba ciœnieniowa – Sekcja 19 | 2d | 2026-05-06 A | 2026-09-30 | 27FW94-124 | 10% | 448.6d |
| 27FW94-126 |  | Izolacje – Sekcja 19 | 10d | 2026-05-07 A | 2026-05-20 A | 27FW94-125 | 100% |  |
| 27FW94-127 |  | Malowanie i oznakowanie – Sekcja 19 | 4d | 2026-05-21 A | 2026-05-26 A | 27FW94-126 FF+2d | 100% |  |
|  | SEKCJA 20 | **Sekcja 20** |  | 2026-04-02 | 2026-10-06 |  |  |  |
| 27FW94-128 |  | Prefabrykacja ruroci¹gów – Sekcja 20 | 3.1d | 2026-04-02 A | 2026-04-07 A | 27FW94-012, 27FW94-123 SS+5d | 100% |  |
| 27FW94-129 |  | Monta¿ ruroci¹gów – Sekcja 20 | 18.8d | 2026-04-27 A | 2026-10-06 | 27FW94-128, 27FW94-014 SS+5d | 72% | 440.1d |
| 27FW94-130 |  | Próba ciœnieniowa – Sekcja 20 | 4d | 2026-05-19 A | 2026-05-27 A | 27FW94-129 | 100% |  |
| 27FW94-131 |  | Izolacje – Sekcja 20 | 5d | 2026-05-27 A | 2026-06-03 A | 27FW94-130 | 100% |  |
| 27FW94-132 |  | Malowanie i oznakowanie – Sekcja 20 | 7d | 2026-05-28 A | 2026-10-05 | 27FW94-131 FF+2d | 31% | 439.1d |
|  | SEKCJA 21 | **Sekcja 21** |  | 2026-04-09 | 2026-09-30 |  |  |  |
|  | PODSEKCJA | **Podsekcja 21.A** |  | 2026-04-09 | 2026-09-30 |  |  |  |
| 27FW94-135 |  | Prefabrykacja ruroci¹gów – Sekcja 21 | 7.4d | 2026-04-09 A | 2026-04-20 A | 27FW94-012, 27FW94-128 SS+5d | 100% |  |
| 27FW94-136 |  | Monta¿ ruroci¹gów – Sekcja 21 | 7.4d | 2026-05-05 A | 2026-09-30 | 27FW94-135, 27FW94-014 SS+9d | 84% | 447.5d |
| 27FW94-137 |  | Próba ciœnieniowa – Sekcja 21 | 3d | 2026-05-12 A | 2026-05-18 A | 27FW94-136 | 100% |  |
| 27FW94-138 |  | Izolacje – Sekcja 21 | 4d | 2026-05-13 A | 2026-05-21 A | 27FW94-137 | 100% |  |
| 27FW94-139 |  | Malowanie i oznakowanie – Sekcja 21 | 7d | 2026-05-13 A | 2026-05-25 A | 27FW94-138 FF+2d | 100% |  |
|  | SEKCJA 22 | **Sekcja 22** |  | 2026-04-20 | 2026-11-02 |  |  |  |
| 27FW94-140 |  | Prefabrykacja ruroci¹gów – Sekcja 22 | 5.5d | 2026-04-20 A | 2026-04-28 A | 27FW94-012, 27FW94-135 SS+5d | 100% |  |
| 27FW94-142 |  | Próba ciœnieniowa – Sekcja 22 | 4d | 2026-05-29 A | 2026-06-03 A | 27FW94-141 | 100% |  |
| 27FW94-143 |  | Izolacje – Sekcja 22 | 9d | 2026-06-08 A | 2026-06-18 A | 27FW94-142 | 100% |  |
| 27FW94-144 |  | Malowanie i oznakowanie – Sekcja 22 | 3d | 2026-06-19 A | 2026-06-26 A | 27FW94-143 FF+2d | 100% |  |
| 27FW94-141 |  | Monta¿ ruroci¹gów – Sekcja 22 | 24.7d | 2026-09-30 | 2026-11-02 | 27FW94-140, 27FW94-014 SS+6d |  | 318.2d |
|  | SEKCJA 23 | **Sekcja 23** |  | 2026-04-22 | 2026-06-08 |  |  |  |
| 27FW94-147 |  | Prefabrykacja ruroci¹gów – Sekcja 23 | 6.5d | 2026-04-22 A | 2026-05-04 A | 27FW94-012, 27FW94-140 SS+5d | 100% |  |
| 27FW94-148 |  | Monta¿ ruroci¹gów – Sekcja 23 | 5.8d | 2026-05-04 A | 2026-05-14 A | 27FW94-147, 27FW94-014 SS+5d | 100% |  |
| 27FW94-149 |  | Próba ciœnieniowa – Sekcja 23 | 3d | 2026-05-07 A | 2026-05-13 A | 27FW94-148 | 100% |  |
| 27FW94-150 |  | Izolacje – Sekcja 23 | 12d | 2026-05-18 A | 2026-06-04 A | 27FW94-149 | 100% |  |
| 27FW94-151 |  | Malowanie i oznakowanie – Sekcja 23 | 4d | 2026-06-01 A | 2026-06-08 A | 27FW94-150 FF+2d | 100% |  |
|  | SEKCJA 24 | **Sekcja 24** |  | 2026-05-01 | 2026-07-02 |  |  |  |
|  | PODSEKCJA | **Podsekcja 24.A** |  | 2026-05-01 | 2026-07-02 |  |  |  |
| 27FW94-152 |  | Prefabrykacja ruroci¹gów – Sekcja 24 | 13d | 2026-05-01 A | 2026-05-21 A | 27FW94-012, 27FW94-147 SS+5d | 100% |  |
| 27FW94-153 |  | Monta¿ ruroci¹gów – Sekcja 24 | 17.6d | 2026-05-19 A | 2026-06-11 A | 27FW94-152, 27FW94-014 SS+1d | 100% |  |
| 27FW94-154 |  | Próba ciœnieniowa – Sekcja 24 | 5d | 2026-06-10 A | 2026-06-19 A | 27FW94-153 | 100% |  |
| 27FW94-155 |  | Izolacje – Sekcja 24 | 7d | 2026-06-19 A | 2026-07-01 A | 27FW94-154 | 100% |  |
| 27FW94-156 |  | Malowanie i oznakowanie – Sekcja 24 | 5d | 2026-06-25 A | 2026-07-02 A | 27FW94-155 FF+2d | 100% |  |
|  | PROJ | **Projektowanie** |  | 2025-04-04 | 2026-11-02 |  |  |  |
|  | DOKUMENTAC | **Dokumentacja** |  | 2025-04-04 | 2026-11-02 |  |  |  |
| 27FW94-001 |  | Projekt wykonawczy – Transformator blokowy | 83d | 2025-04-04 A | 2025-08-01 A |  | 100% |  |
| 27FW94-002 |  | Uzgodnienie dokumentacji z Inwestorem | 30d | 2025-07-25 A | 2026-11-02 | 27FW94-001 | 18% | 333.4d |
| 27FW94-003 |  | Zatwierdzenie dokumentacji do realizacji | 6d | 2025-09-09 A | 2025-09-17 A | 27FW94-002 | 100% |  |
| 27FW94-004 |  | KM: Dokumentacja zatwierdzona – Transformator blokowy | 0d | 2025-09-16 A | 2025-09-16 | 27FW94-003 | 100% |  |
|  | ROZR | **Rozruch** |  | 2026-07-07 | 2026-08-12 |  |  |  |
|  | ROZRUCH | **Rozruch** |  | 2026-07-07 | 2026-08-12 |  |  |  |
| 27FW94-161 |  | Przegl¹d gotowoœci do rozruchu | 5d | 2026-07-07 A | 2026-07-13 A | 27FW94-160, 27FW94-019, 27FW94-024, 27FW94-026 | 100% |  |
| 27FW94-162 |  | Rozruch na zimno | 9d | 2026-07-16 A | 2026-07-28 A | 27FW94-161 | 100% |  |
| 27FW94-163 |  | Rozruch na gor¹co / próby ruchowe | 11d | 2026-07-24 A | 2026-08-12 A | 27FW94-162 | 100% |  |
| 27FW94-164 |  | KM: Odbiór koñcowy – Transformator blokowy | 0d | 2026-08-11 | 2026-08-11 A | 27FW94-163 | 100% |  |
|  | ZAKU | **Zakupy** |  | 2025-04-29 | 2026-04-24 |  |  |  |
|  | DOSTAWY | **Dostawy** |  | 2025-09-26 | 2026-04-24 |  |  |  |
| 27FW94-008 |  | Produkcja u dostawcy | 102d | 2025-09-26 A | 2026-02-18 A | 27FW94-007 | 100% |  |
| 27FW94-009 |  | Testy FAT | 9d | 2026-02-11 A | 2026-02-23 A | 27FW94-008 | 100% |  |
| 27FW94-010 |  | Transport i dostawa na plac budowy | 37d | 2026-03-02 A | 2026-04-24 A | 27FW94-009 | 100% |  |
| 27FW94-011 |  | KM: Dostawa na budowê – Transformator blokowy | 0d | 2026-04-16 A | 2026-04-16 | 27FW94-010 | 100% |  |
|  | ZAMÓWIENIA | **Zamówienia** |  | 2025-04-29 | 2025-09-26 |  |  |  |
| 27FW94-005 |  | Zapytanie ofertowe | 30d | 2025-04-29 A | 2025-06-10 A | 27FW94-001 SS+20d | 100% |  |
| 27FW94-006 |  | Analiza i wybór ofert | 19d | 2025-06-13 A | 2025-07-10 A | 27FW94-005 | 100% |  |
| 27FW94-007 |  | Zawarcie umowy / zamówienie | 6d | 2025-09-18 A | 2025-09-26 A | 27FW94-006, 27FW94-004 SS, 12PB41-004 SS+6d, 10TM34-004 SS+1d | 100% |  |

## Version 2 (data date 2026-10-07, saved 2026-10-07, file PL5001_SYNTH_schedule_Rev0H_DD07102026.xer)

Note of the change: M0: szkielet Vite+React+TS, guard, deploy, dane syntetyczne

Last finish 2027-08-16 → 2028-04-10 (+238d). Complete tasks 1003 → 1104.

Changed:

| ID | Task | Start | Finish | Complete | Total float |
| --- | --- | --- | --- | --- | --- |
| UK£AD_CH£ODZ | **Uk³ad ch³odzenia** |  | 2027-08-16 → 2028-04-10 (+238d) |  |  |
| 11TM31 | **11TM31 – Uk³ad chemicznego uzdatniania** |  | 2026-10-22 → 2026-08-13 (-70d) |  |  |
| BUDO | **Budowa** |  | 2026-10-22 → 2026-06-26 (-118d) |  |  |
| MONTA¯ | **Monta¿** | 2025-10-29 → 2025-10-31 (+2d) | 2026-10-07 → 2026-06-23 (-106d) |  |  |
| 11TM31-013 | Monta¿ konstrukcji stalowych | 2025-10-29 A → 2025-10-31 A (+2d) | 2026-10-07 → 2025-11-20 A (-321d) | 58% → 100% | 497.9d → none |
| RUROCI¥GI | **Ruroci¹gi** |  | 2026-10-22 → 2026-06-26 (-118d) |  |  |
| SEKCJA 04 | **Sekcja 04** |  | 2026-10-16 → 2026-06-18 (-120d) |  |  |
| 11TM31-033 | Monta¿ ruroci¹gów – Sekcja 04 | 2026-05-04 A → 2026-05-06 A (+2d) | 2026-10-16 → 2026-05-27 A (-142d) | 17% → 100% | 433.3d → none |
| SEKCJA 05 | **Sekcja 05** |  | 2026-09-30 → 2026-06-08 (-114d) |  |  |
| 11TM31-043 | Malowanie i oznakowanie – Sekcja 05 |  | 2026-09-30 → 2026-06-08 A (-114d) | 43% → 100% | 441.3d → none |
| SEKCJA 07 | **Sekcja 07** |  | 2026-10-22 → 2026-06-10 (-134d) |  |  |
| 11TM31-051 | Prefabrykacja ruroci¹gów – Sekcja 07 |  | 2026-10-01 → 2025-12-24 A (-281d) | 76% → 100% | 423.9d → none |
| 11TM31-052 | Monta¿ ruroci¹gów – Sekcja 07 | 2026-10-02 → 2026-04-27 A (-158d) | 2026-10-22 → 2026-05-15 A (-160d) | 0% → 100% | 325d → none |
| SEKCJA 11 | **Sekcja 11** |  | 2026-10-02 → 2026-06-02 (-122d) |  |  |
| 11TM31-078 | Izolacje – Sekcja 11 | 2026-09-30 → 2026-05-29 A (-124d) | 2026-10-02 → 2026-06-02 A (-122d) | 0% → 100% | 352.9d → none |
| SEKCJA 15 | **Sekcja 15** |  | 2026-10-12 → 2026-06-05 (-129d) |  |  |
| PODSEKCJA | **Podsekcja 15.A** |  | 2026-10-12 → 2026-06-05 (-129d) |  |  |
| 11TM31-102 | Izolacje – Sekcja 15 | 2026-05-14 A → 2026-05-12 A (-2d) | 2026-10-12 → 2026-05-29 A (-136d) | 22% → 100% | 442.2d → none |
| SEKCJA 17 | **Sekcja 17** | 2026-02-18 → 2026-02-17 (-1d) | 2026-10-22 → 2026-06-15 (-129d) |  |  |
| 11TM31-111 | Prefabrykacja ruroci¹gów – Sekcja 17 | 2026-02-18 A → 2026-02-17 A (-1d) | 2026-10-06 → 2026-03-06 A (-214d) | 62% → 100% | 424.9d → none |
| 11TM31-112 | Monta¿ ruroci¹gów – Sekcja 17 | 2026-04-24 A → 2026-04-27 A (+3d) | 2026-10-22 → 2026-05-26 A (-149d) | 22% → 100% | 392.8d → none |
| PROJ | **Projektowanie** |  | 2026-09-30 → 2025-08-14 (-412d) |  |  |
| DOKUMENTAC | **Dokumentacja** |  | 2026-09-30 → 2025-08-14 (-412d) |  |  |
| 11TM31-004 | KM: Dokumentacja zatwierdzona – Uk³ad chemicznego uzdatniania | 2026-09-30 → 2025-08-14 A (-412d) | 2026-09-30 → 2025-08-14 (-412d) | 0% → 100% | 106.9d → none |
| 12NW18 | **12NW18 – Ujêcie wody** |  | 2026-10-28 → 2026-11-09 (+12d) |  |  |
| BUDO | **Budowa** |  | 2026-10-06 → 2026-08-25 (-42d) |  |  |
| RUROCI¥GI | **Ruroci¹gi** |  | 2026-10-06 → 2026-08-03 (-64d) |  |  |
| SEKCJA 03 | **Sekcja 03** | 2026-06-12 → 2026-01-23 (-140d) | 2026-10-02 → 2026-07-10 (-84d) |  |  |
| PODSEKCJA | **Podsekcja 03.A** | 2026-06-12 → 2026-01-23 (-140d) | 2026-10-02 → 2026-07-10 (-84d) |  |  |
| 12NW18-027 | Prefabrykacja ruroci¹gów – Sekcja 03 | 2026-09-30 → 2026-01-23 A (-250d) | 2026-10-02 → 2026-01-29 A (-246d) | 0% → 100% | 227.4d → none |
| SEKCJA 04 | **Sekcja 04** | 2026-01-28 → 2026-01-30 (+2d) | 2026-10-02 → 2026-07-06 (-88d) |  |  |
| 12NW18-032 | Prefabrykacja ruroci¹gów – Sekcja 04 | 2026-01-28 A → 2026-01-30 A (+2d) | 2026-10-02 → 2026-02-11 A (-233d) | 59% → 100% | 407.4d → none |
| SEKCJA 09 | **Sekcja 09** | 2026-03-06 → 2026-03-05 (-1d) | 2026-10-06 → 2026-07-21 (-77d) |  |  |
| PODSEKCJA | **Podsekcja 09.A** | 2026-03-06 → 2026-03-05 (-1d) | 2026-10-06 → 2026-07-21 (-77d) |  |  |
| 12NW18-063 | Prefabrykacja ruroci¹gów – Sekcja 09 | 2026-03-06 A → 2026-03-05 A (-1d) | 2026-10-06 → 2026-03-24 A (-196d) | 56% → 100% | 405.4d → none |
| SEKCJA 10 | **Sekcja 10** |  | 2026-09-30 → 2026-07-14 (-78d) |  |  |
| 12NW18-069 | Monta¿ ruroci¹gów – Sekcja 10 | 2026-06-05 A → 2026-06-02 A (-3d) | 2026-09-30 → 2026-06-10 A (-112d) | 81% → 100% | 359.1d → none |
| PROJ | **Projektowanie** |  | 2026-09-30 → 2025-11-05 (-329d) |  |  |
| DOKUMENTAC | **Dokumentacja** |  | 2026-09-30 → 2025-11-05 (-329d) |  |  |
| 12NW18-004 | KM: Dokumentacja zatwierdzona – Ujêcie wody | 2026-09-30 → 2025-11-05 A (-329d) | 2026-09-30 → 2025-11-05 (-329d) | 0% → 100% | 92.9d → none |
| ROZR | **Rozruch** |  | 2026-10-28 → 2026-11-09 (+12d) |  |  |
| ROZRUCH | **Rozruch** |  | 2026-10-28 → 2026-11-09 (+12d) |  |  |
| 12NW18-079 | Rozruch na gor¹co / próby ruchowe | 2026-09-28 A → 2026-10-07 (+9d) | 2026-10-27 → 2026-11-06 (+10d) | 10% → 0% | 326.9d → 370.6d |
| 12NW18-080 | KM: Odbiór koñcowy – Ujêcie wody | 2026-10-28 → 2026-11-09 (+12d) | 2026-10-28 → 2026-11-09 (+12d) |  | 327.3d → 370.6d |
| 13RW88 | **13RW88 – Oczyszczalnia œcieków technologicznych** |  | 2026-11-06 → 2026-10-13 (-24d) |  |  |
| BUDO | **Budowa** |  | 2026-11-06 → 2026-08-28 (-70d) |  |  |
| ELEKTRYKA | **Elektryka** |  | 2026-10-20 → 2026-07-23 (-89d) |  |  |
| 13RW88-073 | Uk³adanie kabli – trasa 10 | 2026-06-25 A → 2026-06-19 A (-6d) | 2026-10-20 → 2026-07-13 A (-99d) | 11% → 100% | 409.9d → none |
| 13RW88-061 | Uk³adanie kabli – trasa 08 |  | 2026-10-14 → 2026-07-09 A (-97d) | 18% → 100% | 415.9d → none |
| MONTA¯ | **Monta¿** |  | 2026-11-06 → 2026-08-28 (-70d) |  |  |
| 13RW88-014 | Monta¿ urz¹dzeñ g³ównych | 2026-06-11 A → 2026-06-08 A (-3d) | 2026-11-06 → 2026-08-28 A (-70d) | 51% → 100% | 338.9d → none |
| RUROCI¥GI | **Ruroci¹gi** |  | 2026-10-12 → 2026-08-20 (-53d) |  |  |
| SEKCJA 01 | **Sekcja 01** |  | 2026-10-05 → 2026-07-17 (-80d) |  |  |
| 13RW88-018 | Izolacje – Sekcja 01 |  | 2026-10-05 → 2026-07-16 A (-81d) | 53% → 100% | 372.2d → none |
| SEKCJA 02 | **Sekcja 02** |  | 2026-09-30 → 2026-07-14 (-78d) |  |  |
| 13RW88-023 | Izolacje – Sekcja 02 | 2026-07-02 A → 2026-07-07 A (+5d) | 2026-09-30 → 2026-07-14 A (-78d) | 65% → 100% | 376.7d → none |
| SEKCJA 03 | **Sekcja 03** |  | 2026-10-02 → 2026-07-28 (-66d) |  |  |
| PODSEKCJA | **Podsekcja 03.A** |  | 2026-10-02 → 2026-07-28 (-66d) |  |  |
| 13RW88-029 | Próba ciœnieniowa – Sekcja 03 | 2026-07-15 A → 2026-07-13 A (-2d) | 2026-10-02 → 2026-07-20 A (-74d) | 40% → 100% | 401.6d → none |
| SEKCJA 04 | **Sekcja 04** |  | 2026-10-08 → 2026-08-20 (-49d) |  |  |
| 13RW88-035 | Izolacje – Sekcja 04 | 2026-07-28 A → 2026-07-27 A (-1d) | 2026-10-08 → 2026-08-12 A (-57d) | 38% → 100% | 389.3d → none |
| SEKCJA 08 | **Sekcja 08** |  | 2026-10-12 → 2026-07-22 (-82d) |  |  |
| 13RW88-057 | Monta¿ ruroci¹gów – Sekcja 08 |  | 2026-10-12 → 2026-07-02 A (-102d) | 11% → 100% | 408.7d → none |
| SEKCJA 12 | **Sekcja 12** |  | 2026-10-01 → 2026-07-21 (-72d) |  |  |
| PODSEKCJA | **Podsekcja 12.A** |  | 2026-10-01 → 2026-07-21 (-72d) |  |  |
| 13RW88-082 | Próba ciœnieniowa – Sekcja 12 | 2026-07-10 A → 2026-07-09 A (-1d) | 2026-10-01 → 2026-07-16 A (-77d) | 48% → 100% | 366.5d → none |
| 13RW88-091 | Rozruch na gor¹co / próby ruchowe | 2026-09-24 A → 2026-09-25 A (+1d) |  | 11% → 64% | 340.9d → 390.6d |
| ZAKU | **Zakupy** |  | 2026-10-01 → 2026-06-08 (-115d) |  |  |
| DOSTAWY | **Dostawy** |  | 2026-10-01 → 2026-06-08 (-115d) |  |  |
| 13RW88-010 | Transport i dostawa na plac budowy | 2026-05-12 A → 2026-05-11 A (-1d) | 2026-10-01 → 2026-06-08 A (-115d) | 88% → 100% | 341.9d → none |

| ID | Task | Start | Finish | Complete | Total float |
| --- | --- | --- | --- | --- | --- |
| 18TY85 | **18TY85 – Wie¿a ch³odnicza** |  | 2027-08-16 → 2028-04-10 (+238d) |  |  |
| BUDO | **Budowa** |  | 2026-10-08 → 2026-05-27 (-134d) |  |  |
| ELEKTRYKA | **Elektryka** |  | 2026-09-30 → 2026-05-07 (-146d) |  |  |
| 18TY85-050 | Pod³¹czenia i pomiary – trasa 06 | 2026-05-04 A → 2026-04-30 A (-4d) | 2026-09-30 → 2026-05-06 A (-147d) | 75% → 100% | 460.9d → none |
| RUROCI¥GI | **Ruroci¹gi** |  | 2026-10-08 → 2026-05-27 (-134d) |  |  |
| SEKCJA 01 | **Sekcja 01** |  | 2026-10-01 → 2026-05-22 (-132d) |  |  |
| 18TY85-017 | Próba ciœnieniowa – Sekcja 01 |  | 2026-10-01 → 2026-05-06 A (-148d) | 63% → 100% | 411.7d → none |
| SEKCJA 02 | **Sekcja 02** | 2025-12-18 → 2025-12-15 (-3d) | 2026-10-06 → 2026-05-04 (-155d) |  |  |
| 18TY85-020 | Prefabrykacja ruroci¹gów – Sekcja 02 | 2025-12-18 A → 2025-12-15 A (-3d) | 2026-10-06 → 2025-12-26 A (-284d) | 32% → 100% | 460.4d → none |
| SEKCJA 05 | **Sekcja 05** |  | 2026-10-08 → 2026-05-27 (-134d) |  |  |
| 18TY85-043 | Malowanie i oznakowanie – Sekcja 05 | 2026-09-30 → 2026-05-15 A (-138d) | 2026-10-08 → 2026-05-27 A (-134d) | 0% → 100% | 350.9d → none |
| SEKCJA 06 | **Sekcja 06** |  | 2026-10-01 → 2026-05-07 (-147d) |  |  |
| PODSEKCJA | **Podsekcja 06.A** |  | 2026-10-01 → 2026-05-07 (-147d) |  |  |
| 18TY85-046 | Próba ciœnieniowa – Sekcja 06 |  | 2026-10-01 → 2026-04-30 A (-154d) | 23% → 100% | 462.5d → none |
| 18TY85-047 | Izolacje – Sekcja 06 |  | 2026-09-30 → 2026-05-05 A (-148d) | 68% → 100% | 462.5d → none |
| ROZR | **Rozruch** |  | 2027-08-16 → 2028-04-10 (+238d) |  |  |
| KAMIENIE M | **Kamienie milowe** | 2027-08-16 → 2028-04-10 (+238d) | 2027-08-16 → 2028-04-10 (+238d) |  |  |
| 18TY85-074 | KM: Zakoñczenie rozruchu – PL5001-SE-02 | 2027-08-16 → 2028-04-10 (+238d) | 2027-08-16 → 2028-04-10 (+238d) |  | 119.4d → 0d |
| 23QX91 | **23QX91 – Stacja demineralizacji** |  | 2026-10-19 → 2026-08-13 (-67d) |  |  |
| BUDO | **Budowa** |  | 2026-10-19 → 2026-07-20 (-91d) |  |  |
| ELEKTRYKA | **Elektryka** |  | 2026-10-01 → 2026-06-25 (-98d) |  |  |
| 23QX91-049 | Uk³adanie kabli – trasa 06 | 2026-05-28 A → 2026-05-27 A (-1d) | 2026-10-01 → 2026-06-18 A (-105d) | 84% → 100% | 429.9d → none |
| RUROCI¥GI | **Ruroci¹gi** |  | 2026-10-19 → 2026-07-20 (-91d) |  |  |
| SEKCJA 02 | **Sekcja 02** | 2025-11-26 → 2025-11-28 (+2d) | 2026-10-05 → 2026-06-08 (-119d) |  |  |
| 23QX91-020 | Prefabrykacja ruroci¹gów – Sekcja 02 | 2025-11-26 A → 2025-11-28 A (+2d) | 2026-10-05 → 2025-12-09 A (-300d) | 37% → 100% | 379.7d → none |
| SEKCJA 05 | **Sekcja 05** |  | 2026-10-02 → 2026-06-29 (-95d) |  |  |
| 23QX91-041 | Próba ciœnieniowa – Sekcja 05 | 2026-06-02 A → 2026-06-03 A (+1d) | 2026-10-02 → 2026-06-11 A (-113d) | 22% → 100% | 426.7d → none |
| SEKCJA 15 | **Sekcja 15** |  | 2026-10-01 → 2026-06-26 (-97d) |  |  |
| PODSEKCJA | **Podsekcja 15.A** |  | 2026-10-01 → 2026-06-26 (-97d) |  |  |
| 23QX91-103 | Malowanie i oznakowanie – Sekcja 15 | 2026-09-30 → 2026-06-24 A (-98d) | 2026-10-01 → 2026-06-26 A (-97d) | 0% → 100% | 355.9d → none |
| SEKCJA 16 | **Sekcja 16** |  | 2026-10-19 → 2026-07-16 (-95d) |  |  |
| 23QX91-105 | Monta¿ ruroci¹gów – Sekcja 16 | 2026-05-25 A → 2026-05-22 A (-3d) | 2026-10-19 → 2026-06-29 A (-112d) | 40% → 100% | 412.4d → none |
| 23QX91-106 | Próba ciœnieniowa – Sekcja 16 |  | 2026-09-30 → 2026-07-01 A (-91d) | 50% → 100% | 411.4d → none |
| SEKCJA 19 | **Sekcja 19** | 2026-03-27 → 2026-03-26 (-1d) | 2026-10-13 → 2026-06-19 (-116d) |  |  |
| 23QX91-123 | Prefabrykacja ruroci¹gów – Sekcja 19 | 2026-03-27 A → 2026-03-26 A (-1d) | 2026-10-13 → 2026-04-15 A (-181d) | 17% → 100% | 377.7d → none |
| SEKCJA 23 | **Sekcja 23** |  | 2026-09-30 → 2026-06-30 (-92d) |  |  |
| 23QX91-151 | Malowanie i oznakowanie – Sekcja 23 |  | 2026-09-30 → 2026-06-30 A (-92d) | 75% → 100% | 422.3d → none |
| SEKCJA 24 | **Sekcja 24** |  | 2026-10-01 → 2026-07-03 (-90d) |  |  |
| PODSEKCJA | **Podsekcja 24.A** |  | 2026-10-01 → 2026-07-03 (-90d) |  |  |
| 23QX91-156 | Malowanie i oznakowanie – Sekcja 24 | 2026-06-29 A → 2026-06-25 A (-4d) | 2026-10-01 → 2026-07-03 A (-90d) | 53% → 100% | 418.1d → none |
| SEKCJA 26 | **Sekcja 26** |  | 2026-09-30 → 2026-07-16 (-76d) |  |  |
| 23QX91-166 | Próba ciœnieniowa – Sekcja 26 | 2026-06-24 A → 2026-06-18 A (-6d) | 2026-09-30 → 2026-06-26 A (-96d) | 80% → 100% | 376.9d → none |
| PROJ | **Projektowanie** |  | 2026-10-12 → 2025-06-06 (-493d) |  |  |
| DOKUMENTAC | **Dokumentacja** |  | 2026-10-12 → 2025-06-06 (-493d) |  |  |
| 23QX91-002 | Uzgodnienie dokumentacji z Inwestorem | 2025-05-07 A → 2025-05-09 A (+2d) | 2026-10-12 → 2025-06-06 A (-493d) | 48% → 100% | 436.7d → none |
| ZAKU | **Zakupy** |  | 2026-10-16 → 2026-05-15 (-154d) |  |  |
| DOSTAWY | **Dostawy** |  | 2026-10-16 → 2026-05-15 (-154d) |  |  |
| 23QX91-010 | Transport i dostawa na plac budowy | 2026-04-15 A → 2026-04-17 A (+2d) | 2026-10-16 → 2026-05-15 A (-154d) | 31% → 100% | 382.3d → none |
| 28BP20 | **28BP20 – Pompy wody ch³odz¹cej** |  | 2026-10-02 → 2026-07-23 (-71d) |  |  |
| BUDO | **Budowa** |  | 2026-10-02 → 2026-06-05 (-119d) |  |  |
| ELEKTRYKA | **Elektryka** |  | 2026-10-02 → 2026-05-14 (-141d) |  |  |
| 28BP20-061 | Uk³adanie kabli – trasa 08 | 2026-04-16 A → 2026-04-21 A (+5d) | 2026-10-02 → 2026-04-28 A (-157d) | 12% → 100% | 472.9d → none |
| RUROCI¥GI | **Ruroci¹gi** |  | 2026-10-02 → 2026-06-05 (-119d) |  |  |
| SEKCJA 03 | **Sekcja 03** |  | 2026-10-02 → 2026-05-15 (-140d) |  |  |
| PODSEKCJA | **Podsekcja 03.A** |  | 2026-10-02 → 2026-05-15 (-140d) |  |  |
| 28BP20-031 | Malowanie i oznakowanie – Sekcja 03 | 2026-09-30 → 2026-05-08 A (-145d) | 2026-10-02 → 2026-05-15 A (-140d) | 0% → 100% | 354.9d → none |
| SEKCJA 05 | **Sekcja 05** |  | 2026-10-01 → 2026-04-30 (-154d) |  |  |
| 28BP20-041 | Próba ciœnieniowa – Sekcja 05 | 2026-04-13 A → 2026-04-10 A (-3d) | 2026-10-01 → 2026-04-16 A (-168d) | 13% → 100% | 469.4d → none |
| SEKCJA 08 | **Sekcja 08** |  | 2026-09-30 → 2026-05-19 (-134d) |  |  |
| 28BP20-057 | Monta¿ ruroci¹gów – Sekcja 08 | 2026-04-16 A → 2026-04-20 A (+4d) | 2026-09-30 → 2026-04-27 A (-156d) | 71% → 100% | 455.7d → none |
| 28BP20-060 | Malowanie i oznakowanie – Sekcja 08 | 2026-05-19 A → 2026-05-18 A (-1d) | 2026-09-30 → 2026-05-19 A (-134d) | 35% → 100% | 451.7d → none |
| UK£AD_ELEKTR | **Uk³ad elektryczny** |  | 2027-08-16 → 2028-04-10 (+238d) |  |  |
| 10SN54 | **10SN54 – Rozdzielnia 110 kV** |  | 2027-08-13 → 2028-04-10 (+241d) |  |  |
| BUDO | **Budowa** |  | 2027-07-29 → 2028-03-24 (+239d) |  |  |
| AKPIA | **AKPiA** | 2027-05-26 → 2028-01-21 (+240d) | 2027-06-17 → 2028-02-14 (+242d) |  |  |
| 10SN54-164 | Monta¿ uk³adów AKPiA | 2027-05-26 → 2028-01-21 (+240d) | 2027-06-17 → 2028-02-14 (+242d) |  | 138.1d → 17.6d |
| ELEKTRYKA | **Elektryka** | 2027-05-31 → 2028-01-26 (+240d) | 2027-06-29 → 2028-02-24 (+240d) |  |  |
| 10SN54-074 | Pod³¹czenia i pomiary – trasa 10 | 2027-05-31 → 2028-01-26 (+240d) | 2027-06-10 → 2028-02-07 (+242d) |  | 175.1d → 54.6d |
| 10SN54-025 | Uk³adanie kabli – trasa 02 | 2027-06-02 → 2028-01-28 (+240d) | 2027-06-09 → 2028-02-04 (+240d) |  | 144.1d → 23.6d |
| 10SN54-037 | Uk³adanie kabli – trasa 04 | 2027-06-02 → 2028-01-28 (+240d) | 2027-06-16 → 2028-02-11 (+240d) |  | 171.1d → 50.6d |

| ID | Task | Start | Finish | Total float |
| --- | --- | --- | --- | --- |
| 10SN54-049 | Uk³adanie kabli – trasa 06 | 2027-06-02 → 2028-01-28 (+240d) | 2027-06-25 → 2028-02-22 (+242d) | 164.1d → 43.6d |
| 10SN54-061 | Uk³adanie kabli – trasa 08 | 2027-06-02 → 2028-01-28 (+240d) | 2027-06-16 → 2028-02-11 (+240d) | 171.1d → 50.6d |
| 10SN54-073 | Uk³adanie kabli – trasa 10 | 2027-06-02 → 2028-01-28 (+240d) | 2027-06-10 → 2028-02-07 (+242d) | 175.1d → 54.6d |
| 10SN54-085 | Uk³adanie kabli – trasa 12 | 2027-06-02 → 2028-01-28 (+240d) | 2027-06-18 → 2028-02-15 (+242d) | 169.1d → 48.6d |
| 10SN54-097 | Uk³adanie kabli – trasa 14 | 2027-06-02 → 2028-01-28 (+240d) | 2027-06-23 → 2028-02-18 (+240d) | 166.1d → 45.6d |
| 10SN54-109 | Uk³adanie kabli – trasa 16 | 2027-06-02 → 2028-01-28 (+240d) | 2027-06-29 → 2028-02-24 (+240d) | 162.1d → 41.6d |
| 10SN54-121 | Uk³adanie kabli – trasa 18 | 2027-06-02 → 2028-01-28 (+240d) | 2027-06-08 → 2028-02-03 (+240d) | 177.1d → 56.6d |
| 10SN54-122 | Pod³¹czenia i pomiary – trasa 18 | 2027-06-02 → 2028-01-28 (+240d) | 2027-06-08 → 2028-02-03 (+240d) | 177.1d → 56.6d |
| 10SN54-133 | Uk³adanie kabli – trasa 20 | 2027-06-02 → 2028-01-28 (+240d) | 2027-06-24 → 2028-02-21 (+242d) | 165.1d → 44.6d |
| 10SN54-145 | Uk³adanie kabli – trasa 22 | 2027-06-02 → 2028-01-28 (+240d) | 2027-06-29 → 2028-02-24 (+240d) | 162.1d → 41.6d |
| 10SN54-157 | Uk³adanie kabli – trasa 24 | 2027-06-02 → 2028-01-28 (+240d) | 2027-06-17 → 2028-02-14 (+242d) | 138.1d → 17.6d |
| 10SN54-026 | Pod³¹czenia i pomiary – trasa 02 | 2027-06-04 → 2028-02-01 (+242d) | 2027-06-09 → 2028-02-04 (+240d) | 144.1d → 23.6d |
| 10SN54-038 | Pod³¹czenia i pomiary – trasa 04 | 2027-06-04 → 2028-02-01 (+242d) | 2027-06-16 → 2028-02-11 (+240d) | 171.1d → 50.6d |
| 10SN54-086 | Pod³¹czenia i pomiary – trasa 12 | 2027-06-07 → 2028-02-02 (+240d) | 2027-06-18 → 2028-02-15 (+242d) | 169.1d → 48.6d |
| 10SN54-062 | Pod³¹czenia i pomiary – trasa 08 | 2027-06-08 → 2028-02-03 (+240d) | 2027-06-16 → 2028-02-11 (+240d) | 171.1d → 50.6d |
| 10SN54-158 | Pod³¹czenia i pomiary – trasa 24 | 2027-06-09 → 2028-02-04 (+240d) | 2027-06-17 → 2028-02-14 (+242d) | 138.1d → 17.6d |
| 10SN54-098 | Pod³¹czenia i pomiary – trasa 14 | 2027-06-15 → 2028-02-10 (+240d) | 2027-06-23 → 2028-02-18 (+240d) | 166.1d → 45.6d |
| 10SN54-134 | Pod³¹czenia i pomiary – trasa 20 | 2027-06-15 → 2028-02-10 (+240d) | 2027-06-24 → 2028-02-21 (+242d) | 165.1d → 44.6d |
| 10SN54-050 | Pod³¹czenia i pomiary – trasa 06 | 2027-06-16 → 2028-02-11 (+240d) | 2027-06-25 → 2028-02-22 (+242d) | 164.1d → 43.6d |
| 10SN54-110 | Pod³¹czenia i pomiary – trasa 16 | 2027-06-25 → 2028-02-22 (+242d) | 2027-06-29 → 2028-02-24 (+240d) | 162.1d → 41.6d |
| 10SN54-146 | Pod³¹czenia i pomiary – trasa 22 | 2027-06-25 → 2028-02-22 (+242d) | 2027-06-29 → 2028-02-24 (+240d) | 162.1d → 41.6d |
| MONTA¯ | **Monta¿** |  | 2027-07-14 → 2028-03-09 (+239d) |  |
| 10SN54-014 | Monta¿ urz¹dzeñ g³ównych | 2027-05-19 → 2028-01-14 (+240d) | 2027-06-17 → 2028-02-14 (+242d) | 120.5d → 0d |
| 10SN54-165 | KM: Zakoñczenie monta¿u – Rozdzielnia 110 kV | 2027-07-14 → 2028-03-09 (+239d) | 2027-07-14 → 2028-03-09 (+239d) | 120.5d → 0d |
| RUROCI¥GI | **Ruroci¹gi** |  | 2027-07-29 → 2028-03-24 (+239d) |  |
| SEKCJA 01 | **Sekcja 01** |  | 2027-06-24 → 2028-02-21 (+242d) |  |
| 10SN54-016 | Monta¿ ruroci¹gów – Sekcja 01 | 2027-05-20 → 2028-01-17 (+242d) | 2027-06-07 → 2028-02-02 (+240d) | 133.1d → 12.6d |
| 10SN54-017 | Próba ciœnieniowa – Sekcja 01 | 2027-06-08 → 2028-02-03 (+240d) | 2027-06-11 → 2028-02-08 (+242d) | 133.1d → 12.6d |
| 10SN54-018 | Izolacje – Sekcja 01 | 2027-06-14 → 2028-02-09 (+240d) | 2027-06-22 → 2028-02-17 (+240d) | 133.1d → 12.6d |
| 10SN54-019 | Malowanie i oznakowanie – Sekcja 01 | 2027-06-23 → 2028-02-18 (+240d) | 2027-06-24 → 2028-02-21 (+242d) | 133.1d → 12.6d |
| SEKCJA 02 | **Sekcja 02** |  | 2027-06-30 → 2028-02-24 (+239d) |  |
| 10SN54-021 | Monta¿ ruroci¹gów – Sekcja 02 | 2027-05-27 → 2028-01-24 (+242d) | 2027-06-04 → 2028-01-31 (+241d) | 129.8d → 9.3d |
| 10SN54-022 | Próba ciœnieniowa – Sekcja 02 | 2027-06-07 → 2028-02-01 (+239d) | 2027-06-11 → 2028-02-07 (+241d) | 129.8d → 9.3d |
| 10SN54-023 | Izolacje – Sekcja 02 | 2027-06-14 → 2028-02-08 (+239d) | 2027-06-28 → 2028-02-22 (+239d) | 129.8d → 9.3d |
| 10SN54-024 | Malowanie i oznakowanie – Sekcja 02 | 2027-06-28 → 2028-02-22 (+239d) | 2027-06-30 → 2028-02-24 (+239d) | 129.8d → 9.3d |
| SEKCJA 03 | **Sekcja 03** |  | 2027-06-24 → 2028-02-18 (+239d) |  |
| PODSEKCJA | **Podsekcja 03.A** |  | 2027-06-24 → 2028-02-18 (+239d) |  |
| 10SN54-028 | Monta¿ ruroci¹gów – Sekcja 03 | 2027-05-21 → 2028-01-18 (+242d) | 2027-06-09 → 2028-02-03 (+239d) | 165.6d → 45.1d |
| 10SN54-029 | Próba ciœnieniowa – Sekcja 03 | 2027-06-10 → 2028-02-04 (+239d) | 2027-06-16 → 2028-02-10 (+239d) | 165.6d → 45.1d |
| 10SN54-030 | Izolacje – Sekcja 03 | 2027-06-17 → 2028-02-11 (+239d) | 2027-06-22 → 2028-02-16 (+239d) | 165.6d → 45.1d |
| 10SN54-031 | Malowanie i oznakowanie – Sekcja 03 | 2027-06-17 → 2028-02-11 (+239d) | 2027-06-24 → 2028-02-18 (+239d) | 165.6d → 45.1d |
| SEKCJA 04 | **Sekcja 04** |  | 2027-07-02 → 2028-02-29 (+242d) |  |
| 10SN54-033 | Monta¿ ruroci¹gów – Sekcja 04 | 2027-05-28 → 2028-01-25 (+242d) | 2027-06-18 → 2028-02-15 (+242d) | 159d → 38.5d |
| 10SN54-034 | Próba ciœnieniowa – Sekcja 04 | 2027-06-21 → 2028-02-16 (+240d) | 2027-06-25 → 2028-02-22 (+242d) | 159d → 38.5d |
| 10SN54-035 | Izolacje – Sekcja 04 | 2027-06-28 → 2028-02-23 (+240d) | 2027-06-30 → 2028-02-25 (+240d) | 159d → 38.5d |
| 10SN54-036 | Malowanie i oznakowanie – Sekcja 04 | 2027-06-29 → 2028-02-24 (+240d) | 2027-07-02 → 2028-02-29 (+242d) | 159d → 38.5d |
| SEKCJA 05 | **Sekcja 05** |  | 2027-06-24 → 2028-02-18 (+239d) |  |
| 10SN54-040 | Monta¿ ruroci¹gów – Sekcja 05 | 2027-05-25 → 2028-01-20 (+240d) | 2027-06-10 → 2028-02-04 (+239d) | 165.2d → 44.7d |
| 10SN54-041 | Próba ciœnieniowa – Sekcja 05 | 2027-06-11 → 2028-02-07 (+241d) | 2027-06-16 → 2028-02-10 (+239d) | 165.2d → 44.7d |
| 10SN54-042 | Izolacje – Sekcja 05 | 2027-06-17 → 2028-02-11 (+239d) | 2027-06-22 → 2028-02-16 (+239d) | 165.2d → 44.7d |
| 10SN54-043 | Malowanie i oznakowanie – Sekcja 05 | 2027-06-23 → 2028-02-17 (+239d) | 2027-06-24 → 2028-02-18 (+239d) | 165.2d → 44.7d |
| SEKCJA 06 | **Sekcja 06** |  | 2027-07-29 → 2028-03-24 (+239d) |  |
| PODSEKCJA | **Podsekcja 06.A** |  | 2027-07-29 → 2028-03-24 (+239d) |  |
| 10SN54-045 | Monta¿ ruroci¹gów – Sekcja 06 | 2027-06-02 → 2028-01-28 (+240d) | 2027-07-05 → 2028-02-29 (+239d) | 140.4d → 19.9d |
| 10SN54-046 | Próba ciœnieniowa – Sekcja 06 | 2027-07-06 → 2028-03-01 (+239d) | 2027-07-09 → 2028-03-06 (+241d) | 140.4d → 19.9d |
| 10SN54-047 | Izolacje – Sekcja 06 | 2027-07-12 → 2028-03-07 (+239d) | 2027-07-27 → 2028-03-22 (+239d) | 140.4d → 19.9d |
| 10SN54-048 | Malowanie i oznakowanie – Sekcja 06 | 2027-07-20 → 2028-03-15 (+239d) | 2027-07-29 → 2028-03-24 (+239d) | 140.4d → 19.9d |
| SEKCJA 07 | **Sekcja 07** |  | 2027-07-01 → 2028-02-25 (+239d) |  |
| 10SN54-052 | Monta¿ ruroci¹gów – Sekcja 07 | 2027-05-26 → 2028-01-21 (+240d) | 2027-06-15 → 2028-02-09 (+239d) | 160.4d → 39.9d |
| 10SN54-053 | Próba ciœnieniowa – Sekcja 07 | 2027-06-16 → 2028-02-10 (+239d) | 2027-06-21 → 2028-02-15 (+239d) | 160.4d → 39.9d |
| 10SN54-054 | Izolacje – Sekcja 07 | 2027-06-22 → 2028-02-16 (+239d) | 2027-06-29 → 2028-02-23 (+239d) | 160.4d → 39.9d |
| 10SN54-055 | Malowanie i oznakowanie – Sekcja 07 | 2027-06-24 → 2028-02-18 (+239d) | 2027-07-01 → 2028-02-25 (+239d) | 160.4d → 39.9d |
| SEKCJA 08 | **Sekcja 08** |  | 2027-07-28 → 2028-03-23 (+239d) |  |
| 10SN54-057 | Monta¿ ruroci¹gów – Sekcja 08 | 2027-06-01 → 2028-01-27 (+240d) | 2027-07-05 → 2028-02-29 (+239d) | 141.7d → 21.2d |
| 10SN54-058 | Próba ciœnieniowa – Sekcja 08 | 2027-07-06 → 2028-03-01 (+239d) | 2027-07-08 → 2028-03-03 (+239d) | 141.7d → 21.2d |
| 10SN54-059 | Izolacje – Sekcja 08 | 2027-07-09 → 2028-03-06 (+241d) | 2027-07-26 → 2028-03-21 (+239d) | 141.7d → 21.2d |
| 10SN54-060 | Malowanie i oznakowanie – Sekcja 08 | 2027-07-26 → 2028-03-21 (+239d) | 2027-07-28 → 2028-03-23 (+239d) | 141.7d → 21.2d |
| SEKCJA 09 | **Sekcja 09** |  | 2027-06-22 → 2028-02-16 (+239d) |  |
| PODSEKCJA | **Podsekcja 09.A** |  | 2027-06-22 → 2028-02-16 (+239d) |  |
| 10SN54-064 | Monta¿ ruroci¹gów – Sekcja 09 | 2027-05-28 → 2028-01-25 (+242d) | 2027-06-09 → 2028-02-03 (+239d) | 167.2d → 46.7d |

| ID | Task | Start | Finish | Complete | Total float |
| --- | --- | --- | --- | --- | --- |
| 10SN54-065 | Próba ciœnieniowa – Sekcja 09 | 2027-06-10 → 2028-02-04 (+239d) | 2027-06-15 → 2028-02-09 (+239d) |  | 167.2d → 46.7d |
| 10SN54-067 | Malowanie i oznakowanie – Sekcja 09 | 2027-06-15 → 2028-02-09 (+239d) | 2027-06-22 → 2028-02-16 (+239d) |  | 167.2d → 46.7d |
| 10SN54-066 | Izolacje – Sekcja 09 | 2027-06-16 → 2028-02-10 (+239d) | 2027-06-18 → 2028-02-14 (+241d) |  | 167.2d → 46.7d |
| SEKCJA 10 | **Sekcja 10** |  | 2027-07-08 → 2028-03-06 (+242d) |  |  |
| 10SN54-069 | Monta¿ ruroci¹gów – Sekcja 10 | 2027-05-24 → 2028-01-19 (+240d) | 2027-06-11 → 2028-02-08 (+242d) |  | 155d → 34.5d |
| 10SN54-070 | Próba ciœnieniowa – Sekcja 10 | 2027-06-14 → 2028-02-09 (+240d) | 2027-06-21 → 2028-02-16 (+240d) |  | 155d → 34.5d |
| 10SN54-071 | Izolacje – Sekcja 10 | 2027-06-22 → 2028-02-17 (+240d) | 2027-07-06 → 2028-03-02 (+240d) |  | 155d → 34.5d |
| 10SN54-072 | Malowanie i oznakowanie – Sekcja 10 | 2027-07-07 → 2028-03-03 (+240d) | 2027-07-08 → 2028-03-06 (+242d) |  | 155d → 34.5d |
| SEKCJA 11 | **Sekcja 11** |  | 2027-06-23 → 2028-02-17 (+239d) |  |  |
| 10SN54-076 | Monta¿ ruroci¹gów – Sekcja 11 | 2027-05-19 → 2028-01-14 (+240d) | 2027-06-02 → 2028-01-27 (+239d) |  | 166.4d → 45.9d |
| 10SN54-077 | Próba ciœnieniowa – Sekcja 11 | 2027-06-03 → 2028-01-28 (+239d) | 2027-06-09 → 2028-02-03 (+239d) |  | 166.4d → 45.9d |
| 10SN54-078 | Izolacje – Sekcja 11 | 2027-06-10 → 2028-02-04 (+239d) | 2027-06-21 → 2028-02-15 (+239d) |  | 166.4d → 45.9d |
| 10SN54-079 | Malowanie i oznakowanie – Sekcja 11 | 2027-06-15 → 2028-02-09 (+239d) | 2027-06-23 → 2028-02-17 (+239d) |  | 166.4d → 45.9d |
| SEKCJA 12 | **Sekcja 12** |  | 2027-07-16 → 2028-03-14 (+242d) |  |  |
| PODSEKCJA | **Podsekcja 12.A** |  | 2027-07-16 → 2028-03-14 (+242d) |  |  |
| 10SN54-081 | Monta¿ ruroci¹gów – Sekcja 12 | 2027-06-02 → 2028-01-28 (+240d) | 2027-06-25 → 2028-02-22 (+242d) |  | 149.1d → 28.6d |
| 10SN54-082 | Próba ciœnieniowa – Sekcja 12 | 2027-06-28 → 2028-02-23 (+240d) | 2027-07-01 → 2028-02-28 (+242d) |  | 149.1d → 28.6d |
| 10SN54-083 | Izolacje – Sekcja 12 | 2027-07-02 → 2028-02-29 (+242d) | 2027-07-14 → 2028-03-10 (+240d) |  | 149.1d → 28.6d |
| 10SN54-084 | Malowanie i oznakowanie – Sekcja 12 | 2027-07-13 → 2028-03-09 (+240d) | 2027-07-16 → 2028-03-14 (+242d) |  | 149.1d → 28.6d |
| SEKCJA 13 | **Sekcja 13** |  | 2027-07-21 → 2028-03-16 (+239d) |  |  |
| 10SN54-088 | Monta¿ ruroci¹gów – Sekcja 13 | 2027-05-31 → 2028-01-26 (+240d) | 2027-07-01 → 2028-02-25 (+239d) |  | 146.7d → 26.2d |
| 10SN54-089 | Próba ciœnieniowa – Sekcja 13 | 2027-07-02 → 2028-02-28 (+241d) | 2027-07-05 → 2028-02-29 (+239d) |  | 146.7d → 26.2d |
| 10SN54-090 | Izolacje – Sekcja 13 | 2027-07-06 → 2028-03-01 (+239d) | 2027-07-19 → 2028-03-14 (+239d) |  | 146.7d → 26.2d |
| 10SN54-091 | Malowanie i oznakowanie – Sekcja 13 | 2027-07-15 → 2028-03-10 (+239d) | 2027-07-21 → 2028-03-16 (+239d) |  | 146.7d → 26.2d |
| SEKCJA 14 | **Sekcja 14** |  | 2027-07-06 → 2028-03-01 (+239d) |  |  |
| 10SN54-093 | Monta¿ ruroci¹gów – Sekcja 14 | 2027-05-27 → 2028-01-24 (+242d) | 2027-06-15 → 2028-02-09 (+239d) |  | 157.2d → 36.7d |
| 10SN54-094 | Próba ciœnieniowa – Sekcja 14 | 2027-06-16 → 2028-02-10 (+239d) | 2027-06-17 → 2028-02-11 (+239d) |  | 157.2d → 36.7d |
| 10SN54-095 | Izolacje – Sekcja 14 | 2027-06-18 → 2028-02-14 (+241d) | 2027-07-02 → 2028-02-28 (+241d) |  | 157.2d → 36.7d |
| 10SN54-096 | Malowanie i oznakowanie – Sekcja 14 | 2027-07-02 → 2028-02-28 (+241d) | 2027-07-06 → 2028-03-01 (+239d) |  | 157.2d → 36.7d |
| SEKCJA 15 | **Sekcja 15** |  | 2027-06-29 → 2028-02-24 (+240d) |  |  |
| PODSEKCJA | **Podsekcja 15.A** |  | 2027-06-29 → 2028-02-24 (+240d) |  |  |
| 10SN54-100 | Monta¿ ruroci¹gów – Sekcja 15 | 2027-05-26 → 2028-01-21 (+240d) | 2027-06-10 → 2028-02-07 (+242d) |  | 162.1d → 41.6d |
| 10SN54-101 | Próba ciœnieniowa – Sekcja 15 | 2027-06-11 → 2028-02-08 (+242d) | 2027-06-14 → 2028-02-09 (+240d) |  | 162.1d → 41.6d |
| 10SN54-102 | Izolacje – Sekcja 15 | 2027-06-15 → 2028-02-10 (+240d) | 2027-06-25 → 2028-02-22 (+242d) |  | 162.1d → 41.6d |
| 10SN54-103 | Malowanie i oznakowanie – Sekcja 15 | 2027-06-23 → 2028-02-18 (+240d) | 2027-06-29 → 2028-02-24 (+240d) |  | 162.1d → 41.6d |
| SEKCJA 16 | **Sekcja 16** |  | 2027-07-05 → 2028-02-29 (+239d) |  |  |
| 10SN54-105 | Monta¿ ruroci¹gów – Sekcja 16 | 2027-05-31 → 2028-01-26 (+240d) | 2027-06-23 → 2028-02-17 (+239d) |  | 158.5d → 38d |
| 10SN54-106 | Próba ciœnieniowa – Sekcja 16 | 2027-06-24 → 2028-02-18 (+239d) | 2027-06-25 → 2028-02-21 (+241d) |  | 158.5d → 38d |
| 10SN54-108 | Malowanie i oznakowanie – Sekcja 16 | 2027-06-24 → 2028-02-18 (+239d) | 2027-07-05 → 2028-02-29 (+239d) |  | 158.5d → 38d |
| 10SN54-107 | Izolacje – Sekcja 16 | 2027-06-28 → 2028-02-22 (+239d) | 2027-07-01 → 2028-02-25 (+239d) |  | 158.5d → 38d |
| SEKCJA 17 | **Sekcja 17** |  | 2027-07-20 → 2028-03-15 (+239d) |  |  |
| 10SN54-112 | Monta¿ ruroci¹gów – Sekcja 17 | 2027-05-20 → 2028-01-17 (+242d) | 2027-06-23 → 2028-02-17 (+239d) |  | 147.9d → 27.4d |
| 10SN54-113 | Próba ciœnieniowa – Sekcja 17 | 2027-06-24 → 2028-02-18 (+239d) | 2027-07-01 → 2028-02-25 (+239d) |  | 147.9d → 27.4d |
| 10SN54-114 | Izolacje – Sekcja 17 | 2027-07-02 → 2028-02-28 (+241d) | 2027-07-16 → 2028-03-13 (+241d) |  | 147.9d → 27.4d |
| 10SN54-115 | Malowanie i oznakowanie – Sekcja 17 | 2027-07-15 → 2028-03-10 (+239d) | 2027-07-20 → 2028-03-15 (+239d) |  | 147.9d → 27.4d |
| SEKCJA 18 | **Sekcja 18** | 2026-07-28 → 2026-07-23 (-5d) | 2027-06-30 → 2028-02-24 (+239d) |  |  |
| PODSEKCJA | **Podsekcja 18.A** | 2026-07-28 → 2026-07-23 (-5d) | 2027-06-30 → 2028-02-24 (+239d) |  |  |
| 10SN54-116 | Prefabrykacja ruroci¹gów – Sekcja 18 | 2026-07-28 A → 2026-07-23 A (-5d) | 2026-10-07 → 2026-08-10 A (-58d) | 51% → 100% | 290.3d → none |
| 10SN54-117 | Monta¿ ruroci¹gów – Sekcja 18 | 2027-05-25 → 2028-01-20 (+240d) | 2027-06-14 → 2028-02-08 (+239d) |  | 161.2d → 40.7d |
| 10SN54-118 | Próba ciœnieniowa – Sekcja 18 | 2027-06-15 → 2028-02-09 (+239d) | 2027-06-22 → 2028-02-16 (+239d) |  | 161.2d → 40.7d |
| 10SN54-119 | Izolacje – Sekcja 18 | 2027-06-23 → 2028-02-17 (+239d) | 2027-06-28 → 2028-02-22 (+239d) |  | 161.2d → 40.7d |
| 10SN54-120 | Malowanie i oznakowanie – Sekcja 18 | 2027-06-25 → 2028-02-21 (+241d) | 2027-06-30 → 2028-02-24 (+239d) |  | 161.2d → 40.7d |
| SEKCJA 19 | **Sekcja 19** |  | 2027-07-02 → 2028-02-28 (+241d) |  |  |
| 10SN54-124 | Monta¿ ruroci¹gów – Sekcja 19 | 2027-05-20 → 2028-01-17 (+242d) | 2027-06-22 → 2028-02-16 (+239d) |  | 159.4d → 38.9d |
| 10SN54-125 | Próba ciœnieniowa – Sekcja 19 | 2027-06-23 → 2028-02-17 (+239d) | 2027-06-24 → 2028-02-18 (+239d) |  | 159.4d → 38.9d |
| 10SN54-126 | Izolacje – Sekcja 19 | 2027-06-25 → 2028-02-21 (+241d) | 2027-06-30 → 2028-02-24 (+239d) |  | 159.4d → 38.9d |
| 10SN54-127 | Malowanie i oznakowanie – Sekcja 19 | 2027-07-01 → 2028-02-25 (+239d) | 2027-07-02 → 2028-02-28 (+241d) |  | 159.4d → 38.9d |
| SEKCJA 20 | **Sekcja 20** |  | 2027-07-06 → 2028-03-02 (+240d) |  |  |
| 10SN54-129 | Monta¿ ruroci¹gów – Sekcja 20 | 2027-05-26 → 2028-01-21 (+240d) | 2027-06-15 → 2028-02-10 (+240d) |  | 157d → 36.5d |
| 10SN54-130 | Próba ciœnieniowa – Sekcja 20 | 2027-06-16 → 2028-02-11 (+240d) | 2027-06-21 → 2028-02-16 (+240d) |  | 157d → 36.5d |
| 10SN54-131 | Izolacje – Sekcja 20 | 2027-06-22 → 2028-02-17 (+240d) | 2027-07-02 → 2028-02-29 (+242d) |  | 157d → 36.5d |
| 10SN54-132 | Malowanie i oznakowanie – Sekcja 20 | 2027-06-28 → 2028-02-23 (+240d) | 2027-07-06 → 2028-03-02 (+240d) |  | 157d → 36.5d |
| SEKCJA 21 | **Sekcja 21** |  | 2027-06-28 → 2028-02-22 (+239d) |  |  |
| PODSEKCJA | **Podsekcja 21.A** |  | 2027-06-28 → 2028-02-22 (+239d) |  |  |
| 10SN54-136 | Monta¿ ruroci¹gów – Sekcja 21 | 2027-06-02 → 2028-01-28 (+240d) | 2027-06-11 → 2028-02-07 (+241d) |  | 163.8d → 43.3d |
| 10SN54-137 | Próba ciœnieniowa – Sekcja 21 | 2027-06-14 → 2028-02-08 (+239d) | 2027-06-18 → 2028-02-14 (+241d) |  | 163.8d → 43.3d |
| 10SN54-138 | Izolacje – Sekcja 21 | 2027-06-21 → 2028-02-15 (+239d) | 2027-06-24 → 2028-02-18 (+239d) |  | 163.8d → 43.3d |
| 10SN54-139 | Malowanie i oznakowanie – Sekcja 21 | 2027-06-21 → 2028-02-15 (+239d) | 2027-06-28 → 2028-02-22 (+239d) |  | 163.8d → 43.3d |
| SEKCJA 22 | **Sekcja 22** |  | 2027-07-06 → 2028-03-01 (+239d) |  |  |
| 10SN54-141 | Monta¿ ruroci¹gów – Sekcja 22 | 2027-05-21 → 2028-01-18 (+242d) | 2027-06-18 → 2028-02-14 (+241d) |  | 157.9d → 37.4d |

| ID | Task | Start | Finish | Complete | Total float |
| --- | --- | --- | --- | --- | --- |
| 10SN54-142 | Próba ciœnieniowa – Sekcja 22 | 2027-06-21 → 2028-02-15 (+239d) | 2027-06-25 → 2028-02-21 (+241d) |  | 157.9d → 37.4d |
| 10SN54-143 | Izolacje – Sekcja 22 | 2027-06-28 → 2028-02-22 (+239d) | 2027-07-02 → 2028-02-28 (+241d) |  | 157.9d → 37.4d |
| 10SN54-144 | Malowanie i oznakowanie – Sekcja 22 | 2027-07-02 → 2028-02-28 (+241d) | 2027-07-06 → 2028-03-01 (+239d) |  | 157.9d → 37.4d |
| SEKCJA 23 | **Sekcja 23** |  | 2027-07-16 → 2028-03-13 (+241d) |  |  |
| 10SN54-148 | Monta¿ ruroci¹gów – Sekcja 23 | 2027-05-20 → 2028-01-17 (+242d) | 2027-06-18 → 2028-02-14 (+241d) |  | 149.6d → 29.1d |
| 10SN54-149 | Próba ciœnieniowa – Sekcja 23 | 2027-06-21 → 2028-02-15 (+239d) | 2027-06-28 → 2028-02-22 (+239d) |  | 149.6d → 29.1d |
| 10SN54-150 | Izolacje – Sekcja 23 | 2027-06-29 → 2028-02-23 (+239d) | 2027-07-14 → 2028-03-09 (+239d) |  | 149.6d → 29.1d |
| 10SN54-151 | Malowanie i oznakowanie – Sekcja 23 | 2027-07-15 → 2028-03-10 (+239d) | 2027-07-16 → 2028-03-13 (+241d) |  | 149.6d → 29.1d |
| SEKCJA 24 | **Sekcja 24** |  | 2027-07-13 → 2028-03-08 (+239d) |  |  |
| PODSEKCJA | **Podsekcja 24.A** |  | 2027-07-13 → 2028-03-08 (+239d) |  |  |
| 10SN54-153 | Monta¿ ruroci¹gów – Sekcja 24 | 2027-05-19 → 2028-01-14 (+240d) | 2027-06-18 → 2028-02-14 (+241d) |  | 120.5d → 0d |
| 10SN54-154 | Próba ciœnieniowa – Sekcja 24 | 2027-06-21 → 2028-02-15 (+239d) | 2027-06-28 → 2028-02-22 (+239d) |  | 120.5d → 0d |
| 10SN54-155 | Izolacje – Sekcja 24 | 2027-06-29 → 2028-02-23 (+239d) | 2027-07-09 → 2028-03-06 (+241d) |  | 120.5d → 0d |
| 10SN54-156 | Malowanie i oznakowanie – Sekcja 24 | 2027-07-08 → 2028-03-03 (+239d) | 2027-07-13 → 2028-03-08 (+239d) |  | 120.5d → 0d |
| SEKCJA 25 | **Sekcja 25** | 2026-09-14 → 2026-09-15 (+1d) | 2027-07-05 → 2028-02-29 (+239d) |  |  |
| 10SN54-159 | Prefabrykacja ruroci¹gów – Sekcja 25 | 2026-09-14 A → 2026-09-15 A (+1d) | 2026-10-07 → 2026-10-01 A (-6d) | 53% → 100% | 291.3d → none |
| 10SN54-160 | Monta¿ ruroci¹gów – Sekcja 25 | 2027-05-20 → 2028-01-17 (+242d) | 2027-06-17 → 2028-02-11 (+239d) |  | 126.4d → 5.9d |
| 10SN54-161 | Próba ciœnieniowa – Sekcja 25 | 2027-06-18 → 2028-02-14 (+241d) | 2027-06-23 → 2028-02-17 (+239d) |  | 126.4d → 5.9d |
| 10SN54-162 | Izolacje – Sekcja 25 | 2027-06-24 → 2028-02-18 (+239d) | 2027-07-01 → 2028-02-25 (+239d) |  | 126.4d → 5.9d |
| 10SN54-163 | Malowanie i oznakowanie – Sekcja 25 | 2027-06-30 → 2028-02-24 (+239d) | 2027-07-05 → 2028-02-29 (+239d) |  | 126.4d → 5.9d |
| ROZR | **Rozruch** | 2027-07-14 → 2028-03-09 (+239d) | 2027-08-13 → 2028-04-10 (+241d) |  |  |
| ROZRUCH | **Rozruch** | 2027-07-14 → 2028-03-09 (+239d) | 2027-08-13 → 2028-04-10 (+241d) |  |  |
| 10SN54-166 | Przegl¹d gotowoœci do rozruchu | 2027-07-14 → 2028-03-09 (+239d) | 2027-07-19 → 2028-03-14 (+239d) |  | 120.5d → 0d |
| 10SN54-167 | Rozruch na zimno | 2027-07-20 → 2028-03-15 (+239d) | 2027-07-26 → 2028-03-21 (+239d) |  | 120.5d → 0d |
| 10SN54-168 | Rozruch na gor¹co / próby ruchowe | 2027-07-27 → 2028-03-22 (+239d) | 2027-08-12 → 2028-04-07 (+239d) |  | 120.5d → 0d |
| 10SN54-169 | KM: Odbiór koñcowy – Rozdzielnia 110 kV | 2027-08-13 → 2028-04-10 (+241d) | 2027-08-13 → 2028-04-10 (+241d) |  | 120.5d → 0d |
| ZAKU | **Zakupy** |  | 2027-05-19 → 2028-01-14 (+240d) |  |  |
| DOSTAWY | **Dostawy** | 2026-01-01 → 2026-10-07 (+279d) | 2027-05-19 → 2028-01-14 (+240d) |  |  |
| 10SN54-008 | Produkcja u dostawcy | 2026-01-01 A → 2026-10-07 (+279d) | 2027-04-02 → 2027-11-30 (+242d) | 55% → 0% | 148.3d → 0d |
| 10SN54-009 | Testy FAT | 2027-04-05 → 2027-12-01 (+240d) | 2027-04-12 → 2027-12-08 (+240d) |  | 120.5d → 0d |
| 10SN54-010 | Transport i dostawa na plac budowy | 2027-04-13 → 2027-12-09 (+240d) | 2027-05-18 → 2028-01-13 (+240d) |  | 120.5d → 0d |
| 10SN54-011 | KM: Dostawa na budowê – Rozdzielnia 110 kV | 2027-05-19 → 2028-01-14 (+240d) | 2027-05-19 → 2028-01-14 (+240d) |  | 120.5d → 0d |
| 11XQ69 | **11XQ69 – Zasilanie awaryjne** |  | 2027-02-11 → 2027-03-29 (+46d) |  |  |
| BUDO | **Budowa** |  | 2026-12-16 → 2027-01-26 (+41d) |  |  |
| AKPIA | **AKPiA** | 2026-10-23 → 2026-11-02 (+10d) | 2026-11-25 → 2026-12-03 (+8d) |  |  |
| 11XQ69-087 | Monta¿ uk³adów AKPiA | 2026-10-23 → 2026-11-02 (+10d) | 2026-11-25 → 2026-12-03 (+8d) |  | 263.2d → 307.8d |
| ELEKTRYKA | **Elektryka** | 2026-10-27 → 2026-11-04 (+8d) | 2026-11-24 → 2026-12-31 (+37d) |  |  |
| 11XQ69-026 | Pod³¹czenia i pomiary – trasa 02 | 2026-10-27 → 2026-11-04 (+8d) | 2026-11-04 → 2026-11-12 (+8d) |  | 278.2d → 322.8d |
| 11XQ69-025 | Uk³adanie kabli – trasa 02 | 2026-10-30 → 2026-11-09 (+10d) | 2026-11-04 → 2026-11-12 (+8d) |  | 278.2d → 322.8d |
| 11XQ69-037 | Uk³adanie kabli – trasa 04 | 2026-10-30 → 2026-11-09 (+10d) | 2026-11-11 → 2026-11-19 (+8d) |  | 326.2d → 370.8d |
| 11XQ69-049 | Uk³adanie kabli – trasa 06 | 2026-10-30 → 2026-11-09 (+10d) | 2026-11-24 → 2026-12-02 (+8d) |  | 317.2d → 361.8d |
| 11XQ69-061 | Uk³adanie kabli – trasa 08 | 2026-10-30 → 2026-11-09 (+10d) | 2026-11-20 → 2026-11-30 (+10d) |  | 319.2d → 363.8d |
| 11XQ69-085 | Uk³adanie kabli – trasa 12 | 2026-10-30 → 2026-11-09 (+10d) | 2026-11-04 → 2026-11-12 (+8d) |  | 278.2d → 322.8d |
| 11XQ69-086 | Pod³¹czenia i pomiary – trasa 12 | 2026-11-04 → 2026-11-10 (+6d) | 2026-11-06 → 2026-11-12 (+6d) |  | 276.9d → 322.8d |
| 11XQ69-038 | Pod³¹czenia i pomiary – trasa 04 | 2026-11-06 → 2026-11-16 (+10d) | 2026-11-11 → 2026-11-19 (+8d) |  | 326.2d → 370.8d |
| 11XQ69-050 | Pod³¹czenia i pomiary – trasa 06 | 2026-11-11 → 2026-11-19 (+8d) | 2026-11-24 → 2026-12-02 (+8d) |  | 317.2d → 361.8d |
| 11XQ69-062 | Pod³¹czenia i pomiary – trasa 08 | 2026-11-17 → 2026-11-25 (+8d) | 2026-11-20 → 2026-11-30 (+10d) |  | 319.2d → 363.8d |
| 11XQ69-073 | Uk³adanie kabli – trasa 10 | 2026-10-30 → 2026-12-08 (+39d) | 2026-11-24 → 2026-12-31 (+37d) |  | 317.2d → 341.6d |
| 11XQ69-074 | Pod³¹czenia i pomiary – trasa 10 | 2026-11-19 → 2026-12-28 (+39d) | 2026-11-24 → 2026-12-31 (+37d) |  | 317.2d → 341.6d |
| MONTA¯ | **Monta¿** |  | 2026-12-14 → 2026-12-23 (+9d) |  |  |
| 11XQ69-014 | Monta¿ urz¹dzeñ g³ównych | 2026-10-16 → 2026-10-26 (+10d) | 2026-12-03 → 2026-12-11 (+8d) |  | 251d → 295.6d |
| 11XQ69-088 | KM: Zakoñczenie monta¿u – Zasilanie awaryjne | 2026-12-14 → 2026-12-23 (+9d) | 2026-12-14 → 2026-12-23 (+9d) |  | 251d → 295.6d |
| RUROCI¥GI | **Ruroci¹gi** |  | 2026-12-16 → 2027-01-26 (+41d) |  |  |
| SEKCJA 01 | **Sekcja 01** |  | 2026-12-10 → 2027-01-26 (+47d) |  |  |
| 11XQ69-016 | Monta¿ ruroci¹gów – Sekcja 01 | 2026-10-29 → 2026-12-16 (+48d) | 2026-11-17 → 2027-01-01 (+45d) |  | 252.4d → 269.8d |
| 11XQ69-017 | Próba ciœnieniowa – Sekcja 01 | 2026-11-18 → 2027-01-04 (+47d) | 2026-11-20 → 2027-01-06 (+47d) |  | 252.4d → 269.8d |
| 11XQ69-018 | Izolacje – Sekcja 01 | 2026-11-23 → 2027-01-07 (+45d) | 2026-12-08 → 2027-01-22 (+45d) |  | 252.4d → 269.8d |
| 11XQ69-019 | Malowanie i oznakowanie – Sekcja 01 | 2026-12-03 → 2027-01-19 (+47d) | 2026-12-10 → 2027-01-26 (+47d) |  | 252.4d → 269.8d |
| SEKCJA 02 | **Sekcja 02** |  | 2026-12-07 → 2026-12-17 (+10d) |  |  |
| 11XQ69-021 | Monta¿ ruroci¹gów – Sekcja 02 | 2026-10-16 → 2026-10-26 (+10d) | 2026-11-16 → 2026-11-24 (+8d) |  | 255.5d → 300.1d |
| 11XQ69-022 | Próba ciœnieniowa – Sekcja 02 | 2026-11-17 → 2026-11-25 (+8d) | 2026-11-20 → 2026-11-30 (+10d) |  | 255.5d → 300.1d |
| 11XQ69-023 | Izolacje – Sekcja 02 | 2026-11-23 → 2026-12-03 (+10d) | 2026-12-03 → 2026-12-15 (+12d) |  | 255.5d → 298.6d |
| 11XQ69-024 | Malowanie i oznakowanie – Sekcja 02 | 2026-11-27 → 2026-12-09 (+12d) | 2026-12-07 → 2026-12-17 (+10d) |  | 255.5d → 298.6d |
| SEKCJA 03 | **Sekcja 03** |  | 2026-12-01 → 2026-12-10 (+9d) |  |  |
| PODSEKCJA | **Podsekcja 03.A** |  | 2026-12-01 → 2026-12-10 (+9d) |  |  |
| 11XQ69-028 | Monta¿ ruroci¹gów – Sekcja 03 | 2026-10-28 → 2026-11-05 (+8d) | 2026-11-11 → 2026-11-19 (+8d) |  | 312.4d → 357d |
| 11XQ69-029 | Próba ciœnieniowa – Sekcja 03 | 2026-11-12 → 2026-11-20 (+8d) | 2026-11-13 → 2026-11-23 (+10d) |  | 312.4d → 357d |
| 11XQ69-030 | Izolacje – Sekcja 03 | 2026-11-16 → 2026-11-24 (+8d) | 2026-11-27 → 2026-12-07 (+10d) |  | 312.4d → 357d |
| 11XQ69-031 | Malowanie i oznakowanie – Sekcja 03 | 2026-11-25 → 2026-12-04 (+9d) | 2026-12-01 → 2026-12-10 (+9d) |  | 312.4d → 356.6d |
| SEKCJA 04 | **Sekcja 04** |  | 2026-11-27 → 2026-12-07 (+10d) |  |  |

| ID | Task | Start | Finish | Complete | Total float |
| --- | --- | --- | --- | --- | --- |
| 11XQ69-033 | Monta¿ ruroci¹gów – Sekcja 04 | 2026-10-27 → 2026-11-04 (+8d) | 2026-11-13 → 2026-11-23 (+10d) |  | 314.4d → 359d |
| 11XQ69-034 | Próba ciœnieniowa – Sekcja 04 | 2026-11-16 → 2026-11-24 (+8d) | 2026-11-20 → 2026-11-30 (+10d) |  | 314.4d → 359d |
| 11XQ69-036 | Malowanie i oznakowanie – Sekcja 04 | 2026-11-20 → 2026-11-30 (+10d) | 2026-11-27 → 2026-12-07 (+10d) |  | 314.4d → 359d |
| 11XQ69-035 | Izolacje – Sekcja 04 | 2026-11-23 → 2026-12-01 (+8d) | 2026-11-25 → 2026-12-03 (+8d) |  | 314.4d → 359d |
| SEKCJA 05 | **Sekcja 05** |  | 2026-12-03 → 2026-12-11 (+8d) |  |  |
| 11XQ69-040 | Monta¿ ruroci¹gów – Sekcja 05 | 2026-10-19 → 2026-10-27 (+8d) | 2026-11-16 → 2026-11-24 (+8d) |  | 310.3d → 354.9d |
| 11XQ69-041 | Próba ciœnieniowa – Sekcja 05 | 2026-11-17 → 2026-11-25 (+8d) | 2026-11-19 → 2026-11-27 (+8d) |  | 310.3d → 354.9d |
| 11XQ69-042 | Izolacje – Sekcja 05 | 2026-11-20 → 2026-11-30 (+10d) | 2026-12-01 → 2026-12-09 (+8d) |  | 310.3d → 354.9d |
| 11XQ69-043 | Malowanie i oznakowanie – Sekcja 05 | 2026-11-30 → 2026-12-08 (+8d) | 2026-12-03 → 2026-12-11 (+8d) |  | 310.3d → 354.9d |
| SEKCJA 06 | **Sekcja 06** |  | 2026-12-08 → 2026-12-16 (+8d) |  |  |
| PODSEKCJA | **Podsekcja 06.A** |  | 2026-12-08 → 2026-12-16 (+8d) |  |  |
| 11XQ69-045 | Monta¿ ruroci¹gów – Sekcja 06 | 2026-10-22 → 2026-10-30 (+8d) | 2026-11-24 → 2026-12-02 (+8d) |  | 307.4d → 352d |
| 11XQ69-046 | Próba ciœnieniowa – Sekcja 06 | 2026-11-25 → 2026-12-03 (+8d) | 2026-11-30 → 2026-12-08 (+8d) |  | 307.4d → 352d |
| 11XQ69-047 | Izolacje – Sekcja 06 | 2026-12-01 → 2026-12-09 (+8d) | 2026-12-04 → 2026-12-14 (+10d) |  | 307.4d → 352d |
| 11XQ69-048 | Malowanie i oznakowanie – Sekcja 06 | 2026-12-03 → 2026-12-11 (+8d) | 2026-12-08 → 2026-12-16 (+8d) |  | 307.4d → 352d |
| SEKCJA 07 | **Sekcja 07** |  | 2026-12-08 → 2026-12-16 (+8d) |  |  |
| 11XQ69-052 | Monta¿ ruroci¹gów – Sekcja 07 | 2026-10-30 → 2026-11-09 (+10d) | 2026-11-24 → 2026-12-02 (+8d) |  | 307.5d → 352.1d |
| 11XQ69-053 | Próba ciœnieniowa – Sekcja 07 | 2026-11-25 → 2026-12-03 (+8d) | 2026-11-27 → 2026-12-07 (+10d) |  | 307.5d → 352.1d |
| 11XQ69-054 | Izolacje – Sekcja 07 | 2026-11-30 → 2026-12-08 (+8d) | 2026-12-04 → 2026-12-14 (+10d) |  | 307.5d → 352.1d |
| 11XQ69-055 | Malowanie i oznakowanie – Sekcja 07 | 2026-12-01 → 2026-12-09 (+8d) | 2026-12-08 → 2026-12-16 (+8d) |  | 307.5d → 352.1d |
| SEKCJA 08 | **Sekcja 08** |  | 2026-11-19 → 2026-11-27 (+8d) |  |  |
| 11XQ69-057 | Monta¿ ruroci¹gów – Sekcja 08 | 2026-10-23 → 2026-11-02 (+10d) | 2026-10-30 → 2026-11-09 (+10d) |  | 320.1d → 364.7d |
| 11XQ69-058 | Próba ciœnieniowa – Sekcja 08 | 2026-11-02 → 2026-11-10 (+8d) | 2026-11-06 → 2026-11-16 (+10d) |  | 320.1d → 364.7d |
| 11XQ69-059 | Izolacje – Sekcja 08 | 2026-11-09 → 2026-11-17 (+8d) | 2026-11-17 → 2026-11-25 (+8d) |  | 320.1d → 364.7d |
| 11XQ69-060 | Malowanie i oznakowanie – Sekcja 08 | 2026-11-13 → 2026-11-23 (+10d) | 2026-11-19 → 2026-11-27 (+8d) |  | 320.1d → 364.7d |
| SEKCJA 09 | **Sekcja 09** |  | 2026-12-16 → 2026-12-24 (+8d) |  |  |
| PODSEKCJA | **Podsekcja 09.A** |  | 2026-12-16 → 2026-12-24 (+8d) |  |  |
| 11XQ69-064 | Monta¿ ruroci¹gów – Sekcja 09 | 2026-10-30 → 2026-11-09 (+10d) | 2026-11-24 → 2026-12-02 (+8d) |  | 301.6d → 346.2d |
| 11XQ69-065 | Próba ciœnieniowa – Sekcja 09 | 2026-11-25 → 2026-12-03 (+8d) | 2026-12-02 → 2026-12-10 (+8d) |  | 301.6d → 346.2d |
| 11XQ69-066 | Izolacje – Sekcja 09 | 2026-12-03 → 2026-12-11 (+8d) | 2026-12-14 → 2026-12-22 (+8d) |  | 301.6d → 346.2d |
| 11XQ69-067 | Malowanie i oznakowanie – Sekcja 09 | 2026-12-15 → 2026-12-23 (+8d) | 2026-12-16 → 2026-12-24 (+8d) |  | 301.6d → 346.2d |
| SEKCJA 10 | **Sekcja 10** |  | 2026-11-11 → 2026-11-19 (+8d) |  |  |
| 11XQ69-069 | Monta¿ ruroci¹gów – Sekcja 10 | 2026-10-19 → 2026-10-27 (+8d) | 2026-10-26 → 2026-11-03 (+8d) |  | 326.3d → 370.9d |
| 11XQ69-070 | Próba ciœnieniowa – Sekcja 10 | 2026-10-27 → 2026-11-04 (+8d) | 2026-11-02 → 2026-11-10 (+8d) |  | 326.3d → 370.9d |
| 11XQ69-071 | Izolacje – Sekcja 10 | 2026-11-03 → 2026-11-11 (+8d) | 2026-11-09 → 2026-11-17 (+8d) |  | 326.3d → 370.9d |
| 11XQ69-072 | Malowanie i oznakowanie – Sekcja 10 | 2026-11-06 → 2026-11-16 (+10d) | 2026-11-11 → 2026-11-19 (+8d) |  | 326.3d → 370.9d |
| SEKCJA 11 | **Sekcja 11** | 2026-04-27 → 2026-04-24 (-3d) | 2026-11-23 → 2026-12-01 (+8d) |  |  |
| 11XQ69-075 | Prefabrykacja ruroci¹gów – Sekcja 11 | 2026-04-27 A → 2026-04-24 A (-3d) | 2026-10-13 → 2026-05-12 A (-154d) | 20% → 100% | 361.5d → none |
| 11XQ69-076 | Monta¿ ruroci¹gów – Sekcja 11 | 2026-10-22 → 2026-10-30 (+8d) | 2026-11-10 → 2026-11-18 (+8d) |  | 265.8d → 310.4d |
| 11XQ69-077 | Próba ciœnieniowa – Sekcja 11 | 2026-11-11 → 2026-11-19 (+8d) | 2026-11-16 → 2026-11-24 (+8d) |  | 265.8d → 310.4d |
| 11XQ69-079 | Malowanie i oznakowanie – Sekcja 11 | 2026-11-13 → 2026-11-23 (+10d) | 2026-11-23 → 2026-12-01 (+8d) |  | 265.8d → 310.4d |
| 11XQ69-078 | Izolacje – Sekcja 11 | 2026-11-17 → 2026-11-25 (+8d) | 2026-11-19 → 2026-11-27 (+8d) |  | 265.8d → 310.4d |
| SEKCJA 12 | **Sekcja 12** |  | 2026-12-11 → 2026-12-22 (+11d) |  |  |
| PODSEKCJA | **Podsekcja 12.A** |  | 2026-12-11 → 2026-12-22 (+11d) |  |  |
| 11XQ69-081 | Monta¿ ruroci¹gów – Sekcja 12 | 2026-10-23 → 2026-11-02 (+10d) | 2026-11-17 → 2026-11-26 (+9d) |  | 251d → 295.6d |
| 11XQ69-082 | Próba ciœnieniowa – Sekcja 12 | 2026-11-18 → 2026-11-27 (+9d) | 2026-11-25 → 2026-12-04 (+9d) |  | 251d → 295.6d |
| 11XQ69-083 | Izolacje – Sekcja 12 | 2026-11-26 → 2026-12-07 (+11d) | 2026-12-09 → 2026-12-18 (+9d) |  | 251d → 295.6d |
| 11XQ69-084 | Malowanie i oznakowanie – Sekcja 12 | 2026-12-07 → 2026-12-16 (+9d) | 2026-12-11 → 2026-12-22 (+11d) |  | 251d → 295.6d |
| ROZR | **Rozruch** | 2026-12-14 → 2027-01-27 (+44d) | 2027-02-11 → 2027-03-29 (+46d) |  |  |
| ROZRUCH | **Rozruch** | 2026-12-14 → 2027-01-27 (+44d) | 2027-02-11 → 2027-03-29 (+46d) |  |  |
| 11XQ69-089 | Przegl¹d gotowoœci do rozruchu | 2026-12-14 → 2027-01-27 (+44d) | 2026-12-23 → 2027-02-05 (+44d) |  | 251d → 269.8d |
| 11XQ69-090 | Rozruch na zimno | 2026-12-24 → 2027-02-08 (+46d) | 2027-01-11 → 2027-02-24 (+44d) |  | 251d → 269.8d |
| 11XQ69-091 | Rozruch na gor¹co / próby ruchowe | 2027-01-12 → 2027-02-25 (+44d) | 2027-02-10 → 2027-03-26 (+44d) |  | 251d → 269.8d |
| 11XQ69-092 | KM: Odbiór koñcowy – Zasilanie awaryjne | 2027-02-11 → 2027-03-29 (+46d) | 2027-02-11 → 2027-03-29 (+46d) |  | 251d → 269.8d |
| ZAKU | **Zakupy** |  | 2026-10-16 → 2026-10-26 (+10d) |  |  |
| DOSTAWY | **Dostawy** |  | 2026-10-16 → 2026-10-26 (+10d) |  |  |
| 11XQ69-010 | Transport i dostawa na plac budowy | 2026-09-24 A → 2026-09-21 A (-3d) | 2026-10-15 → 2026-10-23 (+8d) | 62% → 58% | 234.7d → 288.4d |
| 11XQ69-011 | KM: Dostawa na budowê – Zasilanie awaryjne | 2026-10-16 → 2026-10-26 (+10d) | 2026-10-16 → 2026-10-26 (+10d) |  | 251d → 295.6d |
| 14WE74 | **14WE74 – Uk³ady wyprowadzenia mocy** |  | 2027-08-16 → 2027-10-05 (+50d) |  |  |
| BUDO | **Budowa** |  | 2027-07-21 → 2027-09-03 (+44d) |  |  |
| AKPIA | **AKPiA** | 2027-05-24 → 2026-11-03 (-202d) | 2027-06-17 → 2026-11-27 (-202d) |  |  |
| 14WE74-111 | Monta¿ uk³adów AKPiA | 2027-05-24 → 2026-11-03 (-202d) | 2027-06-17 → 2026-11-27 (-202d) |  | 137.3d → 332.6d |
| ELEKTRYKA | **Elektryka** | 2027-05-28 → 2026-11-09 (-200d) | 2027-06-24 → 2027-07-19 (+25d) |  |  |
| 14WE74-026 | Pod³¹czenia i pomiary – trasa 02 | 2027-05-28 → 2026-11-09 (-200d) | 2027-06-07 → 2026-11-17 (-202d) |  | 145.3d → 340.6d |
| 14WE74-025 | Uk³adanie kabli – trasa 02 | 2027-05-31 → 2026-11-10 (-202d) | 2027-06-07 → 2026-11-17 (-202d) |  | 145.3d → 340.6d |
| 14WE74-037 | Uk³adanie kabli – trasa 04 | 2027-05-31 → 2026-11-10 (-202d) | 2027-06-24 → 2026-12-04 (-202d) |  | 165.3d → 360.6d |
| 14WE74-049 | Uk³adanie kabli – trasa 06 | 2027-05-31 → 2026-11-10 (-202d) | 2027-06-15 → 2026-11-25 (-202d) |  | 172.3d → 367.6d |
| 14WE74-061 | Uk³adanie kabli – trasa 08 | 2027-05-31 → 2026-11-10 (-202d) | 2027-06-14 → 2026-11-24 (-202d) |  | 173.3d → 368.6d |
| 14WE74-073 | Uk³adanie kabli – trasa 10 | 2027-05-31 → 2026-11-10 (-202d) | 2027-06-23 → 2026-12-03 (-202d) |  | 166.3d → 361.6d |
| 14WE74-085 | Uk³adanie kabli – trasa 12 | 2027-05-31 → 2026-11-10 (-202d) | 2027-06-15 → 2026-11-25 (-202d) |  | 172.3d → 367.6d |

| ID | Task | Start | Finish | Total float |
| --- | --- | --- | --- | --- |
| 14WE74-097 | Uk³adanie kabli – trasa 14 | 2027-05-31 → 2026-11-10 (-202d) | 2027-06-09 → 2026-11-19 (-202d) | 176.3d → 371.6d |
| 14WE74-109 | Uk³adanie kabli – trasa 16 | 2027-05-31 → 2026-11-10 (-202d) | 2027-06-08 → 2026-11-18 (-202d) | 144.3d → 339.6d |
| 14WE74-110 | Pod³¹czenia i pomiary – trasa 16 | 2027-06-03 → 2026-11-13 (-202d) | 2027-06-08 → 2026-11-18 (-202d) | 144.3d → 339.6d |
| 14WE74-050 | Pod³¹czenia i pomiary – trasa 06 | 2027-06-07 → 2026-11-17 (-202d) | 2027-06-15 → 2026-11-25 (-202d) | 172.3d → 367.6d |
| 14WE74-098 | Pod³¹czenia i pomiary – trasa 14 | 2027-06-07 → 2026-11-17 (-202d) | 2027-06-09 → 2026-11-19 (-202d) | 176.3d → 371.6d |
| 14WE74-062 | Pod³¹czenia i pomiary – trasa 08 | 2027-06-10 → 2026-11-20 (-202d) | 2027-06-14 → 2026-11-24 (-202d) | 173.3d → 368.6d |
| 14WE74-086 | Pod³¹czenia i pomiary – trasa 12 | 2027-06-10 → 2026-11-20 (-202d) | 2027-06-15 → 2026-11-25 (-202d) | 172.3d → 367.6d |
| 14WE74-074 | Pod³¹czenia i pomiary – trasa 10 | 2027-06-15 → 2026-11-25 (-202d) | 2027-06-23 → 2026-12-03 (-202d) | 166.3d → 361.6d |
| 14WE74-038 | Pod³¹czenia i pomiary – trasa 04 | 2027-06-16 → 2027-07-09 (+23d) | 2027-06-24 → 2027-07-19 (+25d) | 165.3d → 199.6d |
| MONTA¯ | **Monta¿** |  | 2027-07-01 → 2026-12-11 (-202d) |  |
| 14WE74-014 | Monta¿ urz¹dzeñ g³ównych | 2027-05-17 → 2026-10-27 (-202d) | 2027-06-30 → 2026-12-10 (-202d) | 119.4d → 314.7d |
| 14WE74-112 | KM: Zakoñczenie monta¿u – Uk³ady wyprowadzenia mocy | 2027-07-01 → 2026-12-11 (-202d) | 2027-07-01 → 2026-12-11 (-202d) | 128.3d → 323.6d |
| RUROCI¥GI | **Ruroci¹gi** |  | 2027-07-21 → 2027-09-03 (+44d) |  |
| SEKCJA 01 | **Sekcja 01** |  | 2027-07-13 → 2027-07-26 (+13d) |  |
| 14WE74-016 | Monta¿ ruroci¹gów – Sekcja 01 | 2027-05-20 → 2027-06-03 (+14d) | 2027-06-21 → 2027-07-02 (+11d) | 119.4d → 160.7d |
| 14WE74-017 | Próba ciœnieniowa – Sekcja 01 | 2027-06-22 → 2027-07-05 (+13d) | 2027-06-25 → 2027-07-08 (+13d) | 119.4d → 160.7d |
| 14WE74-018 | Izolacje – Sekcja 01 | 2027-06-28 → 2027-07-09 (+11d) | 2027-07-09 → 2027-07-22 (+13d) | 119.4d → 160.7d |
| 14WE74-019 | Malowanie i oznakowanie – Sekcja 01 | 2027-07-05 → 2027-07-16 (+11d) | 2027-07-13 → 2027-07-26 (+13d) | 119.4d → 160.7d |
| SEKCJA 02 | **Sekcja 02** |  | 2027-06-30 → 2026-12-10 (-202d) |  |
| 14WE74-021 | Monta¿ ruroci¹gów – Sekcja 02 | 2027-05-19 → 2026-10-29 (-202d) | 2027-06-14 → 2026-11-24 (-202d) | 128.2d → 323.5d |
| 14WE74-022 | Próba ciœnieniowa – Sekcja 02 | 2027-06-15 → 2026-11-25 (-202d) | 2027-06-17 → 2026-11-27 (-202d) | 128.2d → 323.5d |
| 14WE74-023 | Izolacje – Sekcja 02 | 2027-06-18 → 2026-11-30 (-200d) | 2027-06-28 → 2026-12-08 (-202d) | 128.2d → 323.5d |
| 14WE74-024 | Malowanie i oznakowanie – Sekcja 02 | 2027-06-25 → 2026-12-07 (-200d) | 2027-06-30 → 2026-12-10 (-202d) | 128.2d → 323.5d |
| SEKCJA 03 | **Sekcja 03** |  | 2027-06-22 → 2026-12-01 (-203d) |  |
| PODSEKCJA | **Podsekcja 03.A** |  | 2027-06-22 → 2026-12-01 (-203d) |  |
| 14WE74-028 | Monta¿ ruroci¹gów – Sekcja 03 | 2027-05-24 → 2026-11-03 (-202d) | 2027-06-02 → 2026-11-11 (-203d) | 167.8d → 363.1d |
| 14WE74-029 | Próba ciœnieniowa – Sekcja 03 | 2027-06-03 → 2026-11-12 (-203d) | 2027-06-10 → 2026-11-19 (-203d) | 167.8d → 363.1d |
| 14WE74-030 | Izolacje – Sekcja 03 | 2027-06-11 → 2026-11-20 (-203d) | 2027-06-18 → 2026-11-27 (-203d) | 167.8d → 363.1d |
| 14WE74-031 | Malowanie i oznakowanie – Sekcja 03 | 2027-06-16 → 2026-11-25 (-203d) | 2027-06-22 → 2026-12-01 (-203d) | 167.8d → 363.1d |
| SEKCJA 04 | **Sekcja 04** |  | 2027-07-13 → 2026-12-23 (-202d) |  |
| 14WE74-033 | Monta¿ ruroci¹gów – Sekcja 04 | 2027-05-31 → 2026-11-10 (-202d) | 2027-06-29 → 2026-12-09 (-202d) | 152.2d → 347.5d |
| 14WE74-034 | Próba ciœnieniowa – Sekcja 04 | 2027-06-30 → 2026-12-10 (-202d) | 2027-07-01 → 2026-12-11 (-202d) | 152.2d → 347.5d |
| 14WE74-035 | Izolacje – Sekcja 04 | 2027-07-02 → 2026-12-14 (-200d) | 2027-07-09 → 2026-12-21 (-200d) | 152.2d → 347.5d |
| 14WE74-036 | Malowanie i oznakowanie – Sekcja 04 | 2027-07-09 → 2026-12-21 (-200d) | 2027-07-13 → 2026-12-23 (-202d) | 152.2d → 347.5d |
| SEKCJA 05 | **Sekcja 05** |  | 2027-07-08 → 2026-12-17 (-203d) |  |
| 14WE74-040 | Monta¿ ruroci¹gów – Sekcja 05 | 2027-05-20 → 2026-10-30 (-202d) | 2027-06-16 → 2026-11-25 (-203d) | 155.6d → 350.9d |
| 14WE74-041 | Próba ciœnieniowa – Sekcja 05 | 2027-06-17 → 2026-11-26 (-203d) | 2027-06-18 → 2026-11-27 (-203d) | 155.6d → 350.9d |
| 14WE74-042 | Izolacje – Sekcja 05 | 2027-06-21 → 2026-11-30 (-203d) | 2027-07-06 → 2026-12-15 (-203d) | 155.6d → 350.9d |
| 14WE74-043 | Malowanie i oznakowanie – Sekcja 05 | 2027-07-01 → 2026-12-10 (-203d) | 2027-07-08 → 2026-12-17 (-203d) | 155.6d → 350.9d |
| SEKCJA 06 | **Sekcja 06** |  | 2027-07-09 → 2026-12-21 (-200d) |  |
| PODSEKCJA | **Podsekcja 06.A** |  | 2027-07-09 → 2026-12-21 (-200d) |  |
| 14WE74-045 | Monta¿ ruroci¹gów – Sekcja 06 | 2027-05-31 → 2026-11-10 (-202d) | 2027-06-21 → 2026-12-01 (-202d) | 154.2d → 349.5d |
| 14WE74-046 | Próba ciœnieniowa – Sekcja 06 | 2027-06-22 → 2026-12-02 (-202d) | 2027-06-23 → 2026-12-03 (-202d) | 154.2d → 349.5d |
| 14WE74-047 | Izolacje – Sekcja 06 | 2027-06-24 → 2026-12-04 (-202d) | 2027-07-07 → 2026-12-17 (-202d) | 154.2d → 349.5d |
| 14WE74-048 | Malowanie i oznakowanie – Sekcja 06 | 2027-07-05 → 2026-12-15 (-202d) | 2027-07-09 → 2026-12-21 (-200d) | 154.2d → 349.5d |
| SEKCJA 07 | **Sekcja 07** |  | 2027-06-24 → 2027-07-02 (+8d) |  |
| 14WE74-052 | Monta¿ ruroci¹gów – Sekcja 07 | 2027-05-27 → 2026-11-06 (-202d) | 2027-06-11 → 2026-11-23 (-200d) | 165d → 360.3d |
| 14WE74-053 | Próba ciœnieniowa – Sekcja 07 | 2027-06-14 → 2026-11-24 (-202d) | 2027-06-15 → 2026-11-25 (-202d) | 165d → 360.3d |
| 14WE74-055 | Malowanie i oznakowanie – Sekcja 07 | 2027-06-15 → 2027-06-23 (+8d) | 2027-06-24 → 2027-07-02 (+8d) | 165d → 210.6d |
| 14WE74-054 | Izolacje – Sekcja 07 | 2027-06-16 → 2027-06-24 (+8d) | 2027-06-22 → 2027-06-30 (+8d) | 165d → 210.6d |
| SEKCJA 08 | **Sekcja 08** |  | 2027-07-19 → 2026-12-29 (-202d) |  |
| 14WE74-057 | Monta¿ ruroci¹gów – Sekcja 08 | 2027-05-31 → 2026-11-10 (-202d) | 2027-07-01 → 2026-12-11 (-202d) | 148d → 343.3d |
| 14WE74-058 | Próba ciœnieniowa – Sekcja 08 | 2027-07-02 → 2026-12-14 (-200d) | 2027-07-05 → 2026-12-15 (-202d) | 148d → 343.3d |
| 14WE74-059 | Izolacje – Sekcja 08 | 2027-07-06 → 2026-12-16 (-202d) | 2027-07-15 → 2026-12-25 (-202d) | 148d → 343.3d |
| 14WE74-060 | Malowanie i oznakowanie – Sekcja 08 | 2027-07-16 → 2026-12-28 (-200d) | 2027-07-19 → 2026-12-29 (-202d) | 148d → 343.3d |
| SEKCJA 09 | **Sekcja 09** |  | 2027-07-21 → 2027-08-05 (+15d) |  |
| PODSEKCJA | **Podsekcja 09.A** |  | 2027-07-21 → 2027-08-05 (+15d) |  |
| 14WE74-064 | Monta¿ ruroci¹gów – Sekcja 09 | 2027-05-25 → 2026-11-04 (-202d) | 2027-06-28 → 2026-12-07 (-203d) | 146.7d → 342d |
| 14WE74-065 | Próba ciœnieniowa – Sekcja 09 | 2027-06-29 → 2027-07-14 (+15d) | 2027-07-05 → 2027-07-20 (+15d) | 146.7d → 186.6d |
| 14WE74-066 | Izolacje – Sekcja 09 | 2027-07-06 → 2027-07-21 (+15d) | 2027-07-19 → 2027-08-03 (+15d) | 146.7d → 186.6d |
| 14WE74-067 | Malowanie i oznakowanie – Sekcja 09 | 2027-07-19 → 2027-08-03 (+15d) | 2027-07-21 → 2027-08-05 (+15d) | 146.7d → 186.6d |
| SEKCJA 10 | **Sekcja 10** |  | 2027-07-01 → 2026-12-11 (-202d) |  |
| 14WE74-069 | Monta¿ ruroci¹gów – Sekcja 10 | 2027-05-28 → 2026-11-09 (-200d) | 2027-06-15 → 2026-11-25 (-202d) | 160.2d → 355.5d |
| 14WE74-070 | Próba ciœnieniowa – Sekcja 10 | 2027-06-16 → 2026-11-26 (-202d) | 2027-06-23 → 2026-12-03 (-202d) | 160.2d → 355.5d |
| 14WE74-071 | Izolacje – Sekcja 10 | 2027-06-24 → 2026-12-04 (-202d) | 2027-06-29 → 2026-12-09 (-202d) | 160.2d → 355.5d |
| 14WE74-072 | Malowanie i oznakowanie – Sekcja 10 | 2027-06-25 → 2026-12-07 (-200d) | 2027-07-01 → 2026-12-11 (-202d) | 160.2d → 355.5d |
| SEKCJA 11 | **Sekcja 11** |  | 2027-07-13 → 2027-09-03 (+52d) |  |
| 14WE74-076 | Monta¿ ruroci¹gów – Sekcja 11 | 2027-05-31 → 2027-07-22 (+52d) | 2027-06-23 → 2027-08-16 (+54d) | 152d → 165.3d |
| 14WE74-077 | Próba ciœnieniowa – Sekcja 11 | 2027-06-24 → 2027-08-17 (+54d) | 2027-06-25 → 2027-08-18 (+54d) | 152d → 165.3d |
| 14WE74-078 | Izolacje – Sekcja 11 | 2027-06-28 → 2027-08-19 (+52d) | 2027-07-09 → 2027-09-01 (+54d) | 152d → 165.3d |

| ID | Task | Start | Finish | Complete | Total float |
| --- | --- | --- | --- | --- | --- |
| 14WE74-079 | Malowanie i oznakowanie – Sekcja 11 | 2027-07-08 → 2027-08-31 (+54d) | 2027-07-13 → 2027-09-03 (+52d) |  | 152d → 165.3d |
| SEKCJA 12 | **Sekcja 12** |  | 2027-07-02 → 2026-12-14 (-200d) |  |  |
| PODSEKCJA | **Podsekcja 12.A** |  | 2027-07-02 → 2026-12-14 (-200d) |  |  |
| 14WE74-081 | Monta¿ ruroci¹gów – Sekcja 12 | 2027-05-31 → 2026-11-10 (-202d) | 2027-06-10 → 2026-11-20 (-202d) |  | 159d → 354.3d |
| 14WE74-082 | Próba ciœnieniowa – Sekcja 12 | 2027-06-11 → 2026-11-23 (-200d) | 2027-06-14 → 2026-11-24 (-202d) |  | 159d → 354.3d |
| 14WE74-083 | Izolacje – Sekcja 12 | 2027-06-15 → 2026-11-25 (-202d) | 2027-06-30 → 2026-12-10 (-202d) |  | 159d → 354.3d |
| 14WE74-084 | Malowanie i oznakowanie – Sekcja 12 | 2027-06-28 → 2026-12-08 (-202d) | 2027-07-02 → 2026-12-14 (-200d) |  | 159d → 354.3d |
| SEKCJA 13 | **Sekcja 13** |  | 2027-06-29 → 2026-12-08 (-203d) |  |  |
| 14WE74-088 | Monta¿ ruroci¹gów – Sekcja 13 | 2027-05-18 → 2026-10-28 (-202d) | 2027-06-10 → 2026-11-19 (-203d) |  | 162.5d → 357.8d |
| 14WE74-089 | Próba ciœnieniowa – Sekcja 13 | 2027-06-11 → 2026-11-20 (-203d) | 2027-06-17 → 2026-11-26 (-203d) |  | 162.5d → 357.8d |
| 14WE74-090 | Izolacje – Sekcja 13 | 2027-06-18 → 2026-11-27 (-203d) | 2027-06-25 → 2026-12-04 (-203d) |  | 162.5d → 357.8d |
| 14WE74-091 | Malowanie i oznakowanie – Sekcja 13 | 2027-06-23 → 2026-12-02 (-203d) | 2027-06-29 → 2026-12-08 (-203d) |  | 162.5d → 357.8d |
| SEKCJA 14 | **Sekcja 14** |  | 2027-06-23 → 2026-12-02 (-203d) |  |  |
| 14WE74-093 | Monta¿ ruroci¹gów – Sekcja 14 | 2027-05-21 → 2026-11-02 (-200d) | 2027-06-02 → 2026-11-11 (-203d) |  | 166.6d → 361.9d |
| 14WE74-094 | Próba ciœnieniowa – Sekcja 14 | 2027-06-03 → 2026-11-12 (-203d) | 2027-06-07 → 2026-11-16 (-203d) |  | 166.6d → 361.9d |
| 14WE74-095 | Izolacje – Sekcja 14 | 2027-06-08 → 2026-11-17 (-203d) | 2027-06-21 → 2026-11-30 (-203d) |  | 166.6d → 361.9d |
| 14WE74-096 | Malowanie i oznakowanie – Sekcja 14 | 2027-06-22 → 2026-12-01 (-203d) | 2027-06-23 → 2026-12-02 (-203d) |  | 166.6d → 361.9d |
| SEKCJA 15 | **Sekcja 15** |  | 2027-06-11 → 2026-11-20 (-203d) |  |  |
| PODSEKCJA | **Podsekcja 15.A** |  | 2027-06-11 → 2026-11-20 (-203d) |  |  |
| 14WE74-100 | Monta¿ ruroci¹gów – Sekcja 15 | 2027-05-24 → 2026-11-03 (-202d) | 2027-06-01 → 2026-11-10 (-203d) |  | 141.9d → 337.2d |
| 14WE74-101 | Próba ciœnieniowa – Sekcja 15 | 2027-06-02 → 2026-11-11 (-203d) | 2027-06-04 → 2026-11-13 (-203d) |  | 141.9d → 337.2d |
| 14WE74-102 | Izolacje – Sekcja 15 | 2027-06-07 → 2026-11-16 (-203d) | 2027-06-09 → 2026-11-18 (-203d) |  | 141.9d → 337.2d |
| 14WE74-103 | Malowanie i oznakowanie – Sekcja 15 | 2027-06-07 → 2026-11-16 (-203d) | 2027-06-11 → 2026-11-20 (-203d) |  | 141.9d → 337.2d |
| SEKCJA 16 | **Sekcja 16** | 2026-03-02 → 2026-03-04 (+2d) | 2027-06-22 → 2026-12-01 (-203d) |  |  |
| 14WE74-104 | Prefabrykacja ruroci¹gów – Sekcja 16 | 2026-03-02 A → 2026-03-04 A (+2d) | 2026-10-12 → 2026-03-24 A (-202d) | 30% → 100% | 442.4d → none |
| 14WE74-105 | Monta¿ ruroci¹gów – Sekcja 16 | 2027-05-24 → 2026-11-03 (-202d) | 2027-06-01 → 2026-11-10 (-203d) |  | 134.8d → 330.1d |
| 14WE74-106 | Próba ciœnieniowa – Sekcja 16 | 2027-06-02 → 2026-11-11 (-203d) | 2027-06-04 → 2026-11-13 (-203d) |  | 134.8d → 330.1d |
| 14WE74-107 | Izolacje – Sekcja 16 | 2027-06-07 → 2026-11-16 (-203d) | 2027-06-18 → 2026-11-27 (-203d) |  | 134.8d → 330.1d |
| 14WE74-108 | Malowanie i oznakowanie – Sekcja 16 | 2027-06-18 → 2026-11-27 (-203d) | 2027-06-22 → 2026-12-01 (-203d) |  | 134.8d → 330.1d |
| PROJ | **Projektowanie** |  | 2026-09-30 → 2025-06-16 (-471d) |  |  |
| DOKUMENTAC | **Dokumentacja** |  | 2026-09-30 → 2025-06-16 (-471d) |  |  |
| 14WE74-004 | KM: Dokumentacja zatwierdzona – Uk³ady wyprowadzenia mocy | 2026-09-30 → 2025-06-11 A (-476d) | 2026-09-30 → 2025-06-11 (-476d) | 0% → 100% | -16d → none |
| ROZR | **Rozruch** | 2027-07-14 → 2027-07-27 (+13d) | 2027-08-16 → 2027-10-05 (+50d) |  |  |
| ROZRUCH | **Rozruch** | 2027-07-14 → 2027-07-27 (+13d) | 2027-08-16 → 2027-10-05 (+50d) |  |  |
| 14WE74-113 | Przegl¹d gotowoœci do rozruchu | 2027-07-14 → 2027-07-27 (+13d) | 2027-07-16 → 2027-07-29 (+13d) |  | 119.4d → 160.7d |
| 14WE74-114 | Rozruch na zimno | 2027-07-19 → 2027-09-07 (+50d) | 2027-07-27 → 2027-09-15 (+50d) |  | 119.4d → 134.6d |
| 14WE74-115 | Rozruch na gor¹co / próby ruchowe | 2027-07-28 → 2027-09-16 (+50d) | 2027-08-13 → 2027-10-04 (+52d) |  | 119.4d → 134.6d |
| 14WE74-116 | KM: Odbiór koñcowy – Uk³ady wyprowadzenia mocy | 2027-08-16 → 2027-10-05 (+50d) | 2027-08-16 → 2027-10-05 (+50d) |  | 119.4d → 134.6d |
| ZAKU | **Zakupy** |  | 2027-05-17 → 2026-10-27 (-202d) |  |  |
| DOSTAWY | **Dostawy** | 2025-09-22 → 2025-09-19 (-3d) | 2027-05-17 → 2026-10-27 (-202d) |  |  |
| 14WE74-008 | Produkcja u dostawcy | 2025-09-22 A → 2025-09-19 A (-3d) | 2027-04-21 → 2026-10-06 A (-197d) | 46% → 100% | 260d → none |
| 14WE74-009 | Testy FAT | 2027-04-22 → 2026-10-06 A (-198d) | 2027-04-27 → 2026-10-07 (-202d) | 0% → 75% | 119.4d → 312.7d |
| 14WE74-010 | Transport i dostawa na plac budowy | 2027-04-28 → 2026-10-08 (-202d) | 2027-05-14 → 2026-10-26 (-200d) |  | 119.4d → 314.7d |
| 14WE74-011 | KM: Dostawa na budowê – Uk³ady wyprowadzenia mocy | 2027-05-17 → 2026-10-27 (-202d) | 2027-05-17 → 2026-10-27 (-202d) |  | 119.4d → 314.7d |
| 16TC84 | **16TC84 – Rozdzielnia SN** |  | 2026-10-26 → 2026-10-28 (+2d) |  |  |
| BUDO | **Budowa** |  | 2026-10-13 → 2026-08-26 (-48d) |  |  |
| ELEKTRYKA | **Elektryka** | 2026-03-09 → 2026-03-06 (-3d) | 2026-10-05 → 2026-04-09 (-179d) |  |  |
| 16TC84-038 | Pod³¹czenia i pomiary – trasa 04 | 2026-03-11 A → 2026-03-06 A (-5d) | 2026-10-05 → 2026-03-19 A (-200d) | 44% → 100% | 494.9d → none |
| 16TC84-074 | Pod³¹czenia i pomiary – trasa 10 | 2026-03-17 A → 2026-03-20 A (+3d) | 2026-09-30 → 2026-03-27 A (-187d) | 67% → 100% | 495.9d → none |
| 16TC84-086 | Pod³¹czenia i pomiary – trasa 12 | 2026-03-27 A → 2026-03-20 A (-7d) | 2026-10-01 → 2026-03-31 A (-184d) | 55% → 100% | 484.9d → none |
| MONTA¯ | **Monta¿** |  | 2026-09-30 → 2026-08-25 (-36d) |  |  |
| 16TC84-160 | KM: Zakoñczenie monta¿u – Rozdzielnia SN | 2026-09-30 → 2026-08-25 A (-36d) | 2026-09-30 → 2026-08-25 (-36d) | 0% → 100% | 307.9d → none |
| RUROCI¥GI | **Ruroci¹gi** |  | 2026-10-13 → 2026-08-26 (-48d) |  |  |
| SEKCJA 02 | **Sekcja 02** |  | 2026-09-30 → 2026-04-17 (-166d) |  |  |
| 16TC84-023 | Izolacje – Sekcja 02 | 2026-04-13 A → 2026-04-09 A (-4d) | 2026-09-30 → 2026-04-16 A (-167d) | 82% → 100% | 421.1d → none |
| SEKCJA 07 | **Sekcja 07** |  | 2026-10-01 → 2026-05-04 (-150d) |  |  |
| 16TC84-053 | Próba ciœnieniowa – Sekcja 07 | 2026-04-09 A → 2026-04-07 A (-2d) | 2026-10-01 → 2026-04-15 A (-169d) | 48% → 100% | 462.8d → none |
| 16TC84-054 | Izolacje – Sekcja 07 | 2026-04-15 A → 2026-04-16 A (+1d) | 2026-09-30 → 2026-05-04 A (-149d) | 88% → 100% | 463.8d → none |
| SEKCJA 08 | **Sekcja 08** |  | 2026-09-30 → 2026-04-03 (-180d) |  |  |
| 16TC84-060 | Malowanie i oznakowanie – Sekcja 08 | 2026-04-02 A → 2026-03-30 A (-3d) | 2026-09-30 → 2026-04-03 A (-180d) | 65% → 100% | 482.4d → none |
| SEKCJA 09 | **Sekcja 09** |  | 2026-09-30 → 2026-04-10 (-173d) |  |  |
| PODSEKCJA | **Podsekcja 09.A** |  | 2026-09-30 → 2026-04-10 (-173d) |  |  |
| 16TC84-066 | Izolacje – Sekcja 09 |  | 2026-09-30 → 2026-04-10 A (-173d) | 80% → 100% | 480.7d → none |
| SEKCJA 10 | **Sekcja 10** | 2026-03-06 → 2026-03-04 (-2d) | 2026-10-02 → 2026-04-29 (-156d) |  |  |
| 16TC84-068 | Prefabrykacja ruroci¹gów – Sekcja 10 | 2026-03-06 A → 2026-03-04 A (-2d) | 2026-10-02 → 2026-03-13 A (-203d) | 56% → 100% | 332.4d → none |
| SEKCJA 11 | **Sekcja 11** |  | 2026-09-30 → 2026-04-24 (-159d) |  |  |
| 16TC84-078 | Izolacje – Sekcja 11 | 2026-04-13 A → 2026-04-15 A (+2d) | 2026-09-30 → 2026-04-24 A (-159d) | 76% → 100% | 472.9d → none |
| SEKCJA 12 | **Sekcja 12** |  | 2026-09-30 → 2026-05-12 (-141d) |  |  |
| PODSEKCJA | **Podsekcja 12.A** |  | 2026-09-30 → 2026-05-12 (-141d) |  |  |
| 16TC84-084 | Malowanie i oznakowanie – Sekcja 12 | 2026-05-06 A → 2026-05-04 A (-2d) | 2026-09-30 → 2026-05-08 A (-145d) | 62% → 100% | 458.3d → none |

| ID | Task | Start | Finish | Complete | Total float |
| --- | --- | --- | --- | --- | --- |
| SEKCJA 13 | **Sekcja 13** |  | 2026-10-09 → 2026-06-04 (-127d) |  |  |
| 16TC84-090 | Izolacje – Sekcja 13 | 2026-05-21 A → 2026-05-18 A (-3d) | 2026-10-09 → 2026-05-29 A (-133d) | 11% → 100% | 439.2d → none |
| 16TC84-091 | Malowanie i oznakowanie – Sekcja 13 | 2026-05-27 A → 2026-05-26 A (-1d) | 2026-10-07 → 2026-06-04 A (-125d) | 11% → 100% | 440.2d → none |
| SEKCJA 16 | **Sekcja 16** |  | 2026-10-07 → 2026-05-28 (-132d) |  |  |
| 16TC84-107 | Izolacje – Sekcja 16 | 2026-05-15 A → 2026-05-14 A (-1d) | 2026-10-07 → 2026-05-26 A (-134d) | 19% → 100% | 445.4d → none |
| SEKCJA 17 | **Sekcja 17** |  | 2026-10-13 → 2026-07-06 (-99d) |  |  |
| 16TC84-111 | Prefabrykacja ruroci¹gów – Sekcja 17 |  | 2026-10-13 → 2026-05-13 A (-153d) | 22% → 100% | 332.4d → none |
| 16TC84-115 | Malowanie i oznakowanie – Sekcja 17 | 2026-07-01 A → 2026-06-30 A (-1d) | 2026-09-30 → 2026-07-06 A (-86d) | 57% → 100% | 419.4d → none |
| SEKCJA 20 | **Sekcja 20** |  | 2026-10-01 → 2026-07-16 (-77d) |  |  |
| 16TC84-132 | Malowanie i oznakowanie – Sekcja 20 | 2026-07-13 A → 2026-07-07 A (-6d) | 2026-10-01 → 2026-07-09 A (-84d) | 13% → 100% | 411.9d → none |
| SEKCJA 21 | **Sekcja 21** |  | 2026-10-01 → 2026-07-23 (-70d) |  |  |
| PODSEKCJA | **Podsekcja 21.A** |  | 2026-10-01 → 2026-07-23 (-70d) |  |  |
| 16TC84-139 | Malowanie i oznakowanie – Sekcja 21 | 2026-07-06 A → 2026-07-09 A (+3d) | 2026-10-01 → 2026-07-23 A (-70d) | 75% → 100% | 411.4d → none |
| ROZR | **Rozruch** |  | 2026-10-26 → 2026-10-28 (+2d) |  |  |
| ROZRUCH | **Rozruch** |  | 2026-10-26 → 2026-10-28 (+2d) |  |  |
| 16TC84-163 | Rozruch na gor¹co / próby ruchowe | 2026-09-23 A → 2026-09-22 A (-1d) | 2026-10-23 → 2026-10-27 (+4d) | 16% → 30% | 330.4d → 382.1d |
| 16TC84-164 | KM: Odbiór koñcowy – Rozdzielnia SN | 2026-10-26 → 2026-10-28 (+2d) | 2026-10-26 → 2026-10-28 (+2d) |  | 329.4d → 378.2d |
| ZAKU | **Zakupy** |  | 2026-10-01 → 2026-02-27 (-216d) |  |  |
| ZAMÓWIENIA | **Zamówienia** |  | 2026-10-01 → 2025-10-09 (-357d) |  |  |
| 16TC84-007 | Zawarcie umowy / zamówienie | 2025-09-29 A → 2025-10-01 A (+2d) | 2026-10-01 → 2025-10-09 A (-357d) | 42% → 100% | 332.4d → none |
| 17DY74 | **17DY74 – Uziemienia i ochrona odgromowa** |  | 2026-12-28 → 2027-01-13 (+16d) |  |  |
| BUDO | **Budowa** |  | 2026-11-17 → 2026-12-04 (+17d) |  |  |
| AKPIA | **AKPiA** | 2026-09-29 → 2026-10-07 (+8d) | 2026-10-08 → 2026-10-29 (+21d) |  |  |
| 17DY74-116 | Monta¿ uk³adów AKPiA | 2026-09-29 A → 2026-10-07 (+8d) | 2026-10-08 → 2026-10-29 (+21d) | 54% → 0% | 298.9d → 343.6d |
| 17DY74-098 | Pod³¹czenia i pomiary – trasa 14 | 2026-10-01 → 2026-09-30 A (-1d) | 2026-10-14 → 2026-10-08 (-6d) | 0% → 72% | 346.9d → 398.6d |
| 17DY74-061 | Uk³adanie kabli – trasa 08 | 2026-10-05 → 2026-10-02 A (-3d) | 2026-10-26 → 2026-10-12 (-14d) | 0% → 72% | 338.9d → 390.6d |
| 17DY74-086 | Pod³¹czenia i pomiary – trasa 12 | 2026-09-30 A → 2026-10-02 A (+2d) | 2026-10-06 → 2026-10-12 (+6d) | 34% → 49% | 349.9d → 398.6d |
| 17DY74-097 | Uk³adanie kabli – trasa 14 | 2026-10-05 → 2026-10-02 A (-3d) | 2026-10-14 → 2026-10-15 (+1d) | 0% → 11% | 346.9d → 398.6d |
| 17DY74-025 | Uk³adanie kabli – trasa 02 | 2026-10-05 → 2026-10-06 A (+1d) | 2026-10-28 → 2026-10-19 (-9d) | 0% → 48% | 293.9d → 343.6d |
| 17DY74-085 | Uk³adanie kabli – trasa 12 | 2026-10-05 → 2026-10-06 A (+1d) | 2026-10-12 → 2026-10-08 (-4d) | 0% → 60% | 348.9d → 398.6d |
| 17DY74-037 | Uk³adanie kabli – trasa 04 | 2026-10-05 → 2026-10-07 (+2d) | 2026-10-22 → 2026-10-26 (+4d) |  | 340.9d → 389.6d |
| 17DY74-049 | Uk³adanie kabli – trasa 06 | 2026-10-05 → 2026-10-07 (+2d) | 2026-10-20 → 2026-10-22 (+2d) |  | 342.9d → 391.6d |
| 17DY74-050 | Pod³¹czenia i pomiary – trasa 06 | 2026-10-08 → 2026-10-07 A (-1d) | 2026-10-20 → 2026-10-09 (-11d) | 0% → 59% | 342.9d → 394.6d |
| 17DY74-073 | Uk³adanie kabli – trasa 10 | 2026-10-05 → 2026-10-07 (+2d) | 2026-10-26 → 2026-10-28 (+2d) |  | 338.9d → 387.6d |
| 17DY74-109 | Uk³adanie kabli – trasa 16 | 2026-10-05 → 2026-10-07 A (+2d) | 2026-10-27 → 2026-10-12 (-15d) | 0% → 72% | 294.9d → 343.6d |
| 17DY74-110 | Pod³¹czenia i pomiary – trasa 16 | 2026-10-16 → 2026-10-07 (-9d) | 2026-10-27 → 2026-10-16 (-11d) |  | 294.9d → 352.6d |
| 17DY74-026 | Pod³¹czenia i pomiary – trasa 02 | 2026-10-20 → 2026-10-09 (-11d) | 2026-10-28 → 2026-10-19 (-9d) |  | 293.9d → 351.3d |
| 17DY74-038 | Pod³¹czenia i pomiary – trasa 04 | 2026-10-15 → 2026-10-19 (+4d) | 2026-10-22 → 2026-10-26 (+4d) |  | 340.9d → 389.6d |
| 17DY74-074 | Pod³¹czenia i pomiary – trasa 10 | 2026-10-16 → 2026-10-20 (+4d) | 2026-10-26 → 2026-10-28 (+2d) |  | 338.9d → 387.6d |
| MONTA¯ | **Monta¿** |  | 2026-10-29 → 2026-11-03 (+5d) |  |  |
| 17DY74-014 | Monta¿ urz¹dzeñ g³ównych | 2026-09-21 A → 2026-09-22 A (+1d) | 2026-10-23 → 2026-10-14 (-9d) | 21% → 75% | 271.1d → 320.8d |
| 17DY74-117 | KM: Zakoñczenie monta¿u – Uziemienia i ochrona odgromowa | 2026-10-29 → 2026-11-03 (+5d) | 2026-10-29 → 2026-11-03 (+5d) |  | 293.6d → 341.1d |
| RUROCI¥GI | **Ruroci¹gi** |  | 2026-11-17 → 2026-12-04 (+17d) |  |  |
| SEKCJA 01 | **Sekcja 01** |  | 2026-11-10 → 2026-11-26 (+16d) |  |  |
| 17DY74-016 | Monta¿ ruroci¹gów – Sekcja 01 |  | 2026-10-15 → 2026-11-02 (+18d) | 46% → 18% | 273.1d → 323.8d |
| 17DY74-017 | Próba ciœnieniowa – Sekcja 01 | 2026-10-16 → 2026-11-03 (+18d) | 2026-10-23 → 2026-11-10 (+18d) |  | 284d → 323.1d |
| 17DY74-018 | Izolacje – Sekcja 01 | 2026-10-26 → 2026-11-11 (+16d) | 2026-11-06 → 2026-11-24 (+18d) |  | 284d → 323.1d |
| 17DY74-019 | Malowanie i oznakowanie – Sekcja 01 | 2026-11-04 → 2026-11-20 (+16d) | 2026-11-10 → 2026-11-26 (+16d) |  | 284d → 323.1d |
| SEKCJA 02 | **Sekcja 02** |  | 2026-11-03 → 2026-11-02 (-1d) |  |  |
| 17DY74-021 | Monta¿ ruroci¹gów – Sekcja 02 | 2026-10-05 → 2026-10-07 A (+2d) | 2026-10-16 → 2026-10-15 (-1d) | 0% → 27% | 289.9d → 338.6d |
| 17DY74-022 | Próba ciœnieniowa – Sekcja 02 | 2026-10-19 → 2026-10-16 (-3d) | 2026-10-21 → 2026-10-20 (-1d) |  | 289.9d → 341.3d |
| 17DY74-023 | Izolacje – Sekcja 02 | 2026-10-22 → 2026-10-21 (-1d) | 2026-10-30 → 2026-10-29 (-1d) |  | 289.9d → 341.3d |
| 17DY74-024 | Malowanie i oznakowanie – Sekcja 02 | 2026-11-02 → 2026-10-30 (-3d) | 2026-11-03 → 2026-11-02 (-1d) |  | 289.9d → 341.3d |
| SEKCJA 03 | **Sekcja 03** |  | 2026-10-16 → 2026-10-20 (+4d) |  |  |
| PODSEKCJA | **Podsekcja 03.A** |  | 2026-10-16 → 2026-10-20 (+4d) |  |  |
| 17DY74-028 | Monta¿ ruroci¹gów – Sekcja 03 | 2026-09-17 A → 2026-09-21 A (+4d) | 2026-10-01 → 2026-10-09 (+8d) | 82% → 78% | 342.1d → 390.8d |
| 17DY74-029 | Próba ciœnieniowa – Sekcja 03 | 2026-10-02 → 2026-10-07 A (+5d) | 2026-10-05 → 2026-10-07 (+2d) | 0% → 50% | 344.4d → 392.6d |
| 17DY74-030 | Izolacje – Sekcja 03 | 2026-10-06 → 2026-10-08 (+2d) | 2026-10-14 → 2026-10-16 (+2d) |  | 344.4d → 393.6d |
| 17DY74-031 | Malowanie i oznakowanie – Sekcja 03 | 2026-10-13 → 2026-10-15 (+2d) | 2026-10-16 → 2026-10-20 (+4d) |  | 344.4d → 393.6d |
| 17DY74-033 | Monta¿ ruroci¹gów – Sekcja 04 | 2026-09-28 A → 2026-09-30 A (+2d) | 2026-10-06 A | 24% → 100% | 338.3d → none |
| 17DY74-034 | Próba ciœnieniowa – Sekcja 04 | 2026-10-07 A | 2026-10-08 → 2026-10-07 (-1d) | 0% → 15% | 337.9d → 388.6d |
| SEKCJA 05 | **Sekcja 05** |  | 2026-11-11 → 2026-11-18 (+7d) |  |  |
| 17DY74-040 | Monta¿ ruroci¹gów – Sekcja 05 | 2026-09-18 A → 2026-09-22 A (+4d) | 2026-10-20 → 2026-10-27 (+7d) | 21% → 18% | 330.4d → 379.1d |
| 17DY74-041 | Próba ciœnieniowa – Sekcja 05 | 2026-10-21 → 2026-10-28 (+7d) | 2026-10-27 → 2026-11-03 (+7d) |  | 326.5d → 371.7d |
| 17DY74-042 | Izolacje – Sekcja 05 | 2026-10-28 → 2026-11-04 (+7d) | 2026-11-09 → 2026-11-16 (+7d) |  | 326.5d → 371.7d |
| 17DY74-043 | Malowanie i oznakowanie – Sekcja 05 | 2026-11-10 → 2026-11-17 (+7d) | 2026-11-11 → 2026-11-18 (+7d) |  | 326.5d → 371.7d |
| SEKCJA 06 | **Sekcja 06** |  | 2026-10-21 → 2026-11-09 (+19d) |  |  |
| PODSEKCJA | **Podsekcja 06.A** |  | 2026-10-21 → 2026-11-09 (+19d) |  |  |
| 17DY74-046 | Próba ciœnieniowa – Sekcja 06 |  | 2026-10-05 A | 20% → 100% | 341.3d → none |
| 17DY74-047 | Izolacje – Sekcja 06 | 2026-10-06 A | 2026-10-19 → 2026-10-09 (-10d) | 0% → 69% | 341.9d → 392d |

| ID | Task | Start | Finish | Complete | Total float |
| --- | --- | --- | --- | --- | --- |
| 17DY74-048 | Malowanie i oznakowanie – Sekcja 06 | 2026-10-19 → 2026-11-05 (+17d) | 2026-10-21 → 2026-11-09 (+19d) |  | 341.9d → 379.6d |
| SEKCJA 07 | **Sekcja 07** |  | 2026-11-05 → 2026-12-04 (+29d) |  |  |
| 17DY74-052 | Monta¿ ruroci¹gów – Sekcja 07 | 2026-10-05 A | 2026-10-13 → 2026-10-12 (-1d) | 0% → 40% | 330.7d → 381.4d |
| 17DY74-053 | Próba ciœnieniowa – Sekcja 07 | 2026-10-14 → 2026-10-13 (-1d) | 2026-10-20 → 2026-10-19 (-1d) |  | 330.7d → 382.3d |
| 17DY74-054 | Izolacje – Sekcja 07 | 2026-10-21 → 2026-11-19 (+29d) | 2026-11-03 → 2026-12-02 (+29d) |  | 330.7d → 360.6d |
| 17DY74-055 | Malowanie i oznakowanie – Sekcja 07 | 2026-11-02 → 2026-12-01 (+29d) | 2026-11-05 → 2026-12-04 (+29d) |  | 330.7d → 360.6d |
| SEKCJA 08 | **Sekcja 08** |  | 2026-11-03 → 2026-11-18 (+15d) |  |  |
| 17DY74-057 | Monta¿ ruroci¹gów – Sekcja 08 |  | 2026-10-12 → 2026-10-27 (+15d) | 47% → 14% | 330d → 380.7d |
| 17DY74-058 | Próba ciœnieniowa – Sekcja 08 | 2026-10-13 → 2026-10-28 (+15d) | 2026-10-19 → 2026-11-03 (+15d) |  | 332.4d → 372.2d |
| 17DY74-059 | Izolacje – Sekcja 08 | 2026-10-20 → 2026-11-04 (+15d) | 2026-10-30 → 2026-11-16 (+17d) |  | 332.4d → 372.2d |
| 17DY74-060 | Malowanie i oznakowanie – Sekcja 08 | 2026-10-28 → 2026-11-12 (+15d) | 2026-11-03 → 2026-11-18 (+15d) |  | 332.4d → 372.2d |
| 17DY74-064 | Monta¿ ruroci¹gów – Sekcja 09 | 2026-09-23 A → 2026-09-21 A (-2d) | 2026-10-05 A | 51% → 100% | 337.4d → none |
| 17DY74-065 | Próba ciœnieniowa – Sekcja 09 | 2026-10-06 → 2026-09-29 A (-7d) | 2026-10-12 → 2026-10-06 A (-6d) | 0% → 100% | 337.2d → none |
| 17DY74-066 | Izolacje – Sekcja 09 | 2026-10-13 → 2026-10-07 (-6d) | 2026-10-23 → 2026-10-19 (-4d) |  | 337.2d → 392.6d |
| SEKCJA 10 | **Sekcja 10** |  | 2026-11-13 → 2026-11-11 (-2d) |  |  |
| 17DY74-069 | Monta¿ ruroci¹gów – Sekcja 10 |  | 2026-10-20 → 2026-10-16 (-4d) | 12% → 48% | 326.7d → 377.4d |
| 17DY74-070 | Próba ciœnieniowa – Sekcja 10 | 2026-10-21 → 2026-10-19 (-2d) | 2026-10-28 → 2026-10-26 (-2d) |  | 324.8d → 376.7d |
| 17DY74-071 | Izolacje – Sekcja 10 | 2026-10-29 → 2026-10-27 (-2d) | 2026-11-11 → 2026-11-09 (-2d) |  | 324.8d → 376.7d |
| 17DY74-072 | Malowanie i oznakowanie – Sekcja 10 | 2026-11-04 → 2026-11-02 (-2d) | 2026-11-13 → 2026-11-11 (-2d) |  | 324.8d → 376.7d |
| SEKCJA 11 | **Sekcja 11** |  | 2026-10-15 → 2026-10-26 (+11d) |  |  |
| 17DY74-076 | Monta¿ ruroci¹gów – Sekcja 11 | 2026-09-25 A → 2026-09-30 A (+5d) | 2026-10-06 → 2026-10-15 (+9d) | 49% → 20% | 344d → 391.7d |
| 17DY74-077 | Próba ciœnieniowa – Sekcja 11 | 2026-10-07 → 2026-10-16 (+9d) | 2026-10-08 → 2026-10-19 (+11d) |  | 345.9d → 388.7d |
| 17DY74-079 | Malowanie i oznakowanie – Sekcja 11 | 2026-10-08 → 2026-10-19 (+11d) | 2026-10-15 → 2026-10-26 (+11d) |  | 345.9d → 388.7d |
| 17DY74-078 | Izolacje – Sekcja 11 | 2026-10-09 → 2026-10-20 (+11d) | 2026-10-13 → 2026-10-22 (+9d) |  | 345.9d → 388.7d |
| 17DY74-081 | Monta¿ ruroci¹gów – Sekcja 12 | 2026-10-05 → 2026-10-01 A (-4d) |  | 0% → 20% | 334.9d → 387.6d |
| SEKCJA 13 | **Sekcja 13** | 2026-01-26 → 2026-01-21 (-5d) | 2026-10-28 → 2026-11-04 (+7d) |  |  |
| 17DY74-087 | Prefabrykacja ruroci¹gów – Sekcja 13 | 2026-01-26 A → 2026-01-21 A (-5d) | 2026-09-30 → 2026-01-27 A (-246d) | 67% → 100% | 435.9d → none |
| 17DY74-088 | Monta¿ ruroci¹gów – Sekcja 13 | 2026-09-29 A → 2026-10-01 A (+2d) | 2026-10-12 → 2026-10-19 (+7d) | 29% → 23% | 334.3d → 383d |
| 17DY74-089 | Próba ciœnieniowa – Sekcja 13 | 2026-10-13 → 2026-10-20 (+7d) | 2026-10-16 → 2026-10-23 (+7d) |  | 336.9d → 381.9d |
| 17DY74-090 | Izolacje – Sekcja 13 | 2026-10-19 → 2026-10-26 (+7d) | 2026-10-26 → 2026-11-02 (+7d) |  | 336.9d → 381.9d |
| 17DY74-091 | Malowanie i oznakowanie – Sekcja 13 | 2026-10-21 → 2026-10-28 (+7d) | 2026-10-28 → 2026-11-04 (+7d) |  | 336.9d → 381.9d |
| SEKCJA 14 | **Sekcja 14** |  | 2026-11-10 → 2026-11-13 (+3d) |  |  |
| 17DY74-093 | Monta¿ ruroci¹gów – Sekcja 14 |  | 2026-10-19 → 2026-10-22 (+3d) | 12% → 25% | 332.6d → 383.3d |
| 17DY74-094 | Próba ciœnieniowa – Sekcja 14 | 2026-10-20 → 2026-10-23 (+3d) | 2026-10-21 → 2026-10-26 (+5d) |  | 327.6d → 375.3d |
| 17DY74-095 | Izolacje – Sekcja 14 | 2026-10-22 → 2026-10-27 (+5d) | 2026-11-06 → 2026-11-11 (+5d) |  | 327.6d → 375.3d |
| 17DY74-096 | Malowanie i oznakowanie – Sekcja 14 | 2026-11-03 → 2026-11-06 (+3d) | 2026-11-10 → 2026-11-13 (+3d) |  | 327.6d → 375.3d |
| SEKCJA 15 | **Sekcja 15** | 2026-09-21 → 2026-02-05 (-228d) |  |  |  |
| PODSEKCJA | **Podsekcja 15.A** | 2026-09-21 → 2026-02-05 (-228d) |  |  |  |
| 17DY74-099 | Prefabrykacja ruroci¹gów – Sekcja 15 | 2026-09-30 → 2026-02-05 A (-237d) | 2026-10-19 → 2026-02-24 A (-237d) | 0% → 100% | 268.9d → none |
| 17DY74-100 | Monta¿ ruroci¹gów – Sekcja 15 | 2026-09-21 A → 2026-09-24 A (+3d) | 2026-10-01 → 2026-10-09 (+8d) | 84% → 80% | 338.7d → 386.4d |
| 17DY74-101 | Próba ciœnieniowa – Sekcja 15 | 2026-10-02 → 2026-10-12 (+10d) | 2026-10-06 → 2026-10-14 (+8d) |  | 345.3d → 390.3d |
| SEKCJA 16 | **Sekcja 16** |  | 2026-10-23 → 2026-11-02 (+10d) |  |  |
| 17DY74-105 | Monta¿ ruroci¹gów – Sekcja 16 |  | 2026-10-12 → 2026-10-20 (+8d) | 48% → 42% | 294.8d → 345.5d |
| 17DY74-106 | Próba ciœnieniowa – Sekcja 16 | 2026-10-13 → 2026-10-21 (+8d) | 2026-10-16 → 2026-10-26 (+10d) |  | 296.4d → 341.1d |
| 17DY74-108 | Malowanie i oznakowanie – Sekcja 16 | 2026-10-16 → 2026-10-26 (+10d) | 2026-10-23 → 2026-11-02 (+10d) |  | 296.4d → 341.1d |
| 17DY74-107 | Izolacje – Sekcja 16 | 2026-10-19 → 2026-10-27 (+8d) | 2026-10-21 → 2026-10-29 (+8d) |  | 296.4d → 341.1d |
| 17DY74-112 | Monta¿ ruroci¹gów – Sekcja 17 |  | 2026-10-06 A | 17% → 100% | 292.5d → none |
| PROJ | **Projektowanie** |  | 2026-09-30 → 2025-09-09 (-386d) |  |  |
| DOKUMENTAC | **Dokumentacja** |  | 2026-09-30 → 2025-09-09 (-386d) |  |  |
| 17DY74-003 | Zatwierdzenie dokumentacji do realizacji | 2025-08-22 A → 2025-08-20 A (-2d) | 2026-09-30 → 2025-09-09 A (-386d) | 85% → 100% | 273.1d → none |
| ROZR | **Rozruch** | 2026-11-11 → 2026-11-27 (+16d) | 2026-12-28 → 2027-01-13 (+16d) |  |  |
| ROZRUCH | **Rozruch** | 2026-11-11 → 2026-11-27 (+16d) | 2026-12-28 → 2027-01-13 (+16d) |  |  |
| 17DY74-118 | Przegl¹d gotowoœci do rozruchu | 2026-11-11 → 2026-11-27 (+16d) | 2026-11-19 → 2026-12-07 (+18d) |  | 284d → 323.1d |
| 17DY74-119 | Rozruch na zimno | 2026-11-20 → 2026-12-08 (+18d) | 2026-11-27 → 2026-12-15 (+18d) |  | 284d → 323.1d |
| 17DY74-120 | Rozruch na gor¹co / próby ruchowe | 2026-11-30 → 2026-12-16 (+16d) | 2026-12-25 → 2027-01-12 (+18d) |  | 284d → 323.1d |
| 17DY74-121 | KM: Odbiór koñcowy – Uziemienia i ochrona odgromowa | 2026-12-28 → 2027-01-13 (+16d) | 2026-12-28 → 2027-01-13 (+16d) |  | 284d → 323.1d |
| ZAKU | **Zakupy** |  | 2026-09-30 → 2026-09-18 (-12d) |  |  |
| DOSTAWY | **Dostawy** |  | 2026-09-30 → 2026-09-18 (-12d) |  |  |
| 17DY74-011 | KM: Dostawa na budowê – Uziemienia i ochrona odgromowa | 2026-09-30 → 2026-09-17 A (-13d) | 2026-09-30 → 2026-09-17 (-13d) | 0% → 100% | 264.1d → none |
| 26NP30 | **26NP30 – Rozdzielnia nN** |  | 2027-03-26 → 2027-03-09 (-17d) |  |  |
| BUDO | **Budowa** |  | 2027-02-04 → 2027-02-18 (+14d) |  |  |
| AKPIA | **AKPiA** | 2026-11-11 → 2026-10-23 (-19d) | 2026-12-10 → 2026-11-23 (-17d) |  |  |
| 26NP30-152 | Monta¿ uk³adów AKPiA | 2026-11-11 → 2026-10-23 (-19d) | 2026-12-10 → 2026-11-23 (-17d) |  | 259.7d → 323.3d |
| ELEKTRYKA | **Elektryka** | 2026-11-16 → 2026-10-30 (-17d) | 2026-12-15 → 2027-01-20 (+36d) |  |  |
| 26NP30-025 | Uk³adanie kabli – trasa 02 | 2026-11-18 → 2026-10-30 (-19d) | 2026-11-23 → 2026-11-04 (-19d) |  | 272.7d → 336.3d |
| 26NP30-037 | Uk³adanie kabli – trasa 04 | 2026-11-18 → 2026-10-30 (-19d) | 2026-11-25 → 2026-11-06 (-19d) |  | 316.7d → 380.3d |
| 26NP30-049 | Uk³adanie kabli – trasa 06 | 2026-11-18 → 2026-10-30 (-19d) | 2026-12-14 → 2026-11-25 (-19d) |  | 303.7d → 367.3d |
| 26NP30-061 | Uk³adanie kabli – trasa 08 | 2026-11-18 → 2026-10-30 (-19d) | 2026-12-04 → 2026-11-17 (-17d) |  | 309.7d → 373.3d |
| 26NP30-073 | Uk³adanie kabli – trasa 10 | 2026-11-18 → 2026-10-30 (-19d) | 2026-12-09 → 2026-11-20 (-19d) |  | 306.7d → 370.3d |
| 26NP30-085 | Uk³adanie kabli – trasa 12 | 2026-11-18 → 2026-10-30 (-19d) | 2026-12-07 → 2026-11-18 (-19d) |  | 308.7d → 372.3d |

| ID | Task | Start | Finish | Total float |
| --- | --- | --- | --- | --- |
| 26NP30-097 | Uk³adanie kabli – trasa 14 | 2026-11-18 → 2026-10-30 (-19d) | 2026-12-08 → 2026-11-19 (-19d) | 307.7d → 371.3d |
| 26NP30-109 | Uk³adanie kabli – trasa 16 | 2026-11-18 → 2026-10-30 (-19d) | 2026-12-15 → 2026-11-26 (-19d) | 302.7d → 366.3d |
| 26NP30-122 | Pod³¹czenia i pomiary – trasa 18 | 2026-11-16 → 2026-10-30 (-17d) | 2026-11-23 → 2026-11-06 (-17d) | 318.7d → 380.6d |
| 26NP30-133 | Uk³adanie kabli – trasa 20 | 2026-11-18 → 2026-10-30 (-19d) | 2026-12-04 → 2026-11-17 (-17d) | 309.7d → 373.3d |
| 26NP30-145 | Uk³adanie kabli – trasa 22 | 2026-11-18 → 2026-10-30 (-19d) | 2026-12-10 → 2026-11-23 (-17d) | 259.7d → 323.3d |
| 26NP30-121 | Uk³adanie kabli – trasa 18 | 2026-11-18 → 2026-11-03 (-15d) | 2026-11-23 → 2026-11-06 (-17d) | 318.7d → 380.6d |
| 26NP30-062 | Pod³¹czenia i pomiary – trasa 08 | 2026-11-24 → 2026-11-05 (-19d) | 2026-12-04 → 2026-11-17 (-17d) | 309.7d → 373.3d |
| 26NP30-134 | Pod³¹czenia i pomiary – trasa 20 | 2026-11-25 → 2026-11-06 (-19d) | 2026-12-04 → 2026-11-17 (-17d) | 309.7d → 373.3d |
| 26NP30-086 | Pod³¹czenia i pomiary – trasa 12 | 2026-11-27 → 2026-11-10 (-17d) | 2026-12-07 → 2026-11-18 (-19d) | 308.7d → 372.3d |
| 26NP30-074 | Pod³¹czenia i pomiary – trasa 10 | 2026-12-01 → 2026-11-12 (-19d) | 2026-12-09 → 2026-11-20 (-19d) | 306.7d → 370.3d |
| 26NP30-146 | Pod³¹czenia i pomiary – trasa 22 | 2026-12-01 → 2026-11-12 (-19d) | 2026-12-10 → 2026-11-23 (-17d) | 259.7d → 323.3d |
| 26NP30-098 | Pod³¹czenia i pomiary – trasa 14 | 2026-12-02 → 2026-11-13 (-19d) | 2026-12-08 → 2026-11-19 (-19d) | 307.7d → 371.3d |
| 26NP30-050 | Pod³¹czenia i pomiary – trasa 06 | 2026-12-10 → 2026-11-23 (-17d) | 2026-12-14 → 2026-11-25 (-19d) | 303.7d → 367.3d |
| 26NP30-110 | Pod³¹czenia i pomiary – trasa 16 | 2026-12-11 → 2026-11-24 (-17d) | 2026-12-15 → 2026-11-26 (-19d) | 302.7d → 366.3d |
| 26NP30-026 | Pod³¹czenia i pomiary – trasa 02 | 2026-11-17 → 2027-01-07 (+51d) | 2026-11-23 → 2027-01-13 (+51d) | 272.7d → 286.6d |
| 26NP30-038 | Pod³¹czenia i pomiary – trasa 04 | 2026-11-18 → 2027-01-13 (+56d) | 2026-11-25 → 2027-01-20 (+56d) | 316.7d → 327.6d |
| MONTA¯ | **Monta¿** |  | 2027-02-04 → 2027-01-18 (-17d) |  |
| 26NP30-014 | Monta¿ urz¹dzeñ g³ównych | 2026-11-04 → 2026-10-16 (-19d) | 2027-02-03 → 2027-01-15 (-19d) | 220.7d → 284.3d |
| 26NP30-153 | KM: Zakoñczenie monta¿u – Rozdzielnia nN | 2027-02-04 → 2027-01-18 (-17d) | 2027-02-04 → 2027-01-18 (-17d) | 220.7d → 284.3d |
| RUROCI¥GI | **Ruroci¹gi** |  | 2027-01-08 → 2027-02-18 (+41d) |  |
| SEKCJA 01 | **Sekcja 01** |  | 2026-12-14 → 2026-11-25 (-19d) |  |
| 26NP30-016 | Monta¿ ruroci¹gów – Sekcja 01 | 2026-11-12 → 2026-10-26 (-17d) | 2026-11-20 → 2026-11-03 (-17d) | 257.1d → 320.7d |
| 26NP30-017 | Próba ciœnieniowa – Sekcja 01 | 2026-11-23 → 2026-11-04 (-19d) | 2026-11-24 → 2026-11-05 (-19d) | 257.1d → 320.7d |
| 26NP30-018 | Izolacje – Sekcja 01 | 2026-11-25 → 2026-11-06 (-19d) | 2026-12-10 → 2026-11-23 (-17d) | 257.1d → 320.7d |
| 26NP30-019 | Malowanie i oznakowanie – Sekcja 01 | 2026-12-09 → 2026-11-20 (-19d) | 2026-12-14 → 2026-11-25 (-19d) | 257.1d → 320.7d |
| SEKCJA 02 | **Sekcja 02** |  | 2027-01-08 → 2026-12-22 (-17d) |  |
| 26NP30-021 | Monta¿ ruroci¹gów – Sekcja 02 | 2026-11-16 → 2026-10-28 (-19d) | 2026-12-15 → 2026-11-26 (-19d) | 238.1d → 301.7d |
| 26NP30-022 | Próba ciœnieniowa – Sekcja 02 | 2026-12-16 → 2026-11-27 (-19d) | 2026-12-21 → 2026-12-02 (-19d) | 238.1d → 301.7d |
| 26NP30-023 | Izolacje – Sekcja 02 | 2026-12-22 → 2026-12-03 (-19d) | 2027-01-06 → 2026-12-18 (-19d) | 238.1d → 301.7d |
| 26NP30-024 | Malowanie i oznakowanie – Sekcja 02 | 2027-01-01 → 2026-12-15 (-17d) | 2027-01-08 → 2026-12-22 (-17d) | 238.1d → 301.7d |
| SEKCJA 03 | **Sekcja 03** |  | 2026-12-14 → 2026-11-25 (-19d) |  |
| PODSEKCJA | **Podsekcja 03.A** |  | 2026-12-14 → 2026-11-25 (-19d) |  |
| 26NP30-028 | Monta¿ ruroci¹gów – Sekcja 03 | 2026-11-09 → 2026-10-21 (-19d) | 2026-11-25 → 2026-11-06 (-19d) | 303.7d → 367.3d |
| 26NP30-029 | Próba ciœnieniowa – Sekcja 03 | 2026-11-26 → 2026-11-09 (-17d) | 2026-12-01 → 2026-11-12 (-19d) | 303.7d → 367.3d |
| 26NP30-030 | Izolacje – Sekcja 03 | 2026-12-02 → 2026-11-13 (-19d) | 2026-12-10 → 2026-11-23 (-17d) | 303.7d → 367.3d |
| 26NP30-031 | Malowanie i oznakowanie – Sekcja 03 | 2026-12-07 → 2026-11-18 (-19d) | 2026-12-14 → 2026-11-25 (-19d) | 303.7d → 367.3d |
| SEKCJA 04 | **Sekcja 04** |  | 2026-12-29 → 2026-12-10 (-19d) |  |
| 26NP30-033 | Monta¿ ruroci¹gów – Sekcja 04 | 2026-11-06 → 2026-10-20 (-17d) | 2026-12-08 → 2026-11-19 (-19d) | 292.3d → 355.9d |
| 26NP30-034 | Próba ciœnieniowa – Sekcja 04 | 2026-12-09 → 2026-11-20 (-19d) | 2026-12-14 → 2026-11-25 (-19d) | 292.3d → 355.9d |
| 26NP30-035 | Izolacje – Sekcja 04 | 2026-12-15 → 2026-11-26 (-19d) | 2026-12-25 → 2026-12-08 (-17d) | 292.3d → 355.9d |
| 26NP30-036 | Malowanie i oznakowanie – Sekcja 04 | 2026-12-25 → 2026-12-08 (-17d) | 2026-12-29 → 2026-12-10 (-19d) | 292.3d → 355.9d |
| SEKCJA 05 | **Sekcja 05** |  | 2026-12-08 → 2026-11-19 (-19d) |  |
| 26NP30-040 | Monta¿ ruroci¹gów – Sekcja 05 | 2026-11-13 → 2026-10-27 (-17d) | 2026-11-19 → 2026-11-02 (-17d) | 307.2d → 370.8d |
| 26NP30-041 | Próba ciœnieniowa – Sekcja 05 | 2026-11-20 → 2026-11-03 (-17d) | 2026-11-24 → 2026-11-05 (-19d) | 307.2d → 370.8d |
| 26NP30-042 | Izolacje – Sekcja 05 | 2026-11-25 → 2026-11-06 (-19d) | 2026-12-04 → 2026-11-17 (-17d) | 307.2d → 370.8d |
| 26NP30-043 | Malowanie i oznakowanie – Sekcja 05 | 2026-12-04 → 2026-11-17 (-17d) | 2026-12-08 → 2026-11-19 (-19d) | 307.2d → 370.8d |
| SEKCJA 06 | **Sekcja 06** |  | 2026-12-07 → 2026-11-18 (-19d) |  |
| PODSEKCJA | **Podsekcja 06.A** |  | 2026-12-07 → 2026-11-18 (-19d) |  |
| 26NP30-045 | Monta¿ ruroci¹gów – Sekcja 06 | 2026-11-10 → 2026-10-22 (-19d) | 2026-11-16 → 2026-10-28 (-19d) | 308.4d → 372d |
| 26NP30-046 | Próba ciœnieniowa – Sekcja 06 | 2026-11-17 → 2026-10-29 (-19d) | 2026-11-19 → 2026-11-02 (-17d) | 308.4d → 372d |
| 26NP30-047 | Izolacje – Sekcja 06 | 2026-11-20 → 2026-11-03 (-17d) | 2026-12-03 → 2026-11-16 (-17d) | 308.4d → 372d |
| 26NP30-048 | Malowanie i oznakowanie – Sekcja 06 | 2026-12-03 → 2026-11-16 (-17d) | 2026-12-07 → 2026-11-18 (-19d) | 308.4d → 372d |
| SEKCJA 07 | **Sekcja 07** |  | 2026-12-29 → 2026-12-10 (-19d) |  |
| 26NP30-052 | Monta¿ ruroci¹gów – Sekcja 07 | 2026-11-10 → 2026-10-22 (-19d) | 2026-12-14 → 2026-11-25 (-19d) | 292.8d → 356.4d |
| 26NP30-053 | Próba ciœnieniowa – Sekcja 07 | 2026-12-15 → 2026-11-26 (-19d) | 2026-12-21 → 2026-12-02 (-19d) | 292.8d → 356.4d |
| 26NP30-054 | Izolacje – Sekcja 07 | 2026-12-22 → 2026-12-03 (-19d) | 2026-12-25 → 2026-12-08 (-17d) | 292.8d → 356.4d |
| 26NP30-055 | Malowanie i oznakowanie – Sekcja 07 | 2026-12-24 → 2026-12-07 (-17d) | 2026-12-29 → 2026-12-10 (-19d) | 292.8d → 356.4d |
| SEKCJA 08 | **Sekcja 08** |  | 2026-12-11 → 2026-11-24 (-17d) |  |
| 26NP30-057 | Monta¿ ruroci¹gów – Sekcja 08 | 2026-11-09 → 2026-10-21 (-19d) | 2026-11-26 → 2026-11-09 (-17d) | 304.9d → 368.5d |
| 26NP30-058 | Próba ciœnieniowa – Sekcja 08 | 2026-11-27 → 2026-11-10 (-17d) | 2026-12-01 → 2026-11-12 (-19d) | 304.9d → 368.5d |
| 26NP30-059 | Izolacje – Sekcja 08 | 2026-12-02 → 2026-11-13 (-19d) | 2026-12-09 → 2026-11-20 (-19d) | 304.9d → 368.5d |
| 26NP30-060 | Malowanie i oznakowanie – Sekcja 08 | 2026-12-03 → 2026-11-16 (-17d) | 2026-12-11 → 2026-11-24 (-17d) | 304.9d → 368.5d |
| SEKCJA 09 | **Sekcja 09** |  | 2026-12-10 → 2026-11-23 (-17d) |  |
| PODSEKCJA | **Podsekcja 09.A** |  | 2026-12-10 → 2026-11-23 (-17d) |  |
| 26NP30-064 | Monta¿ ruroci¹gów – Sekcja 09 | 2026-11-05 → 2026-10-19 (-17d) | 2026-11-20 → 2026-11-03 (-17d) | 305.5d → 369.1d |
| 26NP30-065 | Próba ciœnieniowa – Sekcja 09 | 2026-11-23 → 2026-11-04 (-19d) | 2026-11-25 → 2026-11-06 (-19d) | 305.5d → 369.1d |
| 26NP30-066 | Izolacje – Sekcja 09 | 2026-11-26 → 2026-11-09 (-17d) | 2026-12-08 → 2026-11-19 (-19d) | 305.5d → 369.1d |
| 26NP30-067 | Malowanie i oznakowanie – Sekcja 09 | 2026-12-03 → 2026-11-16 (-17d) | 2026-12-10 → 2026-11-23 (-17d) | 305.5d → 369.1d |
| SEKCJA 10 | **Sekcja 10** |  | 2026-12-23 → 2026-12-04 (-19d) |  |
| 26NP30-069 | Monta¿ ruroci¹gów – Sekcja 10 | 2026-11-06 → 2026-10-20 (-17d) | 2026-12-07 → 2026-11-18 (-19d) | 296.5d → 360.1d |

| ID | Task | Start | Finish | Complete | Total float |
| --- | --- | --- | --- | --- | --- |
| 26NP30-070 | Próba ciœnieniowa – Sekcja 10 | 2026-12-08 → 2026-11-19 (-19d) | 2026-12-14 → 2026-11-25 (-19d) |  | 296.5d → 360.1d |
| 26NP30-071 | Izolacje – Sekcja 10 | 2026-12-15 → 2026-11-26 (-19d) | 2026-12-21 → 2026-12-02 (-19d) |  | 296.5d → 360.1d |
| 26NP30-072 | Malowanie i oznakowanie – Sekcja 10 | 2026-12-16 → 2026-11-27 (-19d) | 2026-12-23 → 2026-12-04 (-19d) |  | 296.5d → 360.1d |
| SEKCJA 11 | **Sekcja 11** |  | 2026-12-17 → 2027-02-09 (+54d) |  |  |
| 26NP30-076 | Monta¿ ruroci¹gów – Sekcja 11 | 2026-11-04 → 2026-10-16 (-19d) | 2026-11-25 → 2026-11-06 (-19d) |  | 300.1d → 363.7d |
| 26NP30-077 | Próba ciœnieniowa – Sekcja 11 | 2026-11-26 → 2027-01-19 (+54d) | 2026-12-03 → 2027-01-26 (+54d) |  | 300.1d → 313.6d |
| 26NP30-078 | Izolacje – Sekcja 11 | 2026-12-04 → 2027-01-27 (+54d) | 2026-12-15 → 2027-02-05 (+52d) |  | 300.1d → 313.6d |
| 26NP30-079 | Malowanie i oznakowanie – Sekcja 11 | 2026-12-14 → 2027-02-04 (+52d) | 2026-12-17 → 2027-02-09 (+54d) |  | 300.1d → 313.6d |
| SEKCJA 12 | **Sekcja 12** |  | 2026-11-20 → 2026-11-03 (-17d) |  |  |
| PODSEKCJA | **Podsekcja 12.A** |  | 2026-11-20 → 2026-11-03 (-17d) |  |  |
| 26NP30-081 | Monta¿ ruroci¹gów – Sekcja 12 | 2026-11-04 → 2026-10-16 (-19d) | 2026-11-10 → 2026-10-22 (-19d) |  | 319.3d → 382.9d |
| 26NP30-082 | Próba ciœnieniowa – Sekcja 12 | 2026-11-11 → 2026-10-23 (-19d) | 2026-11-12 → 2026-10-26 (-17d) |  | 319.3d → 382.9d |
| 26NP30-084 | Malowanie i oznakowanie – Sekcja 12 | 2026-11-12 → 2026-10-26 (-17d) | 2026-11-20 → 2026-11-03 (-17d) |  | 319.3d → 382.9d |
| 26NP30-083 | Izolacje – Sekcja 12 | 2026-11-13 → 2026-10-27 (-17d) | 2026-11-18 → 2026-10-30 (-19d) |  | 319.3d → 382.9d |
| SEKCJA 13 | **Sekcja 13** |  | 2026-12-18 → 2026-12-01 (-17d) |  |  |
| 26NP30-088 | Monta¿ ruroci¹gów – Sekcja 13 | 2026-11-17 → 2026-10-29 (-19d) | 2026-11-27 → 2026-11-10 (-17d) |  | 299.1d → 362.7d |
| 26NP30-089 | Próba ciœnieniowa – Sekcja 13 | 2026-11-30 → 2026-11-11 (-19d) | 2026-12-07 → 2026-11-18 (-19d) |  | 299.1d → 362.7d |
| 26NP30-090 | Izolacje – Sekcja 13 | 2026-12-08 → 2026-11-19 (-19d) | 2026-12-16 → 2026-11-27 (-19d) |  | 299.1d → 362.7d |
| 26NP30-091 | Malowanie i oznakowanie – Sekcja 13 | 2026-12-14 → 2026-11-25 (-19d) | 2026-12-18 → 2026-12-01 (-17d) |  | 299.1d → 362.7d |
| SEKCJA 14 | **Sekcja 14** |  | 2026-12-17 → 2026-11-30 (-17d) |  |  |
| 26NP30-093 | Monta¿ ruroci¹gów – Sekcja 14 | 2026-11-04 → 2026-10-16 (-19d) | 2026-11-30 → 2026-11-11 (-19d) |  | 300.5d → 364.1d |
| 26NP30-094 | Próba ciœnieniowa – Sekcja 14 | 2026-12-01 → 2026-11-12 (-19d) | 2026-12-04 → 2026-11-17 (-17d) |  | 300.5d → 364.1d |
| 26NP30-095 | Izolacje – Sekcja 14 | 2026-12-07 → 2026-11-18 (-19d) | 2026-12-15 → 2026-11-26 (-19d) |  | 300.5d → 364.1d |
| 26NP30-096 | Malowanie i oznakowanie – Sekcja 14 | 2026-12-09 → 2026-11-20 (-19d) | 2026-12-17 → 2026-11-30 (-17d) |  | 300.5d → 364.1d |
| SEKCJA 15 | **Sekcja 15** |  | 2026-12-24 → 2026-12-07 (-17d) |  |  |
| PODSEKCJA | **Podsekcja 15.A** |  | 2026-12-24 → 2026-12-07 (-17d) |  |  |
| 26NP30-100 | Monta¿ ruroci¹gów – Sekcja 15 | 2026-11-18 → 2026-10-30 (-19d) | 2026-12-02 → 2026-11-13 (-19d) |  | 295.6d → 359.2d |
| 26NP30-101 | Próba ciœnieniowa – Sekcja 15 | 2026-12-03 → 2026-11-16 (-17d) | 2026-12-07 → 2026-11-18 (-19d) |  | 295.6d → 359.2d |
| 26NP30-102 | Izolacje – Sekcja 15 | 2026-12-08 → 2026-11-19 (-19d) | 2026-12-22 → 2026-12-03 (-19d) |  | 295.6d → 359.2d |
| 26NP30-103 | Malowanie i oznakowanie – Sekcja 15 | 2026-12-15 → 2026-11-26 (-19d) | 2026-12-24 → 2026-12-07 (-17d) |  | 295.6d → 359.2d |
| SEKCJA 16 | **Sekcja 16** |  | 2026-12-24 → 2026-12-07 (-17d) |  |  |
| 26NP30-105 | Monta¿ ruroci¹gów – Sekcja 16 | 2026-11-16 → 2026-10-28 (-19d) | 2026-12-08 → 2026-11-19 (-19d) |  | 295.2d → 358.8d |
| 26NP30-106 | Próba ciœnieniowa – Sekcja 16 | 2026-12-09 → 2026-11-20 (-19d) | 2026-12-14 → 2026-11-25 (-19d) |  | 295.2d → 358.8d |
| 26NP30-107 | Izolacje – Sekcja 16 | 2026-12-15 → 2026-11-26 (-19d) | 2026-12-22 → 2026-12-03 (-19d) |  | 295.2d → 358.8d |
| 26NP30-108 | Malowanie i oznakowanie – Sekcja 16 | 2026-12-18 → 2026-12-01 (-17d) | 2026-12-24 → 2026-12-07 (-17d) |  | 295.2d → 358.8d |
| SEKCJA 17 | **Sekcja 17** |  | 2026-12-24 → 2027-02-18 (+56d) |  |  |
| 26NP30-112 | Monta¿ ruroci¹gów – Sekcja 17 | 2026-11-16 → 2027-01-11 (+56d) | 2026-12-01 → 2027-01-26 (+56d) |  | 295.2d → 306.1d |
| 26NP30-113 | Próba ciœnieniowa – Sekcja 17 | 2026-12-02 → 2027-01-27 (+56d) | 2026-12-04 → 2027-01-29 (+56d) |  | 295.2d → 306.1d |
| 26NP30-114 | Izolacje – Sekcja 17 | 2026-12-07 → 2027-02-01 (+56d) | 2026-12-22 → 2027-02-16 (+56d) |  | 295.2d → 306.1d |
| 26NP30-115 | Malowanie i oznakowanie – Sekcja 17 | 2026-12-16 → 2027-02-10 (+56d) | 2026-12-24 → 2027-02-18 (+56d) |  | 295.2d → 306.1d |
| SEKCJA 18 | **Sekcja 18** |  | 2027-01-01 → 2026-12-15 (-17d) |  |  |
| PODSEKCJA | **Podsekcja 18.A** |  | 2027-01-01 → 2026-12-15 (-17d) |  |  |
| 26NP30-117 | Monta¿ ruroci¹gów – Sekcja 18 | 2026-11-09 → 2026-10-21 (-19d) | 2026-12-07 → 2026-11-18 (-19d) |  | 289.3d → 352.9d |
| 26NP30-118 | Próba ciœnieniowa – Sekcja 18 | 2026-12-08 → 2026-11-19 (-19d) | 2026-12-14 → 2026-11-25 (-19d) |  | 289.3d → 352.9d |
| 26NP30-119 | Izolacje – Sekcja 18 | 2026-12-15 → 2026-11-26 (-19d) | 2026-12-30 → 2026-12-11 (-19d) |  | 289.3d → 352.9d |
| 26NP30-120 | Malowanie i oznakowanie – Sekcja 18 | 2026-12-25 → 2026-12-08 (-17d) | 2027-01-01 → 2026-12-15 (-17d) |  | 289.3d → 352.9d |
| SEKCJA 19 | **Sekcja 19** |  | 2026-12-23 → 2026-12-04 (-19d) |  |  |
| 26NP30-124 | Monta¿ ruroci¹gów – Sekcja 19 | 2026-11-12 → 2026-10-26 (-17d) | 2026-12-10 → 2026-11-23 (-17d) |  | 296.8d → 360.4d |
| 26NP30-125 | Próba ciœnieniowa – Sekcja 19 | 2026-12-11 → 2026-11-24 (-17d) | 2026-12-14 → 2026-11-25 (-19d) |  | 296.8d → 360.4d |
| 26NP30-126 | Izolacje – Sekcja 19 | 2026-12-15 → 2026-11-26 (-19d) | 2026-12-21 → 2026-12-02 (-19d) |  | 296.8d → 360.4d |
| 26NP30-127 | Malowanie i oznakowanie – Sekcja 19 | 2026-12-15 → 2026-11-26 (-19d) | 2026-12-23 → 2026-12-04 (-19d) |  | 296.8d → 360.4d |
| SEKCJA 20 | **Sekcja 20** |  | 2026-12-17 → 2026-11-30 (-17d) |  |  |
| 26NP30-129 | Monta¿ ruroci¹gów – Sekcja 20 | 2026-11-12 → 2026-10-26 (-17d) | 2026-11-25 → 2026-11-06 (-19d) |  | 300.8d → 364.4d |
| 26NP30-130 | Próba ciœnieniowa – Sekcja 20 | 2026-11-26 → 2026-11-09 (-17d) | 2026-12-01 → 2026-11-12 (-19d) |  | 300.8d → 364.4d |
| 26NP30-131 | Izolacje – Sekcja 20 | 2026-12-02 → 2026-11-13 (-19d) | 2026-12-15 → 2026-11-26 (-19d) |  | 300.8d → 364.4d |
| 26NP30-132 | Malowanie i oznakowanie – Sekcja 20 | 2026-12-08 → 2026-11-19 (-19d) | 2026-12-17 → 2026-11-30 (-17d) |  | 300.8d → 364.4d |
| SEKCJA 21 | **Sekcja 21** |  | 2026-12-17 → 2026-11-30 (-17d) |  |  |
| PODSEKCJA | **Podsekcja 21.A** |  | 2026-12-17 → 2026-11-30 (-17d) |  |  |
| 26NP30-136 | Monta¿ ruroci¹gów – Sekcja 21 | 2026-11-16 → 2026-10-28 (-19d) | 2026-11-30 → 2026-11-11 (-19d) |  | 300.1d → 363.7d |
| 26NP30-137 | Próba ciœnieniowa – Sekcja 21 | 2026-12-01 → 2026-11-12 (-19d) | 2026-12-08 → 2026-11-19 (-19d) |  | 300.1d → 363.7d |
| 26NP30-138 | Izolacje – Sekcja 21 | 2026-12-09 → 2026-11-20 (-19d) | 2026-12-15 → 2026-11-26 (-19d) |  | 300.1d → 363.7d |
| 26NP30-139 | Malowanie i oznakowanie – Sekcja 21 | 2026-12-15 → 2026-11-26 (-19d) | 2026-12-17 → 2026-11-30 (-17d) |  | 300.1d → 363.7d |
| SEKCJA 22 | **Sekcja 22** |  | 2026-12-25 → 2026-12-08 (-17d) |  |  |
| 26NP30-140 | Prefabrykacja ruroci¹gów – Sekcja 22 |  | 2026-10-02 → 2026-07-20 A (-74d) | 74% → 100% | 330.3d → none |
| 26NP30-141 | Monta¿ ruroci¹gów – Sekcja 22 | 2026-11-09 → 2026-10-21 (-19d) | 2026-12-04 → 2026-11-17 (-17d) |  | 248.8d → 312.4d |
| 26NP30-142 | Próba ciœnieniowa – Sekcja 22 | 2026-12-07 → 2026-11-18 (-19d) | 2026-12-10 → 2026-11-23 (-17d) |  | 248.8d → 312.4d |
| 26NP30-143 | Izolacje – Sekcja 22 | 2026-12-11 → 2026-11-24 (-17d) | 2026-12-23 → 2026-12-04 (-19d) |  | 248.8d → 312.4d |
| 26NP30-144 | Malowanie i oznakowanie – Sekcja 22 | 2026-12-17 → 2026-11-30 (-17d) | 2026-12-25 → 2026-12-08 (-17d) |  | 248.8d → 312.4d |
| SEKCJA 23 | **Sekcja 23** |  | 2026-12-08 → 2026-11-19 (-19d) |  |  |
| 26NP30-148 | Monta¿ ruroci¹gów – Sekcja 23 | 2026-11-16 → 2026-10-28 (-19d) | 2026-11-25 → 2026-11-06 (-19d) |  | 261.8d → 325.4d |

| ID | Task | Start | Finish | Complete | Total float |
| --- | --- | --- | --- | --- | --- |
| 26NP30-149 | Próba ciœnieniowa – Sekcja 23 | 2026-11-26 → 2026-11-09 (-17d) | 2026-12-01 → 2026-11-12 (-19d) |  | 261.8d → 325.4d |
| 26NP30-150 | Izolacje – Sekcja 23 | 2026-12-02 → 2026-11-13 (-19d) | 2026-12-04 → 2026-11-17 (-17d) |  | 261.8d → 325.4d |
| 26NP30-151 | Malowanie i oznakowanie – Sekcja 23 | 2026-12-02 → 2026-11-13 (-19d) | 2026-12-08 → 2026-11-19 (-19d) |  | 261.8d → 325.4d |
| PROJ | **Projektowanie** |  | 2026-10-13 → 2025-10-13 (-365d) |  |  |
| DOKUMENTAC | **Dokumentacja** |  | 2026-10-13 → 2025-10-13 (-365d) |  |  |
| 26NP30-002 | Uzgodnienie dokumentacji z Inwestorem | 2025-09-17 A → 2025-09-15 A (-2d) | 2026-10-13 → 2025-10-03 A (-375d) | 12% → 100% | 214.9d → none |
| ROZR | **Rozruch** | 2027-02-04 → 2027-01-18 (-17d) | 2027-03-26 → 2027-03-09 (-17d) |  |  |
| ROZRUCH | **Rozruch** | 2027-02-04 → 2027-01-18 (-17d) | 2027-03-26 → 2027-03-09 (-17d) |  |  |
| 26NP30-154 | Przegl¹d gotowoœci do rozruchu | 2027-02-04 → 2027-01-18 (-17d) | 2027-02-08 → 2027-01-20 (-19d) |  | 220.7d → 284.3d |
| 26NP30-155 | Rozruch na zimno | 2027-02-09 → 2027-01-21 (-19d) | 2027-02-25 → 2027-02-08 (-17d) |  | 220.7d → 284.3d |
| 26NP30-156 | Rozruch na gor¹co / próby ruchowe | 2027-02-26 → 2027-02-09 (-17d) | 2027-03-25 → 2027-03-08 (-17d) |  | 220.7d → 284.3d |
| 26NP30-157 | KM: Odbiór koñcowy – Rozdzielnia nN | 2027-03-26 → 2027-03-09 (-17d) | 2027-03-26 → 2027-03-09 (-17d) |  | 220.7d → 284.3d |
| ZAKU | **Zakupy** |  | 2026-11-04 → 2026-10-16 (-19d) |  |  |
| DOSTAWY | **Dostawy** |  | 2026-11-04 → 2026-10-16 (-19d) |  |  |
| 26NP30-009 | Testy FAT | 2026-09-25 A → 2026-09-23 A (-2d) | 2026-09-30 → 2026-10-05 A (+5d) | 87% → 100% | 215.9d → none |
| 26NP30-010 | Transport i dostawa na plac budowy | 2026-10-01 → 2026-10-07 A (+6d) | 2026-11-03 → 2026-10-15 (-19d) | 0% → 70% | 220.7d → 267.6d |
| 26NP30-011 | KM: Dostawa na budowê – Rozdzielnia nN | 2026-11-04 → 2026-10-16 (-19d) | 2026-11-04 → 2026-10-16 (-19d) |  | 220.7d → 284.3d |
| 27FW94 | **27FW94 – Transformator blokowy** |  | 2026-11-02 → 2026-08-12 (-82d) |  |  |
| BUDO | **Budowa** |  | 2026-11-02 → 2026-07-08 (-117d) |  |  |
| RUROCI¥GI | **Ruroci¹gi** |  | 2026-11-02 → 2026-07-02 (-123d) |  |  |
| SEKCJA 02 | **Sekcja 02** |  | 2026-09-30 → 2026-05-12 (-141d) |  |  |
| 27FW94-021 | Monta¿ ruroci¹gów – Sekcja 02 | 2026-04-20 A → 2026-04-21 A (+1d) | 2026-09-30 → 2026-04-30 A (-153d) | 77% → 100% | 422.4d → none |
| SEKCJA 03 | **Sekcja 03** |  | 2026-09-30 → 2026-05-29 (-124d) |  |  |
| PODSEKCJA | **Podsekcja 03.A** |  | 2026-09-30 → 2026-05-29 (-124d) |  |  |
| 27FW94-029 | Próba ciœnieniowa – Sekcja 03 | 2026-05-18 A → 2026-05-12 A (-6d) | 2026-09-30 → 2026-05-18 A (-135d) | 78% → 100% | 441.5d → none |
| SEKCJA 06 | **Sekcja 06** |  | 2026-10-07 → 2026-06-02 (-127d) |  |  |
| PODSEKCJA | **Podsekcja 06.A** |  | 2026-10-07 → 2026-06-02 (-127d) |  |  |
| 27FW94-046 | Próba ciœnieniowa – Sekcja 06 | 2026-09-30 → 2026-05-07 A (-146d) | 2026-10-07 → 2026-05-15 A (-145d) | 0% → 100% | 344.9d → none |
| SEKCJA 07 | **Sekcja 07** |  | 2026-10-02 → 2026-05-28 (-127d) |  |  |
| 27FW94-055 | Malowanie i oznakowanie – Sekcja 07 | 2026-05-25 A → 2026-05-19 A (-6d) | 2026-10-02 → 2026-05-28 A (-127d) | 57% → 100% | 442.2d → none |
| 27FW94-054 | Izolacje – Sekcja 07 | 2026-05-21 A → 2026-05-25 A (+4d) | 2026-09-30 → 2026-05-28 A (-125d) | 62% → 100% | 445.2d → none |
| SEKCJA 08 | **Sekcja 08** |  | 2026-10-05 → 2026-06-08 (-119d) |  |  |
| 27FW94-058 | Próba ciœnieniowa – Sekcja 08 | 2026-05-08 A → 2026-05-07 A (-1d) | 2026-10-05 → 2026-05-19 A (-139d) | 18% → 100% | 441.6d → none |
| SEKCJA 09 | **Sekcja 09** |  | 2026-09-30 → 2026-06-17 (-105d) |  |  |
| PODSEKCJA | **Podsekcja 09.A** |  | 2026-09-30 → 2026-06-17 (-105d) |  |  |
| 27FW94-063 | Prefabrykacja ruroci¹gów – Sekcja 09 |  | 2026-09-30 → 2026-02-02 A (-240d) | 88% → 100% | 385.3d → none |
| SEKCJA 15 | **Sekcja 15** |  | 2026-10-07 → 2026-06-12 (-117d) |  |  |
| PODSEKCJA | **Podsekcja 15.A** |  | 2026-10-07 → 2026-06-12 (-117d) |  |  |
| 27FW94-102 | Izolacje – Sekcja 15 | 2026-06-02 A → 2026-05-29 A (-4d) | 2026-10-07 → 2026-06-10 A (-119d) | 14% → 100% | 434d → none |
| SEKCJA 18 | **Sekcja 18** |  | 2026-10-09 → 2026-06-08 (-123d) |  |  |
| PODSEKCJA | **Podsekcja 18.A** |  | 2026-10-09 → 2026-06-08 (-123d) |  |  |
| 27FW94-117 | Monta¿ ruroci¹gów – Sekcja 18 | 2026-04-22 A → 2026-04-23 A (+1d) | 2026-10-09 → 2026-05-19 A (-143d) | 53% → 100% | 440.8d → none |
| SEKCJA 19 | **Sekcja 19** |  | 2026-09-30 → 2026-05-26 (-127d) |  |  |
| 27FW94-125 | Próba ciœnieniowa – Sekcja 19 | 2026-05-06 A → 2026-05-07 A (+1d) | 2026-09-30 → 2026-05-13 A (-140d) | 10% → 100% | 448.6d → none |
| SEKCJA 20 | **Sekcja 20** |  | 2026-10-06 → 2026-06-04 (-124d) |  |  |
| 27FW94-129 | Monta¿ ruroci¹gów – Sekcja 20 | 2026-04-27 A → 2026-04-29 A (+2d) | 2026-10-06 → 2026-05-25 A (-134d) | 72% → 100% | 440.1d → none |
| 27FW94-132 | Malowanie i oznakowanie – Sekcja 20 | 2026-05-28 A → 2026-05-27 A (-1d) | 2026-10-05 → 2026-06-04 A (-123d) | 31% → 100% | 439.1d → none |
| SEKCJA 21 | **Sekcja 21** |  | 2026-09-30 → 2026-05-25 (-128d) |  |  |
| PODSEKCJA | **Podsekcja 21.A** |  | 2026-09-30 → 2026-05-25 (-128d) |  |  |
| 27FW94-136 | Monta¿ ruroci¹gów – Sekcja 21 |  | 2026-09-30 → 2026-05-15 A (-138d) | 84% → 100% | 447.5d → none |
| SEKCJA 22 | **Sekcja 22** |  | 2026-11-02 → 2026-06-26 (-129d) |  |  |
| 27FW94-141 | Monta¿ ruroci¹gów – Sekcja 22 | 2026-09-30 → 2026-04-29 A (-154d) | 2026-11-02 → 2026-06-01 A (-154d) | 0% → 100% | 318.2d → none |
| PROJ | **Projektowanie** |  | 2026-11-02 → 2025-09-17 (-411d) |  |  |
| DOKUMENTAC | **Dokumentacja** |  | 2026-11-02 → 2025-09-17 (-411d) |  |  |
| 27FW94-002 | Uzgodnienie dokumentacji z Inwestorem | 2025-07-25 A → 2025-07-30 A (+5d) | 2026-11-02 → 2025-09-11 A (-417d) | 18% → 100% | 333.4d → none |
